# DA_2

Schedule from MS Project, 2008-03-04 to 2009-01-30, costs in ₩, A marks actual dates.
HSIC-0600001
�궪�꽦SDS

## Calendars

- 농협신용신시스템: Mon-Fri 08:00-12:00, 13:00-17:00; Sat-Sun off. Exceptions (off unless hours are given): 2008-05-05, 2008-05-12, 2008-06-06, 2008-07-17, 2008-08-15, 2008-09-15, 2008-10-03, 2008-12-25, 2009-01-01, 2009-01-26 to 2009-01-27.

## Resources

| Resource | Rate |
| --- | --- |
| 권재만 | 0.12 |
| 김중국 | 0.12 |

## Schedule

| ID | WBS | Task | Duration | Start | Finish | Predecessors | Complete | Remaining | Baseline start | Baseline finish | Baseline duration | Total slack | Constraint | Resources | Work | Actual work | Cost | Baseline cost | Actual cost | Text20 | Text26 | Text30 |
| --- | --- | --- | --- | --- | --- | --- | --- | --- | --- | --- | --- | --- | --- | --- | --- | --- | --- | --- | --- | --- | --- | --- |
| 1 | 1 | **착수 및 분석** | 9d | 2008-03-04 A | 2008-03-14 A |  | 100% |  | 2008-03-04 | 2008-03-14 | 9d |  |  |  | 144h | 144h | 18 | 18 | 18 | 분석 | C02-1 1.2 |  |
| 2 | 1.1 | **DA 수행계획 수립** | 4d | 2008-03-04 A | 2008-03-07 A |  | 100% |  | 2008-03-04 | 2008-03-07 | 4d |  |  |  | 64h | 64h | 8 | 8 | 8 | 현황 평가 | C02-1 1.2.1 |  |
| 3 | 1.1.1 | 수행계획 수립 | 2d | 2008-03-04 A | 2008-03-05 A |  | 100% |  | 2008-03-04 | 2008-03-05 | 2d |  | finish no earlier than 2008-03-05 | 권재만; 김중국 | 32h | 32h | 4 | 4 | 4 | 현황 평가 | C02-1 1.2.1 |  |
| 4 | 1.1.2 | 투입 인력 R&R | 2d | 2008-03-06 A | 2008-03-07 A | 3 | 100% |  | 2008-03-06 | 2008-03-07 | 2d |  | finish no earlier than 2008-03-07 | 권재만; 김중국 | 32h | 32h | 4 | 4 | 4 | 현황 평가 | C02-1 1.2.1 |  |
| 5 | 1.2 | **DBIO 작성 환경 분석** | 2d | 2008-03-10 A | 2008-03-11 A |  | 100% |  | 2008-03-10 | 2008-03-11 | 2d |  |  |  | 32h | 32h | 4 | 4 | 4 | 현황 평가 | C02-1 1.2.1 |  |
| 6 | 1.2.1 | 프레임웍 DBIO 개발 환경 분석 | 2d | 2008-03-10 A | 2008-03-11 A |  | 100% |  | 2008-03-10 | 2008-03-11 | 2d |  | finish no earlier than 2008-03-11 | 권재만; 김중국 | 32h | 32h | 4 | 4 | 4 | 현황 평가 | C02-1 1.2.1 |  |
| 7 | 1.3 | **DBIO 집계 및 검증 체계 구축** | 3d | 2008-03-12 A | 2008-03-14 A |  | 100% |  | 2008-03-12 | 2008-03-14 | 3d |  |  |  | 48h | 48h | 6 | 6 | 6 | 현황 평가 | C02-1 1.2.1 |  |
| 8 | 1.3.1 | DBIO 목록 집계 방법 및 점검 항목 정의 | 3d | 2008-03-12 A | 2008-03-14 A |  | 100% |  | 2008-03-12 | 2008-03-14 | 3d |  | finish no earlier than 2008-03-14 | 권재만; 김중국 | 48h | 48h | 6 | 6 | 6 | 현황 평가 | C02-1 1.2.1 |  |
| 9 | 2 | **품질 점검** | 62d | 2008-03-17 A | 2008-06-13 A |  | 100% |  | 2008-03-17 | 2008-06-13 | 62d |  |  |  | 1680h | 1680h | 210 | 210 | 210 | 설계 | C02-1 1.3 |  |
| 10 | 2.1 | **DBIO 품질 관리** | 62d | 2008-03-17 A | 2008-06-13 A |  | 100% |  | 2008-03-17 | 2008-06-13 | 62d |  |  |  | 1680h | 1680h | 210 | 210 | 210 | 상세설계 | C02-1 1.3.3 |  |
| 11 | 2.1.1 | SQL 구문 검증 | 62d | 2008-03-17 A | 2008-06-13 A |  | 100% |  | 2008-03-17 | 2008-06-13 | 62d |  | start no earlier than 2008-03-17 | 권재만; 김중국 | 992h | 992h | 124 | 124 | 124 | 상세설계 | C02-1 1.3.3 | DBIO 목록집계표, DBIO 검토결과서, DBIO 개선가이드(표준), 테이블 조인 검토결과서 |
| 12 | 2.1.2 | 초기 인덱스 설계 일정수립 및 환경구축 | 11d | 2008-03-17 A | 2008-03-31 A |  | 100% |  | 2008-03-17 | 2008-03-31 | 11d |  | finish no earlier than 2008-03-31 | 권재만; 김중국 | 176h | 176h | 22 | 22 | 22 | 상세설계 | C02-1 1.3.3 |  |
| 13 | 2.1.3 | 초기 인덱스 설계 및 파티션 조정 | 32d | 2008-04-01 A | 2008-05-16 A | 12 | 100% |  | 2008-04-01 | 2008-05-16 | 32d |  | finish no earlier than 2008-05-16 | 권재만; 김중국 | 512h | 512h | 64 | 64 | 64 | 상세설계 | C02-1 1.3.3 | 인덱스 설계서 |
| 14 | 3 | **성능 튜닝** | 110d | 2008-06-02 A | 2008-11-07 |  | 98% | 1.82d | 2008-06-02 | 2008-11-07 | 110d | 56d |  |  | 3904h | 3839.36h | 488 | 488 | 479.92 | 개발 | C02-1 1.4 |  |
| 15 | 3.1 | **DBIO 성능관리** | 105d | 2008-06-02 A | 2008-10-31 |  | 98% | 2.06d | 2008-06-02 | 2008-10-31 | 105d | 61d |  |  | 3296h | 3231.36h | 412 | 412 | 403.92 | 코딩 및 단위테스트 실시 | C02-1 1.4.1 |  |
| 16 | 3.1.1 | 성능 목표 수립 | 4d | 2008-06-02 A | 2008-06-05 A |  | 100% |  | 2008-06-02 | 2008-06-05 | 4d |  | start no earlier than 2008-06-02 | 권재만; 김중국 | 64h | 64h | 8 | 8 | 8 | 코딩 및 단위테스트 실시 | C02-1 1.4.1 |  |
| 17 | 3.1.2 | 온라인 SQL 튜닝 | 101d | 2008-06-09 A | 2008-10-31 | 16 | 98% | 2.02d | 2008-06-09 | 2008-10-31 | 101d | 61d |  | 권재만; 김중국 | 1616h | 1583.68h | 202 | 202 | 197.96 | 코딩 및 단위테스트 실시 | C02-1 1.4.1 | DBIO 개선 가이드(성능) |
| 18 | 3.1.3 | 배치 SQL 튜닝 | 101d | 2008-06-09 A | 2008-10-31 |  | 98% | 2.02d | 2008-06-09 | 2008-10-31 | 101d | 61d | start no earlier than 2008-06-09 | 권재만; 김중국 | 1616h | 1583.68h | 202 | 202 | 197.96 | 코딩 및 단위테스트 실시 | C02-1 1.4.1 | DBIO 개선 가이드(성능) |
| 19 | 3.2 | **인덱스 조정** | 72d | 2008-07-28 A | 2008-11-07 A |  | 100% |  | 2008-07-28 | 2008-11-07 | 72d |  |  |  | 464h | 464h | 58 | 58 | 58 | 코딩 및 단위테스트 실시 | C02-1 1.4.1 |  |
| 20 | 3.2.1 | 1차 인덱스 조정 및 재설계 | 10d | 2008-07-28 A | 2008-08-08 A |  | 100% |  | 2008-07-28 | 2008-08-08 | 10d |  | start no earlier than 2008-07-28 | 권재만; 김중국 | 160h | 160h | 20 | 20 | 20 | 코딩 및 단위테스트 실시 | C02-1 1.4.1 |  |
| 21 | 3.2.2 | 2차 인덱스 조정 및 재설계 | 9d | 2008-09-29 A | 2008-10-10 A |  | 100% |  | 2008-09-29 | 2008-10-10 | 9d |  | finish no earlier than 2008-10-10 | 권재만; 김중국 | 144h | 144h | 18 | 18 | 18 | 코딩 및 단위테스트 실시 | C02-1 1.4.1 |  |
| 22 | 3.2.3 | 3차 인덱스 조정 및 재설계 | 10d | 2008-10-27 A | 2008-11-07 A |  | 100% |  | 2008-10-27 | 2008-11-07 | 10d |  | finish no earlier than 2008-11-07 | 권재만; 김중국 | 160h | 160h | 20 | 20 | 20 | 코딩 및 단위테스트 실시 | C02-1 1.4.1 |  |
| 23 | 3.3 | DBMS 파라미터, DB 오브젝트 분석/조정 | 9d | 2008-08-11 A | 2008-08-22 A |  | 100% |  | 2008-08-11 | 2008-08-22 | 9d |  | finish no earlier than 2008-08-22 | 권재만; 김중국 | 144h | 144h | 18 | 18 | 18 | 코딩 및 단위테스트 실시 | C02-1 1.4.1 |  |
| 24 | 4 | **안정화** | 61d | 2008-11-03 A | 2009-01-30 |  | 38% | 37.82d | 2008-11-03 | 2009-01-30 | 61d | 0d |  |  | 1952h | 741.76h | 244 | 244 | 92.72 | 구현 | C02-1 1.5 |  |
| 25 | 4.1 | **성능 모니터링 및 튜닝** | 61d | 2008-11-03 A | 2009-01-30 |  | 38% | 37.82d | 2008-11-03 | 2009-01-30 | 61d | 0d |  |  | 1952h | 741.76h | 244 | 244 | 92.72 | 단계완료 | C02-1 1.6.8 |  |
| 26 | 4.1.1 | 상시 모니터링 | 61d | 2008-11-03 A | 2009-01-30 |  | 38% | 37.82d | 2008-11-03 | 2009-01-30 | 61d | 0d | start no earlier than 2008-11-03 | 권재만; 김중국 | 976h | 370.88h | 122 | 122 | 46.36 | 단계완료 | C02-1 1.6.8 |  |
| 27 | 4.1.2 | Bad SQL 튜닝 | 61d | 2008-11-03 A | 2009-01-30 |  | 38% | 37.82d | 2008-11-03 | 2009-01-30 | 61d | 0d | start no earlier than 2008-11-03 | 권재만; 김중국 | 976h | 370.88h | 122 | 122 | 46.36 | 단계완료 | C02-1 1.6.8 | 최종 DBIO 성능관리보고서 |
