# 농협 신용 신시스템 구축

Schedule from MS Project, 2007-04-25 to 2009-03-24, costs in ₩, A marks actual dates.
HSIC-0600001

## Calendars

- 농협신용신시스템: Mon-Fri 08:00-12:00, 13:00-17:00; Sat-Sun off. Exceptions (off unless hours are given): 2007-05-01, 2007-05-24, 2007-06-06, 2007-07-17, 2007-08-15, 2007-09-24 to 2007-09-26, 2007-10-03, 2007-12-25, 2008-01-01, 2008-02-06 to 2008-02-08, 2008-05-01, 2008-05-05, 2008-05-12, 2008-06-06, 2008-07-17, 2008-08-15, 2008-09-15, 2008-10-03, 2008-12-25, 2009-01-01.

## Resources

| Resource | Group | Rate |
| --- | --- | --- |
| 정제봉 |  | 0.12 |
| 박성락 |  | 0.12 |
| 문승연 |  |  |
| 이세원 |  |  |
| QAO1 |  | 0.12 |
| QAO2 |  | 0.12 |
| 이윤경 |  | 0.12 |
| 이진희 |  | 0.12 |
| 설계자 |  | 0.12 |
| 개발자 |  | 0.12 |
| 프레임웍 |  |  |
| 노승진 |  |  |
| 윤정준 |  |  |
| 윤정진 |  |  |
| 김연진 |  |  |
| 신성훈 |  |  |
| 장동희 |  |  |
| KB 채널 IT담당자 |  |  |
| KB IT |  |  |
| 김정채 |  |  |
| 윤중식 |  |  |
| 강영욱 |  |  |
| 윤영호 |  |  |
| 남양섭 |  |  |
| 서용덕 |  |  |
| 이정아 |  |  |
| 김현식 |  |  |
| 김준형 |  |  |
| 서석진 |  |  |
| 김상배 |  |  |
| 남상우 |  |  |
| IDS#1 |  |  |
| 이현희 |  |  |
| IDS#2 |  |  |
| TBD#1 |  |  |
| TBD#2 |  |  |
| TBD#3 |  |  |
| TBD#4 |  |  |
| 김상호 |  |  |
| 금은호 |  |  |
| TBD1 |  |  |
| 현년수 |  | 0.12 |
| 김건원 |  | 0.12 |
| 박정수 |  | 0.12 |
| 문성태 |  | 0.12 |
| 이현승 |  | 0.12 |
| 차중기 |  | 0.12 |
| 박순성 |  | 0.12 |
| 양남열 |  | 0.12 |
| 안은영 |  | 0.12 |
| 박승규 |  | 0.12 |
| 박순성.박승규.안은영.양남열 |  | 0.12 |
| 박순성.안은영.양남열.박승규.고홍복.김은영 |  | 0.12 |
| 고홍복 |  | 0.12 |
| 김은영 |  | 0.12 |
| 박승규.김은영 |  | 0.12 |
| 박승규.김은영.안은영 |  | 0.12 |
| 박순성.양남열 |  | 0.12 |
| 고성환 |  | 0.12 |
| 김용승 |  | 0.12 |
| 이종훈 |  | 0.12 |
| 최경숙 |  | 0.12 |
| 김성수 |  | 0.12 |
| 최윤식 |  | 0.12 |
| 조희재 |  | 0.12 |
| 이성구 |  | 0.12 |
| 김규형 |  |  |
| 권재만 |  | 0.12 |
| 김중국 |  | 0.12 |
| 문길섭 |  | 0.12 |
| 배은진 |  | 0.12 |
| 박진희 |  | 0.12 |
| 서태수 |  | 0.12 |
| 김대하 |  | 0.12 |
| 전결숙 |  | 0.12 |
| 김소영 |  | 0.12 |
| 김영칠 |  | 0.12 |
| 홍연표 |  | 0.12 |
| 심정보 |  | 0.12 |
| 박준성 |  | 0.12 |
| 김효성 |  | 0.12 |
| 이천석 |  | 0.12 |
| 이서우 |  | 0.12 |
| 은철수 |  | 0.12 |
| 배장훈 |  | 0.12 |
| 김정호 |  | 0.12 |
| 이호원 |  | 0.12 |
| 박훈 |  | 0.12 |
| 송길수 |  | 0.12 |
| 강승일 |  | 0.12 |
| 김평집 |  | 0.12 |
| 문영수 |  | 0.12 |
| 김호준 |  | 0.12 |
| 이종원 |  | 0.12 |
| 이후곤 |  | 0.12 |
| 장은종 |  | 0.12 |
| 범희도 |  | 0.12 |
| 길은송 |  | 0.12 |
| 박제관 |  | 0.12 |
| 하명순 |  | 0.12 |
| 함갑수 |  | 0.12 |
| 이주영 |  | 0.12 |
| 삼성SDS1 |  | 0.12 |
| 정재훈 |  | 0.12 |
| 홍경표 |  | 0.12 |
| 이진득 |  | 0.12 |
| 박정현 |  | 0.12 |
| 이상화 |  | 0.12 |
| 이문호 |  | 0.12 |
| 박병진 |  | 0.12 |
| 박승대 |  | 0.12 |
| 황재봉 |  | 0.12 |
| 이혜진 |  | 0.12 |
| 최종식 |  | 0.12 |
| 문석길 |  | 0.12 |
| 이헤진 |  | 0.12 |
| 최창익 |  | 0.12 |
| 김종승 |  | 0.12 |
| 박종원 |  | 0.12 |
| TBD2 |  | 0.12 |
| TBD3 |  | 0.12 |
| 이인 |  |  |
| 김창민 |  |  |
| 함감수 |  |  |
| 조철 |  |  |
| 최재역 |  |  |
| 최재혁 |  |  |
| 김승유 |  |  |
| 김재학 |  |  |
| 강성국 |  |  |
| 전은해 |  |  |
| 유봉주 |  |  |
| 정대중 |  |  |
| 개발자5 |  |  |
| 이동기 |  |  |
| 문준호 |  |  |
| 최현수 |  |  |
| 김현태 |  |  |
| 송정우 |  |  |
| 윤열 |  |  |
| 서종민 | 000PL | 0.12 |
| 이창수 | 100TL | 0.12 |
| 김백기 | 110여신실행 | 0.12 |
| 김영보 | 110여신실행 | 0.12 |
| 양혜란 | 120여신상환 | 0.12 |
| 서정호 | 120여신상환 | 0.12 |
| 송진현 | 120여신상환 | 0.12 |
| 윤승종 | 130여신관리 | 0.12 |
| 차호병 | 130여신관리 | 0.12 |
| 김경희 | 140차입금 | 0.12 |
| 김정석 | 140차입금 | 0.12 |
| 송재규 | 150보증서/전자결재 | 0.12 |
| 표기웅 | 150보증서/전자결재 | 0.12 |
| 지용근 | 200TL | 0.12 |
| 김영석 | 210기업심사 | 0.12 |
| 김형근 | 220한도/금리 | 0.12 |
| 전형남 | 230개인심사 | 0.12 |
| 정재순 | 240감정담보 | 0.12 |
| 정이훈 |  |  |
| 이해미 |  |  |
| 윤승준 |  |  |
| 이천송 |  |  |
| 박소연 |  |  |
| 김영석B |  |  |
| 선민국 |  |  |
| 염정호 |  |  |
| 노송래 | PM/공통 | 0.12 |
| 조현미 | 공통 | 0.12 |
| 강성규 | 공통 | 0.12 |
| 최진아 | 공통 | 0.12 |
| 남병우 | 무역 | 0.12 |
| 김효중 | 무역 | 0.12 |
| 왕원표 | 무역 | 0.12 |
| 전지숙 | 무역 | 0.12 |
| 권태완 | 무역외 | 0.12 |
| 이청주 | 무역외 | 0.12 |
| 홍순일 | 국제금융 | 0.12 |
| 신경중 | 국제금융 | 0.12 |
| 이주철 | 공통 | 0.12 |
| 이주행 | 국제금융 | 0.12 |
| 양광범 | 무역 | 0.12 |
| 최시영 | 무역외 | 0.12 |
| 김진호 | 무역 | 0.12 |
| 정광호 | 국제금융 | 0.12 |
| 이성호 | 무역 | 0.12 |
| 오영주 | 무역 | 0.12 |
| 김동진 | 무역 | 0.12 |
| 장경임 | 무역 | 0.12 |
| 서종철 | 공통 | 0.12 |
| 서훈철 | 국제금융 | 0.12 |
| 이철권 | 무역 | 0.12 |
| 박성준 | 무역 | 0.12 |
| 김지아 | 공통 | 0.12 |
| 김영숙 | 국제금융 | 0.12 |
| 정승균 | 공통 | 0.12 |
| 박동환 | 무역 | 0.12 |
| 고은별 | 무역외 | 0.12 |
| 조건희 | 공통 | 0.12 |
| UI관련 개발지원회의 안건입니다.. |  |  |
| 이병훈 |  | 0.12 |
| 이기호 |  | 0.12 |
| 김도현 |  | 0.12 |
| 함미숙 |  | 0.12 |
| 정연봉 |  | 0.12 |
| 김대일 |  | 0.12 |
| 최진원 |  | 0.12 |
| 차진욱 |  | 0.12 |
| 주은영 |  | 0.12 |
| 정동호 |  | 0.12 |
| 목진국 |  | 0.12 |
| 장인기 |  | 0.12 |
| 이동민 |  | 0.12 |
| 최덕원 |  | 0.12 |
| 박제성 |  | 0.12 |
| 김철희 |  | 0.12 |
| 심은경 |  | 0.12 |
| 조병권 |  | 0.12 |
| 배민선 |  | 0.12 |
| 남길원 |  | 0.12 |
| 전관호 |  | 0.12 |
| 정용택 |  | 0.12 |
| 정민주 |  | 0.12 |
| 정용석 |  | 0.12 |
| 이현수 |  | 0.12 |
| 정명자 |  | 0.12 |
| 이경수 |  | 0.12 |
| 권용준 |  | 0.12 |
| 송민섭 |  | 0.12 |
| 김종윤 |  | 0.12 |
| 2 |  |  |
| 송민 |  |  |
| 황성수 |  |  |
| 최윤석 |  | 0.12 |
| 박창준 |  | 0.12 |
| 김규완 |  | 0.12 |
| 정정우 |  | 0.12 |
| 김태룡 |  | 0.12 |
| 윤덕형 |  | 0.12 |
| 최진희 |  | 0.12 |
| 김상엽 |  |  |
| 박상용 |  | 0.12 |
| 박병욱 |  | 0.12 |
| 양용열 |  | 0.12 |
| 오범석 |  | 0.12 |
| 조성식 |  | 0.12 |
| SA |  | 0.12 |
| 송국봉 |  | 0.12 |
| 배재학 |  | 0.12 |
| 안기승 |  | 0.12 |
| 박중건 |  | 0.12 |
| 이우선 |  | 0.12 |
| 김동겸외7명 |  | 0.12 |
| 김수창 |  | 0.12 |
| 김도균 |  | 0.12 |
| 정현수 |  | 0.12 |
| 최성환 |  | 0.12 |
| 하상수 |  | 0.12 |
| 박종성 |  | 0.12 |
| 고윤정 |  | 0.12 |
| 인길식 |  | 0.12 |
| 김동겸 |  | 0.12 |
| 정세윤 |  | 0.12 |
| 오은경 |  | 0.12 |
| 이기철 |  | 0.12 |
| 최형섭 |  | 0.12 |
| 김석정 |  | 0.12 |
| 김문수 | 분석설계 | 0.12 |
| 백병호 | 분석설계 | 0.12 |
| 성병근 | 분석설계 | 0.12 |
| 박세호 | 분석설계 | 0.12 |
| PL |  | 0.12 |
| 수신 |  | 0.12 |
| 공통1 |  | 0.12 |
| 공통2 |  | 0.12 |
| 개발1 |  | 0.12 |
| 개발2 |  | 0.12 |
| 개발3 |  | 0.12 |
| 개발4 |  | 0.12 |
| 개발5 |  | 0.12 |
| 개발6 |  | 0.12 |
| 개발7 |  | 0.12 |
| 개발8 |  | 0.12 |
| 개발9 |  | 0.12 |
| 개발10 |  | 0.12 |
| 개발11 |  | 0.12 |
| 개발12 |  | 0.12 |
| 개발13 |  | 0.12 |
| 개발14 |  | 0.12 |
| 김욱진 |  | 0.12 |
| 최상운 |  | 0.12 |
| 신정아 |  | 0.12 |
| 지용식 |  | 0.12 |

## Schedule

| ID | Task | Duration | Start | Finish | Complete | Remaining | Baseline start | Baseline finish | Baseline duration | Total slack | Work | Actual work | Cost | Baseline cost | Actual cost |
| --- | --- | --- | --- | --- | --- | --- | --- | --- | --- | --- | --- | --- | --- | --- | --- |
| 1 | 사업관리 | 478d? | 2007-04-25 A | 2009-03-24 | 74% | 126.49d? | 2007-04-25 | 2009-03-24 | 478d? | 0d | 28064h | 21065.1h | 2,994.36 | 2,994.36 | 2,555.43 |
| 2 | 품질관리 | 476d | 2007-04-25 A | 2009-03-24 | 71% | 138.11d | 2007-04-25 | 2009-03-24 | 476d | 0d | 8488h | 6648h | 1,061 | 1,061 | 831 |
| 3 | 공통(고객)_고객통합 | 388d? | 2007-09-03 A | 2009-03-24 | 55% | 174.61d? | 2007-09-03 | 2009-03-24 | 388d? | 0d | 13814h | 3827h | 1,504.75 | 1,504.75 | 256.38 |
| 4 | 공통(고객) | 486d? | 2007-04-25 A | 2009-03-24 | 69% | 152.36d? | 2007-04-25 | 2009-03-24 | 486d? | 0d | 18838h | 15022.5h | 2,216.75 | 2,216.75 | 1,751.66 |
| 5 | 공통(상품) | 487d? | 2007-04-25 A | 2009-03-24 | 76% | 117.75d? | 2007-04-25 | 2009-03-24 | 487d? | 0d | 26384h | 17615.2h | 3,298 | 3,298 | 2,201.9 |
| 6 | 공통(공통정보) | 489d? | 2007-04-25 A | 2009-03-24 | 66% | 164.21d? | 2007-04-25 | 2009-03-24 | 489d? | 0d | 5798h | 5798h | 724.75 | 724.75 | 724.75 |
| 7 | 경영정보 | 486d | 2007-04-25 A | 2009-03-24 | 61% | 188.9d | 2007-04-25 | 2009-03-24 | 486d | 0d | 3252h | 3252h | 406.5 | 406.5 | 406.5 |
| 8 | DA | 228d | 2008-03-04 A | 2009-01-30 | 40% | 136.45d | 2008-03-04 | 2009-01-30 | 228d | 37d | 7680h | 3083.83h | 960 | 960 | 385.48 |
| 9 | 수신 | 485d? | 2007-04-25 A | 2009-03-24 | 64% | 172.74d? | 2007-04-25 | 2009-03-24 | 485d? | 0d | 284818h | 228080h | 30,521.65 | 30,521.65 | 25,518.42 |
| 10 | 여신 | 484d | 2007-04-25 A | 2009-03-24 | 95% | 23.37d | 2007-04-25 | 2009-03-24 | 484d | 0d | 93624h | 93624h | 9,195 | 9,195 | 9,195 |
| 11 | 외환 | 476d? | 2007-04-25 A | 2009-03-24 | 88% | 58.26d? | 2007-04-25 | 2009-03-24 | 476d? | 0d | 174014h | 108438h | 21,751.73 | 21,751.73 | 13,554.74 |
| 12 | 대외통합 | 484d | 2007-04-25 A | 2009-03-24 | 76% | 116.59d | 2007-04-25 | 2009-03-24 | 484d | 0d | 14673h | 14673h | 1,834.12 | 1,834.12 | 1,834.12 |
| 13 | e-뱅킹 | 459d | 2007-05-21 A | 2009-03-24 | 57% | 195.44d | 2007-05-21 | 2009-03-24 | 459d | 0d | 56442h | 31250.8h | 7,055.25 | 7,055.25 | 3,906.35 |
| 14 | 텔레마케팅 | 247d? | 2008-04-01 A | 2009-03-24 | 44% | 137.1d? | 2008-04-01 | 2009-03-24 | 247d? | 0d | 7016h | 4519.93h | 282 | 282 | 258.08 |
| 15 | 텔레뱅킹-컨텍센터 | 268d | 2008-03-13 A | 2009-03-24 | 46% | 144.74d | 2008-03-13 | 2009-03-24 | 268d | 0d | 4953.2h | 2316.48h | 619.15 | 619.15 | 289.56 |
| 16 | 자동화기기 | 486d? | 2007-04-25 A | 2009-03-24 | 62% | 182.68d? | 2007-04-25 | 2009-03-24 | 486d? | 0d | 5704h | 5704h | 475 | 475 | 475 |
| 17 | 인프라 | 472d | 2007-05-01 A | 2009-03-24 | 76% | 114.3d | 2007-05-01 | 2009-03-24 | 472d | 0d | 144452h | 87204.3h | 18,056.72 | 18,177.54 | 10,900.54 |
| 18 | 프레임웍 | 475d? | 2007-04-26 A | 2009-03-24 | 71% | 135.86d? | 2007-04-26 | 2009-03-24 | 475d? | 0d | 31968h | 19808h | 3,996 | 3,996 | 2,475.88 |
| 19 | 메타 | 473d | 2007-05-02 A | 2009-03-24 | 65% | 167.83d | 2007-05-02 | 2009-03-24 | 473d | 0d | 14320h | 8049.43h | 1,790 | 1,790 | 1,006.18 |
| 20 | 데이터전환 | 452.91d? | 2007-04-25 A | 2009-02-11 | 74% | 115.83d? | 2007-04-25 | 2009-02-11 | 452.91d? | 29.09d | 324145h | 228804h | 40,518.08 | 40,518.08 | 28,600.48 |
| 21 | 데이터모델링 | 431d? | 2007-05-08 A | 2009-01-30 | 93% | 28.82d? | 2007-05-08 | 2009-01-30 | 431d? | 37d | 14688h | 13744.3h | 1,836 | 1,836 | 1,718.04 |
