# e-뱅킹

Schedule from MS Project, 2007-05-21 to 2009-03-24, costs in ₩, A marks actual dates.
HSIC-0600001
�궪�꽦SDS

## Calendars

- 농협신용신시스템: Mon-Fri 08:00-12:00, 13:00-17:00; Sat-Sun off. Exceptions (off unless hours are given): 2007-05-24, 2007-06-06, 2007-07-17, 2007-08-15, 2007-09-24 to 2007-09-26, 2007-10-03, 2007-12-25, 2008-01-01, 2008-02-06 to 2008-02-08, 2008-05-01, 2008-05-05, 2008-05-12, 2008-06-06, 2008-07-17, 2008-08-15, 2008-09-15, 2008-10-03, 2008-12-25, 2009-01-01, 2009-01-24 to 2009-01-25.

## Resources

| Resource | Rate |
| --- | --- |
| 전관호 | 0.12 |
| 정용택 | 0.12 |
| 정민주 | 0.12 |
| 정용석 | 0.12 |
| 이현수 | 0.12 |
| 정명자 | 0.12 |
| 이경수 | 0.12 |

## Schedule

| ID | WBS | Task | Duration | Start | Finish | Complete | Baseline start | Baseline finish | Baseline duration | Constraint | Resources | Work | Actual work | Cost | Baseline cost | Actual cost | Text20 | Text26 | Text30 |
| --- | --- | --- | --- | --- | --- | --- | --- | --- | --- | --- | --- | --- | --- | --- | --- | --- | --- | --- | --- |
| 1 | 1 | **분석** | 45d | 2007-05-21 A | 2007-07-25 A | 100% | 2007-05-21 | 2007-07-25 | 45d |  |  | 5168h | 5168h | 646 | 646 | 646 | 분석 | C02-1 1.2 |  |
| 2 | 1.1 | **현황 평가** | 21d | 2007-05-21 A | 2007-06-20 A | 100% | 2007-05-21 | 2007-06-20 | 21d |  |  | 1856h | 1856h | 232 | 232 | 232 | 현황 평가 | C02-1 1.2.1 |  |
| 3 | 1.1.1 | **현행업무 분석** | 21d | 2007-05-21 A | 2007-06-20 A | 100% | 2007-05-21 | 2007-06-20 | 21d |  |  | 864h | 864h | 108 | 108 | 108 | 현황 평가 | C02-1 1.2.1 | 현행업무흐름도,현행업무분장표 |
| 4 | 1.1.1.1 | **전자금융서버(AP,B2B)업무** | 11d | 2007-05-21 A | 2007-06-05 A | 100% | 2007-05-21 | 2007-06-05 | 11d |  |  | 288h | 288h | 36 | 36 | 36 | 현황 평가 | C02-1 1.2.1 |  |
| 5 | 1.1.1.1.1 | **e금융 서비스별 I/F 구조 및 형태 분석** | 11d | 2007-05-21 A | 2007-06-05 A | 100% | 2007-05-21 | 2007-06-05 | 11d |  |  | 288h | 288h | 36 | 36 | 36 | 현황 평가 | C02-1 1.2.1 |  |
| 6 | 1.1.1.1.1.1 | TCP/IP전문방식(HOST,여신,가상계좌,단말) | 6d | 2007-05-21 A | 2007-05-29 A | 100% | 2007-05-21 | 2007-05-29 | 6d | start no earlier than 2007-05-21 | 전관호; 정용택 | 96h | 96h | 12 | 12 | 12 | 현황 평가 | C02-1 1.2.1 |  |
| 7 | 1.1.1.1.1.2 | EAI 전문방식((Host,여신,신탁,외환,공제,카드,스쿨뱅킹,금고) | 3d | 2007-06-01 A | 2007-06-05 A | 100% | 2007-06-01 | 2007-06-05 | 3d | start no earlier than 2007-06-01 | 전관호; 정용택 | 48h | 48h | 6 | 6 | 6 | 현황 평가 | C02-1 1.2.1 |  |
| 8 | 1.1.1.1.1.3 | Domain Gate방식(여신,외환,공제,카드,스쿨뱅킹,금고) | 3d | 2007-06-01 A | 2007-06-05 A | 100% | 2007-06-01 | 2007-06-05 | 3d | finish no earlier than 2007-06-05 | 전관호; 정용택 | 48h | 48h | 6 | 6 | 6 | 현황 평가 | C02-1 1.2.1 |  |
| 9 | 1.1.1.1.1.4 | FTP방식(대량 입/출금,CMS) | 3d | 2007-06-01 A | 2007-06-05 A | 100% | 2007-06-01 | 2007-06-05 | 3d | finish no earlier than 2007-06-05 | 전관호; 정용택 | 48h | 48h | 6 | 6 | 6 | 현황 평가 | C02-1 1.2.1 |  |
| 10 | 1.1.1.1.1.5 | x.25 방식 | 3d | 2007-06-01 A | 2007-06-05 A | 100% | 2007-06-01 | 2007-06-05 | 3d | finish no earlier than 2007-06-05 | 전관호; 정용택 | 48h | 48h | 6 | 6 | 6 | 현황 평가 | C02-1 1.2.1 |  |
| 11 | 1.1.1.2 | **e금융 계정계업무** | 4d | 2007-06-05 A | 2007-06-11 A | 100% | 2007-06-05 | 2007-06-11 | 4d |  |  | 368h | 368h | 46 | 46 | 46 | 현황 평가 | C02-1 1.2.1 |  |
| 12 | 1.1.1.2.1 | 즉시이체(당타행이체포함 및 타행개설분) | 2d | 2007-06-05 A | 2007-06-07 A | 100% | 2007-06-05 | 2007-06-07 | 2d | start no earlier than 2007-06-05 | 전관호; 정용택 | 32h | 32h | 4 | 4 | 4 | 현황 평가 | C02-1 1.2.1 |  |
| 13 | 1.1.1.2.2 | 조회성업무(요구불,저축성) | 2d | 2007-06-05 A | 2007-06-07 A | 100% | 2007-06-05 | 2007-06-07 | 2d | start no earlier than 2007-06-05 | 전관호; 정용택 | 32h | 32h | 4 | 4 | 4 | 현황 평가 | C02-1 1.2.1 |  |
| 14 | 1.1.1.2.3 | 사고신고 및 원장변경업무 | 2d | 2007-06-05 A | 2007-06-07 A | 100% | 2007-06-05 | 2007-06-07 | 2d | start no earlier than 2007-06-05 | 전관호; 정용택 | 32h | 32h | 4 | 4 | 4 | 현황 평가 | C02-1 1.2.1 |  |
| 15 | 1.1.1.2.4 | PG업무(금결원,SK텔레콤) | 2d | 2007-06-05 A | 2007-06-07 A | 100% | 2007-06-05 | 2007-06-07 | 2d | start no earlier than 2007-06-05 | 전관호; 정용택 | 32h | 32h | 4 | 4 | 4 | 현황 평가 | C02-1 1.2.1 |  |
| 16 | 1.1.1.2.5 | 대량업무(기업금융 대량이체,타행입금처리) | 3d | 2007-06-07 A | 2007-06-11 A | 100% | 2007-06-07 | 2007-06-11 | 3d | start no earlier than 2007-06-07 | 전관호; 정용택 | 48h | 48h | 6 | 6 | 6 | 현황 평가 | C02-1 1.2.1 |  |
| 17 | 1.1.1.2.6 | 단말업무(개인,기업인터넷뱅킹) | 3d | 2007-06-07 A | 2007-06-11 A | 100% | 2007-06-07 | 2007-06-11 | 3d | start no earlier than 2007-06-07 | 전관호; 정용택 | 48h | 48h | 6 | 6 | 6 | 현황 평가 | C02-1 1.2.1 |  |
| 18 | 1.1.1.2.7 | 신규 및 해지업무(저축성,요구불 신규/해지) | 3d | 2007-06-07 A | 2007-06-11 A | 100% | 2007-06-07 | 2007-06-11 | 3d | start no earlier than 2007-06-07 | 전관호; 정용택 | 48h | 48h | 6 | 6 | 6 | 현황 평가 | C02-1 1.2.1 |  |
| 19 | 1.1.1.2.8 | UMS(문자서비스)업무(UMS수수료정산/UMS처리결과수신/수수료인터넷납부) | 3d | 2007-06-07 A | 2007-06-11 A | 100% | 2007-06-07 | 2007-06-11 | 3d | start no earlier than 2007-06-07 | 전관호; 정용택 | 48h | 48h | 6 | 6 | 6 | 현황 평가 | C02-1 1.2.1 |  |
| 20 | 1.1.1.2.9 | 기업특화 서비스업무(Emp현금결재 개설및 취급송수신) | 3d | 2007-06-07 A | 2007-06-11 A | 100% | 2007-06-07 | 2007-06-11 | 3d | start no earlier than 2007-06-07 | 전관호; 정용택 | 48h | 48h | 6 | 6 | 6 | 현황 평가 | C02-1 1.2.1 |  |
| 21 | 1.1.1.3 | **텔레뱅킹업무** | 5d | 2007-06-14 A | 2007-06-20 A | 100% | 2007-06-14 | 2007-06-20 | 5d |  |  | 208h | 208h | 26 | 26 | 26 | 현황 평가 | C02-1 1.2.1 |  |
| 22 | 1.1.1.3.1 | **서비스별 I/F 구조 및 형태 분석** | 5d | 2007-06-14 A | 2007-06-20 A | 100% | 2007-06-14 | 2007-06-20 | 5d |  |  | 208h | 208h | 26 | 26 | 26 | 현황 평가 | C02-1 1.2.1 |  |
| 23 | 1.1.1.3.1.1 | 미니계정계업무 | 5d | 2007-06-14 A | 2007-06-20 A | 100% | 2007-06-14 | 2007-06-20 | 5d | start no earlier than 2007-06-14 | 전관호; 정용택 | 80h | 80h | 10 | 10 | 10 | 현황 평가 | C02-1 1.2.1 |  |
| 24 | 1.1.1.3.1.2 | 텔레뱅킹 | 4d | 2007-06-14 A | 2007-06-19 A | 100% | 2007-06-14 | 2007-06-19 | 4d | start no earlier than 2007-06-14 | 전관호; 정용택 | 64h | 64h | 8 | 8 | 8 | 현황 평가 | C02-1 1.2.1 |  |
| 25 | 1.1.1.3.1.3 | 텔레마케팅 | 4d | 2007-06-14 A | 2007-06-19 A | 100% | 2007-06-14 | 2007-06-19 | 4d | start no earlier than 2007-06-14 | 전관호; 정용택 | 64h | 64h | 8 | 8 | 8 | 현황 평가 | C02-1 1.2.1 |  |

| ID | WBS | Task | Duration | Start | Finish | Predecessors | Complete | Baseline start | Baseline finish | Baseline duration | Constraint | Resources | Work | Actual work | Cost | Baseline cost | Actual cost | Text20 | Text26 | Text30 |
| --- | --- | --- | --- | --- | --- | --- | --- | --- | --- | --- | --- | --- | --- | --- | --- | --- | --- | --- | --- | --- |
| 26 | 1.1.2 | **현행시스템 분석** | 21d | 2007-05-21 A | 2007-06-20 A |  | 100% | 2007-05-21 | 2007-06-20 | 21d |  |  | 864h | 864h | 108 | 108 | 108 | 현황 평가 | C02-1 1.2.1 | 현행시스템분석서 |
| 27 | 1.1.2.1 | **전자금융서버(AP,B2B)업무** | 11d | 2007-05-21 A | 2007-06-05 A |  | 100% | 2007-05-21 | 2007-06-05 | 11d |  |  | 288h | 288h | 36 | 36 | 36 | 현황 평가 | C02-1 1.2.1 |  |
| 28 | 1.1.2.1.1 | **e금융 서비스별 I/F 구조 및 형태 분석** | 11d | 2007-05-21 A | 2007-06-05 A |  | 100% | 2007-05-21 | 2007-06-05 | 11d |  |  | 288h | 288h | 36 | 36 | 36 | 현황 평가 | C02-1 1.2.1 |  |
| 29 | 1.1.2.1.1.1 | TCP/IP전문방식(HOST,여신,가상계좌,단말) | 6d | 2007-05-21 A | 2007-05-29 A |  | 100% | 2007-05-21 | 2007-05-29 | 6d | start no earlier than 2007-05-21 | 전관호; 정용택 | 96h | 96h | 12 | 12 | 12 | 현황 평가 | C02-1 1.2.1 |  |
| 30 | 1.1.2.1.1.2 | EAI 전문방식((Host,여신,신탁,외환,공제,카드,스쿨뱅킹,금고) | 3d | 2007-06-01 A | 2007-06-05 A |  | 100% | 2007-06-01 | 2007-06-05 | 3d | start no earlier than 2007-06-01 | 전관호; 정용택 | 48h | 48h | 6 | 6 | 6 | 현황 평가 | C02-1 1.2.1 |  |
| 31 | 1.1.2.1.1.3 | Domain Gate방식(여신,외환,공제,카드,스쿨뱅킹,금고) | 3d | 2007-06-01 A | 2007-06-05 A |  | 100% | 2007-06-01 | 2007-06-05 | 3d | finish no earlier than 2007-06-05 | 전관호; 정용택 | 48h | 48h | 6 | 6 | 6 | 현황 평가 | C02-1 1.2.1 |  |
| 32 | 1.1.2.1.1.4 | FTP방식(대량 입/출금,CMS) | 3d | 2007-06-01 A | 2007-06-05 A |  | 100% | 2007-06-01 | 2007-06-05 | 3d | finish no earlier than 2007-06-05 | 전관호; 정용택 | 48h | 48h | 6 | 6 | 6 | 현황 평가 | C02-1 1.2.1 |  |
| 33 | 1.1.2.1.1.5 | x.25 방식 | 3d | 2007-06-01 A | 2007-06-05 A |  | 100% | 2007-06-01 | 2007-06-05 | 3d | finish no earlier than 2007-06-05 | 전관호; 정용택 | 48h | 48h | 6 | 6 | 6 | 현황 평가 | C02-1 1.2.1 |  |
| 34 | 1.1.2.2 | **e금융 계정계업무** | 4d | 2007-06-05 A | 2007-06-11 A |  | 100% | 2007-06-05 | 2007-06-11 | 4d |  |  | 368h | 368h | 46 | 46 | 46 | 현황 평가 | C02-1 1.2.1 |  |
| 35 | 1.1.2.2.1 | 즉시이체(당타행이체포함 및 타행개설분) | 2d | 2007-06-05 A | 2007-06-07 A |  | 100% | 2007-06-05 | 2007-06-07 | 2d | start no earlier than 2007-06-05 | 전관호; 정용택 | 32h | 32h | 4 | 4 | 4 | 현황 평가 | C02-1 1.2.1 |  |
| 36 | 1.1.2.2.2 | 조회성업무(요구불,저축성) | 2d | 2007-06-05 A | 2007-06-07 A |  | 100% | 2007-06-05 | 2007-06-07 | 2d | start no earlier than 2007-06-05 | 전관호; 정용택 | 32h | 32h | 4 | 4 | 4 | 현황 평가 | C02-1 1.2.1 |  |
| 37 | 1.1.2.2.3 | 사고신고 및 원장변경업무 | 2d | 2007-06-05 A | 2007-06-07 A |  | 100% | 2007-06-05 | 2007-06-07 | 2d | start no earlier than 2007-06-05 | 전관호; 정용택 | 32h | 32h | 4 | 4 | 4 | 현황 평가 | C02-1 1.2.1 |  |
| 38 | 1.1.2.2.4 | PG업무(금결원,SK텔레콤) | 2d | 2007-06-05 A | 2007-06-07 A |  | 100% | 2007-06-05 | 2007-06-07 | 2d | start no earlier than 2007-06-05 | 전관호; 정용택 | 32h | 32h | 4 | 4 | 4 | 현황 평가 | C02-1 1.2.1 |  |
| 39 | 1.1.2.2.5 | 대량업무(기업금융 대량이체,타행입금처리) | 3d | 2007-06-07 A | 2007-06-11 A |  | 100% | 2007-06-07 | 2007-06-11 | 3d | start no earlier than 2007-06-07 | 전관호; 정용택 | 48h | 48h | 6 | 6 | 6 | 현황 평가 | C02-1 1.2.1 |  |
| 40 | 1.1.2.2.6 | 단말업무(개인,기업인터넷뱅킹) | 3d | 2007-06-07 A | 2007-06-11 A |  | 100% | 2007-06-07 | 2007-06-11 | 3d | start no earlier than 2007-06-07 | 전관호; 정용택 | 48h | 48h | 6 | 6 | 6 | 현황 평가 | C02-1 1.2.1 |  |
| 41 | 1.1.2.2.7 | 신규 및 해지업무(저축성,요구불 신규/해지) | 3d | 2007-06-07 A | 2007-06-11 A |  | 100% | 2007-06-07 | 2007-06-11 | 3d | start no earlier than 2007-06-07 | 전관호; 정용택 | 48h | 48h | 6 | 6 | 6 | 현황 평가 | C02-1 1.2.1 |  |
| 42 | 1.1.2.2.8 | UMS(문자서비스)업무(UMS수수료정산/UMS처리결과수신/수수료인터넷납부) | 3d | 2007-06-07 A | 2007-06-11 A |  | 100% | 2007-06-07 | 2007-06-11 | 3d | start no earlier than 2007-06-07 | 전관호; 정용택 | 48h | 48h | 6 | 6 | 6 | 현황 평가 | C02-1 1.2.1 |  |
| 43 | 1.1.2.2.9 | 기업특화 서비스업무(Emp현금결재 개설및 취급송수신) | 3d | 2007-06-07 A | 2007-06-11 A |  | 100% | 2007-06-07 | 2007-06-11 | 3d | start no earlier than 2007-06-07 | 전관호; 정용택 | 48h | 48h | 6 | 6 | 6 | 현황 평가 | C02-1 1.2.1 |  |
| 44 | 1.1.2.3 | **텔레뱅킹업무** | 5d | 2007-06-14 A | 2007-06-20 A |  | 100% | 2007-06-14 | 2007-06-20 | 5d |  |  | 208h | 208h | 26 | 26 | 26 | 현황 평가 | C02-1 1.2.1 |  |
| 45 | 1.1.2.3.1 | **서비스별 I/F 구조 및 형태 분석** | 5d | 2007-06-14 A | 2007-06-20 A |  | 100% | 2007-06-14 | 2007-06-20 | 5d |  |  | 208h | 208h | 26 | 26 | 26 | 현황 평가 | C02-1 1.2.1 |  |
| 46 | 1.1.2.3.1.1 | 미니계정계업무 | 5d | 2007-06-14 A | 2007-06-20 A |  | 100% | 2007-06-14 | 2007-06-20 | 5d | start no earlier than 2007-06-14 | 전관호; 정용택 | 80h | 80h | 10 | 10 | 10 | 현황 평가 | C02-1 1.2.1 |  |
| 47 | 1.1.2.3.1.2 | 텔레뱅킹 | 4d | 2007-06-14 A | 2007-06-19 A |  | 100% | 2007-06-14 | 2007-06-19 | 4d | start no earlier than 2007-06-14 | 전관호; 정용택 | 64h | 64h | 8 | 8 | 8 | 현황 평가 | C02-1 1.2.1 |  |
| 48 | 1.1.2.3.1.3 | 텔레마케팅 | 4d | 2007-06-14 A | 2007-06-19 A |  | 100% | 2007-06-14 | 2007-06-19 | 4d | start no earlier than 2007-06-14 | 전관호; 정용택 | 64h | 64h | 8 | 8 | 8 | 현황 평가 | C02-1 1.2.1 |  |
| 49 | 1.1.3 | **인터뷰 실시** | 9d | 2007-05-28 A | 2007-06-08 A |  | 100% | 2007-05-28 | 2007-06-08 | 9d |  |  | 128h | 128h | 16 | 16 | 16 | 현황 평가 | C02-1 1.2.1 | 인터뷰결과 |
| 50 | 1.1.3.1 | 인터뷰 계획 | 2d | 2007-05-28 A | 2007-05-29 A |  | 100% | 2007-05-28 | 2007-05-29 | 2d | start no earlier than 2007-05-28 | 전관호; 정용택 | 32h | 32h | 4 | 4 | 4 | 현황 평가 | C02-1 1.2.1 |  |
| 51 | 1.1.3.2 | 업무팀인터뷰실시 | 2d | 2007-05-31 A | 2007-06-01 A |  | 100% | 2007-05-31 | 2007-06-01 | 2d | start no earlier than 2007-05-31 | 전관호; 정용택 | 32h | 32h | 4 | 4 | 4 | 현황 평가 | C02-1 1.2.1 |  |
| 52 | 1.1.3.3 | 유관부서인터뷰실시 | 2d | 2007-06-04 A | 2007-06-05 A | 51 | 100% | 2007-06-04 | 2007-06-05 | 2d | start no earlier than 2007-06-04 | 전관호; 정용택 | 32h | 32h | 4 | 4 | 4 | 현황 평가 | C02-1 1.2.1 |  |
| 53 | 1.1.3.4 | 개발방향수립 | 2d | 2007-06-07 A | 2007-06-08 A | 52 | 100% | 2007-06-07 | 2007-06-08 | 2d | finish no earlier than 2007-06-08 | 전관호; 정용택 | 32h | 32h | 4 | 4 | 4 | 현황 평가 | C02-1 1.2.1 |  |

| ID | WBS | Task | Duration | Start | Finish | Complete | Baseline start | Baseline finish | Baseline duration | Constraint | Resources | Work | Actual work | Cost | Baseline cost | Actual cost | Text20 | Text26 | Text30 |
| --- | --- | --- | --- | --- | --- | --- | --- | --- | --- | --- | --- | --- | --- | --- | --- | --- | --- | --- | --- |
| 54 | 1.2 | **요구사항 정의** | 16d | 2007-06-07 A | 2007-06-28 A | 100% | 2007-06-07 | 2007-06-28 | 16d |  |  | 800h | 800h | 100 | 100 | 100 | 요구사항 정의 | C02-1 1.2.2 |  |
| 55 | 1.2.1 | **기능요구사항 정의** | 15d | 2007-06-07 A | 2007-06-27 A | 100% | 2007-06-07 | 2007-06-27 | 15d |  |  | 256h | 256h | 32 | 32 | 32 | 요구사항 정의 | C02-1 1.2.2 | 현업요구사항정의서 |
| 56 | 1.2.1.1 | 공통기능 요구사항 정의 | 5d | 2007-06-07 A | 2007-06-13 A | 100% | 2007-06-07 | 2007-06-13 | 5d | start no earlier than 2007-06-06 | 전관호; 정용택 | 80h | 80h | 10 | 10 | 10 | 요구사항 정의 | C02-1 1.2.2 |  |
| 57 | 1.2.1.2 | 업무 기능별 요구사항 정의 | 6d | 2007-06-18 A | 2007-06-25 A | 100% | 2007-06-18 | 2007-06-25 | 6d | start no earlier than 2007-06-14 | 전관호; 정용택 | 96h | 96h | 12 | 12 | 12 | 요구사항 정의 | C02-1 1.2.2 |  |
| 58 | 1.2.1.3 | 인터페이스유형별 요구사항 정의 | 5d | 2007-06-21 A | 2007-06-27 A | 100% | 2007-06-21 | 2007-06-27 | 5d | start no earlier than 2007-06-22 | 전관호; 정용택 | 80h | 80h | 10 | 10 | 10 | 요구사항 정의 | C02-1 1.2.2 |  |
| 59 | 1.2.2 | **인터페이스 요구사항 정의** | 7d | 2007-06-18 A | 2007-06-26 A | 100% | 2007-06-18 | 2007-06-26 | 7d |  |  | 304h | 304h | 38 | 38 | 38 | 요구사항 정의 | C02-1 1.2.2 | 현업요구사항정의서 |
| 60 | 1.2.2.1 | 대외채널과의인터페이스도출 및 정의 | 6d | 2007-06-18 A | 2007-06-25 A | 100% | 2007-06-18 | 2007-06-25 | 6d | start no earlier than 2007-06-12 | 전관호; 정용택 | 96h | 96h | 12 | 12 | 12 | 요구사항 정의 | C02-1 1.2.2 |  |
| 61 | 1.2.2.2 | 신용채널과의인터페이스도출 및 정의 | 6d | 2007-06-18 A | 2007-06-25 A | 100% | 2007-06-18 | 2007-06-25 | 6d | start no earlier than 2007-06-12 | 전관호; 정용택 | 96h | 96h | 12 | 12 | 12 | 요구사항 정의 | C02-1 1.2.2 |  |
| 62 | 1.2.2.3 | 업무시스템과의인터페이스도출 및 정의 | 7d | 2007-06-18 A | 2007-06-26 A | 100% | 2007-06-18 | 2007-06-26 | 7d | start no earlier than 2007-06-20 | 전관호; 정용택 | 112h | 112h | 14 | 14 | 14 | 요구사항 정의 | C02-1 1.2.2 |  |
| 63 | 1.2.3 | **시스템화 범위 결정** | 11d | 2007-06-14 A | 2007-06-28 A | 100% | 2007-06-14 | 2007-06-28 | 11d |  |  | 240h | 240h | 30 | 30 | 30 | 요구사항 정의 | C02-1 1.2.2 | 현업요구사항정의서 |
| 64 | 1.2.3.1 | 공통업무 시스템화 범위 결정 | 5d | 2007-06-14 A | 2007-06-20 A | 100% | 2007-06-14 | 2007-06-20 | 5d | start no earlier than 2007-06-14 | 전관호; 정용택 | 80h | 80h | 10 | 10 | 10 | 요구사항 정의 | C02-1 1.2.2 |  |
| 65 | 1.2.3.2 | 기능별 시스템화 범위 결정 | 5d | 2007-06-22 A | 2007-06-28 A | 100% | 2007-06-22 | 2007-06-28 | 5d | start no earlier than 2007-06-22 | 전관호; 정용택 | 80h | 80h | 10 | 10 | 10 | 요구사항 정의 | C02-1 1.2.2 |  |
| 66 | 1.2.3.3 | 인터페이스유형별 시스템화 범위 결정 | 5d | 2007-06-22 A | 2007-06-28 A | 100% | 2007-06-22 | 2007-06-28 | 5d | start no earlier than 2007-06-22 | 전관호; 정용택 | 80h | 80h | 10 | 10 | 10 | 요구사항 정의 | C02-1 1.2.2 |  |
| 67 | 1.3 | **신논리모델 구축** | 17d | 2007-06-22 A | 2007-07-16 A | 100% | 2007-06-22 | 2007-07-16 | 17d |  |  | 2224h | 2224h | 278 | 278 | 278 | 신논리모델 구축 | C02-1 1.2.3 |  |
| 68 | 1.3.1 | **프로세스 모델링** | 17d | 2007-06-22 A | 2007-07-16 A | 100% | 2007-06-22 | 2007-07-16 | 17d |  |  | 1168h | 1168h | 146 | 146 | 146 | 신논리모델 구축 | C02-1 1.2.3 |  |
| 69 | 1.3.1.1 | **프로세스 도출 및 정의** | 12d | 2007-06-22 A | 2007-07-09 A | 100% | 2007-06-22 | 2007-07-09 | 12d |  |  | 768h | 768h | 96 | 96 | 96 | 신논리모델 구축 | C02-1 1.2.3 | 프로세스정의서,기능차트 |
| 70 | 1.3.1.1.1 | 공통프로세스 도출 및 정의 | 12d | 2007-06-22 A | 2007-07-09 A | 100% | 2007-06-22 | 2007-07-09 | 12d | start no earlier than 2007-06-22 | 전관호; 정용택 | 192h | 192h | 24 | 24 | 24 | 신논리모델 구축 | C02-1 1.2.3 |  |
| 71 | 1.3.1.1.2 | 채널프로세스 도출 및 정의 | 12d | 2007-06-22 A | 2007-07-09 A | 100% | 2007-06-22 | 2007-07-09 | 12d | start no earlier than 2007-06-22 | 전관호; 정용택 | 192h | 192h | 24 | 24 | 24 | 신논리모델 구축 | C02-1 1.2.3 |  |
| 72 | 1.3.1.1.3 | 기능별 프로세스 도출 및 정의 | 12d | 2007-06-22 A | 2007-07-09 A | 100% | 2007-06-22 | 2007-07-09 | 12d | start no earlier than 2007-06-22 | 전관호; 정용택 | 192h | 192h | 24 | 24 | 24 | 신논리모델 구축 | C02-1 1.2.3 |  |
| 73 | 1.3.1.1.4 | 관리프로세스 도출 및 정의 | 12d | 2007-06-22 A | 2007-07-09 A | 100% | 2007-06-22 | 2007-07-09 | 12d | start no earlier than 2007-06-22 | 전관호; 정용택 | 192h | 192h | 24 | 24 | 24 | 신논리모델 구축 | C02-1 1.2.3 |  |
| 74 | 1.3.1.2 | **내부인터페이스도출 및 정의** | 5d | 2007-07-10 A | 2007-07-16 A | 100% | 2007-07-10 | 2007-07-16 | 5d |  |  | 160h | 160h | 20 | 20 | 20 | 신논리모델 구축 | C02-1 1.2.3 | 인터페이스정의서 |
| 75 | 1.3.1.2.1 | 기능프로세스와 채널프로세스 인터페이스 도출 및 정의 | 5d | 2007-07-10 A | 2007-07-16 A | 100% | 2007-07-10 | 2007-07-16 | 5d | start no earlier than 2007-07-10 | 전관호; 정용택 | 80h | 80h | 10 | 10 | 10 | 신논리모델 구축 | C02-1 1.2.3 |  |
| 76 | 1.3.1.2.2 | DB 인터페이스 도출 및 정의 | 5d | 2007-07-10 A | 2007-07-16 A | 100% | 2007-07-10 | 2007-07-16 | 5d | start no earlier than 2007-07-10 | 전관호; 정용택 | 80h | 80h | 10 | 10 | 10 | 신논리모델 구축 | C02-1 1.2.3 |  |
| 77 | 1.3.1.3 | **외부인터페이스도출 및 정의** | 5d | 2007-07-10 A | 2007-07-16 A | 100% | 2007-07-10 | 2007-07-16 | 5d |  |  | 240h | 240h | 30 | 30 | 30 | 신논리모델 구축 | C02-1 1.2.3 | 인터페이스정의서 |
| 78 | 1.3.1.3.1 | 대외채널과의인터페이스도출 및 정의 | 5d | 2007-07-10 A | 2007-07-16 A | 100% | 2007-07-10 | 2007-07-16 | 5d | start no earlier than 2007-07-10 | 전관호; 정용택 | 80h | 80h | 10 | 10 | 10 | 신논리모델 구축 | C02-1 1.2.3 |  |
| 79 | 1.3.1.3.2 | 신용채널과의인터페이스도출 및 정의 | 5d | 2007-07-10 A | 2007-07-16 A | 100% | 2007-07-10 | 2007-07-16 | 5d | start no earlier than 2007-07-10 | 전관호; 정용택 | 80h | 80h | 10 | 10 | 10 | 신논리모델 구축 | C02-1 1.2.3 |  |
| 80 | 1.3.1.3.3 | 업무시스템과의인터페이스도출 및 정의 | 5d | 2007-07-10 A | 2007-07-16 A | 100% | 2007-07-10 | 2007-07-16 | 5d | start no earlier than 2007-07-10 | 전관호; 정용택 | 80h | 80h | 10 | 10 | 10 | 신논리모델 구축 | C02-1 1.2.3 |  |

| ID | WBS | Task | Duration | Start | Finish | Predecessors | Complete | Baseline start | Baseline finish | Baseline duration | Constraint | Resources | Work | Actual work | Cost | Baseline cost | Actual cost | Text20 | Text26 | Text30 |
| --- | --- | --- | --- | --- | --- | --- | --- | --- | --- | --- | --- | --- | --- | --- | --- | --- | --- | --- | --- | --- |
| 81 | 1.3.2 | **데이터 모델링** | 15d | 2007-06-26 A | 2007-07-16 A |  | 100% | 2007-06-26 | 2007-07-16 | 15d |  |  | 960h | 960h | 120 | 120 | 120 | 신논리모델 구축 | C02-1 1.2.3 |  |
| 82 | 1.3.2.1 | **엔티티 도출 및 논리 모델링** | 10d | 2007-06-26 A | 2007-07-09 A |  | 100% | 2007-06-26 | 2007-07-09 | 10d |  |  | 640h | 640h | 80 | 80 | 80 | 신논리모델 구축 | C02-1 1.2.3 | 엔티티목록, ERD |
| 83 | 1.3.2.1.1 | 공통업무 엔티티 도출 및 정의 | 10d | 2007-06-26 A | 2007-07-09 A |  | 100% | 2007-06-26 | 2007-07-09 | 10d | start no earlier than 2007-06-26 | 전관호; 정용택 | 160h | 160h | 20 | 20 | 20 | 신논리모델 구축 | C02-1 1.2.3 |  |
| 84 | 1.3.2.1.2 | 채널업무 엔티티 도출 및 정의 | 10d | 2007-06-26 A | 2007-07-09 A |  | 100% | 2007-06-26 | 2007-07-09 | 10d | start no earlier than 2007-06-26 | 전관호; 정용택 | 160h | 160h | 20 | 20 | 20 | 신논리모델 구축 | C02-1 1.2.3 |  |
| 85 | 1.3.2.1.3 | 기능업무단위 엔티티 도출 및 정의 | 10d | 2007-06-26 A | 2007-07-09 A |  | 100% | 2007-06-26 | 2007-07-09 | 10d | start no earlier than 2007-06-26 | 전관호; 정용택 | 160h | 160h | 20 | 20 | 20 | 신논리모델 구축 | C02-1 1.2.3 |  |
| 86 | 1.3.2.1.4 | e뱅킹 관리업무 엔티티 도출 및 정의 | 10d | 2007-06-26 A | 2007-07-09 A |  | 100% | 2007-06-26 | 2007-07-09 | 10d | start no earlier than 2007-06-26 | 전관호; 정용택 | 160h | 160h | 20 | 20 | 20 | 신논리모델 구축 | C02-1 1.2.3 |  |
| 87 | 1.3.2.2 | **엔티티 정의** | 5d | 2007-07-10 A | 2007-07-16 A |  | 100% | 2007-07-10 | 2007-07-16 | 5d |  |  | 320h | 320h | 40 | 40 | 40 | 신논리모델 구축 | C02-1 1.2.3 | 엔티티정의서 |
| 88 | 1.3.2.2.1 | 공통업무 엔티티 정의 | 5d | 2007-07-10 A | 2007-07-16 A |  | 100% | 2007-07-10 | 2007-07-16 | 5d | start no earlier than 2007-07-10 | 전관호; 정용택 | 80h | 80h | 10 | 10 | 10 | 신논리모델 구축 | C02-1 1.2.3 |  |
| 89 | 1.3.2.2.2 | 채널업무 엔티티 정의 | 5d | 2007-07-10 A | 2007-07-16 A |  | 100% | 2007-07-10 | 2007-07-16 | 5d | start no earlier than 2007-07-10 | 전관호; 정용택 | 80h | 80h | 10 | 10 | 10 | 신논리모델 구축 | C02-1 1.2.3 |  |
| 90 | 1.3.2.2.3 | 기능업무 엔티티 정의 | 5d | 2007-07-10 A | 2007-07-16 A |  | 100% | 2007-07-10 | 2007-07-16 | 5d | start no earlier than 2007-07-10 | 전관호; 정용택 | 80h | 80h | 10 | 10 | 10 | 신논리모델 구축 | C02-1 1.2.3 |  |
| 91 | 1.3.2.2.4 | e뱅킹관리업무 엔티티 정의 | 5d | 2007-07-10 A | 2007-07-16 A |  | 100% | 2007-07-10 | 2007-07-16 | 5d | start no earlier than 2007-07-10 | 전관호; 정용택 | 80h | 80h | 10 | 10 | 10 | 신논리모델 구축 | C02-1 1.2.3 |  |
| 92 | 1.3.3 | 인수테스트기준정의 | 6d | 2007-07-09 A | 2007-07-16 A |  | 100% | 2007-07-09 | 2007-07-16 | 6d | start no earlier than 2007-07-09 | 전관호; 정용택 | 96h | 96h | 12 | 12 | 12 | 신논리모델 구축 | C02-1 1.2.3 | 인수테스트기준서 |
| 93 | 1.4 | **분석단계관리활동** | 45d | 2007-05-21 A | 2007-07-25 A |  | 100% | 2007-05-21 | 2007-07-25 | 45d |  |  | 288h | 288h | 36 | 36 | 36 | 단계완료 | C02-1 1.6.8 |  |
| 94 | 1.4.1 | 데이타베이스교육 실시 | 1d | 2007-05-21 A | 2007-05-21 A |  | 100% | 2007-05-21 | 2007-05-21 | 1d | finish no earlier than 2007-05-21 | 전관호; 정용택 | 16h | 16h | 2 | 2 | 2 | 단계완료 | C02-1 1.6.8 |  |
| 95 | 1.4.2 | 형상관리 Tool 교육 | 1d | 2007-05-22 A | 2007-05-22 A | 94 | 100% | 2007-05-22 | 2007-05-22 | 1d |  | 전관호; 정용택 | 16h | 16h | 2 | 2 | 2 | 단계완료 | C02-1 1.6.8 |  |
| 96 | 1.4.3 | Inspection(1차) 실시 및 조치 | 5d | 2007-07-02 A | 2007-07-06 A |  | 100% | 2007-07-02 | 2007-07-06 | 5d | start no earlier than 2007-07-02 | 전관호; 정용택 | 80h | 80h | 10 | 10 | 10 | 단계완료 | C02-1 1.6.8 |  |
| 97 | 1.4.4 | 요구사항추적표 매핑 | 3d | 2007-07-09 A | 2007-07-11 A |  | 100% | 2007-07-09 | 2007-07-11 | 3d | start no earlier than 2007-07-09 | 전관호; 정용택 | 48h | 48h | 6 | 6 | 6 | 단계완료 | C02-1 1.6.8 |  |
| 98 | 1.4.5 | 요구사항규모측정방법 교육 및 측정 | 5d | 2007-07-09 A | 2007-07-13 A |  | 100% | 2007-07-09 | 2007-07-13 | 5d | start no earlier than 2007-07-09 | 전관호; 정용택 | 80h | 80h | 10 | 10 | 10 | 단계완료 | C02-1 1.6.8 |  |
| 99 | 1.4.6 | 고객검토(1차) 실시 및 조치 | 3d | 2007-07-23 A | 2007-07-25 A |  | 100% | 2007-07-23 | 2007-07-25 | 3d | start no earlier than 2007-07-23 | 전관호; 정용택 | 48h | 48h | 6 | 6 | 6 | 단계완료 | C02-1 1.6.8 |  |
| 100 | 2 | **설계** | 119d | 2007-07-09 A | 2007-12-31 A |  | 100% | 2007-07-09 | 2007-12-31 | 119d |  |  | 8530h | 8530h | 1,066.25 | 1,066.25 | 1,066.25 | 설계 | C02-1 1.3 |  |
| 101 | 2.1 | **기본 설계** | 42d | 2007-07-30 A | 2007-10-01 A |  | 100% | 2007-07-30 | 2007-10-01 | 42d |  |  | 3106h | 3106h | 388.25 | 388.25 | 388.25 | 기본설계 | C02-1 1.3.1 |  |
| 102 | 2.1.1 | **시스템구조 설계** | 42d | 2007-07-30 A | 2007-10-01 A |  | 100% | 2007-07-30 | 2007-10-01 | 42d |  | 전관호; 정용택; 이경수 | 2578h | 2578h | 322.25 | 322.25 | 322.25 | 기본설계 | C02-1 1.3.1 | 프로그램목록,어플리케이션구조도 |
| 103 | 2.1.1.1 | 어플리케이션구조도 | 8d | 2007-07-30 A | 2007-08-08 A |  | 100% | 2007-07-30 | 2007-08-08 | 8d | start no earlier than 2007-08-01 | 전관호; 정용택; 이경수 | 144h | 144h | 18 | 18 | 18 | 기본설계 | C02-1 1.3.1 |  |
| 104 | 2.1.1.2 | 프로그램목록 | 5d | 2007-08-13 A | 2007-08-20 A |  | 100% | 2007-08-13 | 2007-08-20 | 5d | start no earlier than 2007-08-13 | 전관호; 정용택; 이경수 | 104h | 104h | 13 | 13 | 13 | 기본설계 | C02-1 1.3.1 |  |

| ID | WBS | Task | Duration | Start | Finish | Complete | Baseline start | Baseline finish | Baseline duration | Constraint | Resources | Work | Actual work | Cost | Baseline cost | Actual cost | Text20 | Text26 | Text30 |
| --- | --- | --- | --- | --- | --- | --- | --- | --- | --- | --- | --- | --- | --- | --- | --- | --- | --- | --- | --- |
| 105 | 2.1.1.3 | **인터페이스 기본설계** | 28d | 2007-08-20 A | 2007-10-01 A | 100% | 2007-08-20 | 2007-10-01 | 28d |  | 전관호; 정용택; 이경수 | 1338h | 1338h | 167.25 | 167.25 | 167.25 | 기본설계 | C02-1 1.3.1 |  |
| 106 | 2.1.1.3.1 | 전자금융 | 5d | 2007-08-20 A | 2007-08-24 A | 100% | 2007-08-20 | 2007-08-24 | 5d | start no earlier than 2007-08-20 | 전관호; 정용택; 이경수 | 114h | 114h | 14.25 | 14.25 | 14.25 | 기본설계 | C02-1 1.3.1 |  |
| 107 | 2.1.1.3.2 | 계정계 | 5d | 2007-08-27 A | 2007-08-31 A | 100% | 2007-08-27 | 2007-08-31 | 5d | start no earlier than 2007-08-27 | 전관호; 정용택; 이경수 | 120h | 120h | 15 | 15 | 15 | 기본설계 | C02-1 1.3.1 |  |
| 108 | 2.1.1.3.3 | 텔레뱅킹 | 5d | 2007-09-03 A | 2007-09-07 A | 100% | 2007-09-03 | 2007-09-07 | 5d | start no earlier than 2007-09-03 | 전관호; 정용택; 이경수 | 120h | 120h | 15 | 15 | 15 | 기본설계 | C02-1 1.3.1 |  |
| 109 | 2.1.1.3.4 | 컨텍센터 | 5d | 2007-09-10 A | 2007-09-14 A | 100% | 2007-09-10 | 2007-09-14 | 5d | start no earlier than 2007-09-10 | 전관호; 정용택; 이경수 | 120h | 120h | 15 | 15 | 15 | 기본설계 | C02-1 1.3.1 |  |
| 110 | 2.1.1.3.5 | 미니계정계 | 5d | 2007-09-17 A | 2007-09-21 A | 100% | 2007-09-17 | 2007-09-21 | 5d | start no earlier than 2007-09-17 | 전관호; 정용택; 이경수 | 120h | 120h | 15 | 15 | 15 | 기본설계 | C02-1 1.3.1 |  |
| 111 | 2.1.1.3.6 | 텔레마케팅 | 3d | 2007-09-27 A | 2007-10-01 A | 100% | 2007-09-27 | 2007-10-01 | 3d | start no earlier than 2007-09-24 | 전관호; 정용택; 이경수 | 72h | 72h | 9 | 9 | 9 | 기본설계 | C02-1 1.3.1 |  |
| 112 | 2.1.2 | 데이터코드 설계 | 10d | 2007-08-01 A | 2007-08-14 A | 100% | 2007-08-01 | 2007-08-14 | 10d | start no earlier than 2007-08-01 | 전관호; 정용택; 이경수 | 192h | 192h | 24 | 24 | 24 | 기본설계 | C02-1 1.3.1 | 코드정의서,코드목록 |
| 113 | 2.1.3 | 화면 및 보고서 설계 | 7d | 2007-09-17 A | 2007-09-28 A | 100% | 2007-09-17 | 2007-09-28 | 7d | finish no earlier than 2007-09-28 | 전관호; 정용택; 이경수 | 168h | 168h | 21 | 21 | 21 | 기본설계 | C02-1 1.3.1 | 화면목록,화면레이아웃 |
| 114 | 2.1.4 | 개발자가이드 | 7d | 2007-09-17 A | 2007-09-28 A | 100% | 2007-09-17 | 2007-09-28 | 7d | start no earlier than 2007-09-17 | 전관호; 정용택; 이경수 | 168h | 168h | 21 | 21 | 21 | 기본설계 | C02-1 1.3.1 | 개발자가이드 |
| 115 | 2.2 | **상세 설계** | 44d | 2007-10-01 A | 2007-11-30 A | 100% | 2007-10-01 | 2007-11-30 | 44d |  |  | 3424h | 3424h | 428 | 428 | 428 | 상세설계 | C02-1 1.3.3 |  |
| 116 | 2.2.1 | **데이터베이스 상세설계** | 13d | 2007-10-01 A | 2007-10-18 A | 100% | 2007-10-01 | 2007-10-18 | 13d |  | 전관호; 정용택; 이경수; 이현수 | 1504h | 1504h | 188 | 188 | 188 | 상세설계 | C02-1 1.3.3 | 프로그램대테이블상관도,테이블정의서,테이블목록,ERD |
| 117 | 2.2.1.1 | ERD(물리)작성 | 9d | 2007-10-01 A | 2007-10-12 A | 100% | 2007-10-01 | 2007-10-12 | 9d | start no earlier than 2007-10-01 | 전관호; 정용택; 이경수; 이현수 | 288h | 288h | 36 | 36 | 36 | 상세설계 | C02-1 1.3.3 |  |
| 118 | 2.2.1.2 | 테이블 목록작성 | 10d | 2007-10-04 A | 2007-10-17 A | 100% | 2007-10-04 | 2007-10-17 | 10d | start no earlier than 2007-10-04 | 전관호; 정용택; 이경수; 이현수 | 320h | 320h | 40 | 40 | 40 | 상세설계 | C02-1 1.3.3 |  |
| 119 | 2.2.1.3 | 테이블 정의서 작성 | 10d | 2007-10-05 A | 2007-10-18 A | 100% | 2007-10-05 | 2007-10-18 | 10d | start no earlier than 2007-10-05 | 전관호; 정용택; 이경수; 이현수 | 320h | 320h | 40 | 40 | 40 | 상세설계 | C02-1 1.3.3 |  |
| 120 | 2.2.1.4 | 프로그램대테이블상관도 | 5d | 2007-10-12 A | 2007-10-18 A | 100% | 2007-10-12 | 2007-10-18 | 5d | start no earlier than 2007-10-12 | 전관호; 정용택; 이경수; 이현수 | 160h | 160h | 20 | 20 | 20 | 상세설계 | C02-1 1.3.3 |  |
| 121 | 2.2.2 | **공통프로그램 설계** | 16d | 2007-10-18 A | 2007-11-08 A | 100% | 2007-10-18 | 2007-11-08 | 16d |  | 전관호; 정용택; 이경수; 이현수 | 1024h | 1024h | 128 | 128 | 128 | 상세설계 | C02-1 1.3.3 | 프로그램사양서(공통) |
| 122 | 2.2.2.1 | 공통프로그램 사양서(공통)작성 | 16d | 2007-10-18 A | 2007-11-08 A | 100% | 2007-10-18 | 2007-11-08 | 16d | start no earlier than 2007-10-18 | 전관호; 정용택; 이경수; 이현수 | 512h | 512h | 64 | 64 | 64 | 상세설계 | C02-1 1.3.3 |  |
| 123 | 2.2.3 | **서버프로그램 설계** | 16d | 2007-11-09 A | 2007-11-30 A | 100% | 2007-11-09 | 2007-11-30 | 16d |  | 전관호; 정용택; 이경수; 이현수 | 896h | 896h | 112 | 112 | 112 | 상세설계 | C02-1 1.3.3 | 프로그램사양서(서버) |
| 124 | 2.2.3.1 | 프로그램사양서(서버)작성 | 16d | 2007-11-09 A | 2007-11-30 A | 100% | 2007-11-09 | 2007-11-30 | 16d | start no earlier than 2007-11-09 | 전관호; 정용택; 이경수 | 384h | 384h | 48 | 48 | 48 | 상세설계 | C02-1 1.3.3 |  |
| 125 | 2.3 | **컨버젼 설계** | 18d | 2007-11-07 A | 2007-11-30 A | 100% | 2007-11-07 | 2007-11-30 | 18d |  |  | 576h | 576h | 72 | 72 | 72 | 컨버전 설계 | C02-1 1.3.5 |  |
| 126 | 2.3.1 | 컨버젼계획 수립 | 7d | 2007-11-07 A | 2007-11-15 A | 100% | 2007-11-07 | 2007-11-15 | 7d | start no earlier than 2007-11-07 | 정용택; 이경수; 이현수; 전관호 | 224h | 224h | 28 | 28 | 28 | 컨버전 설계 | C02-1 1.3.5 | 컨버전계획서 |
| 127 | 2.3.2 | 데이터매핑설계 | 11d | 2007-11-16 A | 2007-11-30 A | 100% | 2007-11-16 | 2007-11-30 | 11d | start no earlier than 2007-11-16 | 정용택; 이경수; 이현수; 전관호 | 352h | 352h | 44 | 44 | 44 | 컨버전 설계 | C02-1 1.3.5 | 매핑정의서 |
| 128 | 2.4 | **설계단계관리활동** | 119d | 2007-07-09 A | 2007-12-31 A | 100% | 2007-07-09 | 2007-12-31 | 119d |  |  | 1424h | 1424h | 178 | 178 | 178 | 단계완료 | C02-1 1.6.8 |  |
| 129 | 2.4.1 | 설계 SPM 검토 및 수정 | 5d | 2007-07-09 A | 2007-07-13 A | 100% | 2007-07-09 | 2007-07-13 | 5d | start no earlier than 2007-07-09 | 전관호; 정용택 | 80h | 80h | 10 | 10 | 10 | 단계완료 | C02-1 1.6.8 |  |
| 130 | 2.4.2 | 분석 감리 조치 | 5d | 2007-07-23 A | 2007-07-27 A | 100% | 2007-07-23 | 2007-07-27 | 5d | start no earlier than 2007-07-23 | 전관호; 정용택 | 80h | 80h | 10 | 10 | 10 | 단계완료 | C02-1 1.6.8 |  |
| 131 | 2.4.3 | 오리엔테이션(2차) 실시 | 5d | 2007-07-23 A | 2007-07-27 A | 100% | 2007-07-23 | 2007-07-27 | 5d | start no earlier than 2007-07-23 | 전관호; 정용택 | 80h | 80h | 10 | 10 | 10 | 단계완료 | C02-1 1.6.8 |  |
| 132 | 2.4.4 | QAO심사(2차) 조치 | 51d | 2007-09-03 A | 2007-11-16 A | 100% | 2007-09-03 | 2007-11-16 | 51d | finish no earlier than 2007-11-16 | 전관호; 정용택 | 816h | 816h | 102 | 102 | 102 | 단계완료 | C02-1 1.6.8 |  |
| 133 | 2.4.5 | Inspection(2차) 실시 및 조치 | 10d | 2007-11-19 A | 2007-11-30 A | 100% | 2007-11-19 | 2007-11-30 | 10d | finish no earlier than 2007-11-30 | 전관호; 정용택 | 160h | 160h | 20 | 20 | 20 | 단계완료 | C02-1 1.6.8 |  |
| 134 | 2.4.6 | 설계 요구사항추적표 매핑 | 5d | 2007-11-26 A | 2007-11-30 A | 100% | 2007-11-26 | 2007-11-30 | 5d | start no earlier than 2007-11-26 | 전관호; 정용택 | 80h | 80h | 10 | 10 | 10 | 단계완료 | C02-1 1.6.8 |  |
| 135 | 2.4.7 | 고객검토(2차) 실시 및 조치 | 8d | 2007-12-03 A | 2007-12-12 A | 100% | 2007-12-03 | 2007-12-12 | 8d | start no earlier than 2007-12-03 | 전관호; 정용택 | 128h | 128h | 16 | 16 | 16 | 단계완료 | C02-1 1.6.8 |  |
| 136 | 2.4.8 | 설계산출물 리뷰및 품질활동 | 10d | 2007-12-17 A | 2007-12-31 A | 100% | 2007-12-17 | 2007-12-31 | 10d | start no earlier than 2007-12-17 |  |  |  |  |  |  | 단계완료 | C02-1 1.6.8 |  |

| ID | WBS | Task | Duration | Start | Finish | Complete | Remaining | Baseline start | Baseline finish | Baseline duration | Total slack | Constraint | Resources | Work | Actual work | Cost | Baseline cost | Actual cost | Text20 | Text26 | Text30 |
| --- | --- | --- | --- | --- | --- | --- | --- | --- | --- | --- | --- | --- | --- | --- | --- | --- | --- | --- | --- | --- | --- |
| 137 | 3 | **개발** | 121d | 2007-12-10 A | 2008-06-05 | 76% | 29.56d | 2007-12-10 | 2008-06-05 | 121d | 201d |  |  | 33488h | 23088h | 4,186 | 4,186 | 2,886.01 | 개발 | C02-1 1.4 |  |
| 138 | 3.1 | **코딩 및 단위테스트 실시** | 95d | 2008-01-10 A | 2008-05-29 | 66% | 32d | 2008-01-10 | 2008-05-29 | 95d | 206d |  |  | 30576h | 20176h | 3,822 | 3,822 | 2,522.01 | 코딩 및 단위테스트 실시 | C02-1 1.4.1 |  |
| 139 | 3.1.1 | 단위테스트체크리스트작성 | 8d | 2008-01-10 A | 2008-01-21 A | 100% |  | 2008-01-10 | 2008-01-21 | 8d |  | start no earlier than 2008-01-10 | 전관호; 정용택; 이경수; 이현수; 정용석; 정명자 | 384h | 384h | 48 | 48 | 48 | 코딩 및 단위테스트 실시 | C02-1 1.4.1 |  |
| 140 | 3.1.2 | 프로그램모델 및 공통프로그램 개발 | 10d | 2008-01-22 A | 2008-02-04 A | 100% |  | 2008-01-22 | 2008-02-04 | 10d |  | start no earlier than 2008-01-22 | 전관호; 정용택; 이경수; 이현수; 정용석; 정명자 | 480h | 480h | 60 | 60 | 60 | 코딩 및 단위테스트 실시 | C02-1 1.4.1 | 소스코드 |
| 141 | 3.1.3 | **프로그램 코딩** | 78d | 2008-02-01 A | 2008-05-28 | 67% | 26.11d | 2008-02-01 | 2008-05-28 | 78d | 207d |  | 전관호; 정용택; 이경수; 이현수; 정용석; 정명자 | 14832h | 9866.15h | 1,854 | 1,854 | 1,233.27 | 코딩 및 단위테스트 실시 | C02-1 1.4.1 | 소스코드 |
| 142 | 3.1.3.1 | 전자금융(AP) | 78d | 2008-02-01 A | 2008-05-28 | 99% | 0.78d | 2008-02-01 | 2008-05-28 | 78d | 207d | start no earlier than 2008-02-01 | 정명자; 이현수; 이경수; 전관호; 정용택; 정용석 | 3744h | 3706.56h | 468 | 468 | 463.32 | 코딩 및 단위테스트 실시 | C02-1 1.4.1 |  |
| 143 | 3.1.3.2 | 계정계 | 78d | 2008-02-01 A | 2008-05-28 | 98% | 1.56d | 2008-02-01 | 2008-05-28 | 78d | 207d | start no earlier than 2008-02-01 | 이현수; 정명자; 이경수; 전관호; 정용택; 정용석 | 3744h | 3669.12h | 468 | 468 | 458.64 | 코딩 및 단위테스트 실시 | C02-1 1.4.1 |  |
| 144 | 3.1.3.3 | 텔레뱅킹 | 75d | 2008-02-11 | 2008-05-28 |  |  | 2008-02-11 | 2008-05-28 | 75d | 207d | start no earlier than 2008-02-11 | 이현수; 정명자; 이경수; 전관호; 정용택; 정용석 | 3600h |  | 450 | 450 |  | 코딩 및 단위테스트 실시 | C02-1 1.4.1 |  |
| 145 | 3.1.4 | **단위테스트 실시** | 79d | 2008-02-01 A | 2008-05-29 | 63% | 28.85d | 2008-02-01 | 2008-05-29 | 79d | 206d |  | 전관호; 정용택; 이경수; 이현수; 정용석; 정명자 | 14880h | 9445.9h | 1,860 | 1,860 | 1,180.74 | 코딩 및 단위테스트 실시 | C02-1 1.4.1 | 단위테스트결과서 |
| 146 | 3.1.4.1 | 전자금융(AP) | 78d | 2008-02-04 A | 2008-05-29 | 94% | 4.68d | 2008-02-04 | 2008-05-29 | 78d | 206d | start no earlier than 2008-02-04 | 정명자; 이현수; 이경수; 전관호; 정용택; 정용석 | 3744h | 3519.36h | 468 | 468 | 439.92 | 코딩 및 단위테스트 실시 | C02-1 1.4.1 |  |
| 147 | 3.1.4.2 | 계정계 | 78d | 2008-02-01 A | 2008-05-28 | 94% | 4.68d | 2008-02-01 | 2008-05-28 | 78d | 207d | start no earlier than 2008-02-01 | 이현수; 정명자; 이경수; 전관호; 정용택; 정용석 | 3744h | 3519.36h | 468 | 468 | 439.92 | 코딩 및 단위테스트 실시 | C02-1 1.4.1 |  |
| 148 | 3.1.4.3 | 텔레뱅킹 | 75d | 2008-02-12 | 2008-05-29 |  |  | 2008-02-12 | 2008-05-29 | 75d | 206d | start no earlier than 2008-02-12 | 이현수; 정명자; 이경수; 전관호; 정용택; 정용석 | 3600h |  | 450 | 450 |  | 코딩 및 단위테스트 실시 | C02-1 1.4.1 |  |
| 149 | 3.2 | **개발단계관리활동** | 121d | 2007-12-10 A | 2008-06-05 A | 100% |  | 2007-12-10 | 2008-06-05 | 121d |  |  |  | 2912h | 2912h | 364 | 364 | 364 | 품질활동수행 | C02-1 1.6.2 |  |
| 150 | 3.2.1 | 개발 SPM 검토 및 수정 | 5d | 2007-12-10 A | 2007-12-14 A | 100% |  | 2007-12-10 | 2007-12-14 | 5d |  | start no earlier than 2007-12-10 | 전관호; 정용택 | 80h | 80h | 10 | 10 | 10 | 품질활동수행 | C02-1 1.6.2 |  |
| 151 | 3.2.2 | 설계 감리 조치 | 5d | 2007-12-17 A | 2007-12-21 A | 100% |  | 2007-12-17 | 2007-12-21 | 5d |  | start no earlier than 2007-12-17 | 전관호; 정용택 | 80h | 80h | 10 | 10 | 10 | 품질활동수행 | C02-1 1.6.2 |  |
| 152 | 3.2.3 | 오리엔테이션(3차) 실시 | 5d | 2007-12-17 A | 2007-12-21 A | 100% |  | 2007-12-17 | 2007-12-21 | 5d |  | start no earlier than 2007-12-17 | 전관호; 정용택 | 80h | 80h | 10 | 10 | 10 | 품질활동수행 | C02-1 1.6.2 |  |
| 153 | 3.2.4 | QAO심사(3차) 조치 | 69d | 2008-02-04 A | 2008-05-16 A | 100% |  | 2008-02-04 | 2008-05-16 | 69d |  | finish no earlier than 2008-05-16 | 전관호; 정용택 | 1104h | 1104h | 138 | 138 | 138 | 품질활동수행 | C02-1 1.6.2 |  |
| 154 | 3.2.5 | Inspection(3차) 실시 및 조치 | 94d | 2008-01-14 A | 2008-05-30 A | 100% |  | 2008-01-14 | 2008-05-30 | 94d |  | start no earlier than 2008-01-14 | 전관호; 정용택 | 1504h | 1504h | 188 | 188 | 188 | 품질활동수행 | C02-1 1.6.2 |  |
| 155 | 3.2.6 | 개발 요구사항추적표 매핑 | 4d | 2008-06-02 A | 2008-06-05 A | 100% |  | 2008-06-02 | 2008-06-05 | 4d |  | start no earlier than 2008-06-02 | 전관호; 정용택 | 64h | 64h | 8 | 8 | 8 | 품질활동수행 | C02-1 1.6.2 |  |
| 156 | 4 | **통합테스트** | 84d | 2008-04-01 A | 2008-08-01 A | 100% |  | 2008-04-01 | 2008-08-01 | 84d |  |  |  | 1856h | 1856h | 232 | 232 | 232 | 개발 | C02-1 1.4 |  |
| 157 | 4.1 | **통합테스트** | 79d | 2008-04-01 A | 2008-07-25 A | 100% |  | 2008-04-01 | 2008-07-25 | 79d |  |  |  | 1152h | 1152h | 144 | 144 | 144 | 테스트 실시 | C02-1 1.4.2 |  |
| 158 | 4.1.1 | 통합테스트계획 수립 | 9d | 2008-04-01 A | 2008-04-11 A | 100% |  | 2008-04-01 | 2008-04-11 | 9d |  | start no earlier than 2008-04-01 | 이경수; 이현수; 정명자 | 216h | 216h | 27 | 27 | 27 | 테스트 실시 | C02-1 1.4.2 | 통합테스트계획서 |
| 159 | 4.1.2 | 통합테스트 시나리오 작성 | 9d | 2008-04-14 A | 2008-04-24 A | 100% |  | 2008-04-14 | 2008-04-24 | 9d |  | start no earlier than 2008-04-14 | 이경수; 이현수; 정명자 | 216h | 216h | 27 | 27 | 27 | 테스트 실시 | C02-1 1.4.2 |  |
| 160 | 4.1.3 | 화면 오퍼레이션 메뉴얼작성 | 10d | 2008-04-25 A | 2008-05-13 A | 100% |  | 2008-04-25 | 2008-05-13 | 10d |  | start no earlier than 2008-04-25 | 이경수; 이현수; 정명자 | 240h | 240h | 30 | 30 | 30 | 테스트 실시 | C02-1 1.4.2 |  |
| 161 | 4.1.4 | 1차통합테스트 | 5d | 2008-06-09 A | 2008-06-13 A | 100% |  | 2008-06-09 | 2008-06-13 | 5d |  | start no earlier than 2008-06-09 | 이경수; 이현수; 정명자 | 120h | 120h | 15 | 15 | 15 | 테스트 실시 | C02-1 1.4.2 |  |
| 162 | 4.1.5 | 2차통합테스트 | 5d | 2008-06-23 A | 2008-06-27 A | 100% |  | 2008-06-23 | 2008-06-27 | 5d |  | start no earlier than 2008-06-23 | 이경수; 이현수; 정명자 | 120h | 120h | 15 | 15 | 15 | 테스트 실시 | C02-1 1.4.2 |  |
| 163 | 4.1.6 | 3차통합테스트 | 5d | 2008-07-07 A | 2008-07-11 A | 100% |  | 2008-07-07 | 2008-07-11 | 5d |  | start no earlier than 2008-07-07 | 이경수; 이현수; 정명자 | 120h | 120h | 15 | 15 | 15 | 테스트 실시 | C02-1 1.4.2 |  |
| 164 | 4.1.7 | 4차통합테스트 | 5d | 2008-07-21 A | 2008-07-25 A | 100% |  | 2008-07-21 | 2008-07-25 | 5d |  | start no earlier than 2008-07-21 | 이경수; 이현수; 정명자 | 120h | 120h | 15 | 15 | 15 | 테스트 실시 | C02-1 1.4.2 |  |

| ID | WBS | Task | Duration | Start | Finish | Complete | Remaining | Baseline start | Baseline finish | Baseline duration | Total slack | Constraint | Resources | Work | Actual work | Cost | Baseline cost | Actual cost | Text20 | Text26 | Text30 |
| --- | --- | --- | --- | --- | --- | --- | --- | --- | --- | --- | --- | --- | --- | --- | --- | --- | --- | --- | --- | --- | --- |
| 165 | 4.2 | **통합테스트단계 관리활동** | 53d | 2008-05-19 A | 2008-08-01 A | 100% |  | 2008-05-19 | 2008-08-01 | 53d |  |  |  | 704h | 704h | 88 | 88 | 88 | 품질활동수행 | C02-1 1.6.2 |  |
| 166 | 4.2.1 | 통합테스트 단계 계획 검토 및 수정 | 5d | 2008-05-19 A | 2008-05-23 A | 100% |  | 2008-05-19 | 2008-05-23 | 5d |  | start no earlier than 2008-05-19 | 전관호; 정용택 | 80h | 80h | 10 | 10 | 10 | 품질활동수행 | C02-1 1.6.2 |  |
| 167 | 4.2.2 | 통합테스트 SPM 검토 및 수정 | 5d | 2008-05-19 A | 2008-05-23 A | 100% |  | 2008-05-19 | 2008-05-23 | 5d |  | start no earlier than 2008-05-19 | 전관호; 정용택 | 80h | 80h | 10 | 10 | 10 | 품질활동수행 | C02-1 1.6.2 |  |
| 168 | 4.2.3 | 오리엔테이션(4차) 실시 | 5d | 2008-05-26 A | 2008-05-30 A | 100% |  | 2008-05-26 | 2008-05-30 | 5d |  | start no earlier than 2008-05-26 | 전관호; 정용택 | 80h | 80h | 10 | 10 | 10 | 품질활동수행 | C02-1 1.6.2 |  |
| 169 | 4.2.4 | QAO심사(4차) 조치 | 10d | 2008-06-16 A | 2008-06-27 A | 100% |  | 2008-06-16 | 2008-06-27 | 10d |  | start no earlier than 2008-06-16 | 전관호; 정용택 | 160h | 160h | 20 | 20 | 20 | 품질활동수행 | C02-1 1.6.2 |  |
| 170 | 4.2.5 | Inspection(4차) 실시 및 조치 | 14d | 2008-07-07 A | 2008-07-25 A | 100% |  | 2008-07-07 | 2008-07-25 | 14d |  | start no earlier than 2008-07-07 | 전관호; 정용택 | 224h | 224h | 28 | 28 | 28 | 품질활동수행 | C02-1 1.6.2 |  |
| 171 | 4.2.6 | 통합테스트 요구사항추적표 매핑(실적규모측정 포함) | 5d | 2008-07-28 A | 2008-08-01 A | 100% |  | 2008-07-28 | 2008-08-01 | 5d |  | start no earlier than 2008-07-28 | 전관호; 정용택 | 80h | 80h | 10 | 10 | 10 | 품질활동수행 | C02-1 1.6.2 |  |
| 172 | 5 | **영업점테스트** | 141d | 2008-07-07 A | 2009-01-27 | 54% | 65.36d | 2008-07-07 | 2009-01-27 | 141d | 40d |  |  | 6760h | 3704h | 845 | 845 | 463 | 개발 | C02-1 1.4 |  |
| 173 | 5.1 | **시스템사용교육** | 116d | 2008-07-07 A | 2008-12-19 | 52% | 55.24d | 2008-07-07 | 2008-12-19 | 116d | 65d |  |  | 1352h | 680h | 169 | 169 | 85 | 시스템 사용교육 | C02-1 1.5.3 |  |
| 174 | 5.1.1 | 교육계획수립 | 5d | 2008-07-07 A | 2008-07-11 A | 100% |  | 2008-07-07 | 2008-07-11 | 5d |  | start no earlier than 2008-07-07 | 이경수; 이현수; 정명자 | 120h | 120h | 15 | 15 | 15 | 시스템 사용교육 | C02-1 1.5.3 | 교육계획서 |
| 175 | 5.1.2 | 사용자매뉴얼작성 | 19d | 2008-07-28 A | 2008-08-22 A | 100% |  | 2008-07-28 | 2008-08-22 | 19d |  | start no earlier than 2008-07-28 | 이경수; 이현수; 정명자 | 344h | 344h | 43 | 43 | 43 | 시스템 사용교육 | C02-1 1.5.3 | 사용자매뉴얼 |
| 176 | 5.1.3 | 운영매뉴얼작성 | 15d | 2008-11-10 | 2008-11-28 |  |  | 2008-11-10 | 2008-11-28 | 15d | 80d | start no earlier than 2008-11-10 | 이경수; 이현수; 정명자 | 312h |  | 39 | 39 |  | 시스템 사용교육 | C02-1 1.5.3 | 운영자매뉴얼 |
| 177 | 5.1.4 | 사용자교육실시 | 9d | 2008-09-18 A | 2008-09-30 A | 100% |  | 2008-09-18 | 2008-09-30 | 9d |  | start no earlier than 2008-09-18 | 이경수; 이현수; 정명자 | 216h | 216h | 27 | 27 | 27 | 시스템 사용교육 | C02-1 1.5.3 | 교육결과서 |
| 178 | 5.1.5 | 운영자교육실시 | 15d | 2008-12-01 | 2008-12-19 |  |  | 2008-12-01 | 2008-12-19 | 15d | 65d | start no earlier than 2008-12-01 | 이경수; 이현수; 정명자 | 360h |  | 45 | 45 |  | 시스템 사용교육 | C02-1 1.5.3 | 교육결과서 |
| 179 | 5.2 | **영업점테스트** | 107d | 2008-07-21 A | 2008-12-19 | 88% | 12.84d | 2008-07-21 | 2008-12-19 | 107d | 65d |  |  | 2304h | 2016h | 288 | 288 | 252 | 테스트 실시 | C02-1 1.4.2 |  |
| 180 | 5.2.1 | 영업점테스트계획 수립 | 9d | 2008-07-21 A | 2008-07-31 A | 100% |  | 2008-07-21 | 2008-07-31 | 9d |  | start no earlier than 2008-07-21 | 이경수; 이현수; 정명자 | 168h | 168h | 21 | 21 | 21 | 테스트 실시 | C02-1 1.4.2 | 영업점테스트계획서 |
| 181 | 5.2.2 | 영업점테스트 시나리오 작성 | 9d | 2008-07-21 A | 2008-07-31 A | 100% |  | 2008-07-21 | 2008-07-31 | 9d |  | start no earlier than 2008-07-21 | 이경수; 이현수; 정명자 | 168h | 168h | 21 | 21 | 21 | 테스트 실시 | C02-1 1.4.2 |  |
| 182 | 5.2.3 | 1차 시범점테스트 실시 및 보완 | 14d | 2008-08-11 A | 2008-08-29 A | 100% |  | 2008-08-11 | 2008-08-29 | 14d |  | start no earlier than 2008-08-09 | 이경수; 이현수; 정명자 | 336h | 336h | 42 | 42 | 42 | 테스트 실시 | C02-1 1.4.2 |  |
| 183 | 5.2.4 | 2차 시범점테스트 실시 및 보완 | 14d | 2008-09-01 A | 2008-09-19 A | 100% |  | 2008-09-01 | 2008-09-19 | 14d |  | start no earlier than 2008-08-31 | 이경수; 이현수; 정명자 | 336h | 336h | 42 | 42 | 42 | 테스트 실시 | C02-1 1.4.2 |  |
| 184 | 5.2.5 | 1차 영업점테스트 실시 및 보완 | 14d | 2008-09-22 A | 2008-10-10 A | 100% |  | 2008-09-22 | 2008-10-10 | 14d |  | start no earlier than 2008-09-22 | 이경수; 이현수; 정명자 | 336h | 336h | 42 | 42 | 42 | 테스트 실시 | C02-1 1.4.2 |  |
| 185 | 5.2.6 | 2차 영업점테스트 실시 및 보완 | 14d | 2008-10-13 A | 2008-10-30 A | 100% |  | 2008-10-13 | 2008-10-30 | 14d |  | start no earlier than 2008-10-13 | 이경수; 이현수; 정명자 | 336h | 336h | 42 | 42 | 42 | 테스트 실시 | C02-1 1.4.2 |  |
| 186 | 5.2.7 | 3차 영업점테스트 실시 및 보완 | 6d | 2008-11-03 A | 2008-11-10 A | 100% |  | 2008-11-03 | 2008-11-10 | 6d |  | start no earlier than 2008-11-03 | 이경수; 이현수; 정명자 | 144h | 144h | 18 | 18 | 18 | 테스트 실시 | C02-1 1.4.2 |  |
| 187 | 5.2.8 | 4차 영업점테스트 실시 및 보완 | 10d | 2008-11-17 A | 2008-11-28 | 80% | 2d | 2008-11-17 | 2008-11-28 | 10d | 80d | start no earlier than 2008-11-17 | 이경수; 이현수; 정명자 | 240h | 192h | 30 | 30 | 24 | 테스트 실시 | C02-1 1.4.2 |  |
| 188 | 5.2.9 | 5차 영업점테스트 실시 및 보완 | 10d | 2008-12-08 | 2008-12-19 |  |  | 2008-12-08 | 2008-12-19 | 10d | 65d | start no earlier than 2008-12-08 | 이경수; 이현수; 정명자 | 240h |  | 30 | 30 |  | 테스트 실시 | C02-1 1.4.2 |  |

| ID | WBS | Task | Duration | Start | Finish | Complete | Remaining | Baseline start | Baseline finish | Baseline duration | Total slack | Constraint | Resources | Work | Actual work | Cost | Baseline cost | Actual cost | Text20 | Text26 | Text30 |
| --- | --- | --- | --- | --- | --- | --- | --- | --- | --- | --- | --- | --- | --- | --- | --- | --- | --- | --- | --- | --- | --- |
| 189 | 5.3 | **인수테스트실시** | 13d | 2008-12-22 | 2009-01-09 |  |  | 2008-12-22 | 2009-01-09 | 13d | 52d |  |  | 312h |  | 39 | 39 |  | 테스트 실시 | C02-1 1.4.2 |  |
| 190 | 5.3.1 | 인수테스트실시 | 13d | 2008-12-22 | 2009-01-09 |  |  | 2008-12-22 | 2009-01-09 | 13d | 52d | start no earlier than 2008-12-22 | 이경수; 이현수; 정명자 | 312h |  | 39 | 39 |  | 테스트 실시 | C02-1 1.4.2 | 인수테스트기준서(결과),결함보고서(인수) |
| 191 | 5.4 | **이행** | 17d | 2009-01-05 | 2009-01-27 |  |  | 2009-01-05 | 2009-01-27 | 17d | 40d |  |  | 360h |  | 45 | 45 |  | 컨버전 및 릴리이즈 | C02-1 1.5.2 |  |
| 192 | 5.4.1 | 이행계획 수립 | 5d | 2009-01-05 | 2009-01-09 |  |  | 2009-01-05 | 2009-01-09 | 5d | 52d | start no earlier than 2009-01-05 | 이경수; 이현수; 정명자 | 120h |  | 15 | 15 |  | 컨버전 및 릴리이즈 | C02-1 1.5.2 | 이행계획서 |
| 193 | 5.4.2 | 이행시나리오작성 | 5d | 2009-01-12 | 2009-01-16 |  |  | 2009-01-12 | 2009-01-16 | 5d | 47d | start no earlier than 2009-01-12 | 이경수; 이현수; 정명자 | 120h |  | 15 | 15 |  | 컨버전 및 릴리이즈 | C02-1 1.5.2 | 이행시나리오 |
| 194 | 5.4.3 | 이행실시 | 5d | 2009-01-21 | 2009-01-27 |  |  | 2009-01-21 | 2009-01-27 | 5d | 40d | start no earlier than 2009-01-21 | 이경수; 이현수; 정명자 | 120h |  | 15 | 15 |  | 컨버전 및 릴리이즈 | C02-1 1.5.2 |  |
| 195 | 5.5 | **영업점테스트단계 관리활동** | 139d | 2008-07-07 A | 2009-01-23 | 41% | 81.39d | 2008-07-07 | 2009-01-23 | 139d | 42d |  |  | 2432h | 1008h | 304 | 304 | 126 | 품질활동수행 | C02-1 1.6.2 |  |
| 196 | 5.5.1 | 영업점테스트 단계 계획 검토 및 수정 | 5d | 2008-07-07 A | 2008-07-11 A | 100% |  | 2008-07-07 | 2008-07-11 | 5d |  | start no earlier than 2008-07-07 | 전관호; 정용택 | 80h | 80h | 10 | 10 | 10 | 품질활동수행 | C02-1 1.6.2 |  |
| 197 | 5.5.2 | 영업점테스트 SPM 검토 및 수정 | 4d | 2008-07-14 A | 2008-07-18 A | 100% |  | 2008-07-14 | 2008-07-18 | 4d |  | start no earlier than 2008-07-14 | 전관호; 정용택 | 64h | 64h | 8 | 8 | 8 | 품질활동수행 | C02-1 1.6.2 |  |
| 198 | 5.5.3 | 오리엔테이션(5차) 실시 | 6d | 2008-08-01 A | 2008-08-08 A | 100% |  | 2008-08-01 | 2008-08-08 | 6d |  | start no earlier than 2008-08-01 | 전관호; 정용택 | 96h | 96h | 12 | 12 | 12 | 품질활동수행 | C02-1 1.6.2 |  |
| 199 | 5.5.4 | QAO심사(5차) 조치 | 48d | 2008-09-08 A | 2008-11-14 A | 100% |  | 2008-09-08 | 2008-11-14 | 48d |  | start no earlier than 2008-09-08 | 전관호; 정용택 | 768h | 768h | 96 | 96 | 96 | 품질활동수행 | C02-1 1.6.2 |  |
| 200 | 5.5.5 | Inspection(5차) 실시 및 조치 | 10d | 2008-12-01 | 2008-12-12 |  |  | 2008-12-01 | 2008-12-12 | 10d | 70d | start no earlier than 2008-12-01 | 전관호; 정용택 | 160h |  | 20 | 20 |  | 품질활동수행 | C02-1 1.6.2 |  |
| 201 | 5.5.6 | 예비제품검사 조치 | 28d | 2008-12-15 | 2009-01-23 |  |  | 2008-12-15 | 2009-01-23 | 28d | 42d | start no earlier than 2008-12-15 | 전관호; 정용택 | 448h |  | 56 | 56 |  | 품질활동수행 | C02-1 1.6.2 |  |
| 202 | 5.5.7 | 제품검사 조치 | 28d | 2008-12-15 | 2009-01-23 |  |  | 2008-12-15 | 2009-01-23 | 28d | 42d | start no earlier than 2008-12-15 | 전관호; 정용택 | 448h |  | 56 | 56 |  | 품질활동수행 | C02-1 1.6.2 |  |
| 203 | 5.5.8 | 최종 요구사항추적표 매핑 | 10d | 2009-01-05 | 2009-01-16 |  |  | 2009-01-05 | 2009-01-16 | 10d | 47d | start no earlier than 2009-01-05 | 전관호; 정용택 | 160h |  | 20 | 20 |  | 품질활동수행 | C02-1 1.6.2 |  |
| 204 | 5.5.9 | 고객검토(3차) 실시 및 조치 | 8d | 2008-12-22 | 2009-01-02 |  |  | 2008-12-22 | 2009-01-02 | 8d | 57d | start no earlier than 2008-12-22 | 전관호; 정용택 | 128h |  | 16 | 16 |  | 품질활동수행 | C02-1 1.6.2 |  |
| 205 | 5.5.10 | 과업대비표 매핑 | 5d | 2009-01-19 | 2009-01-23 |  |  | 2009-01-19 | 2009-01-23 | 5d | 42d | start no earlier than 2009-01-19 | 전관호; 정용택 | 80h |  | 10 | 10 |  | 품질활동수행 | C02-1 1.6.2 |  |
| 206 | 6 | **시스템안정화** | 40d | 2009-01-28 | 2009-03-24 |  |  | 2009-01-28 | 2009-03-24 | 40d | 0d |  |  | 640h |  | 80 | 80 |  | 구현 | C02-1 1.5 |  |
| 207 | 6.1 | **시스템운영** | 40d | 2009-01-28 | 2009-03-24 |  |  | 2009-01-28 | 2009-03-24 | 40d | 0d |  |  | 640h |  | 80 | 80 |  | 시범운영 | C02-1 1.5.4 |  |
| 208 | 6.1.1 | 시스템운영실시 | 40d | 2009-01-28 | 2009-03-24 |  |  | 2009-01-28 | 2009-03-24 | 40d | 0d | start no earlier than 2009-01-28 | 이현수; 정명자 | 640h |  | 80 | 80 |  | 시범운영 | C02-1 1.5.4 |  |
