# 경영정보

Schedule from MS Project, 2007-04-25 to 2009-03-24, costs in ₩, A marks actual dates.
HSIC-0600001
�궪�꽦SDS

## Calendars

- 농협신용신시스템: Mon-Fri 08:00-12:00, 13:00-17:00; Sat-Sun off. Exceptions (off unless hours are given): 2007-05-24 08:00-12:00, 13:00-17:00, 2007-06-06, 2007-07-17, 2007-08-15, 2007-09-24 to 2007-09-26, 2007-10-03, 2007-12-25, 2008-01-01, 2008-02-06 to 2008-02-08, 2008-05-01, 2008-05-05, 2008-05-12, 2008-06-01 08:00-12:00, 13:00-17:00, 2008-06-06, 2008-07-17, 2008-08-10 08:00-12:00, 13:00-17:00, 2008-08-15 to 2008-08-16, 2008-09-15, 2008-10-03, 2008-10-12 08:00-12:00, 13:00-17:00, 2008-10-25 08:00-12:00, 13:00-17:00, 2008-11-02 08:00-12:00, 13:00-17:00, 2008-11-16 08:00-12:00, 13:00-17:00, 2008-11-22, 2008-12-07 08:00-12:00, 13:00-17:00, 2008-12-20, 2008-12-21 08:00-12:00, 13:00-17:00, 2008-12-25, 2009-01-01, 2009-01-17.

## Resources

| Resource | Rate |
| --- | --- |
| 김용승 | 0.12 |
| 이종훈 | 0.12 |
| 최경숙 | 0.12 |
| 김성수 | 0.12 |
| 최윤식 | 0.12 |
| 조희재 | 0.12 |
| 박승규 | 0.12 |
| 이성구 | 0.12 |
| 김규형 |  |

## Schedule

| ID | WBS | Task | Duration | Start | Finish | Predecessors | Complete | Remaining | Baseline start | Baseline finish | Baseline duration | Total slack | Constraint | Resources | Work | Actual work | Cost | Baseline cost | Actual cost | Text20 | Text26 | Text1 | Text30 |
| --- | --- | --- | --- | --- | --- | --- | --- | --- | --- | --- | --- | --- | --- | --- | --- | --- | --- | --- | --- | --- | --- | --- | --- |
| 1 | 1 | **시스템 연계(사무량)** | 486d | 2007-04-25 A | 2009-03-24 |  | 84% | 77.13d | 2007-04-25 | 2009-03-24 | 486d | 0d |  |  | 1384h | 1384h | 173 | 173 | 173 |  |  |  |  |
| 2 | 1.1 | **분석** | 64d | 2007-04-25 A | 2007-07-25 A |  | 100% |  | 2007-04-25 | 2007-07-25 | 64d |  |  |  | 1384h | 1384h | 173 | 173 | 173 |  |  |  |  |
| 3 | 1.1.1 | **현황 평가** | 30d | 2007-04-25 A | 2007-06-05 A |  | 100% |  | 2007-04-25 | 2007-06-05 | 30d |  |  |  | 548h | 548h | 68.5 | 68.5 | 68.5 | 현황 평가 | C02-1 1.2.1 |  |  |
| 4 | 1.1.1.1 | **단계착수** | 1d | 2007-04-25 A | 2007-04-25 A |  | 100% |  | 2007-04-25 | 2007-04-25 | 1d |  |  |  | 4h | 4h | 0.5 | 0.5 | 0.5 | 현황 평가 | C02-1 1.2.1 |  |  |
| 5 | 1.1.1.1.1 | 프로젝트계획검토 | 1d | 2007-04-25 A | 2007-04-25 A |  | 100% |  | 2007-04-25 | 2007-04-25 | 1d |  | start no earlier than 2007-04-25 | 김용승 [25%] | 2h | 2h | 0.25 | 0.25 | 0.25 | 현황 평가 | C02-1 1.2.1 |  |  |
| 6 | 1.1.1.1.2 | SPM검토 및 보완 | 1d | 2007-04-25 A | 2007-04-25 A | 5SS | 100% |  | 2007-04-25 | 2007-04-25 | 1d |  |  | 김용승 [25%] | 2h | 2h | 0.25 | 0.25 | 0.25 | 현황 평가 | C02-1 1.2.1 |  |  |
| 7 | 1.1.1.2 | **현행업무 분석** | 5d | 2007-04-26 A | 2007-05-02 A |  | 100% |  | 2007-04-26 | 2007-05-02 | 5d |  |  |  | 40h | 40h | 5 | 5 | 5 | 현황 평가 | C02-1 1.2.1 | 현행업무흐름도 | 현행업무 분장표 |
| 8 | 1.1.1.2.1 | ODW 사무량 분석(Source,Target)자료 수집 | 1d | 2007-04-26 A | 2007-04-26 A | 6 | 100% |  | 2007-04-26 | 2007-04-26 | 1d |  |  | 김용승 [50%] | 4h | 4h | 0.5 | 0.5 | 0.5 | 현황 평가 | C02-1 1.2.1 |  |  |
| 9 | 1.1.1.2.2 | 신 표준통합 로그 자료 수집 | 1d | 2007-04-26 A | 2007-04-26 A | 8SS | 100% |  | 2007-04-26 | 2007-04-26 | 1d |  |  | 김용승 [50%] | 4h | 4h | 0.5 | 0.5 | 0.5 | 현황 평가 | C02-1 1.2.1 |  |  |
| 10 | 1.1.1.2.3 | ODS 속보성 대상 자료 수집 | 1d | 2007-04-27 A | 2007-04-27 A | 9 | 100% |  | 2007-04-27 | 2007-04-27 | 1d |  |  | 김용승 | 8h | 8h | 1 | 1 | 1 | 현황 평가 | C02-1 1.2.1 |  |  |
| 11 | 1.1.1.2.4 | ODW 공통사후관리 자료 수집 | 1d | 2007-04-30 A | 2007-04-30 A | 10 | 100% |  | 2007-04-30 | 2007-04-30 | 1d |  |  | 김용승 | 8h | 8h | 1 | 1 | 1 | 현황 평가 | C02-1 1.2.1 |  |  |
| 12 | 1.1.1.2.5 | 업무설명회 (ERD 설명 포함) | 1d | 2007-05-01 A | 2007-05-01 A | 11 | 100% |  | 2007-05-01 | 2007-05-01 | 1d |  |  | 김용승 | 8h | 8h | 1 | 1 | 1 | 현황 평가 | C02-1 1.2.1 |  |  |
| 13 | 1.1.1.2.6 | 현행 업무 프로세스 분석 | 1d | 2007-05-02 A | 2007-05-02 A | 12 | 100% |  | 2007-05-02 | 2007-05-02 | 1d |  |  | 김용승 | 8h | 8h | 1 | 1 | 1 | 현황 평가 | C02-1 1.2.1 |  |  |
| 14 | 1.1.1.3 | **현행시스템 분석** | 24d | 2007-05-03 A | 2007-06-05 A |  | 100% |  | 2007-05-03 | 2007-06-05 | 24d |  |  |  | 392h | 392h | 49 | 49 | 49 | 현황 평가 | C02-1 1.2.1 |  | 현행 데이터 흐름도 |
| 15 | 1.1.1.3.1 | ODS_사무량 log,Seg 상관도 분석 | 3d | 2007-05-03 A | 2007-05-07 A | 13 | 100% |  | 2007-05-03 | 2007-05-07 | 3d |  |  | 김용승 | 24h | 24h | 3 | 3 | 3 | 현황 평가 | C02-1 1.2.1 |  |  |
| 16 | 1.1.1.3.2 | 기존로그대비 신 표준통합로그 Gap분석 | 4d | 2007-05-08 A | 2007-05-11 A | 15 | 100% |  | 2007-05-08 | 2007-05-11 | 4d |  |  | 이종훈; 김용승 | 64h | 64h | 8 | 8 | 8 | 현황 평가 | C02-1 1.2.1 |  |  |
| 17 | 1.1.1.3.3 | EDW_사무량 프로세스 분석 | 1d | 2007-05-14 A | 2007-05-14 A | 16 | 100% |  | 2007-05-14 | 2007-05-14 | 1d |  |  | 이종훈; 김용승 | 16h | 16h | 2 | 2 | 2 | 현황 평가 | C02-1 1.2.1 |  |  |
| 18 | 1.1.1.3.4 | 속보성 대상 분석 | 1d | 2007-05-15 A | 2007-05-15 A | 17 | 100% |  | 2007-05-15 | 2007-05-15 | 1d |  |  | 이종훈; 김용승 | 16h | 16h | 2 | 2 | 2 | 현황 평가 | C02-1 1.2.1 |  |  |
| 19 | 1.1.1.3.5 | 공통사후관리 업무대상 분석 | 1d | 2007-05-16 A | 2007-05-16 A | 18 | 100% |  | 2007-05-16 | 2007-05-16 | 1d |  |  | 이종훈; 김용승 | 16h | 16h | 2 | 2 | 2 | 현황 평가 | C02-1 1.2.1 |  |  |
| 20 | 1.1.1.3.6 | ODW 사무량시스템 내역서 분석 | 1d | 2007-05-17 A | 2007-05-17 A | 19 | 100% |  | 2007-05-17 | 2007-05-17 | 1d |  |  | 이종훈; 김용승 | 16h | 16h | 2 | 2 | 2 | 현황 평가 | C02-1 1.2.1 |  |  |
| 21 | 1.1.1.3.7 | ODW 사무량시스템 구성도 분석 | 1d | 2007-05-18 A | 2007-05-18 A | 20 | 100% |  | 2007-05-18 | 2007-05-18 | 1d |  |  | 이종훈; 김용승 | 16h | 16h | 2 | 2 | 2 | 현황 평가 | C02-1 1.2.1 |  |  |
| 22 | 1.1.1.3.8 | ODW 사무량시스템 ERD 분석 | 1d | 2007-05-21 A | 2007-05-21 A | 21 | 100% |  | 2007-05-21 | 2007-05-21 | 1d |  |  | 이종훈; 김용승 | 16h | 16h | 2 | 2 | 2 | 현황 평가 | C02-1 1.2.1 |  |  |
| 23 | 1.1.1.3.9 | ODW 사무량 데이터 I/F Flow 분석 | 1d | 2007-05-22 A | 2007-05-22 A | 22 | 100% |  | 2007-05-22 | 2007-05-22 | 1d |  |  | 이종훈; 김용승 | 16h | 16h | 2 | 2 | 2 | 현황 평가 | C02-1 1.2.1 |  |  |
| 24 | 1.1.1.3.10 | ODW 사무량업무 Meta 표준화기준 분석 | 10d | 2007-05-23 A | 2007-06-05 A | 23 | 100% |  | 2007-05-23 | 2007-06-05 | 10d |  |  | 이종훈; 김용승 | 160h | 160h | 20 | 20 | 20 | 현황 평가 | C02-1 1.2.1 |  |  |
| 25 | 1.1.1.3.11 | As-Is 대비 Meta 정보 변경 내용에 대한 영향도 분석 | 2d | 2007-05-24 A | 2007-05-25 A | 24 | 100% |  | 2007-05-24 | 2007-05-25 | 2d |  |  | 이종훈; 김용승 | 32h | 32h | 4 | 4 | 4 | 현황 평가 | C02-1 1.2.1 |  |  |

| ID | WBS | Task | Type | Duration | Start | Finish | Predecessors | Complete | Baseline start | Baseline finish | Baseline duration | Constraint | Resources | Work | Actual work | Cost | Baseline cost | Actual cost | Text20 | Text26 | Text30 | Text1 |
| --- | --- | --- | --- | --- | --- | --- | --- | --- | --- | --- | --- | --- | --- | --- | --- | --- | --- | --- | --- | --- | --- | --- |
| 26 | 1.1.1.4 | **인터뷰 실시** |  | 6d | 2007-05-18 A | 2007-05-25 A |  | 100% | 2007-05-18 | 2007-05-25 | 6d |  |  | 112h | 112h | 14 | 14 | 14 | 현황 평가 | C02-1 1.2.1 | 인터뷰 결과 |  |
| 27 | 1.1.1.4.1 | **인터뷰 계획 수립** |  | 1d | 2007-05-18 A | 2007-05-18 A |  | 100% | 2007-05-18 | 2007-05-18 | 1d |  |  | 16h | 16h | 2 | 2 | 2 | 현황 평가 | C02-1 1.2.1 |  |  |
| 28 | 1.1.1.4.1.1 | 인터뷰 담당자 선정 및 일정 수립 |  | 0.5d | 2007-05-18 A | 2007-05-18 A |  | 100% | 2007-05-18 | 2007-05-18 | 0.5d | must start on 2007-05-18 | 이종훈; 김용승 | 8h | 8h | 1 | 1 | 1 | 현황 평가 | C02-1 1.2.1 |  |  |
| 29 | 1.1.1.4.1.2 | **인터뷰 설문지 작성** |  | 0.5d | 2007-05-18 A | 2007-05-18 A |  | 100% | 2007-05-18 | 2007-05-18 | 0.5d |  |  | 8h | 8h | 1 | 1 | 1 | 현황 평가 | C02-1 1.2.1 |  |  |
| 30 | 1.1.1.4.1.2.1 | 사무량,속보,사후관리_인터뷰 설문지 작성 및 배포 |  | 0.5d | 2007-05-18 A | 2007-05-18 A | 28 | 100% | 2007-05-18 | 2007-05-18 | 0.5d |  | 이종훈; 김용승 | 8h | 8h | 1 | 1 | 1 | 현황 평가 | C02-1 1.2.1 |  |  |
| 31 | 1.1.1.4.2 | **인터뷰 실시** |  | 5d | 2007-05-21 A | 2007-05-25 A |  | 100% | 2007-05-21 | 2007-05-25 | 5d |  |  | 96h | 96h | 12 | 12 | 12 | 현황 평가 | C02-1 1.2.1 |  |  |
| 32 | 1.1.1.4.2.1 | **인터뷰 실시** |  | 4d | 2007-05-21 A | 2007-05-24 A |  | 100% | 2007-05-21 | 2007-05-24 | 4d |  |  | 80h | 80h | 10 | 10 | 10 | 현황 평가 | C02-1 1.2.1 |  |  |
| 33 | 1.1.1.4.2.1.1 | 사무량_인터뷰 실시 |  | 2d | 2007-05-21 A | 2007-05-22 A | 30 | 100% | 2007-05-21 | 2007-05-22 | 2d |  | 이종훈; 김용승 [50%] | 24h | 24h | 3 | 3 | 3 | 현황 평가 | C02-1 1.2.1 |  |  |
| 34 | 1.1.1.4.2.1.2 | 속보성_인터뷰 실시 |  | 2d | 2007-05-21 A | 2007-05-22 A | 30 | 100% | 2007-05-21 | 2007-05-22 | 2d |  | 이종훈; 김용승 [50%] | 24h | 24h | 3 | 3 | 3 | 현황 평가 | C02-1 1.2.1 |  |  |
| 35 | 1.1.1.4.2.1.3 | 공통사후관리_인터뷰 실시 |  | 2d | 2007-05-23 A | 2007-05-24 A | 34 | 100% | 2007-05-23 | 2007-05-24 | 2d |  | 이종훈; 김용승 | 32h | 32h | 4 | 4 | 4 | 현황 평가 | C02-1 1.2.1 |  |  |
| 36 | 1.1.1.4.2.2 | **인터뷰 결과 정리** |  | 1d | 2007-05-25 A | 2007-05-25 A |  | 100% | 2007-05-25 | 2007-05-25 | 1d |  |  | 16h | 16h | 2 | 2 | 2 | 현황 평가 | C02-1 1.2.1 |  |  |
| 37 | 1.1.1.4.2.2.1 | 사무량,속보,사후관리_인터뷰 결과 분석 및 요건 도출 |  | 1d | 2007-05-25 A | 2007-05-25 A | 35 | 100% | 2007-05-25 | 2007-05-25 | 1d |  | 이종훈; 김용승 | 16h | 16h | 2 | 2 | 2 | 현황 평가 | C02-1 1.2.1 |  |  |
| 38 | 1.1.2 | **요구사항 정의** |  | 12d | 2007-05-28 A | 2007-06-13 A |  | 100% | 2007-05-28 | 2007-06-13 | 12d |  |  | 260h | 260h | 32.5 | 32.5 | 32.5 | 요구사항 정의 | C02-1 1.2.2 | 현업요구사항정의서 | 현업요구사항정의서 |
| 39 | 1.1.2.1 | **기능요구사항 정의** |  | 6d | 2007-05-28 A | 2007-06-04 A |  | 100% | 2007-05-28 | 2007-06-04 | 6d |  |  | 96h | 96h | 12 | 12 | 12 | 요구사항 정의 | C02-1 1.2.2 |  |  |
| 40 | 1.1.2.1.1 | 내부 요구사항 검토 및 확인 |  | 1d | 2007-05-28 A | 2007-05-28 A |  | 100% | 2007-05-28 | 2007-05-28 | 1d | must start on 2007-05-28 | 이종훈; 김용승 | 16h | 16h | 2 | 2 | 2 | 요구사항 정의 | C02-1 1.2.2 |  |  |
| 41 | 1.1.2.1.2 | ODS/EDW 사무량 기능 요건 정의 |  | 3d | 2007-05-29 A | 2007-05-31 A | 40 | 100% | 2007-05-29 | 2007-05-31 | 3d |  | 이종훈; 김용승 | 48h | 48h | 6 | 6 | 6 | 요구사항 정의 | C02-1 1.2.2 |  |  |
| 42 | 1.1.2.1.3 | 속보성 요구 기능 정의 |  | 1d | 2007-06-01 A | 2007-06-01 A | 41 | 100% | 2007-06-01 | 2007-06-01 | 1d |  | 이종훈; 김용승 | 16h | 16h | 2 | 2 | 2 | 요구사항 정의 | C02-1 1.2.2 |  |  |
| 43 | 1.1.2.1.4 | 공통 사후관리 업무 요구기능 정의 |  | 1d | 2007-06-04 A | 2007-06-04 A | 42 | 100% | 2007-06-04 | 2007-06-04 | 1d |  | 이종훈; 김용승 | 16h | 16h | 2 | 2 | 2 | 요구사항 정의 | C02-1 1.2.2 |  |  |
| 44 | 1.1.2.2 | **인터페이스요구사항 정의** |  | 6d | 2007-06-05 A | 2007-06-13 A |  | 100% | 2007-06-05 | 2007-06-13 | 6d |  |  | 124h | 124h | 15.5 | 15.5 | 15.5 | 요구사항 정의 | C02-1 1.2.2 |  |  |
| 45 | 1.1.2.2.1 | I/F대상 소스(표준 통합로그 (거래,조회,오류 포함),DWLOG) 정의 |  | 3d | 2007-06-05 A | 2007-06-08 A | 43 | 100% | 2007-06-05 | 2007-06-08 | 3d |  | 이종훈; 김용승 | 48h | 48h | 6 | 6 | 6 | 요구사항 정의 | C02-1 1.2.2 |  |  |
| 46 | 1.1.2.2.2 | ODS/EDW간 데이터 연계 방식 정의(DLB부문 포함) |  | 3d | 2007-06-11 A | 2007-06-13 A | 45 | 100% | 2007-06-11 | 2007-06-13 | 3d |  | 이종훈; 김용승 [50%] | 36h | 36h | 4.5 | 4.5 | 4.5 | 요구사항 정의 | C02-1 1.2.2 |  |  |
| 47 | 1.1.2.2.3 | 인터페이스 주기 정의 |  | 1d | 2007-06-11 A | 2007-06-11 A | 45 | 100% | 2007-06-11 | 2007-06-11 | 1d |  | 이종훈; 김용승 [50%] | 12h | 12h | 1.5 | 1.5 | 1.5 | 요구사항 정의 | C02-1 1.2.2 |  |  |
| 48 | 1.1.2.2.4 | 신 표준통합로그 조립방식,생성위치 및 보완사항 정의 |  | 2d | 2007-06-12 A | 2007-06-13 A | 47 | 100% | 2007-06-12 | 2007-06-13 | 2d |  | 이종훈; 김용승 | 28h | 28h | 3.5 | 3.5 | 3.5 | 요구사항 정의 | C02-1 1.2.2 |  |  |
| 49 | 1.1.2.3 | **시스템화범위 결정** |  | 3d | 2007-06-11 A | 2007-06-13 A |  | 100% | 2007-06-11 | 2007-06-13 | 3d |  |  | 40h | 40h | 5 | 5 | 5 | 요구사항 정의 | C02-1 1.2.2 |  |  |
| 50 | 1.1.2.3.1 | 기존대비 업무별 인터페이스 개선 대상 소스 정의 | milestone | 0d | 2007-06-13 A | 2007-06-13 A | 48 | 100% | 2007-06-13 | 2007-06-13 | 0d |  | 이종훈; 김용승 |  |  |  |  |  | 요구사항 정의 | C02-1 1.2.2 |  |  |
| 51 | 1.1.2.3.2 | 속보성 지원 대상 데이터 정의 |  | 1d | 2007-06-11 A | 2007-06-11 A | 50 | 100% | 2007-06-11 | 2007-06-11 | 1d |  | 이종훈; 김용승 | 16h | 16h | 2 | 2 | 2 | 요구사항 정의 | C02-1 1.2.2 |  |  |
| 52 | 1.1.2.3.3 | 공통 사후관리 대상 데이터 정의 |  | 2d | 2007-06-11 A | 2007-06-12 A | 51 | 100% | 2007-06-11 | 2007-06-12 | 2d |  | 이종훈; 김용승 [50%] | 24h | 24h | 3 | 3 | 3 | 요구사항 정의 | C02-1 1.2.2 |  |  |

| ID | WBS | Task | Duration | Start | Finish | Predecessors | Complete | Baseline start | Baseline finish | Baseline duration | Constraint | Resources | Work | Actual work | Cost | Baseline cost | Actual cost | Text20 | Text26 | Text1 | Text30 |
| --- | --- | --- | --- | --- | --- | --- | --- | --- | --- | --- | --- | --- | --- | --- | --- | --- | --- | --- | --- | --- | --- |
| 53 | 1.1.3 | **신논리모델 구축** | 21d | 2007-06-22 A | 2007-07-23 A |  | 100% | 2007-06-22 | 2007-07-23 | 21d |  |  | 312h | 312h | 39 | 39 | 39 | 신논리모델 구축 | C02-1 1.2.3 |  |  |
| 54 | 1.1.3.1 | **프로세스 모델링** | 11d | 2007-06-22 A | 2007-07-06 A |  | 100% | 2007-06-22 | 2007-07-06 | 11d |  |  | 172h | 172h | 21.5 | 21.5 | 21.5 | 신논리모델 구축 | C02-1 1.2.3 | 프로세스정의서,기능차트 | 시퀀스흐름도 |
| 55 | 1.1.3.1.1 | 사무량_프로세스 모델링 | 5d | 2007-06-22 A | 2007-06-28 A |  | 100% | 2007-06-22 | 2007-06-28 | 5d | must start on 2007-06-22 | 이종훈; 김용승 | 76h | 76h | 9.5 | 9.5 | 9.5 | 신논리모델 구축 | C02-1 1.2.3 |  |  |
| 56 | 1.1.3.1.2 | 속보성_프로세스 모델링 | 1d | 2007-06-29 A | 2007-06-29 A | 55 | 100% | 2007-06-29 | 2007-06-29 | 1d |  | 이종훈; 김용승 | 16h | 16h | 2 | 2 | 2 | 신논리모델 구축 | C02-1 1.2.3 |  |  |
| 57 | 1.1.3.1.3 | 공통사후관리_프로세스 모델링 | 2d | 2007-07-02 A | 2007-07-03 A | 56 | 100% | 2007-07-02 | 2007-07-03 | 2d |  | 이종훈; 김용승 | 32h | 32h | 4 | 4 | 4 | 신논리모델 구축 | C02-1 1.2.3 |  |  |
| 58 | 1.1.3.1.4 | D'fd_Job Scheduler 모델링 | 3d | 2007-07-04 A | 2007-07-06 A | 57 | 100% | 2007-07-04 | 2007-07-06 | 3d |  | 이종훈; 김용승 | 48h | 48h | 6 | 6 | 6 | 신논리모델 구축 | C02-1 1.2.3 |  |  |
| 59 | 1.1.3.2 | **데이터 모델링(CDM)** | 8d | 2007-07-10 A | 2007-07-20 A |  | 100% | 2007-07-10 | 2007-07-20 | 8d |  |  | 128h | 128h | 16 | 16 | 16 | 신논리모델 구축 | C02-1 1.2.3 | 엔티티정의서,엔티티목록,ERD(논리) | ERD(논리), 엔티티목록, 엔티티정의서 |
| 60 | 1.1.3.2.1 | 사무량_데이터 모델링 | 4d | 2007-07-10 A | 2007-07-13 A |  | 100% | 2007-07-10 | 2007-07-13 | 4d | must start on 2007-07-10 | 이종훈; 김용승 | 64h | 64h | 8 | 8 | 8 | 신논리모델 구축 | C02-1 1.2.3 |  |  |
| 61 | 1.1.3.2.2 | 속보성_데이터 모델링 | 1d | 2007-07-16 A | 2007-07-16 A | 60 | 100% | 2007-07-16 | 2007-07-16 | 1d |  | 이종훈; 김용승 | 16h | 16h | 2 | 2 | 2 | 신논리모델 구축 | C02-1 1.2.3 |  |  |
| 62 | 1.1.3.2.3 | 공통사후관리_데이터 모델링 | 3d | 2007-07-18 A | 2007-07-20 A | 61 | 100% | 2007-07-18 | 2007-07-20 | 3d |  | 이종훈; 김용승 | 48h | 48h | 6 | 6 | 6 | 신논리모델 구축 | C02-1 1.2.3 |  |  |
| 63 | 1.1.3.3 | 인수테스트기준 정의 | 1d | 2007-07-23 A | 2007-07-23 A | 62 | 100% | 2007-07-23 | 2007-07-23 | 1d |  | 이종훈; 김용승 [50%] | 12h | 12h | 1.5 | 1.5 | 1.5 | 신논리모델 구축 | C02-1 1.2.3 | 인수테스트기준서 | 인수테스트기준서 |
| 64 | 1.1.4 | **분석단계 관리활동** | 58d | 2007-05-03 A | 2007-07-25 A |  | 100% | 2007-05-03 | 2007-07-25 | 58d |  |  | 264h | 264h | 33 | 33 | 33 | 단계완료 | C02-1 1.6.8 |  |  |
| 65 | 1.1.4.1 | 오리엔테이션실시 | 1d | 2007-05-03 A | 2007-05-03 A |  | 100% | 2007-05-03 | 2007-05-03 | 1d | start no earlier than 2007-05-03 | 김용승 [50%]; 이종훈 | 12h | 12h | 1.5 | 1.5 | 1.5 | 단계완료 | C02-1 1.6.8 |  |  |
| 66 | 1.1.4.2 | 과업대비표 매핑 | 3d | 2007-05-07 A | 2007-05-09 A |  | 100% | 2007-05-07 | 2007-05-09 | 3d | start no earlier than 2007-05-07 | 김용승 [50%]; 이종훈 | 36h | 36h | 4.5 | 4.5 | 4.5 | 단계완료 | C02-1 1.6.8 |  |  |
| 67 | 1.1.4.3 | 형상관리 Tool 교육 | 2d | 2007-05-17 A | 2007-05-18 A |  | 100% | 2007-05-17 | 2007-05-18 | 2d | start no earlier than 2007-05-17 | 김용승 [50%]; 이종훈 | 24h | 24h | 3 | 3 | 3 | 단계완료 | C02-1 1.6.8 |  |  |
| 68 | 1.1.4.4 | Inspection(1차)실시및 조치 | 2d | 2007-07-02 A | 2007-07-03 A |  | 100% | 2007-07-02 | 2007-07-03 | 2d | start no earlier than 2007-07-02 | 김용승 [50%]; 이종훈 | 24h | 24h | 3 | 3 | 3 | 단계완료 | C02-1 1.6.8 |  |  |
| 69 | 1.1.4.5 | 요구사항 추적표 매핑 | 2d | 2007-07-09 A | 2007-07-10 A |  | 100% | 2007-07-09 | 2007-07-10 | 2d | start no earlier than 2007-07-09 | 김용승 [50%]; 이종훈 | 24h | 24h | 3 | 3 | 3 | 단계완료 | C02-1 1.6.8 |  |  |
| 70 | 1.1.4.6 | 요구사항 규모측정방법 교육및 측정 | 5d | 2007-07-09 A | 2007-07-13 A |  | 100% | 2007-07-09 | 2007-07-13 | 5d | start no earlier than 2007-07-09 | 김용승 [50%]; 이종훈 | 60h | 60h | 7.5 | 7.5 | 7.5 | 단계완료 | C02-1 1.6.8 |  |  |
| 71 | 1.1.4.7 | 고객검토(1차) 실시 및 조치 | 7d | 2007-07-16 A | 2007-07-25 A |  | 100% | 2007-07-16 | 2007-07-25 | 7d | start no earlier than 2007-07-16 | 김용승 [50%]; 이종훈 | 84h | 84h | 10.5 | 10.5 | 10.5 | 단계완료 | C02-1 1.6.8 |  |  |
| 72 | 1.2 | **설계** | 104d | 2007-07-09 A | 2007-12-07 A |  | 100% | 2007-07-09 | 2007-12-07 | 104d |  |  |  |  |  |  |  |  |  |  |  |
| 73 | 1.2.1 | **단계착수** | 2d | 2007-08-01 A | 2007-08-02 A |  | 100% | 2007-08-01 | 2007-08-02 | 2d |  |  |  |  |  |  |  | 단계착수 | C02-1 1.6.1 |  |  |
| 74 | 1.2.1.1 | SPM검토 및 보완 | 1d | 2007-08-01 A | 2007-08-01 A |  | 100% | 2007-08-01 | 2007-08-01 | 1d | start no earlier than 2007-08-01 |  |  |  |  |  |  | 단계착수 | C02-1 1.6.1 |  |  |
| 75 | 1.2.1.2 | 단계착수 오리엔테이션 | 1d | 2007-08-02 A | 2007-08-02 A | 74 | 100% | 2007-08-02 | 2007-08-02 | 1d |  |  |  |  |  |  |  | 단계착수 | C02-1 1.6.1 |  |  |
| 76 | 1.2.2 | **기본설계** | 23d | 2007-08-03 A | 2007-09-05 A |  | 100% | 2007-08-03 | 2007-09-05 | 23d |  |  |  |  |  |  |  | 기본설계 | C02-1 1.3.1 |  |  |
| 77 | 1.2.2.1 | **시스템구조 설계** | 13d | 2007-08-03 A | 2007-08-22 A |  | 100% | 2007-08-03 | 2007-08-22 | 13d |  |  |  |  |  |  |  | 기본설계 | C02-1 1.3.1 |  |  |
| 78 | 1.2.2.1.1 | 어플리케이션구조도작성 | 10d | 2007-08-03 A | 2007-08-17 A |  | 100% | 2007-08-03 | 2007-08-17 | 10d | must start on 2007-08-03 |  |  |  |  |  |  | 기본설계 | C02-1 1.3.1 |  | 프로그램목록,시퀀스세부구성도 |
| 79 | 1.2.2.1.2 | 프로그램목록작성 | 3d | 2007-08-20 A | 2007-08-22 A | 78 | 100% | 2007-08-20 | 2007-08-22 | 3d | must start on 2007-08-20 |  |  |  |  |  |  | 기본설계 | C02-1 1.3.1 |  |  |
| 80 | 1.2.2.2 | 데이터코드 설계 | 10d | 2007-08-23 A | 2007-09-05 A | 79 | 100% | 2007-08-23 | 2007-09-05 | 10d | must start on 2007-08-23 |  |  |  |  |  |  | 기본설계 | C02-1 1.3.1 |  | 데이터코드설계서,데이터코드목록 |

| ID | WBS | Task | Duration | Start | Finish | Predecessors | Complete | Baseline start | Baseline finish | Baseline duration | Constraint | Text20 | Text26 | Text30 |
| --- | --- | --- | --- | --- | --- | --- | --- | --- | --- | --- | --- | --- | --- | --- |
| 81 | 1.2.3 | **상세설계** | 44d | 2007-09-06 A | 2007-11-12 A |  | 100% | 2007-09-06 | 2007-11-12 | 44d |  | 상세설계 | C02-1 1.3.3 |  |
| 82 | 1.2.3.1 | Gap 분석 및 해결방안 도출 | 15d | 2007-09-06 A | 2007-10-01 A | 80 | 100% | 2007-09-06 | 2007-10-01 | 15d | must start on 2007-09-06 | 상세설계 | C02-1 1.3.3 |  |
| 83 | 1.2.3.2 | **데이터베이스 상세설계** | 20d | 2007-10-01 A | 2007-10-29 A | 82 | 100% | 2007-10-01 | 2007-10-29 | 20d |  | 상세설계 | C02-1 1.3.3 | 테이블정의서,테이블목록,ERD(물리) |
| 84 | 1.2.3.2.1 | 테이블목록작성 | 3d | 2007-10-01 A | 2007-10-05 A |  | 100% | 2007-10-01 | 2007-10-05 | 3d | must start on 2007-10-01 | 상세설계 | C02-1 1.3.3 |  |
| 85 | 1.2.3.2.2 | 테이블정의서작성 | 7d | 2007-10-05 A | 2007-10-15 A | 84 | 100% | 2007-10-05 | 2007-10-15 | 7d | must start on 2007-10-05 | 상세설계 | C02-1 1.3.3 |  |
| 86 | 1.2.3.2.3 | ERD작성 | 10d | 2007-10-16 A | 2007-10-29 A | 85 | 100% | 2007-10-16 | 2007-10-29 | 10d | must start on 2007-10-16 | 상세설계 | C02-1 1.3.3 |  |
| 87 | 1.2.3.3 | 프로그램 설계 | 10d | 2007-10-30 A | 2007-11-12 A | 86 | 100% | 2007-10-30 | 2007-11-12 | 10d | must start on 2007-10-30 | 상세설계 | C02-1 1.3.3 | 시퀀스세부구성도 |
| 88 | 1.2.4 | **컨버전설계** | 14d | 2007-11-13 A | 2007-11-30 A |  | 100% | 2007-11-13 | 2007-11-30 | 14d |  | 컨버전 설계 | C02-1 1.3.5 |  |
| 89 | 1.2.4.1 | 컨버전계획 수립 | 2d | 2007-11-13 A | 2007-11-14 A | 87 | 100% | 2007-11-13 | 2007-11-14 | 2d | finish no earlier than 2007-11-14 | 컨버전 설계 | C02-1 1.3.5 | 컨버전계획서 |
| 90 | 1.2.4.2 | 매핑흐름설계 | 2d | 2007-11-15 A | 2007-11-16 A | 89 | 100% | 2007-11-15 | 2007-11-16 | 2d | start no earlier than 2007-11-15 | 컨버전 설계 | C02-1 1.3.5 |  |
| 91 | 1.2.4.3 | 데이터매핑정의서설계 | 10d | 2007-11-19 A | 2007-11-30 A | 90 | 100% | 2007-11-19 | 2007-11-30 | 10d | start no earlier than 2007-11-19 | 컨버전 설계 | C02-1 1.3.5 | 매핑정의서 |
| 92 | 1.2.5 | **설계단계 관리활동** | 104d | 2007-07-09 A | 2007-12-07 A |  | 100% | 2007-07-09 | 2007-12-07 | 104d |  | 단계완료 | C02-1 1.6.8 |  |
| 93 | 1.2.5.1 | 설계 SPM 검토 및 수정 | 5d | 2007-07-09 A | 2007-07-13 A |  | 100% | 2007-07-09 | 2007-07-13 | 5d | start no earlier than 2007-07-09 | 단계완료 | C02-1 1.6.8 |  |
| 94 | 1.2.5.2 | 분석 감리 조치 | 5d | 2007-07-23 A | 2007-07-27 A |  | 100% | 2007-07-23 | 2007-07-27 | 5d | start no earlier than 2007-07-23 | 단계완료 | C02-1 1.6.8 |  |
| 95 | 1.2.5.3 | 오리엔테이션(2차) 실시 | 5d | 2007-07-23 A | 2007-07-27 A |  | 100% | 2007-07-23 | 2007-07-27 | 5d | start no earlier than 2007-07-23 | 단계완료 | C02-1 1.6.8 |  |
| 96 | 1.2.5.4 | QAO심사(2차) 조치 | 51d | 2007-09-03 A | 2007-11-16 A |  | 100% | 2007-09-03 | 2007-11-16 | 51d | start no earlier than 2007-09-03 | 단계완료 | C02-1 1.6.8 |  |
| 97 | 1.2.5.5 | Inspection(2차) 실시 및 조치 | 10d | 2007-11-19 A | 2007-11-30 A | 96 | 100% | 2007-11-19 | 2007-11-30 | 10d | start no earlier than 2007-11-19 | 단계완료 | C02-1 1.6.8 |  |
| 98 | 1.2.5.6 | 설계 요구사항추적표 매핑 | 5d | 2007-11-26 A | 2007-11-30 A |  | 100% | 2007-11-26 | 2007-11-30 | 5d | start no earlier than 2007-11-26 | 단계완료 | C02-1 1.6.8 |  |
| 99 | 1.2.5.7 | 고객검토(2차) 실시 및 조치 | 5d | 2007-12-03 A | 2007-12-07 A | 93 | 100% | 2007-12-03 | 2007-12-07 | 5d | start no earlier than 2007-12-03 | 단계완료 | C02-1 1.6.8 |  |
| 100 | 1.3 | **개발** | 122d | 2007-12-10 A | 2008-06-05 A |  | 100% | 2007-12-10 | 2008-06-05 | 122d |  |  |  |  |
| 101 | 1.3.1 | **단계착수** | 10d | 2008-01-02 A | 2008-01-15 A |  | 100% | 2008-01-02 | 2008-01-15 | 10d |  | 단계착수 | C02-1 1.6.1 |  |
| 102 | 1.3.1.1 | SPM검토 및 보완 | 1d | 2008-01-02 A | 2008-01-02 A |  | 100% | 2008-01-02 | 2008-01-02 | 1d | start no earlier than 2008-01-01 | 단계착수 | C02-1 1.6.1 |  |
| 103 | 1.3.1.2 | 단계착수 오리엔테이션 | 1d | 2008-01-03 A | 2008-01-03 A | 102 | 100% | 2008-01-03 | 2008-01-03 | 1d |  | 단계착수 | C02-1 1.6.1 |  |
| 104 | 1.3.1.3 | 개발표준 및 개발환경교육 | 4d | 2008-01-04 A | 2008-01-09 A | 103 | 100% | 2008-01-04 | 2008-01-09 | 4d |  | 단계착수 | C02-1 1.6.1 |  |
| 105 | 1.3.1.4 | 테스트데이터확보 | 4d | 2008-01-10 A | 2008-01-15 A | 104 | 100% | 2008-01-10 | 2008-01-15 | 4d |  | 단계착수 | C02-1 1.6.1 |  |

Notes:
- 91: 업무단에서는 매핑정의서로 대체요망

| ID | WBS | Task | Duration | Start | Finish | Predecessors | Complete | Baseline start | Baseline finish | Baseline duration | Constraint | Text20 | Text26 | Text30 |
| --- | --- | --- | --- | --- | --- | --- | --- | --- | --- | --- | --- | --- | --- | --- |
| 106 | 1.3.2 | **코딩 및 단위테스트 실시** | 92d | 2008-01-16 A | 2008-05-30 A |  | 100% | 2008-01-16 | 2008-05-30 | 92d |  | 코딩 및 단위테스트 실시 | C02-1 1.4.1 |  |
| 107 | 1.3.2.1 | 단위테스트체크리스트작성 | 2d | 2008-01-16 A | 2008-01-17 A | 105 | 100% | 2008-01-16 | 2008-01-17 | 2d |  | 코딩 및 단위테스트 실시 | C02-1 1.4.1 | 단위테스트체크리스트 |
| 108 | 1.3.2.2 | 프로그램모델 및 공통프로그램 개발 | 25d | 2008-01-18 A | 2008-02-26 A | 107 | 100% | 2008-01-18 | 2008-02-26 | 25d |  | 코딩 및 단위테스트 실시 | C02-1 1.4.1 |  |
| 109 | 1.3.2.3 | 프로그램 코딩 | 35d | 2008-02-27 A | 2008-04-15 A | 108 | 100% | 2008-02-27 | 2008-04-15 | 35d |  | 코딩 및 단위테스트 실시 | C02-1 1.4.1 | 소스코드 |
| 110 | 1.3.2.4 | 단위테스트 실시 | 30d | 2008-04-16 A | 2008-05-30 A | 109 | 100% | 2008-04-16 | 2008-05-30 | 30d |  | 코딩 및 단위테스트 실시 | C02-1 1.4.1 | 단위테스트결과서 |
| 111 | 1.3.3 | **개발단계 관리활동** | 122d | 2007-12-10 A | 2008-06-05 A |  | 100% | 2007-12-10 | 2008-06-05 | 122d |  | 단계완료 | C02-1 1.6.8 |  |
| 112 | 1.3.3.1 | 개발 SPM 검토 및 수정 | 5d | 2007-12-10 A | 2007-12-14 A |  | 100% | 2007-12-10 | 2007-12-14 | 5d | start no earlier than 2007-12-10 | 단계완료 | C02-1 1.6.8 |  |
| 113 | 1.3.3.2 | 설계 감리 조치 | 5d | 2007-12-17 A | 2007-12-21 A |  | 100% | 2007-12-17 | 2007-12-21 | 5d | start no earlier than 2007-12-17 | 단계완료 | C02-1 1.6.8 |  |
| 114 | 1.3.3.3 | 오리엔테이션(3차) 실시 | 5d | 2007-12-17 A | 2007-12-21 A | 112 | 100% | 2007-12-17 | 2007-12-21 | 5d | start no earlier than 2007-12-17 | 단계완료 | C02-1 1.6.8 |  |
| 115 | 1.3.3.4 | QAO심사(3차) 조치 | 70d | 2008-02-01 A | 2008-05-16 A |  | 100% | 2008-02-01 | 2008-05-16 | 70d | finish no earlier than 2008-05-16 | 단계완료 | C02-1 1.6.8 |  |
| 116 | 1.3.3.5 | Inspection(3차) 실시 및 조치 | 66d | 2008-02-26 A | 2008-05-30 A |  | 100% | 2008-02-26 | 2008-05-30 | 66d | start no earlier than 2008-02-26 | 단계완료 | C02-1 1.6.8 |  |
| 117 | 1.3.3.6 | 개발 요구사항추적표 매핑 | 4d | 2008-06-02 A | 2008-06-05 A | 116 | 100% | 2008-06-02 | 2008-06-05 | 4d | start no earlier than 2008-06-02 | 단계완료 | C02-1 1.6.8 |  |
| 118 | 1.4 | **통합테스트** | 101d | 2008-04-25 A | 2008-09-19 A |  | 100% | 2008-04-25 | 2008-09-19 | 101d |  |  |  |  |
| 119 | 1.4.1 | **단계착수** | 2d | 2008-05-29 A | 2008-05-30 A |  | 100% | 2008-05-29 | 2008-05-30 | 2d |  | 단계착수 | C02-1 1.6.1 |  |
| 120 | 1.4.1.1 | SPM검토 및 보완 | 1d | 2008-05-29 A | 2008-05-29 A |  | 100% | 2008-05-29 | 2008-05-29 | 1d | start no earlier than 2008-05-29 | 단계착수 | C02-1 1.6.1 |  |
| 121 | 1.4.1.2 | 단계착수 오리엔테이션 | 1d | 2008-05-30 A | 2008-05-30 A | 120 | 100% | 2008-05-30 | 2008-05-30 | 1d |  | 단계착수 | C02-1 1.6.1 |  |
| 122 | 1.4.2 | **테스트 실시** | 38d | 2008-06-02 A | 2008-07-25 A |  | 100% | 2008-06-02 | 2008-07-25 | 38d |  | 테스트 실시 | C02-1 1.4.2 |  |
| 123 | 1.4.2.1 | 통합테스트계획 수립 | 2d | 2008-06-02 A | 2008-06-03 A |  | 100% | 2008-06-02 | 2008-06-03 | 2d | start no earlier than 2008-06-02 | 테스트 실시 | C02-1 1.4.2 | 테스트계획서 |
| 124 | 1.4.2.2 | 통합테스트 시나리오 작성 | 2d | 2008-06-04 A | 2008-06-05 A | 123 | 100% | 2008-06-04 | 2008-06-05 | 2d |  | 테스트 실시 | C02-1 1.4.2 | 통합테스트시나리오 |
| 125 | 1.4.2.3 | **통합테스트** | 34d | 2008-06-09 A | 2008-07-25 A |  | 100% | 2008-06-09 | 2008-07-25 | 34d |  | 테스트 실시 | C02-1 1.4.2 |  |
| 126 | 1.4.2.3.1 | 1차 통합테스트 실시 | 5d | 2008-06-09 A | 2008-06-13 A |  | 100% | 2008-06-09 | 2008-06-13 | 5d | start no earlier than 2008-06-09 | 테스트 실시 | C02-1 1.4.2 |  |
| 127 | 1.4.2.3.2 | 2차 통합테스트 실시 | 5d | 2008-06-23 A | 2008-06-27 A |  | 100% | 2008-06-23 | 2008-06-27 | 5d | start no earlier than 2008-06-23 | 테스트 실시 | C02-1 1.4.2 |  |
| 128 | 1.4.2.3.3 | 3차통합테스트 실시 | 5d | 2008-07-07 A | 2008-07-11 A |  | 100% | 2008-07-07 | 2008-07-11 | 5d | start no earlier than 2008-07-07 | 테스트 실시 | C02-1 1.4.2 |  |
| 129 | 1.4.2.3.4 | 4차 통합테스트 실시 | 5d | 2008-07-21 A | 2008-07-25 A |  | 100% | 2008-07-21 | 2008-07-25 | 5d | start no earlier than 2008-07-21 | 테스트 실시 | C02-1 1.4.2 | 통합테스트시나리오(결과) |

| ID | WBS | Task | Duration | Start | Finish | Predecessors | Complete | Remaining | Baseline start | Baseline finish | Baseline duration | Total slack | Free slack | Constraint | Text20 | Text26 | Text30 |
| --- | --- | --- | --- | --- | --- | --- | --- | --- | --- | --- | --- | --- | --- | --- | --- | --- | --- |
| 130 | 1.4.3 | **통합테스트단계 관리활동** | 101d | 2008-04-25 A | 2008-09-19 A |  | 100% |  | 2008-04-25 | 2008-09-19 | 101d |  |  |  | 품질활동수행 | C02-1 1.6.2 |  |
| 131 | 1.4.3.1 | 통합테스트단계 계획검토 및 수정 | 5d | 2008-05-19 A | 2008-05-23 A |  | 100% |  | 2008-05-19 | 2008-05-23 | 5d |  |  | start no earlier than 2008-05-19 | 품질활동수행 | C02-1 1.6.2 |  |
| 132 | 1.4.3.2 | 통합테스트 SPM 검토 및 수정 | 5d | 2008-05-19 A | 2008-05-23 A |  | 100% |  | 2008-05-19 | 2008-05-23 | 5d |  |  | start no earlier than 2008-05-19 | 품질활동수행 | C02-1 1.6.2 |  |
| 133 | 1.4.3.3 | 오리엔테이션(4차) 실시 | 5d | 2008-04-25 A | 2008-05-02 A |  | 100% |  | 2008-04-25 | 2008-05-02 | 5d |  |  | start no earlier than 2008-04-25 | 품질활동수행 | C02-1 1.6.2 |  |
| 134 | 1.4.3.4 | QAO심사(4차) 조치 | 10d | 2008-06-16 A | 2008-06-27 A |  | 100% |  | 2008-06-16 | 2008-06-27 | 10d |  |  | start no earlier than 2008-06-16 | 품질활동수행 | C02-1 1.6.2 |  |
| 135 | 1.4.3.5 | Inspection(4차)실시및 조치 | 14d | 2008-07-07 A | 2008-07-25 A |  | 100% |  | 2008-07-07 | 2008-07-25 | 14d |  |  | start no earlier than 2008-07-07 | 품질활동수행 | C02-1 1.6.2 |  |
| 136 | 1.4.3.6 | 통합테스트 요구사항추적표 매핑 | 9d | 2008-09-08 A | 2008-09-19 A |  | 100% |  | 2008-09-08 | 2008-09-19 | 9d |  |  | start no earlier than 2008-09-08 | 품질활동수행 | C02-1 1.6.2 |  |
| 137 | 1.5 | **영업점테스트** | 148d | 2008-07-07 A | 2009-01-27 |  | 62% | 56.38d | 2008-07-07 | 2009-01-27 | 148d | 40d |  |  | 테스트 실시 | C02-1 1.4.2 |  |
| 138 | 1.5.1 | **시스템사용자교육** | 32d | 2008-11-10 A | 2008-12-19 |  | 35% | 20.8d | 2008-11-10 | 2008-12-19 | 32d | 66d |  |  | 시스템 사용교육 | C02-1 1.5.3 |  |
| 139 | 1.5.1.1 | 운영 매뉴얼 작성 | 16d | 2008-11-10 A | 2008-11-28 |  | 70% | 4.8d | 2008-11-10 | 2008-11-28 | 16d | 66d | 0d | finish no earlier than 2008-11-28 | 시스템 사용교육 | C02-1 1.5.3 | 운영매뉴얼 |
| 140 | 1.5.1.2 | 운영자 교육 실시 | 16d | 2008-12-01 | 2008-12-19 | 139 |  |  | 2008-12-01 | 2008-12-19 | 16d | 66d |  | start no earlier than 2008-12-01 | 시스템 사용교육 | C02-1 1.5.3 | 교육결과서 |
| 141 | 1.5.2 | **영업점테스트** | 113d | 2008-07-21 A | 2008-12-19 |  | 89% | 12.56d | 2008-07-21 | 2008-12-19 | 113d | 66d |  |  | 테스트 실시 | C02-1 1.4.2 |  |
| 142 | 1.5.2.1 | 영업점 테스트계획 수립 | 9d | 2008-07-21 A | 2008-07-31 A |  | 100% |  | 2008-07-21 | 2008-07-31 | 9d |  |  | start no earlier than 2008-07-21 | 테스트 실시 | C02-1 1.4.2 | 영업점테스트계획서 |
| 143 | 1.5.2.2 | 영업점테스트 시나리오 작성 | 9d | 2008-07-21 A | 2008-07-31 A |  | 100% |  | 2008-07-21 | 2008-07-31 | 9d |  |  | start no earlier than 2008-07-21 | 테스트 실시 | C02-1 1.4.2 | 영업점테스트시나리오 |
| 144 | 1.5.2.3 | 1차 시범점테스트 실시 및 보완 | 15d | 2008-08-10 A | 2008-08-29 A |  | 100% |  | 2008-08-10 | 2008-08-29 | 15d |  |  | start no earlier than 2008-08-10 | 테스트 실시 | C02-1 1.4.2 |  |
| 145 | 1.5.2.4 | 2차 시범점테스트 실시 및 보완 | 14d | 2008-09-01 A | 2008-09-19 A |  | 100% |  | 2008-09-01 | 2008-09-19 | 14d |  |  | start no earlier than 2008-09-01 | 테스트 실시 | C02-1 1.4.2 |  |
| 146 | 1.5.2.5 | 1차 영업점테스트 실시 및 보완 | 7d | 2008-09-22 A | 2008-09-30 A |  | 100% |  | 2008-09-22 | 2008-09-30 | 7d |  |  | start no earlier than 2008-09-21 | 테스트 실시 | C02-1 1.4.2 |  |
| 147 | 1.5.2.6 | 2차 영업점테스트 실시 및 보완 | 16d | 2008-10-12 A | 2008-10-30 A |  | 100% |  | 2008-10-12 | 2008-10-30 | 16d |  |  | start no earlier than 2008-10-12 | 테스트 실시 | C02-1 1.4.2 |  |
| 148 | 1.5.2.7 | 3차 영업점테스트 실시 및 보완 | 7d | 2008-11-02 A | 2008-11-10 A |  | 100% |  | 2008-11-02 | 2008-11-10 | 7d |  |  | start no earlier than 2008-11-02 | 테스트 실시 | C02-1 1.4.2 |  |
| 149 | 1.5.2.8 | 4차 영업점테스트 실시 및 보완 | 11d | 2008-11-16 A | 2008-11-28 A |  | 100% |  | 2008-11-16 | 2008-11-28 | 11d |  |  | start no earlier than 2008-11-16 | 테스트 실시 | C02-1 1.4.2 |  |
| 150 | 1.5.2.9 | 5차 영업점테스트 실시 및 보완 | 11d | 2008-12-07 | 2008-12-19 |  |  |  | 2008-12-07 | 2008-12-19 | 11d | 66d |  | start no earlier than 2008-12-07 | 테스트 실시 | C02-1 1.4.2 |  |
| 151 | 1.5.3 | **인수테스트** | 13d | 2008-12-22 | 2009-01-09 |  |  |  | 2008-12-22 | 2009-01-09 | 13d | 52d |  |  | 테스트 실시 | C02-1 1.4.2 |  |
| 152 | 1.5.3.1 | 인수테스트실시 | 13d | 2008-12-22 | 2009-01-09 |  |  |  | 2008-12-22 | 2009-01-09 | 13d | 52d |  | start no earlier than 2008-12-22 | 테스트 실시 | C02-1 1.4.2 | 인수테스트기준서(결과),결함보고서(인수) |
| 153 | 1.5.4 | **이행** | 17d | 2009-01-05 A | 2009-01-27 |  | 67% | 5.67d | 2009-01-05 | 2009-01-27 | 17d | 40d |  |  | 테스트 실시 | C02-1 1.4.2 |  |
| 154 | 1.5.4.1 | 이행계획 수립 | 5d | 2009-01-05 A | 2009-01-09 A |  | 100% |  | 2009-01-05 | 2009-01-09 | 5d |  |  | must start on 2009-01-05 | 테스트 실시 | C02-1 1.4.2 | 이행계획서 |
| 155 | 1.5.4.2 | 이행시나리오 작성 | 5d | 2009-01-12 A | 2009-01-16 A | 154 | 100% |  | 2009-01-12 | 2009-01-16 | 5d |  |  |  | 테스트 실시 | C02-1 1.4.2 | 이행시나리오 |
| 156 | 1.5.4.3 | 이행 실시 | 5d | 2009-01-21 | 2009-01-27 |  |  |  | 2009-01-21 | 2009-01-27 | 5d | 40d |  | start no earlier than 2009-01-21 | 테스트 실시 | C02-1 1.4.2 | 운영시스템 |

| ID | WBS | Task | Duration | Start | Finish | Predecessors | Complete | Remaining | Baseline start | Baseline finish | Baseline duration | Total slack | Constraint | Resources | Work | Actual work | Cost | Baseline cost | Actual cost | Text20 | Text26 | Text1 | Text30 |
| --- | --- | --- | --- | --- | --- | --- | --- | --- | --- | --- | --- | --- | --- | --- | --- | --- | --- | --- | --- | --- | --- | --- | --- |
| 157 | 1.5.5 | **영업점테스트단계 관리활동** | 146d | 2008-07-07 A | 2009-01-23 |  | 53% | 68.29d | 2008-07-07 | 2009-01-23 | 146d | 42d |  |  |  |  |  |  |  | 품질활동수행 | C02-1 1.6.2 |  |  |
| 158 | 1.5.5.1 | 영업점테스트 단계 계획 검토 및 수정 | 5d | 2008-07-07 A | 2008-07-11 A |  | 100% |  | 2008-07-07 | 2008-07-11 | 5d |  | start no earlier than 2008-07-07 |  |  |  |  |  |  | 품질활동수행 | C02-1 1.6.2 |  |  |
| 159 | 1.5.5.2 | 영업점테스트 SPM 검토 및 수정 | 4d | 2008-07-14 A | 2008-07-18 A |  | 100% |  | 2008-07-14 | 2008-07-18 | 4d |  | start no earlier than 2008-07-14 |  |  |  |  |  |  | 품질활동수행 | C02-1 1.6.2 |  |  |
| 160 | 1.5.5.3 | 오리엔테이션(5차) 실시 | 6d | 2008-08-01 A | 2008-08-08 A |  | 100% |  | 2008-08-01 | 2008-08-08 | 6d |  | start no earlier than 2008-08-01 |  |  |  |  |  |  | 품질활동수행 | C02-1 1.6.2 |  |  |
| 161 | 1.5.5.4 | QAO심사(5차) 조치 | 51d | 2008-09-08 A | 2008-11-14 A |  | 100% |  | 2008-09-08 | 2008-11-14 | 51d |  | start no earlier than 2008-09-08 |  |  |  |  |  |  | 품질활동수행 | C02-1 1.6.2 |  |  |
| 162 | 1.5.5.5 | Inspection(5차)실시및 조치 | 11d | 2008-12-01 | 2008-12-12 |  |  |  | 2008-12-01 | 2008-12-12 | 11d | 71d | start no earlier than 2008-12-01 |  |  |  |  |  |  | 품질활동수행 | C02-1 1.6.2 |  |  |
| 163 | 1.5.5.6 | 제품검사 조치 | 29d | 2008-12-15 | 2009-01-23 |  |  |  | 2008-12-15 | 2009-01-23 | 29d | 42d | start no earlier than 2008-12-15 |  |  |  |  |  |  | 품질활동수행 | C02-1 1.6.2 |  |  |
| 164 | 1.5.5.7 | 영업점테스트 요구사항추적표 매핑 | 10d | 2009-01-05 | 2009-01-16 |  |  |  | 2009-01-05 | 2009-01-16 | 10d | 47d | start no earlier than 2009-01-05 |  |  |  |  |  |  | 품질활동수행 | C02-1 1.6.2 |  |  |
| 165 | 1.5.5.8 | 고객검토(3차) 실시 및 조치 | 8d | 2008-12-22 | 2009-01-02 |  |  |  | 2008-12-22 | 2009-01-02 | 8d | 57d | start no earlier than 2008-12-22 |  |  |  |  |  |  | 품질활동수행 | C02-1 1.6.2 |  |  |
| 166 | 1.6 | 안정화 | 39d | 2009-01-29 | 2009-03-24 |  |  |  | 2009-01-29 | 2009-03-24 | 39d | 0d | start no earlier than 2009-01-29 |  |  |  |  |  |  | 시범운영 | C02-1 1.5.4 |  |  |
| 167 | 2 | **시스템 연계(수신/여신/외환)** | 335d | 2007-12-03 A | 2009-03-24 |  | 80% | 66.99d | 2007-12-03 | 2009-03-24 | 335d | 0d |  |  | 1868h | 1868h | 233.5 | 233.5 | 233.5 |  |  |  |  |
| 168 | 2.1 | **분석** | 42d | 2007-12-03 A | 2008-01-31 A |  | 100% |  | 2007-12-03 | 2008-01-31 | 42d |  |  |  | 1868h | 1868h | 233.5 | 233.5 | 233.5 |  |  |  |  |
| 169 | 2.1.1 | **단계착수** | 1d | 2007-12-03 A | 2007-12-03 A |  | 100% |  | 2007-12-03 | 2007-12-03 | 1d |  |  |  | 80h | 80h | 10 | 10 | 10 | 단계착수 | C02-1 1.6.1 |  |  |
| 170 | 2.1.1.1 | 프로젝트계획검토 | 1d | 2007-12-03 A | 2007-12-03 A |  | 100% |  | 2007-12-03 | 2007-12-03 | 1d |  | start no earlier than 2007-12-03 | 김용승 [25%]; 최경숙; 김성수; 최윤식 | 26h | 26h | 3.25 | 3.25 | 3.25 | 단계착수 | C02-1 1.6.1 |  |  |
| 171 | 2.1.1.2 | SPM검토 및 보완 | 1d | 2007-12-03 A | 2007-12-03 A | 170SS | 100% |  | 2007-12-03 | 2007-12-03 | 1d |  |  | 김용승 [25%]; 최경숙; 김성수; 최윤식 | 26h | 26h | 3.25 | 3.25 | 3.25 | 단계착수 | C02-1 1.6.1 |  |  |
| 172 | 2.1.1.3 | 단계착수 오리엔테이션 | 1d | 2007-12-03 A | 2007-12-03 A | 170SS | 100% |  | 2007-12-03 | 2007-12-03 | 1d |  |  | 김용승 [50%]; 최경숙; 김성수; 최윤식 | 28h | 28h | 3.5 | 3.5 | 3.5 | 단계착수 | C02-1 1.6.1 |  |  |
| 173 | 2.1.2 | **현황 평가** | 14d | 2007-12-04 A | 2007-12-21 A |  | 100% |  | 2007-12-04 | 2007-12-21 | 14d |  |  |  | 496h | 496h | 62 | 62 | 62 | 현황 평가 | C02-1 1.2.1 |  |  |
| 174 | 2.1.2.1 | **현행업무 분석** | 3d | 2007-12-04 A | 2007-12-06 A |  | 100% |  | 2007-12-04 | 2007-12-06 | 3d |  |  |  | 96h | 96h | 12 | 12 | 12 | 현황 평가 | C02-1 1.2.1 | 현행업무흐름도 | 현행업무 분장표 |
| 175 | 2.1.2.1.1 | ODW 수신,여신,외환 분석(Source,Target)자료 수집(Meta포함) | 1d | 2007-12-04 A | 2007-12-04 A | 172 | 100% |  | 2007-12-04 | 2007-12-04 | 1d |  | must start on 2007-12-04 | 최경숙; 김용승; 김성수; 최윤식 | 32h | 32h | 4 | 4 | 4 | 현황 평가 | C02-1 1.2.1 |  |  |
| 176 | 2.1.2.1.2 | 업무설명회 (ERD 설명 포함) | 1d | 2007-12-05 A | 2007-12-05 A | 175 | 100% |  | 2007-12-05 | 2007-12-05 | 1d |  |  | 최경숙; 김용승; 김성수; 최윤식 | 32h | 32h | 4 | 4 | 4 | 현황 평가 | C02-1 1.2.1 |  |  |
| 177 | 2.1.2.1.3 | 현행 업무 프로세스 분석 | 1d | 2007-12-06 A | 2007-12-06 A | 176 | 100% |  | 2007-12-06 | 2007-12-06 | 1d |  |  | 최경숙; 김용승; 김성수; 최윤식 | 32h | 32h | 4 | 4 | 4 | 현황 평가 | C02-1 1.2.1 |  |  |
| 178 | 2.1.2.2 | **현행시스템 분석** | 9d | 2007-12-07 A | 2007-12-19 A |  | 100% |  | 2007-12-07 | 2007-12-19 | 9d |  |  |  | 288h | 288h | 36 | 36 | 36 | 현황 평가 | C02-1 1.2.1 |  | 현행데이터흐름도 |
| 179 | 2.1.2.2.1 | ODW 수신/여신/외환시스템 내역서 | 1d | 2007-12-07 A | 2007-12-07 A | 177 | 100% |  | 2007-12-07 | 2007-12-07 | 1d |  | must start on 2007-12-07 | 최경숙; 김용승; 김성수; 최윤식 | 32h | 32h | 4 | 4 | 4 | 현황 평가 | C02-1 1.2.1 |  |  |
| 180 | 2.1.2.2.2 | ODW 수신/여신/외환시스템 구성도 | 1d | 2007-12-10 A | 2007-12-10 A | 179 | 100% |  | 2007-12-10 | 2007-12-10 | 1d |  |  | 최경숙; 김용승; 김성수; 최윤식 | 32h | 32h | 4 | 4 | 4 | 현황 평가 | C02-1 1.2.1 |  |  |
| 181 | 2.1.2.2.3 | ODW 수신/여신/외환시스템 ERD | 1d | 2007-12-11 A | 2007-12-11 A | 180 | 100% |  | 2007-12-11 | 2007-12-11 | 1d |  |  | 최경숙; 김용승; 김성수; 최윤식 | 32h | 32h | 4 | 4 | 4 | 현황 평가 | C02-1 1.2.1 |  |  |
| 182 | 2.1.2.2.4 | ODW 수신/여신/외환 데이터 I/F Flow | 2d | 2007-12-12 A | 2007-12-13 A | 181 | 100% |  | 2007-12-12 | 2007-12-13 | 2d |  |  | 최경숙; 김용승; 김성수; 최윤식 | 64h | 64h | 8 | 8 | 8 | 현황 평가 | C02-1 1.2.1 |  |  |
| 183 | 2.1.2.2.5 | ODW 수신/여신/외환업무 Meta 표준화기준 | 1d | 2007-12-14 A | 2007-12-14 A | 182 | 100% |  | 2007-12-14 | 2007-12-14 | 1d |  |  | 최경숙; 김용승; 김성수; 최윤식 | 32h | 32h | 4 | 4 | 4 | 현황 평가 | C02-1 1.2.1 |  |  |
| 184 | 2.1.2.2.6 | As-Is 대비 Meta 정보 변경 내용에 대한 영향도 분석 | 2d | 2007-12-17 A | 2007-12-18 A | 183 | 100% |  | 2007-12-17 | 2007-12-18 | 2d |  |  | 최경숙; 김용승; 김성수; 최윤식 | 64h | 64h | 8 | 8 | 8 | 현황 평가 | C02-1 1.2.1 |  |  |
| 185 | 2.1.2.2.7 | 시스템화범위/기능분석 | 1d | 2007-12-19 A | 2007-12-19 A | 184 | 100% |  | 2007-12-19 | 2007-12-19 | 1d |  |  | 김용승; 최경숙; 김성수; 최윤식 | 32h | 32h | 4 | 4 | 4 | 현황 평가 | C02-1 1.2.1 |  |  |

| ID | WBS | Task | Duration | Start | Finish | Predecessors | Complete | Baseline start | Baseline finish | Baseline duration | Constraint | Resources | Work | Actual work | Cost | Baseline cost | Actual cost | Text20 | Text26 | Text30 | Text1 |
| --- | --- | --- | --- | --- | --- | --- | --- | --- | --- | --- | --- | --- | --- | --- | --- | --- | --- | --- | --- | --- | --- |
| 186 | 2.1.2.3 | **인터뷰 실시** | 2d | 2007-12-20 A | 2007-12-21 A |  | 100% | 2007-12-20 | 2007-12-21 | 2d |  |  | 112h | 112h | 14 | 14 | 14 | 현황 평가 | C02-1 1.2.1 | 인터뷰 결과 |  |
| 187 | 2.1.2.3.1 | **인터뷰 계획 수립** | 1d | 2007-12-20 A | 2007-12-20 A |  | 100% | 2007-12-20 | 2007-12-20 | 1d |  |  | 56h | 56h | 7 | 7 | 7 | 현황 평가 | C02-1 1.2.1 |  |  |
| 188 | 2.1.2.3.1.1 | 인터뷰 담당자 선정 및 일정 수립 | 1d | 2007-12-20 A | 2007-12-20 A | 185 | 100% | 2007-12-20 | 2007-12-20 | 1d | must start on 2007-12-20 | 김용승 [50%]; 최경숙; 김성수; 최윤식 | 28h | 28h | 3.5 | 3.5 | 3.5 | 현황 평가 | C02-1 1.2.1 |  |  |
| 189 | 2.1.2.3.1.2 | **인터뷰 설문지 작성** | 1d | 2007-12-20 A | 2007-12-20 A |  | 100% | 2007-12-20 | 2007-12-20 | 1d |  |  | 28h | 28h | 3.5 | 3.5 | 3.5 | 현황 평가 | C02-1 1.2.1 |  |  |
| 190 | 2.1.2.3.1.2.1 | 수신,여신,외환_인터뷰 설문지 작성 및 배포 | 1d | 2007-12-20 A | 2007-12-20 A | 185 | 100% | 2007-12-20 | 2007-12-20 | 1d |  | 김용승 [50%]; 최경숙; 김성수; 최윤식 | 28h | 28h | 3.5 | 3.5 | 3.5 | 현황 평가 | C02-1 1.2.1 |  |  |
| 191 | 2.1.2.3.2 | **인터뷰 실시** | 1d | 2007-12-21 A | 2007-12-21 A |  | 100% | 2007-12-21 | 2007-12-21 | 1d |  |  | 56h | 56h | 7 | 7 | 7 | 현황 평가 | C02-1 1.2.1 |  |  |
| 192 | 2.1.2.3.2.1 | **인터뷰 실시** | 1d | 2007-12-21 A | 2007-12-21 A |  | 100% | 2007-12-21 | 2007-12-21 | 1d |  |  | 28h | 28h | 3.5 | 3.5 | 3.5 | 현황 평가 | C02-1 1.2.1 |  |  |
| 193 | 2.1.2.3.2.1.1 | 수신,여신,외환_인터뷰 실시 | 1d | 2007-12-21 A | 2007-12-21 A | 190 | 100% | 2007-12-21 | 2007-12-21 | 1d |  | 김용승 [50%]; 최경숙; 김성수; 최윤식 | 28h | 28h | 3.5 | 3.5 | 3.5 | 현황 평가 | C02-1 1.2.1 |  |  |
| 194 | 2.1.2.3.2.2 | **인터뷰 결과 정리** | 1d | 2007-12-21 A | 2007-12-21 A |  | 100% | 2007-12-21 | 2007-12-21 | 1d |  |  | 28h | 28h | 3.5 | 3.5 | 3.5 | 현황 평가 | C02-1 1.2.1 |  |  |
| 195 | 2.1.2.3.2.2.1 | 수신,여신,외환_인터뷰 결과 분석 및 요건 도출 | 1d | 2007-12-21 A | 2007-12-21 A | 190 | 100% | 2007-12-21 | 2007-12-21 | 1d |  | 김용승 [50%]; 최경숙; 김성수; 최윤식 | 28h | 28h | 3.5 | 3.5 | 3.5 | 현황 평가 | C02-1 1.2.1 |  |  |
| 196 | 2.1.3 | **요구사항 정의** | 12d | 2007-12-24 A | 2008-01-10 A |  | 100% | 2007-12-24 | 2008-01-10 | 12d |  |  | 600h | 600h | 75 | 75 | 75 | 요구사항 정의 | C02-1 1.2.2 | 현업요구사항정의서 | 현업요구사항정의서 |
| 197 | 2.1.3.1 | **기능요구사항 정의** | 4d | 2007-12-24 A | 2007-12-28 A |  | 100% | 2007-12-24 | 2007-12-28 | 4d |  |  | 316h | 316h | 39.5 | 39.5 | 39.5 | 요구사항 정의 | C02-1 1.2.2 |  |  |
| 198 | 2.1.3.1.1 | 내부 요구사항 검토 및 확인 | 1d | 2007-12-24 A | 2007-12-24 A | 195 | 100% | 2007-12-24 | 2007-12-24 | 1d | must start on 2007-12-24 | 김용승 [25%]; 최경숙; 김성수; 최윤식 | 26h | 26h | 3.25 | 3.25 | 3.25 | 요구사항 정의 | C02-1 1.2.2 |  |  |
| 199 | 2.1.3.1.2 | ODS/EDW 수신 요건 정의 | 4d | 2007-12-24 A | 2007-12-28 A | 195 | 100% | 2007-12-24 | 2007-12-28 | 4d |  | 김용승 [25%]; 최경숙; 김성수; 최윤식 | 104h | 104h | 13 | 13 | 13 | 요구사항 정의 | C02-1 1.2.2 |  |  |
| 200 | 2.1.3.1.3 | ODS/EDW 여신 요건 정의 | 4d | 2007-12-24 A | 2007-12-28 A | 195 | 100% | 2007-12-24 | 2007-12-28 | 4d |  | 김용승 [25%]; 최경숙; 김성수; 최윤식 | 104h | 104h | 13 | 13 | 13 | 요구사항 정의 | C02-1 1.2.2 |  |  |
| 201 | 2.1.3.1.4 | ODW/EDW 외환 요건 정의 | 3d | 2007-12-24 A | 2007-12-27 A | 195 | 100% | 2007-12-24 | 2007-12-27 | 3d |  | 김용승 [50%]; 최경숙; 김성수; 최윤식 | 82h | 82h | 10.25 | 10.25 | 10.25 | 요구사항 정의 | C02-1 1.2.2 |  |  |
| 202 | 2.1.3.2 | **인터페이스요구사항 정의** | 6d | 2007-12-28 A | 2008-01-07 A |  | 100% | 2007-12-28 | 2008-01-07 | 6d |  |  | 192h | 192h | 24 | 24 | 24 | 요구사항 정의 | C02-1 1.2.2 |  |  |
| 203 | 2.1.3.2.1 | DWLOG 대상 | 2d | 2007-12-28 A | 2007-12-31 A | 201 | 100% | 2007-12-28 | 2007-12-31 | 2d |  | 김용승; 최경숙; 김성수; 최윤식 | 64h | 64h | 8 | 8 | 8 | 요구사항 정의 | C02-1 1.2.2 |  |  |
| 204 | 2.1.3.2.2 | ODS/EDW간 데이터 연계 방식 | 2d | 2008-01-02 A | 2008-01-03 A | 203 | 100% | 2008-01-02 | 2008-01-03 | 2d |  | 김용승; 최경숙; 김성수; 최윤식 | 64h | 64h | 8 | 8 | 8 | 요구사항 정의 | C02-1 1.2.2 |  |  |
| 205 | 2.1.3.2.3 | 인터페이스 주기 정의 | 1d | 2008-01-04 A | 2008-01-04 A | 204 | 100% | 2008-01-04 | 2008-01-04 | 1d |  | 김용승; 최경숙; 김성수; 최윤식 | 32h | 32h | 4 | 4 | 4 | 요구사항 정의 | C02-1 1.2.2 |  |  |
| 206 | 2.1.3.2.4 | 시스템기본요건요구사항 정의 | 1d | 2008-01-07 A | 2008-01-07 A | 205 | 100% | 2008-01-07 | 2008-01-07 | 1d |  | 김용승; 최경숙; 김성수; 최윤식 | 32h | 32h | 4 | 4 | 4 | 요구사항 정의 | C02-1 1.2.2 |  |  |
| 207 | 2.1.3.3 | **시스템화범위 결정** | 3d | 2008-01-08 A | 2008-01-10 A |  | 100% | 2008-01-08 | 2008-01-10 | 3d |  |  | 92h | 92h | 11.5 | 11.5 | 11.5 | 요구사항 정의 | C02-1 1.2.2 |  |  |
| 208 | 2.1.3.3.1 | 업무별 인터페이스 개선 대상 소스 정의 | 2d | 2008-01-08 A | 2008-01-09 A | 206 | 100% | 2008-01-08 | 2008-01-09 | 2d |  | 김용승; 최경숙; 김성수; 최윤식 | 64h | 64h | 8 | 8 | 8 | 요구사항 정의 | C02-1 1.2.2 |  |  |
| 209 | 2.1.3.3.2 | 소스 데이터별 인터페이스 방법 정의 | 1d | 2008-01-10 A | 2008-01-10 A | 208 | 100% | 2008-01-10 | 2008-01-10 | 1d |  | 김용승 [50%]; 최경숙; 김성수; 최윤식 | 28h | 28h | 3.5 | 3.5 | 3.5 | 요구사항 정의 | C02-1 1.2.2 |  |  |

| ID | WBS | Task | Duration | Start | Finish | Predecessors | Complete | Baseline start | Baseline finish | Baseline duration | Constraint | Resources | Work | Actual work | Cost | Baseline cost | Actual cost | Text20 | Text26 | Text1 | Text30 |
| --- | --- | --- | --- | --- | --- | --- | --- | --- | --- | --- | --- | --- | --- | --- | --- | --- | --- | --- | --- | --- | --- |
| 210 | 2.1.4 | **신논리모델 구축** | 11d | 2008-01-10 A | 2008-01-24 A |  | 100% | 2008-01-10 | 2008-01-24 | 11d |  |  | 340h | 340h | 42.5 | 42.5 | 42.5 | 신논리모델 구축 | C02-1 1.2.3 |  |  |
| 211 | 2.1.4.1 | **프로세스 모델링** | 5d | 2008-01-10 A | 2008-01-16 A |  | 100% | 2008-01-10 | 2008-01-16 | 5d |  |  | 148h | 148h | 18.5 | 18.5 | 18.5 | 신논리모델 구축 | C02-1 1.2.3 | 프로세스정의서,기능차트 | 시퀀스흐름도 |
| 212 | 2.1.4.1.1 | 수신,여신,외환_I/F 프로세스 모델링 | 3d | 2008-01-10 A | 2008-01-14 A | 209 | 100% | 2008-01-10 | 2008-01-14 | 3d | must start on 2008-01-10 | 김용승; 최경숙; 김성수; 최윤식 | 92h | 92h | 11.5 | 11.5 | 11.5 | 신논리모델 구축 | C02-1 1.2.3 |  |  |
| 213 | 2.1.4.1.2 | Batch_Job Scheduler 모델링 | 1d | 2008-01-15 A | 2008-01-15 A | 212 | 100% | 2008-01-15 | 2008-01-15 | 1d |  | 김용승 [50%]; 최경숙; 김성수; 최윤식 | 28h | 28h | 3.5 | 3.5 | 3.5 | 신논리모델 구축 | C02-1 1.2.3 |  |  |
| 214 | 2.1.4.1.3 | D'fd_Job Scheduler 모델링 | 1d | 2008-01-16 A | 2008-01-16 A | 213 | 100% | 2008-01-16 | 2008-01-16 | 1d |  | 김용승 [50%]; 최경숙; 김성수; 최윤식 | 28h | 28h | 3.5 | 3.5 | 3.5 | 신논리모델 구축 | C02-1 1.2.3 |  |  |
| 215 | 2.1.4.2 | **데이터 모델링(CDM)** | 5d | 2008-01-17 A | 2008-01-23 A |  | 100% | 2008-01-17 | 2008-01-23 | 5d |  |  | 160h | 160h | 20 | 20 | 20 | 신논리모델 구축 | C02-1 1.2.3 | 엔티티정의서,엔티티목록,ERD(논리) | 엔티티정의서,엔티티목록,ERD(논리) |
| 216 | 2.1.4.2.1 | 수신,여신,외환_I/F 대상 데이터 모델링 | 5d | 2008-01-17 A | 2008-01-23 A | 214 | 100% | 2008-01-17 | 2008-01-23 | 5d |  | 김용승; 최경숙; 김성수; 최윤식 | 160h | 160h | 20 | 20 | 20 | 신논리모델 구축 | C02-1 1.2.3 |  |  |
| 217 | 2.1.4.3 | 인수테스트기준 정의 | 1d | 2008-01-24 A | 2008-01-24 A | 216 | 100% | 2008-01-24 | 2008-01-24 | 1d |  | 최경숙; 김용승; 김성수; 최윤식 | 32h | 32h | 4 | 4 | 4 | 신논리모델 구축 | C02-1 1.2.3 | 인수테스트기준서 | 인수테스트기준서 |
| 218 | 2.1.5 | **분석 산출물 검토** | 5d | 2008-01-25 A | 2008-01-31 A |  | 100% | 2008-01-25 | 2008-01-31 | 5d |  |  | 160h | 160h | 20 | 20 | 20 | 품질활동수행 | C02-1 1.6.2 |  |  |
| 219 | 2.1.5.1 | Inspection실시 | 3d | 2008-01-25 A | 2008-01-29 A | 217 | 100% | 2008-01-25 | 2008-01-29 | 3d |  | 김용승; 최경숙; 김성수; 최윤식 | 96h | 96h | 12 | 12 | 12 | 품질활동수행 | C02-1 1.6.2 |  |  |
| 220 | 2.1.5.2 | 조치계획수립 및 수행 | 2d | 2008-01-30 A | 2008-01-31 A | 219 | 100% | 2008-01-30 | 2008-01-31 | 2d | must start on 2008-01-30 | 최경숙; 김용승; 김성수; 최윤식 | 64h | 64h | 8 | 8 | 8 | 품질활동수행 | C02-1 1.6.2 |  |  |
| 221 | 2.1.6 | **분석단계 관리활동** | 33d | 2007-12-03 A | 2008-01-18 A |  | 100% | 2007-12-03 | 2008-01-18 | 33d |  |  | 192h | 192h | 24 | 24 | 24 | 단계완료 | C02-1 1.6.8 |  |  |
| 222 | 2.1.6.1 | 설계 SPM 검토 및 수정 | 1d | 2007-12-03 A | 2007-12-03 A |  | 100% | 2007-12-03 | 2007-12-03 | 1d | start no earlier than 2007-12-03 | 김용승 [50%]; 이종훈 | 12h | 12h | 1.5 | 1.5 | 1.5 | 단계완료 | C02-1 1.6.8 |  |  |
| 223 | 2.1.6.2 | 과업대비표 매핑 | 3d | 2007-12-04 A | 2007-12-06 A |  | 100% | 2007-12-04 | 2007-12-06 | 3d | start no earlier than 2007-12-04 | 김용승 [50%]; 이종훈 | 36h | 36h | 4.5 | 4.5 | 4.5 | 단계완료 | C02-1 1.6.8 |  |  |
| 224 | 2.1.6.3 | 형상관리 Tool 교육 | 2d | 2007-12-10 A | 2007-12-11 A |  | 100% | 2007-12-10 | 2007-12-11 | 2d | start no earlier than 2007-12-10 | 김용승 [50%]; 이종훈 | 24h | 24h | 3 | 3 | 3 | 단계완료 | C02-1 1.6.8 |  |  |
| 225 | 2.1.6.4 | Inspection(1차)실시및 조치 | 3d | 2008-01-07 A | 2008-01-09 A |  | 100% | 2008-01-07 | 2008-01-09 | 3d | start no earlier than 2008-01-07 | 김용승 [50%]; 이종훈 | 36h | 36h | 4.5 | 4.5 | 4.5 | 단계완료 | C02-1 1.6.8 |  |  |
| 226 | 2.1.6.5 | 요구사항 추적표 매핑 | 2d | 2008-01-10 A | 2008-01-11 A |  | 100% | 2008-01-10 | 2008-01-11 | 2d | start no earlier than 2008-01-10 | 김용승 [50%]; 이종훈 | 24h | 24h | 3 | 3 | 3 | 단계완료 | C02-1 1.6.8 |  |  |
| 227 | 2.1.6.6 | 요구사항 규모측정방법 교육및 측정 | 2d | 2008-01-14 A | 2008-01-15 A |  | 100% | 2008-01-14 | 2008-01-15 | 2d | start no earlier than 2008-01-14 | 김용승 [50%]; 이종훈 | 24h | 24h | 3 | 3 | 3 | 단계완료 | C02-1 1.6.8 |  |  |
| 228 | 2.1.6.7 | 고객검토(1차) 실시 및 조치 | 3d | 2008-01-16 A | 2008-01-18 A |  | 100% | 2008-01-16 | 2008-01-18 | 3d | start no earlier than 2008-01-16 | 김용승 [50%]; 이종훈 | 36h | 36h | 4.5 | 4.5 | 4.5 | 단계완료 | C02-1 1.6.8 |  |  |
| 229 | 2.2 | **설계** | 64d | 2008-01-21 A | 2008-04-22 A |  | 100% | 2008-01-21 | 2008-04-22 | 64d |  |  |  |  |  |  |  |  |  |  |  |
| 230 | 2.2.1 | **단계착수** | 2d | 2008-02-01 A | 2008-02-04 A |  | 100% | 2008-02-01 | 2008-02-04 | 2d |  |  |  |  |  |  |  | 단계착수 | C02-1 1.6.1 |  |  |
| 231 | 2.2.1.1 | SPM검토 및 보완 | 1d | 2008-02-01 A | 2008-02-01 A |  | 100% | 2008-02-01 | 2008-02-01 | 1d | start no earlier than 2008-02-01 |  |  |  |  |  |  | 단계착수 | C02-1 1.6.1 |  |  |
| 232 | 2.2.1.2 | 단계착수 오리엔테이션 | 1d | 2008-02-04 A | 2008-02-04 A | 231 | 100% | 2008-02-04 | 2008-02-04 | 1d |  |  |  |  |  |  |  | 단계착수 | C02-1 1.6.1 |  |  |
| 233 | 2.2.2 | **기본설계** | 11d | 2008-02-05 A | 2008-02-22 A |  | 100% | 2008-02-05 | 2008-02-22 | 11d |  |  |  |  |  |  |  | 기본설계 | C02-1 1.3.1 |  |  |
| 234 | 2.2.2.1 | **시스템구조 설계** | 6d | 2008-02-05 A | 2008-02-15 A |  | 100% | 2008-02-05 | 2008-02-15 | 6d |  |  |  |  |  |  |  | 기본설계 | C02-1 1.3.1 |  |  |
| 235 | 2.2.2.1.1 | 어플리케이션구조도작성 | 5d | 2008-02-05 A | 2008-02-14 A | 232 | 100% | 2008-02-05 | 2008-02-14 | 5d |  |  |  |  |  |  |  | 기본설계 | C02-1 1.3.1 |  | 프로그램목록,시퀀스세부구성도 |
| 236 | 2.2.2.1.2 | 프로그램목록작성 | 1d | 2008-02-15 A | 2008-02-15 A | 235 | 100% | 2008-02-15 | 2008-02-15 | 1d |  |  |  |  |  |  |  | 기본설계 | C02-1 1.3.1 |  |  |
| 237 | 2.2.2.2 | 데이터코드 설계 | 5d | 2008-02-18 A | 2008-02-22 A | 236 | 100% | 2008-02-18 | 2008-02-22 | 5d |  |  |  |  |  |  |  | 기본설계 | C02-1 1.3.1 |  | 데이터코드설계서,데이터코드목록 |

| ID | WBS | Task | Duration | Start | Finish | Predecessors | Complete | Baseline start | Baseline finish | Baseline duration | Constraint | Text20 | Text26 | Text30 |
| --- | --- | --- | --- | --- | --- | --- | --- | --- | --- | --- | --- | --- | --- | --- |
| 238 | 2.2.3 | **상세설계** | 27d | 2008-02-25 A | 2008-04-01 A |  | 100% | 2008-02-25 | 2008-04-01 | 27d |  | 상세설계 | C02-1 1.3.3 |  |
| 239 | 2.2.3.1 | Gap 분석 및 해결방안 도출 | 10d | 2008-02-25 A | 2008-03-07 A | 237 | 100% | 2008-02-25 | 2008-03-07 | 10d |  | 상세설계 | C02-1 1.3.3 |  |
| 240 | 2.2.3.2 | **데이터베이스 상세설계** | 12d | 2008-03-10 A | 2008-03-25 A |  | 100% | 2008-03-10 | 2008-03-25 | 12d |  | 상세설계 | C02-1 1.3.3 | 테이블정의서,테이블목록,ERD(물리) |
| 241 | 2.2.3.2.1 | 테이블목록작성 | 2d | 2008-03-10 A | 2008-03-11 A | 239 | 100% | 2008-03-10 | 2008-03-11 | 2d |  | 상세설계 | C02-1 1.3.3 |  |
| 242 | 2.2.3.2.2 | 테이블정의서작성 | 5d | 2008-03-12 A | 2008-03-18 A | 241 | 100% | 2008-03-12 | 2008-03-18 | 5d |  | 상세설계 | C02-1 1.3.3 |  |
| 243 | 2.2.3.2.3 | ERD작성 | 5d | 2008-03-19 A | 2008-03-25 A | 242 | 100% | 2008-03-19 | 2008-03-25 | 5d |  | 상세설계 | C02-1 1.3.3 |  |
| 244 | 2.2.3.3 | 프로그램 설계 | 5d | 2008-03-26 A | 2008-04-01 A | 243 | 100% | 2008-03-26 | 2008-04-01 | 5d |  | 상세설계 | C02-1 1.3.3 | 시퀀스세부구성도 |
| 245 | 2.2.4 | **컨버전설계** | 15d | 2008-04-02 A | 2008-04-22 A |  | 100% | 2008-04-02 | 2008-04-22 | 15d |  | 컨버전 설계 | C02-1 1.3.5 |  |
| 246 | 2.2.4.1 | 컨버전계획 수립 | 5d | 2008-04-02 A | 2008-04-08 A | 244 | 100% | 2008-04-02 | 2008-04-08 | 5d |  | 컨버전 설계 | C02-1 1.3.5 | 컨버전계획서 |
| 247 | 2.2.4.2 | 매핑흐름설계 | 5d | 2008-04-09 A | 2008-04-15 A | 246 | 100% | 2008-04-09 | 2008-04-15 | 5d |  | 컨버전 설계 | C02-1 1.3.5 |  |
| 248 | 2.2.4.3 | 데이터매핑정의서설계 | 5d | 2008-04-16 A | 2008-04-22 A | 247 | 100% | 2008-04-16 | 2008-04-22 | 5d |  | 컨버전 설계 | C02-1 1.3.5 | 매핑정의서 |
| 249 | 2.2.5 | **설계단계 관리활동** | 56d | 2008-01-21 A | 2008-04-10 A |  | 100% | 2008-01-21 | 2008-04-10 | 56d |  | 단계완료 | C02-1 1.6.8 |  |
| 250 | 2.2.5.1 | 설계 SPM 검토 및 수정 | 1d | 2008-01-21 A | 2008-01-21 A |  | 100% | 2008-01-21 | 2008-01-21 | 1d | start no earlier than 2008-01-21 | 단계완료 | C02-1 1.6.8 |  |
| 251 | 2.2.5.2 | 분석 감리 조치 | 3d | 2008-01-22 A | 2008-01-24 A |  | 100% | 2008-01-22 | 2008-01-24 | 3d | start no earlier than 2008-01-22 | 단계완료 | C02-1 1.6.8 |  |
| 252 | 2.2.5.3 | 오리엔테이션(2차) 실시 | 1d | 2008-01-25 A | 2008-01-25 A |  | 100% | 2008-01-25 | 2008-01-25 | 1d | start no earlier than 2008-01-25 | 단계완료 | C02-1 1.6.8 |  |
| 253 | 2.2.5.4 | QAO심사(2차) 조치 | 37d | 2008-02-04 A | 2008-03-28 A |  | 100% | 2008-02-04 | 2008-03-28 | 37d | start no earlier than 2008-02-04 | 단계완료 | C02-1 1.6.8 |  |
| 254 | 2.2.5.5 | Inspection(2차) 실시 및 조치 | 3d | 2008-03-31 A | 2008-04-02 A | 253 | 100% | 2008-03-31 | 2008-04-02 | 3d | finish no earlier than 2007-11-30 | 단계완료 | C02-1 1.6.8 |  |
| 255 | 2.2.5.6 | 설계 요구사항추적표 매핑 | 3d | 2008-04-03 A | 2008-04-07 A |  | 100% | 2008-04-03 | 2008-04-07 | 3d | start no earlier than 2008-04-03 | 단계완료 | C02-1 1.6.8 |  |
| 256 | 2.2.5.7 | 고객검토(2차) 실시 및 조치 | 3d | 2008-04-08 A | 2008-04-10 A | 250 | 100% | 2008-04-08 | 2008-04-10 | 3d | start no earlier than 2008-04-08 | 단계완료 | C02-1 1.6.8 |  |
| 257 | 2.3 | **개발** | 76d | 2008-04-10 A | 2008-07-30 A |  | 100% | 2008-04-10 | 2008-07-30 | 76d |  |  |  |  |
| 258 | 2.3.1 | **단계착수** | 10d | 2008-05-02 A | 2008-05-19 A |  | 100% | 2008-05-02 | 2008-05-19 | 10d |  | 단계착수 | C02-1 1.6.1 |  |
| 259 | 2.3.1.1 | SPM검토 및 보완 | 1d | 2008-05-02 A | 2008-05-02 A |  | 100% | 2008-05-02 | 2008-05-02 | 1d | start no earlier than 2008-05-01 | 단계착수 | C02-1 1.6.1 |  |
| 260 | 2.3.1.2 | 단계착수 오리엔테이션 | 1d | 2008-05-06 A | 2008-05-06 A | 259 | 100% | 2008-05-06 | 2008-05-06 | 1d |  | 단계착수 | C02-1 1.6.1 |  |
| 261 | 2.3.1.3 | 개발표준 및 개발환경교육 | 4d | 2008-05-07 A | 2008-05-13 A | 260 | 100% | 2008-05-07 | 2008-05-13 | 4d |  | 단계착수 | C02-1 1.6.1 |  |
| 262 | 2.3.1.4 | 테스트데이터확보 | 4d | 2008-05-14 A | 2008-05-19 A | 261 | 100% | 2008-05-14 | 2008-05-19 | 4d |  | 단계착수 | C02-1 1.6.1 |  |

Notes:
- 248: 업무단에서는 매핑정의서로 대체요망

| ID | WBS | Task | Duration | Start | Finish | Predecessors | Complete | Baseline start | Baseline finish | Baseline duration | Constraint | Text20 | Text26 | Text30 |
| --- | --- | --- | --- | --- | --- | --- | --- | --- | --- | --- | --- | --- | --- | --- |
| 263 | 2.3.2 | **코딩 및 단위테스트 실시** | 52d | 2008-05-19 A | 2008-07-30 A |  | 100% | 2008-05-19 | 2008-07-30 | 52d |  | 코딩 및 단위테스트 실시 | C02-1 1.4.1 |  |
| 264 | 2.3.2.1 | 단위테스트체크리스트작성 | 2.8d | 2008-05-19 A | 2008-05-21 A | 262 | 100% | 2008-05-19 | 2008-05-21 | 2.8d | must start on 2008-05-19 | 코딩 및 단위테스트 실시 | C02-1 1.4.1 | 단위테스트체크리스트 |
| 265 | 2.3.2.2 | 프로그램모델 및 공통프로그램 개발 | 10.3d | 2008-05-21 A | 2008-06-03 A | 264 | 100% | 2008-05-21 | 2008-06-03 | 10.3d |  | 코딩 및 단위테스트 실시 | C02-1 1.4.1 |  |
| 266 | 2.3.2.3 | 프로그램 코딩 | 20d | 2008-06-03 A | 2008-07-01 A | 265 | 100% | 2008-06-03 | 2008-07-01 | 20d |  | 코딩 및 단위테스트 실시 | C02-1 1.4.1 | 소스코드 |
| 267 | 2.3.2.4 | 단위테스트 실시 | 20d | 2008-07-02 A | 2008-07-30 A | 266 | 100% | 2008-07-02 | 2008-07-30 | 20d |  | 코딩 및 단위테스트 실시 | C02-1 1.4.1 | 단위테스트결과서 |
| 268 | 2.3.3 | **개발단계 관리활동** | 62d | 2008-04-10 A | 2008-07-09 A |  | 100% | 2008-04-10 | 2008-07-09 | 62d |  | 단계완료 | C02-1 1.6.8 |  |
| 269 | 2.3.3.1 | 개발 SPM 검토 및 수정 | 3d | 2008-04-10 A | 2008-04-14 A |  | 100% | 2008-04-10 | 2008-04-14 | 3d | start no earlier than 2008-04-10 | 단계완료 | C02-1 1.6.8 |  |
| 270 | 2.3.3.2 | 설계 감리 조치 | 5d | 2008-04-15 A | 2008-04-21 A |  | 100% | 2008-04-15 | 2008-04-21 | 5d | start no earlier than 2008-04-15 | 단계완료 | C02-1 1.6.8 |  |
| 271 | 2.3.3.3 | 오리엔테이션(3차) 실시 | 1d | 2008-04-22 A | 2008-04-22 A | 269 | 100% | 2008-04-22 | 2008-04-22 | 1d | start no earlier than 2008-04-22 | 단계완료 | C02-1 1.6.8 |  |
| 272 | 2.3.3.4 | QAO심사(3차) 조치 | 37d | 2008-05-06 A | 2008-06-26 A |  | 100% | 2008-05-06 | 2008-06-26 | 37d | start no earlier than 2008-05-06 | 단계완료 | C02-1 1.6.8 |  |
| 273 | 2.3.3.5 | Inspection(3차) 실시 및 조치 | 5d | 2008-06-30 A | 2008-07-04 A |  | 100% | 2008-06-30 | 2008-07-04 | 5d | start no earlier than 2008-06-30 | 단계완료 | C02-1 1.6.8 |  |
| 274 | 2.3.3.6 | 개발 요구사항추적표 매핑 | 3d | 2008-07-07 A | 2008-07-09 A | 273 | 100% | 2008-07-07 | 2008-07-09 | 3d | start no earlier than 2008-06-02 | 단계완료 | C02-1 1.6.8 |  |
| 275 | 2.4 | **통합테스트** | 64d | 2008-07-10 A | 2008-10-10 A |  | 100% | 2008-07-10 | 2008-10-10 | 64d |  |  |  |  |
| 276 | 2.4.1 | **단계착수** | 2d | 2008-08-01 A | 2008-08-04 A |  | 100% | 2008-08-01 | 2008-08-04 | 2d |  | 단계착수 | C02-1 1.6.1 |  |
| 277 | 2.4.1.1 | SPM검토 및 보완 | 1d | 2008-08-01 A | 2008-08-01 A |  | 100% | 2008-08-01 | 2008-08-01 | 1d | start no earlier than 2008-08-01 | 단계착수 | C02-1 1.6.1 |  |
| 278 | 2.4.1.2 | 단계착수 오리엔테이션 | 1d | 2008-08-04 A | 2008-08-04 A | 277 | 100% | 2008-08-04 | 2008-08-04 | 1d |  | 단계착수 | C02-1 1.6.1 |  |
| 279 | 2.4.2 | **테스트 실시** | 42d | 2008-08-02 A | 2008-10-01 A |  | 100% | 2008-08-02 | 2008-10-01 | 42d |  | 테스트 실시 | C02-1 1.4.2 |  |
| 280 | 2.4.2.1 | 통합테스트계획 수립 | 2d | 2008-08-05 A | 2008-08-06 A | 278 | 100% | 2008-08-05 | 2008-08-06 | 2d |  | 테스트 실시 | C02-1 1.4.2 | 테스트계획서 |
| 281 | 2.4.2.2 | 통합테스트 시나리오 작성 | 2d | 2008-08-07 A | 2008-08-08 A | 280 | 100% | 2008-08-07 | 2008-08-08 | 2d |  | 테스트 실시 | C02-1 1.4.2 | 통합테스트시나리오 |
| 282 | 2.4.2.3 | **통합테스트** | 42d | 2008-08-02 A | 2008-10-01 A |  | 100% | 2008-08-02 | 2008-10-01 | 42d |  | 테스트 실시 | C02-1 1.4.2 |  |
| 283 | 2.4.2.3.1 | 통합테스트계획 수립 | 20d | 2008-08-02 A | 2008-08-29 A |  | 100% | 2008-08-02 | 2008-08-29 | 20d | must start on 2008-08-02 | 테스트 실시 | C02-1 1.4.2 | 통합테스트계획서 |
| 284 | 2.4.2.3.2 | 통합테스트 시나리오 작성 | 25d | 2008-08-18 A | 2008-09-22 A |  | 100% | 2008-08-18 | 2008-09-22 | 25d | start no earlier than 2008-08-16 | 테스트 실시 | C02-1 1.4.2 | 통합테스트시나리오 |
| 285 | 2.4.2.3.3 | 통합테스트 실시 | 7d | 2008-09-23 A | 2008-10-01 A | 284 | 100% | 2008-09-23 | 2008-10-01 | 7d |  | 테스트 실시 | C02-1 1.4.2 | 통합테스트시나리오(결과) |
| 286 | 2.4.3 | **통합테스트단계 관리활동** | 64d | 2008-07-10 A | 2008-10-10 A |  | 100% | 2008-07-10 | 2008-10-10 | 64d |  | 품질활동수행 | C02-1 1.6.2 |  |
| 287 | 2.4.3.1 | 통합테스트 SPM 검토 및 수정 | 5d | 2008-07-10 A | 2008-07-16 A |  | 100% | 2008-07-10 | 2008-07-16 | 5d | start no earlier than 2008-07-10 | 품질활동수행 | C02-1 1.6.2 |  |
| 288 | 2.4.3.2 | 오리엔테이션(4차) 실시 | 2d | 2008-07-18 A | 2008-07-21 A | 287 | 100% | 2008-07-18 | 2008-07-21 | 2d | start no earlier than 2008-06-16 | 품질활동수행 | C02-1 1.6.2 |  |
| 289 | 2.4.3.3 | QAO심사(4차) 조치 | 34d | 2008-08-04 A | 2008-09-19 A |  | 100% | 2008-08-04 | 2008-09-19 | 34d | start no earlier than 2008-08-04 | 품질활동수행 | C02-1 1.6.2 |  |
| 290 | 2.4.3.4 | Inspection(4차)실시및 조치 | 5d | 2008-09-22 A | 2008-09-26 A |  | 100% | 2008-09-22 | 2008-09-26 | 5d | start no earlier than 2008-09-22 | 품질활동수행 | C02-1 1.6.2 |  |
| 291 | 2.4.3.5 | 통합테스트 요구사항추적표 매핑 | 9d | 2008-09-08 A | 2008-09-19 A |  | 100% | 2008-09-08 | 2008-09-19 | 9d | start no earlier than 2008-09-08 | 품질활동수행 | C02-1 1.6.2 |  |
| 292 | 2.4.3.6 | 실적규모측정방법 교육 및 측정 | 5d | 2008-10-06 A | 2008-10-10 A |  | 100% | 2008-10-06 | 2008-10-10 | 5d | start no earlier than 2008-10-06 | 품질활동수행 | C02-1 1.6.2 |  |

| ID | WBS | Task | Duration | Start | Finish | Predecessors | Complete | Remaining | Baseline start | Baseline finish | Baseline duration | Total slack | Free slack | Constraint | Text20 | Text26 | Text30 |
| --- | --- | --- | --- | --- | --- | --- | --- | --- | --- | --- | --- | --- | --- | --- | --- | --- | --- |
| 293 | 2.5 | **영업점테스트** | 148d | 2008-07-07 A | 2009-01-27 |  | 62% | 56.48d | 2008-07-07 | 2009-01-27 | 148d | 40d |  |  | 테스트 실시 | C02-1 1.4.2 |  |
| 294 | 2.5.1 | **시스템사용자교육** | 32d | 2008-11-10 | 2008-12-19 |  |  |  | 2008-11-10 | 2008-12-19 | 32d | 66d |  |  | 시스템 사용교육 | C02-1 1.5.3 |  |
| 295 | 2.5.1.1 | 운영 매뉴얼 작성 | 16d | 2008-11-10 | 2008-11-28 |  |  |  | 2008-11-10 | 2008-11-28 | 16d | 66d | 0d | start no earlier than 2008-11-10 | 시스템 사용교육 | C02-1 1.5.3 | 운영매뉴얼 |
| 296 | 2.5.1.2 | 운영자 교육 실시 | 16d | 2008-12-01 | 2008-12-19 | 295 |  |  | 2008-12-01 | 2008-12-19 | 16d | 66d |  | start no earlier than 2008-09-02 | 시스템 사용교육 | C02-1 1.5.3 | 교육결과서 |
| 297 | 2.5.2 | **영업점테스트** | 113d | 2008-07-21 A | 2008-12-19 |  | 89% | 12.56d | 2008-07-21 | 2008-12-19 | 113d | 66d |  |  | 테스트 실시 | C02-1 1.4.2 |  |
| 298 | 2.5.2.1 | 영업점 테스트계획 수립 | 9d | 2008-07-21 A | 2008-07-31 A |  | 100% |  | 2008-07-21 | 2008-07-31 | 9d |  |  | start no earlier than 2008-07-21 | 테스트 실시 | C02-1 1.4.2 | 영업점테스트계획서 |
| 299 | 2.5.2.2 | 영업점테스트 시나리오 작성 | 9d | 2008-07-21 A | 2008-07-31 A |  | 100% |  | 2008-07-21 | 2008-07-31 | 9d |  |  | start no earlier than 2008-07-21 | 테스트 실시 | C02-1 1.4.2 | 영업점테스트시나리오 |
| 300 | 2.5.2.3 | 1차 시범점테스트 실시 및 보완 | 15d | 2008-08-10 A | 2008-08-29 A |  | 100% |  | 2008-08-10 | 2008-08-29 | 15d |  |  | start no earlier than 2008-08-10 | 테스트 실시 | C02-1 1.4.2 |  |
| 301 | 2.5.2.4 | 2차 시범점테스트 실시 및 보완 | 14d | 2008-09-01 A | 2008-09-19 A | 300 | 100% |  | 2008-09-01 | 2008-09-19 | 14d |  |  |  | 테스트 실시 | C02-1 1.4.2 |  |
| 302 | 2.5.2.5 | 1차 영업점테스트 실시 및 보완 | 7d | 2008-09-22 A | 2008-09-30 A |  | 100% |  | 2008-09-22 | 2008-09-30 | 7d |  |  | start no earlier than 2008-09-21 | 테스트 실시 | C02-1 1.4.2 |  |
| 303 | 2.5.2.6 | 2차 영업점테스트 실시 및 보완 | 16d | 2008-10-12 A | 2008-10-30 A |  | 100% |  | 2008-10-12 | 2008-10-30 | 16d |  |  | start no earlier than 2008-10-12 | 테스트 실시 | C02-1 1.4.2 |  |
| 304 | 2.5.2.7 | 3차 영업점테스트 실시 및 보완 | 7d | 2008-11-02 A | 2008-11-10 A |  | 100% |  | 2008-11-02 | 2008-11-10 | 7d |  |  | start no earlier than 2008-11-02 | 테스트 실시 | C02-1 1.4.2 |  |
| 305 | 2.5.2.8 | 4차 영업점테스트 실시 및 보완 | 11d | 2008-11-16 A | 2008-11-28 A |  | 100% |  | 2008-11-16 | 2008-11-28 | 11d |  |  | start no earlier than 2008-11-16 | 테스트 실시 | C02-1 1.4.2 |  |
| 306 | 2.5.2.9 | 5차 영업점테스트 실시 및 보완 | 11d | 2008-12-07 | 2008-12-19 |  |  |  | 2008-12-07 | 2008-12-19 | 11d | 66d |  | start no earlier than 2008-12-07 | 테스트 실시 | C02-1 1.4.2 |  |
| 307 | 2.5.3 | **인수테스트** | 13d | 2008-12-22 | 2009-01-09 |  |  |  | 2008-12-22 | 2009-01-09 | 13d | 52d |  |  | 테스트 실시 | C02-1 1.4.2 |  |
| 308 | 2.5.3.1 | 인수테스트실시 | 13d | 2008-12-22 | 2009-01-09 |  |  |  | 2008-12-22 | 2009-01-09 | 13d | 52d |  | start no earlier than 2008-12-22 | 테스트 실시 | C02-1 1.4.2 | 인수테스트기준서(결과),결함보고서(인수) |
| 309 | 2.5.4 | **이행** | 17d | 2009-01-05 A | 2009-01-27 |  | 67% | 5.67d | 2009-01-05 | 2009-01-27 | 17d | 40d |  |  | 컨버전 및 릴리이즈 | C02-1 1.5.2 |  |
| 310 | 2.5.4.1 | 이행계획 수립 | 5d | 2009-01-05 A | 2009-01-09 A |  | 100% |  | 2009-01-05 | 2009-01-09 | 5d |  |  | must start on 2009-01-05 | 컨버전 및 릴리이즈 | C02-1 1.5.2 | 이행계획서 |
| 311 | 2.5.4.2 | 이행시나리오 작성 | 5d | 2009-01-12 A | 2009-01-16 A | 310 | 100% |  | 2009-01-12 | 2009-01-16 | 5d |  |  |  | 컨버전 및 릴리이즈 | C02-1 1.5.2 | 이행시나리오 |
| 312 | 2.5.4.3 | 이행 실시 | 5d | 2009-01-21 | 2009-01-27 |  |  |  | 2009-01-21 | 2009-01-27 | 5d | 40d |  | start no earlier than 2009-01-21 | 컨버전 및 릴리이즈 | C02-1 1.5.2 | 운영시스템 |
| 313 | 2.5.5 | **영업점테스트단계 관리활동** | 146d | 2008-07-07 A | 2009-01-23 |  | 62% | 55.34d | 2008-07-07 | 2009-01-23 | 146d | 42d |  |  | 품질활동수행 | C02-1 1.6.2 |  |
| 314 | 2.5.5.1 | 영업점테스트 단계 계획 검토 및 수정 | 5d | 2008-07-07 A | 2008-07-11 A |  | 100% |  | 2008-07-07 | 2008-07-11 | 5d |  |  | start no earlier than 2008-07-07 | 품질활동수행 | C02-1 1.6.2 |  |
| 315 | 2.5.5.2 | 영업점테스트 SPM 검토 및 수정 | 4d | 2008-07-14 A | 2008-07-18 A |  | 100% |  | 2008-07-14 | 2008-07-18 | 4d |  |  | start no earlier than 2008-07-14 | 품질활동수행 | C02-1 1.6.2 |  |
| 316 | 2.5.5.3 | 오리엔테이션(5차) 실시 | 6d | 2008-08-01 A | 2008-08-08 A |  | 100% |  | 2008-08-01 | 2008-08-08 | 6d |  |  | start no earlier than 2008-08-01 | 품질활동수행 | C02-1 1.6.2 |  |
| 317 | 2.5.5.4 | QAO심사(5차) 조치 | 51d | 2008-09-08 A | 2008-11-14 A |  | 100% |  | 2008-09-08 | 2008-11-14 | 51d |  |  | start no earlier than 2008-09-08 | 품질활동수행 | C02-1 1.6.2 |  |
| 318 | 2.5.5.5 | Inspection(5차)실시및 조치 | 11d | 2008-12-01 A | 2008-12-12 A |  | 100% |  | 2008-12-01 | 2008-12-12 | 11d |  |  | start no earlier than 2008-12-01 | 품질활동수행 | C02-1 1.6.2 |  |
| 319 | 2.5.5.6 | 제품검사 조치 | 29d | 2008-12-15 | 2009-01-23 |  |  |  | 2008-12-15 | 2009-01-23 | 29d | 42d |  | start no earlier than 2008-12-15 | 품질활동수행 | C02-1 1.6.2 |  |
| 320 | 2.5.5.7 | 영업점테스트 요구사항추적표 매핑 | 10d | 2009-01-05 | 2009-01-16 |  |  |  | 2009-01-05 | 2009-01-16 | 10d | 47d |  | start no earlier than 2009-01-05 | 품질활동수행 | C02-1 1.6.2 |  |
| 321 | 2.5.5.8 | 고객검토(3차) 실시 및 조치 | 8d | 2008-12-22 | 2009-01-02 |  |  |  | 2008-12-22 | 2009-01-02 | 8d | 57d |  | start no earlier than 2008-12-22 | 품질활동수행 | C02-1 1.6.2 |  |
| 322 | 2.6 | 안정화 | 39d | 2009-01-29 | 2009-03-24 |  |  |  | 2009-01-29 | 2009-03-24 | 39d | 0d |  | start no earlier than 2009-01-29 | 시범운영 | C02-1 1.5.4 |  |
