# 공통(고객)

Schedule from MS Project, 2007-04-25 to 2009-03-24, costs in ₩, A marks actual dates.
HSIC-0600001
�궪�꽦SDS

## Calendars

- 농협신용신시스템: Mon-Fri 08:00-12:00, 13:00-17:00; Sat-Sun off. Exceptions (off unless hours are given): 2007-05-24, 2007-06-06, 2007-07-17, 2007-08-15, 2007-09-24 to 2007-09-26, 2007-10-03, 2007-12-25, 2008-01-01, 2008-02-06 to 2008-02-08, 2008-04-26 08:00-12:00, 13:00-17:00, 2008-05-01 08:00-12:00, 13:00-17:00, 2008-05-05, 2008-05-12, 2008-06-06, 2008-07-17, 2008-08-10 08:00-12:00, 13:00-17:00, 2008-08-15, 2008-08-31 08:00-12:00, 13:00-17:00, 2008-09-15, 2008-09-21 08:00-12:00, 13:00-17:00, 2008-10-03, 2008-10-12 08:00-12:00, 13:00-17:00, 2008-11-02 08:00-12:00, 13:00-17:00, 2008-11-15 08:00-12:00, 13:00-17:00, 2008-12-07 08:00-12:00, 13:00-17:00, 2008-12-25, 2009-01-01.

## Resources

| Resource | Rate |
| --- | --- |
| 이윤경 | 0.12 |
| 이진희 | 0.12 |
| 설계자 | 0.12 |
| 개발자 | 0.12 |
| 프레임웍 |  |

## Schedule

| ID | WBS | Task | Duration | Start | Finish | Predecessors | Complete | Baseline start | Baseline finish | Baseline duration | Constraint | Resources | Work | Actual work | Cost | Baseline cost | Actual cost | Text20 | Text26 | Text30 |
| --- | --- | --- | --- | --- | --- | --- | --- | --- | --- | --- | --- | --- | --- | --- | --- | --- | --- | --- | --- | --- |
| 1 | 1 | **분석** | 66d | 2007-04-25 A | 2007-07-30 A |  | 100% | 2007-04-25 | 2007-07-30 | 66d |  |  | 932h | 932h | 116.5 | 116.5 | 116.5 | 분석 | C02-1 1.2 |  |
| 2 | 1.1 | **단계착수** | 18d | 2007-04-25 A | 2007-05-18 A |  | 100% | 2007-04-25 | 2007-05-18 | 18d |  |  | 42h | 42h | 5.25 | 5.25 | 5.25 | 단계착수 | C02-1 1.6.1 |  |
| 3 | 1.1.1 | 프로젝트계획검토 | 1d | 2007-04-25 A | 2007-04-25 A |  | 100% | 2007-04-25 | 2007-04-25 | 1d |  | 이윤경 | 8h | 8h | 1 | 1 | 1 | 단계착수 | C02-1 1.6.1 |  |
| 4 | 1.1.2 | SPM검토 및 보완 | 3d | 2007-04-25 A | 2007-04-27 A | 3SS | 100% | 2007-04-25 | 2007-04-27 | 3d |  | 이윤경; 이진희 | 24h | 24h | 3 | 3 | 3 | 단계착수 | C02-1 1.6.1 |  |
| 5 | 1.1.3 | 단계착수 오리엔테이션 | 1d | 2007-05-03 A | 2007-05-03 A |  | 100% | 2007-05-03 | 2007-05-03 | 1d | must finish on 2007-05-03 | 이윤경 [37.5%]; 이진희 [37.5%] | 6h | 6h | 0.75 | 0.75 | 0.75 | 단계착수 | C02-1 1.6.1 |  |
| 6 | 1.1.4 | 형상관리Tool교육 | 2d | 2007-05-17 A | 2007-05-18 A |  | 100% | 2007-05-17 | 2007-05-18 | 2d | must start on 2007-05-17 | 이윤경 [25%]; 이진희 [12.5%] | 4h | 4h | 0.5 | 0.5 | 0.5 | 단계착수 | C02-1 1.6.1 |  |
| 7 | 1.2 | **현황평가** | 26d | 2007-04-30 A | 2007-06-05 A |  | 100% | 2007-04-30 | 2007-06-05 | 26d |  |  | 406h | 406h | 50.75 | 50.75 | 50.75 | 현황 평가 | C02-1 1.2.1 |  |
| 8 | 1.2.1 | **현행업무 분석** | 10d | 2007-04-30 A | 2007-05-11 A |  | 100% | 2007-04-30 | 2007-05-11 | 10d |  |  | 138h | 138h | 17.25 | 17.25 | 17.25 | 현황 평가 | C02-1 1.2.1 | 현행업무분장표, 현행업무흐름도 |
| 9 | 1.2.1.1 | 현행업무분장파악 | 5d | 2007-04-30 A | 2007-05-04 A |  | 100% | 2007-04-30 | 2007-05-04 | 5d | must start on 2007-04-30 | 이윤경 [50%]; 이진희 [50%] | 31h | 31h | 3.88 | 3.88 | 3.88 | 현황 평가 | C02-1 1.2.1 |  |
| 10 | 1.2.1.2 | AS-IS 자료수집 및 현행업무흐름분석 | 10d | 2007-04-30 A | 2007-05-11 A | 9SS | 100% | 2007-04-30 | 2007-05-11 | 10d |  | 이윤경 [75%]; 이진희 | 95h | 95h | 11.88 | 11.88 | 11.88 | 현황 평가 | C02-1 1.2.1 |  |
| 11 | 1.2.1.3 | 과업대비표 매핑 | 3d | 2007-05-07 A | 2007-05-09 A | 10FF-2d | 100% | 2007-05-07 | 2007-05-09 | 3d |  | 이윤경 [50%] | 12h | 12h | 1.5 | 1.5 | 1.5 | 현황 평가 | C02-1 1.2.1 |  |
| 12 | 1.2.2 | **현행시스템 분석** | 12d | 2007-05-10 A | 2007-05-28 A |  | 100% | 2007-05-10 | 2007-05-28 | 12d |  |  | 172h | 172h | 21.5 | 21.5 | 21.5 | 현황 평가 | C02-1 1.2.1 | 현행시스템분석서 |
| 13 | 1.2.2.1 | 현행어플리케이션구조분석 | 6d | 2007-05-10 A | 2007-05-17 A | 11 | 100% | 2007-05-10 | 2007-05-17 | 6d |  | 이윤경; 이진희 | 77h | 77h | 9.63 | 9.63 | 9.63 | 현황 평가 | C02-1 1.2.1 |  |
| 14 | 1.2.2.2 | 현행DB구조분석 | 6d | 2007-05-18 A | 2007-05-28 A | 13 | 100% | 2007-05-18 | 2007-05-28 | 6d |  | 이윤경 [50%]; 이진희 [25%] | 35h | 35h | 4.38 | 4.38 | 4.38 | 현황 평가 | C02-1 1.2.1 |  |
| 15 | 1.2.2.3 | 현행기술구조분석 | 6d | 2007-05-18 A | 2007-05-28 A | 14SS | 100% | 2007-05-18 | 2007-05-28 | 6d |  | 이윤경 [37.5%]; 이진희 [37.5%] | 30h | 30h | 3.75 | 3.75 | 3.75 | 현황 평가 | C02-1 1.2.1 |  |
| 16 | 1.2.2.4 | 문제점 및 개선사항 파악 | 6d | 2007-05-18 A | 2007-05-28 A | 15FF | 100% | 2007-05-18 | 2007-05-28 | 6d |  | 이윤경 [25%]; 이진희 [37.5%] | 30h | 30h | 3.75 | 3.75 | 3.75 | 현황 평가 | C02-1 1.2.1 |  |
| 17 | 1.2.3 | **인터뷰 실시** | 6d | 2007-05-29 A | 2007-06-05 A |  | 100% | 2007-05-29 | 2007-06-05 | 6d |  |  | 96h | 96h | 12 | 12 | 12 | 현황 평가 | C02-1 1.2.1 | 인터뷰결과 |
| 18 | 1.2.3.1 | 인터뷰대상선정 | 1d | 2007-05-29 A | 2007-05-29 A | 16 | 100% | 2007-05-29 | 2007-05-29 | 1d |  | 이윤경; 이진희 | 16h | 16h | 2 | 2 | 2 | 현황 평가 | C02-1 1.2.1 |  |
| 19 | 1.2.3.2 | 인터뷰질의서 작성 | 1d | 2007-05-30 A | 2007-05-30 A | 18 | 100% | 2007-05-30 | 2007-05-30 | 1d |  | 이윤경; 이진희 | 16h | 16h | 2 | 2 | 2 | 현황 평가 | C02-1 1.2.1 |  |
| 20 | 1.2.3.3 | 인터뷰 실시 및 결과작성 | 4d | 2007-05-31 A | 2007-06-05 A | 19 | 100% | 2007-05-31 | 2007-06-05 | 4d |  | 이윤경; 이진희 | 64h | 64h | 8 | 8 | 8 | 현황 평가 | C02-1 1.2.1 |  |
| 21 | 1.3 | **요구사항 정의** | 7d | 2007-06-07 A | 2007-06-15 A |  | 100% | 2007-06-07 | 2007-06-15 | 7d |  |  | 112h | 112h | 14 | 14 | 14 | 요구사항 정의 | C02-1 1.2.2 |  |
| 22 | 1.3.1 | 기능요구사항 정의 | 7d | 2007-06-07 A | 2007-06-15 A | 20 | 100% | 2007-06-07 | 2007-06-15 | 7d |  | 이윤경 [50%]; 이진희 [50%] | 47h | 47h | 5.88 | 5.88 | 5.88 | 요구사항 정의 | C02-1 1.2.2 | 현업요구사항정의서 |
| 23 | 1.3.2 | 인터페이스요구사항 정의 | 7d | 2007-06-07 A | 2007-06-15 A | 22SS | 100% | 2007-06-07 | 2007-06-15 | 7d |  | 이윤경 [50%]; 이진희 [50%] | 53h | 53h | 6.62 | 6.62 | 6.62 | 요구사항 정의 | C02-1 1.2.2 | 현업요구사항정의서 |
| 24 | 1.3.3 | 시스템화범위 결정 | 3d | 2007-06-13 A | 2007-06-15 A | 23FF | 100% | 2007-06-13 | 2007-06-15 | 3d |  | 이윤경 [25%]; 이진희 [25%] | 12h | 12h | 1.5 | 1.5 | 1.5 | 요구사항 정의 | C02-1 1.2.2 |  |

| ID | WBS | Task | Type | Duration | Start | Finish | Predecessors | Complete | Baseline start | Baseline finish | Baseline duration | Constraint | Resources | Work | Actual work | Cost | Baseline cost | Actual cost | Text20 | Text26 | Text30 |
| --- | --- | --- | --- | --- | --- | --- | --- | --- | --- | --- | --- | --- | --- | --- | --- | --- | --- | --- | --- | --- | --- |
| 25 | 1.4 | **신논리모델 구축** |  | 11d | 2007-06-18 A | 2007-07-02 A |  | 100% | 2007-06-18 | 2007-07-02 | 11d |  |  | 170h | 170h | 21.25 | 21.25 | 21.25 | 신논리모델 구축 | C02-1 1.2.3 |  |
| 26 | 1.4.1 | 프로세스 모델링 |  | 6d | 2007-06-18 A | 2007-06-25 A | 24 | 100% | 2007-06-18 | 2007-06-25 | 6d |  | 이윤경 [50%]; 이진희 [50%] | 48h | 48h | 6 | 6 | 6 | 신논리모델 구축 | C02-1 1.2.3 | 프로세스정의서,인터페이스정의서,기능차트 |
| 27 | 1.4.2 | 데이터 모델링 |  | 6d | 2007-06-18 A | 2007-06-25 A | 26SS | 100% | 2007-06-18 | 2007-06-25 | 6d |  | 이윤경 [50%]; 이진희 [50%] | 48h | 48h | 6 | 6 | 6 | 신논리모델 구축 | C02-1 1.2.3 | 엔티티정의서,엔티티목록,ERD(논리) |
| 28 | 1.4.3 | 인스테스트기준 정의 |  | 5d | 2007-06-26 A | 2007-07-02 A | 27 | 100% | 2007-06-26 | 2007-07-02 | 5d |  | 이윤경; 이진희 | 74h | 74h | 9.25 | 9.25 | 9.25 | 신논리모델 구축 | C02-1 1.2.3 | 인수테스트기준서 |
| 29 | 1.5 | **단계완료 품질검토** |  | 20d | 2007-07-02 A | 2007-07-30 A |  | 100% | 2007-07-02 | 2007-07-30 | 20d |  |  | 202h | 202h | 25.25 | 25.25 | 25.25 | 단계완료 | C02-1 1.6.8 |  |
| 30 | 1.5.1 | **산출물 Inspection** |  | 5d | 2007-07-02 A | 2007-07-06 A |  | 100% | 2007-07-02 | 2007-07-06 | 5d |  |  | 70h | 70h | 8.75 | 8.75 | 8.75 | 단계완료 | C02-1 1.6.8 |  |
| 31 | 1.5.1.1 | Inspection실시 |  | 3d | 2007-07-02 A | 2007-07-04 A |  | 100% | 2007-07-02 | 2007-07-04 | 3d | must start on 2007-07-02 | 이윤경; 이진희 | 38h | 38h | 4.75 | 4.75 | 4.75 | 단계완료 | C02-1 1.6.8 |  |
| 32 | 1.5.1.2 | 조치계획수립 및 수행 |  | 2d | 2007-07-05 A | 2007-07-06 A | 31 | 100% | 2007-07-05 | 2007-07-06 | 2d |  | 이윤경; 이진희 | 32h | 32h | 4 | 4 | 4 | 단계완료 | C02-1 1.6.8 |  |
| 33 | 1.5.2 | 요구사항추적표매핑 |  | 2d | 2007-07-09 A | 2007-07-10 A | 32 | 100% | 2007-07-09 | 2007-07-10 | 2d |  | 이윤경 [75%]; 이진희 [50%] | 20h | 20h | 2.5 | 2.5 | 2.5 | 단계완료 | C02-1 1.6.8 |  |
| 34 | 1.5.3 | 요구사항규모측정방법 교육 및 측정 |  | 5d | 2007-07-09 A | 2007-07-13 A | 33SS | 100% | 2007-07-09 | 2007-07-13 | 5d |  | 이윤경; 이진희 | 60h | 60h | 7.5 | 7.5 | 7.5 | 단계완료 | C02-1 1.6.8 |  |
| 35 | 1.5.4 | 고객검토 |  | 10d | 2007-07-16 A | 2007-07-30 A | 34 | 100% | 2007-07-16 | 2007-07-30 | 10d |  | 이윤경; 이진희 | 52h | 52h | 6.5 | 6.5 | 6.5 | 단계완료 | C02-1 1.6.8 |  |
| 36 | 2 | **설계** |  | 105d | 2007-07-09 A | 2007-12-10 A |  | 100% | 2007-07-09 | 2007-12-10 | 105d |  |  | 2248h | 2248h | 281 | 281 | 281 | 설계 | C02-1 1.3 |  |
| 37 | 2.1 | **단계착수** |  | 14d | 2007-07-09 A | 2007-07-27 A |  | 100% | 2007-07-09 | 2007-07-27 | 14d |  |  | 26h | 26h | 3.25 | 3.25 | 3.25 | 단계착수 | C02-1 1.6.1 |  |
| 38 | 2.1.1 | 설계SPM검토 및 수정 |  | 5d | 2007-07-09 A | 2007-07-13 A |  | 100% | 2007-07-09 | 2007-07-13 | 5d | start no earlier than 2007-07-09 | 이윤경 [50%] | 20h | 20h | 2.5 | 2.5 | 2.5 | 단계착수 | C02-1 1.6.1 |  |
| 39 | 2.1.2 | 오리엔테이션(2차)실시 |  | 1d | 2007-07-23 A | 2007-07-23 A |  | 100% | 2007-07-23 | 2007-07-23 | 1d | start no earlier than 2007-07-23 | 이윤경 [25%]; 이진희 [50%] | 6h | 6h | 0.75 | 0.75 | 0.75 | 단계착수 | C02-1 1.6.1 |  |
| 40 | 2.1.3 | 설계가이드 | milestone | 0d | 2007-07-16 A | 2007-07-16 A |  | 100% | 2007-07-16 | 2007-07-16 | 0d | must finish on 2007-07-16 | 프레임웍 |  |  |  |  |  | 단계착수 | C02-1 1.6.1 |  |
| 41 | 2.1.4 | 분석감리조치 |  | 5d | 2007-07-23 A | 2007-07-27 A |  | 100% | 2007-07-23 | 2007-07-27 | 5d | start no earlier than 2007-07-23 |  |  |  |  |  |  | 단계착수 | C02-1 1.6.1 |  |
| 42 | 2.2 | **기본설계** |  | 25d | 2007-07-18 A | 2007-08-22 A |  | 100% | 2007-07-18 | 2007-08-22 | 25d |  |  | 474h | 474h | 59.25 | 59.25 | 59.25 | 기본설계 | C02-1 1.3.1 |  |
| 43 | 2.2.1 | **시스템구조 설계** |  | 10d | 2007-07-18 A | 2007-07-31 A |  | 100% | 2007-07-18 | 2007-07-31 | 10d |  |  | 114h | 114h | 14.25 | 14.25 | 14.25 | 기본설계 | C02-1 1.3.1 |  |
| 44 | 2.2.1.1 | 어플리케이션구조도작성 |  | 5d | 2007-07-18 A | 2007-07-24 A | 40 | 100% | 2007-07-18 | 2007-07-24 | 5d |  | 이윤경; 이진희 [50%] | 60h | 60h | 7.5 | 7.5 | 7.5 | 기본설계 | C02-1 1.3.1 | 어플리케이션구조도 |
| 45 | 2.2.1.2 | 프로그램목록작성 |  | 5d | 2007-07-25 A | 2007-07-31 A | 44 | 100% | 2007-07-25 | 2007-07-31 | 5d |  | 이윤경; 이진희 [50%] | 54h | 54h | 6.75 | 6.75 | 6.75 | 기본설계 | C02-1 1.3.1 | 프로그램목록 |
| 46 | 2.2.2 | 데이터코드 설계 |  | 5d | 2007-08-01 A | 2007-08-07 A | 45 | 100% | 2007-08-01 | 2007-08-07 | 5d |  | 이윤경; 이진희; 설계자 | 120h | 120h | 15 | 15 | 15 | 기본설계 | C02-1 1.3.1 | 데이터코드정의서,데이터코드목록 |
| 47 | 2.2.3 | 데이터베이스기본설계-상세논리모델링 |  | 5d | 2007-08-01 A | 2007-08-07 A | 46SS | 100% | 2007-08-01 | 2007-08-07 | 5d |  |  |  |  |  |  |  | 기본설계 | C02-1 1.3.1 |  |
| 48 | 2.2.4 | **화면 및 보고서 설계** |  | 10d | 2007-08-08 A | 2007-08-22 A |  | 100% | 2007-08-08 | 2007-08-22 | 10d |  |  | 240h | 240h | 30 | 30 | 30 | 기본설계 | C02-1 1.3.1 |  |
| 49 | 2.2.4.1 | 화면설계 |  | 5d | 2007-08-08 A | 2007-08-14 A | 46 | 100% | 2007-08-08 | 2007-08-14 | 5d |  | 이윤경; 이진희; 설계자 | 120h | 120h | 15 | 15 | 15 | 기본설계 | C02-1 1.3.1 | 화면목록,화면레이아웃 |
| 50 | 2.2.4.2 | 보고서설계 |  | 5d | 2007-08-16 A | 2007-08-22 A | 49 | 100% | 2007-08-16 | 2007-08-22 | 5d |  | 이윤경; 이진희; 설계자 | 120h | 120h | 15 | 15 | 15 | 기본설계 | C02-1 1.3.1 | 보고서목록,보고서레이아웃 |

| ID | WBS | Task | Duration | Start | Finish | Predecessors | Complete | Remaining | Baseline start | Baseline finish | Baseline duration | Total slack | Constraint | Resources | Work | Actual work | Cost | Baseline cost | Actual cost | Text20 | Text26 | Text30 |
| --- | --- | --- | --- | --- | --- | --- | --- | --- | --- | --- | --- | --- | --- | --- | --- | --- | --- | --- | --- | --- | --- | --- |
| 51 | 2.3 | **상세설계** | 47d | 2007-08-23 A | 2007-11-01 A |  | 100% |  | 2007-08-23 | 2007-11-01 | 47d |  |  |  | 1128h | 1128h | 141 | 141 | 141 | 상세설계 | C02-1 1.3.3 |  |
| 52 | 2.3.1 | 데이터베이스 상세설계 | 5d | 2007-08-23 A | 2007-08-29 A | 50 | 100% |  | 2007-08-23 | 2007-08-29 | 5d |  |  | 이윤경; 이진희; 설계자 | 120h | 120h | 15 | 15 | 15 | 상세설계 | C02-1 1.3.3 | 프로그램대테이블상관도,테이블정의서,테이블목록,ERD(물리) |
| 53 | 2.3.2 | 공통프로그램 설계 | 10d | 2007-08-30 A | 2007-09-12 A | 52 | 100% |  | 2007-08-30 | 2007-09-12 | 10d |  |  | 이윤경; 이진희; 설계자 | 240h | 240h | 30 | 30 | 30 | 상세설계 | C02-1 1.3.3 | 프로그램사양서(공통) |
| 54 | 2.3.3 | 온라인도움말 설계 | 10d | 2007-09-13 A | 2007-10-01 A | 53 | 100% |  | 2007-09-13 | 2007-10-01 | 10d |  |  | 이윤경; 이진희; 설계자 | 240h | 240h | 30 | 30 | 30 | 상세설계 | C02-1 1.3.3 |  |
| 55 | 2.3.4 | **서버프로그램 설계** | 12d | 2007-10-02 A | 2007-10-18 A |  | 100% |  | 2007-10-02 | 2007-10-18 | 12d |  |  | 이윤경; 이진희; 설계자 | 288h | 288h | 36 | 36 | 36 | 상세설계 | C02-1 1.3.3 | 프로그램사양서(서버) |
| 56 | 2.3.4.1 | 온라인프로그램설계 | 6d | 2007-10-02 A | 2007-10-10 A | 54 | 100% |  | 2007-10-02 | 2007-10-10 | 6d |  |  |  |  |  |  |  |  | 상세설계 | C02-1 1.3.3 |  |
| 57 | 2.3.4.2 | 배치프로그램설계 | 6d | 2007-10-11 A | 2007-10-18 A | 56 | 100% |  | 2007-10-11 | 2007-10-18 | 6d |  |  |  |  |  |  |  |  | 상세설계 | C02-1 1.3.3 |  |
| 58 | 2.3.5 | 클라이언트프로그램 설계 | 10d | 2007-10-19 A | 2007-11-01 A | 57 | 100% |  | 2007-10-19 | 2007-11-01 | 10d |  |  | 이윤경; 이진희; 설계자 | 240h | 240h | 30 | 30 | 30 | 상세설계 | C02-1 1.3.3 | 프로그램사양서(클라이언트) |
| 59 | 2.4 | **컨버전설계** | 16d | 2007-11-02 A | 2007-11-23 A |  | 100% |  | 2007-11-02 | 2007-11-23 | 16d |  |  |  | 368h | 368h | 46 | 46 | 46 | 컨버전 설계 | C02-1 1.3.5 |  |
| 60 | 2.4.1 | 컨버전계획 수립 | 5d | 2007-11-02 A | 2007-11-08 A | 58 | 100% |  | 2007-11-02 | 2007-11-08 | 5d |  |  | 이윤경; 이진희 | 56h | 56h | 7 | 7 | 7 | 컨버전 설계 | C02-1 1.3.5 | 컨버전계획서 |
| 61 | 2.4.2 | **데이터매핑설계** | 14d | 2007-11-06 A | 2007-11-23 A |  | 100% |  | 2007-11-06 | 2007-11-23 | 14d |  |  | 이윤경; 이진희; 설계자 | 312h | 312h | 39 | 39 | 39 | 컨버전 설계 | C02-1 1.3.5 | 매핑정의서 |
| 62 | 2.4.2.1 | 신고객DB 매핑설계 | 7d | 2007-11-06 A | 2007-11-14 A | 60SS+2d | 100% |  | 2007-11-06 | 2007-11-14 | 7d |  |  |  |  |  |  |  |  | 컨버전 설계 | C02-1 1.3.5 |  |
| 63 | 2.4.2.2 | HOST DB 매핑설계 | 7d | 2007-11-15 A | 2007-11-23 A | 62 | 100% |  | 2007-11-15 | 2007-11-23 | 7d |  |  |  |  |  |  |  |  | 컨버전 설계 | C02-1 1.3.5 |  |
| 64 | 2.5 | **단계완료 품질검토** | 67d | 2007-09-03 A | 2007-12-10 A |  | 100% |  | 2007-09-03 | 2007-12-10 | 67d |  |  |  | 252h | 252h | 31.5 | 31.5 | 31.5 | 단계완료 | C02-1 1.6.8 |  |
| 65 | 2.5.1 | QAO심사(2차)조치 | 62d | 2007-09-03 A | 2007-12-03 A |  | 100% |  | 2007-09-03 | 2007-12-03 | 62d |  | start no earlier than 2007-09-03 |  |  |  |  |  |  | 단계완료 | C02-1 1.6.8 |  |
| 66 | 2.5.2 | **산출물 Inspection** | 6d | 2007-12-03 A | 2007-12-10 A |  | 100% |  | 2007-12-03 | 2007-12-10 | 6d |  |  |  | 112h | 112h | 14 | 14 | 14 | 단계완료 | C02-1 1.6.8 |  |
| 67 | 2.5.2.1 | Inspection(2차)실시 및 조치 | 4d | 2007-12-03 A | 2007-12-06 A | 69 | 100% |  | 2007-12-03 | 2007-12-06 | 4d |  | must start on 2007-12-03 | 이윤경; 이진희; 설계자 [50%] | 72h | 72h | 9 | 9 | 9 | 단계완료 | C02-1 1.6.8 |  |
| 68 | 2.5.2.2 | 조치계획수립 및 수행 | 2d | 2007-12-07 A | 2007-12-10 A | 67 | 100% |  | 2007-12-07 | 2007-12-10 | 2d |  |  | 이윤경; 이진희; 설계자 [50%] | 40h | 40h | 5 | 5 | 5 | 단계완료 | C02-1 1.6.8 |  |
| 69 | 2.5.3 | 설계요구사항추적표 매핑 | 5d | 2007-11-26 A | 2007-11-30 A |  | 100% |  | 2007-11-26 | 2007-11-30 | 5d |  | start no earlier than 2007-11-26 | 이윤경; 이진희; 설계자 | 120h | 120h | 15 | 15 | 15 | 단계완료 | C02-1 1.6.8 |  |
| 70 | 2.5.4 | 고객검토(2차)실시 및 조치 | 4d | 2007-11-26 A | 2007-11-29 A |  | 100% |  | 2007-11-26 | 2007-11-29 | 4d |  | finish no earlier than 2007-12-07 | 이윤경 [50%]; 이진희 [25%]; 설계자 [25%] | 20h | 20h | 2.5 | 2.5 | 2.5 | 단계완료 | C02-1 1.6.8 |  |
| 71 | 3 | **개발** | 139d | 2007-11-27 A | 2008-06-17 |  | 99% | 0.26d | 2007-11-27 | 2008-06-17 | 139d | 201d |  |  | 11642h | 11605.2h | 1,317.25 | 1,317.25 | 1,313.17 | 개발 | C02-1 1.4 |  |
| 72 | 3.1 | **단계착수** | 19d | 2007-11-27 A | 2007-12-21 A |  | 100% |  | 2007-11-27 | 2007-12-21 | 19d |  |  |  | 186h | 186h | 23.25 | 23.25 | 23.25 | 단계착수 | C02-1 1.6.1 |  |
| 73 | 3.1.1 | 개발단계 계획검토및수정 | 5d | 2007-12-10 A | 2007-12-14 A |  | 100% |  | 2007-12-10 | 2007-12-14 | 5d |  | start no earlier than 2007-12-10 |  |  |  |  |  |  | 단계착수 | C02-1 1.6.1 |  |
| 74 | 3.1.2 | 개발SPM검토 및 수정 | 4d | 2007-12-10 A | 2007-12-13 A |  | 100% |  | 2007-12-10 | 2007-12-13 | 4d |  |  | 이윤경 [25%] | 8h | 8h | 1 | 1 | 1 | 단계착수 | C02-1 1.6.1 |  |
| 75 | 3.1.3 | 오리엔테이션(3차) 실시 | 5d | 2007-12-17 A | 2007-12-21 A | 74SS | 100% |  | 2007-12-17 | 2007-12-21 | 5d |  |  | 이윤경 [25%]; 이진희 [25%]; 설계자 [25%] | 30h | 30h | 3.75 | 3.75 | 3.75 | 단계착수 | C02-1 1.6.1 |  |
| 76 | 3.1.4 | 개발표준 및 개발환경교육 | 5d | 2007-11-27 A | 2007-12-03 A |  | 100% |  | 2007-11-27 | 2007-12-03 | 5d |  | must finish on 2007-12-03 | 이윤경; 이진희; 설계자; 개발자 | 148h | 148h | 18.5 | 18.5 | 18.5 | 단계착수 | C02-1 1.6.1 |  |
| 77 | 3.1.5 | 설계감리조치 | 5d | 2007-12-17 A | 2007-12-21 A |  | 100% |  | 2007-12-17 | 2007-12-21 | 5d |  | start no earlier than 2007-12-03 |  |  |  |  |  |  | 단계착수 | C02-1 1.6.1 |  |

Notes:
- 61: 데이터매핑설계(15일)를 하위작업 두개로 분할함.

| ID | WBS | Task | Duration | Start | Finish | Predecessors | Complete | Remaining | Baseline start | Baseline finish | Baseline duration | Total slack | Constraint | Resources | Work | Actual work | Cost | Baseline cost | Actual cost | Text20 | Text26 | Text30 |
| --- | --- | --- | --- | --- | --- | --- | --- | --- | --- | --- | --- | --- | --- | --- | --- | --- | --- | --- | --- | --- | --- | --- |
| 78 | 3.2 | **코딩 및 단위테스트 실시** | 131d | 2007-12-04 A | 2008-06-12 |  | 99% | 0.5d | 2007-12-04 | 2008-06-12 | 131d | 204d |  | 프레임웍 | 5392h | 5355.17h | 536 | 536 | 531.92 | 코딩 및 단위테스트 실시 | C02-1 1.4.1 |  |
| 79 | 3.2.1 | 단위테스트체크리스트작성 | 2d | 2007-12-12 A | 2007-12-13 A | 75 | 100% |  | 2007-12-12 | 2007-12-13 | 2d |  |  | 이윤경 [50%]; 이진희 [25%]; 설계자 [25%] | 14h | 14h | 1.75 | 1.75 | 1.75 | 코딩 및 단위테스트 실시 | C02-1 1.4.1 |  |
| 80 | 3.2.2 | **프로그램모델 및 공통프로그램 개발** | 33d | 2007-12-14 A | 2008-01-31 A |  | 100% |  | 2007-12-14 | 2008-01-31 | 33d |  |  |  | 174h | 174h | 21.75 | 21.75 | 21.75 | 코딩 및 단위테스트 실시 | C02-1 1.4.1 | 소스코드(공통) |
| 81 | 3.2.2.1 | 프로그램모델링 | 10d | 2007-12-14 A | 2007-12-28 A | 79 | 100% |  | 2007-12-14 | 2007-12-28 | 10d |  |  | 이진희 [25%]; 설계자 [25%]; 이윤경 [50%] | 80h | 80h | 10 | 10 | 10 | 코딩 및 단위테스트 실시 | C02-1 1.4.1 |  |
| 82 | 3.2.2.2 | 테스트데이터확보 | 10d | 2007-12-31 A | 2008-01-14 A | 81 | 100% |  | 2007-12-31 | 2008-01-14 | 10d |  |  | 이진희 [25%]; 설계자 [25%]; 이윤경 [50%] | 54h | 54h | 6.75 | 6.75 | 6.75 | 코딩 및 단위테스트 실시 | C02-1 1.4.1 |  |
| 83 | 3.2.2.3 | 공통프로그램개발 | 20d | 2008-01-04 A | 2008-01-31 A | 82SS+3d | 100% |  | 2008-01-04 | 2008-01-31 | 20d |  |  | 이진희 [25%]; 설계자 [25%] | 40h | 40h | 5 | 5 | 5 | 코딩 및 단위테스트 실시 | C02-1 1.4.1 |  |
| 84 | 3.2.3 | 프로그램 코딩 | 102d | 2007-12-04 A | 2008-04-29 A | 76 | 100% |  | 2007-12-04 | 2008-04-29 | 102d |  |  | 이진희 [50%]; 설계자 [50%]; 개발자 | 1066h | 1066h | 133.25 | 133.25 | 133.25 | 코딩 및 단위테스트 실시 | C02-1 1.4.1 | 소스코드 |
| 85 | 3.2.4 | **단위테스트실시** | 126d | 2007-12-11 A | 2008-06-12 |  | 99% | 1.03d | 2007-12-11 | 2008-06-12 | 126d | 204d |  |  | 3034h | 3001.36h | 379.25 | 379.25 | 375.17 | 코딩 및 단위테스트 실시 | C02-1 1.4.1 |  |
| 86 | 3.2.4.1 | 단위테스트 실시 | 102d | 2007-12-11 A | 2008-05-07 | 84SS+5d | 99% | 1.02d | 2007-12-11 | 2008-05-07 | 102d | 228d |  | 이진희; 설계자; 개발자; 이윤경 | 2298h | 2265.36h | 287.25 | 287.25 | 283.17 | 코딩 및 단위테스트 실시 | C02-1 1.4.1 | 단위테스트결과서 |
| 87 | 3.2.4.2 | 산출물보완 | 5d | 2008-05-08 A | 2008-05-15 A | 86 | 100% |  | 2008-05-08 | 2008-05-15 | 5d |  |  | 이윤경; 이진희; 설계자; 개발자 | 160h | 160h | 20 | 20 | 20 | 코딩 및 단위테스트 실시 | C02-1 1.4.1 |  |
| 88 | 3.2.4.3 | **데이터전환 검증 및 매핑 보완** | 47d | 2008-04-07 A | 2008-06-12 A |  | 100% |  | 2008-04-07 | 2008-06-12 | 47d |  |  |  | 576h | 576h | 72 | 72 | 72 | 코딩 및 단위테스트 실시 | C02-1 1.4.1 |  |
| 89 | 3.2.4.3.1 | 1차데이터검증및 매핑보완 | 5d | 2008-04-07 A | 2008-04-11 A | 86SS+5d | 100% |  | 2008-04-07 | 2008-04-11 | 5d |  | start no earlier than 2008-04-05 | 이윤경; 이진희; 설계자; 개발자 | 160h | 160h | 20 | 20 | 20 | 코딩 및 단위테스트 실시 | C02-1 1.4.1 |  |
| 90 | 3.2.4.3.2 | 2차데이터검증및 매핑보완 | 3d | 2008-04-28 A | 2008-04-30 A | 89 | 100% |  | 2008-04-28 | 2008-04-30 | 3d |  | start no earlier than 2008-04-28 | 이윤경; 이진희; 설계자; 개발자 | 96h | 96h | 12 | 12 | 12 | 코딩 및 단위테스트 실시 | C02-1 1.4.1 |  |
| 91 | 3.2.4.3.3 | 3차데이터검증및 매핑보완 | 3d | 2008-05-13 A | 2008-05-15 A | 90 | 100% |  | 2008-05-13 | 2008-05-15 | 3d |  | start no earlier than 2008-05-13 | 이윤경; 이진희; 설계자; 개발자 | 96h | 96h | 12 | 12 | 12 | 코딩 및 단위테스트 실시 | C02-1 1.4.1 |  |
| 92 | 3.2.4.3.4 | 4차데이터검증및 매핑보완 | 3d | 2008-05-26 A | 2008-05-28 A | 91 | 100% |  | 2008-05-26 | 2008-05-28 | 3d |  | start no earlier than 2008-05-26 | 이윤경; 이진희; 설계자; 개발자 | 96h | 96h | 12 | 12 | 12 | 코딩 및 단위테스트 실시 | C02-1 1.4.1 |  |
| 93 | 3.2.4.3.5 | 5차데이터검증및 매핑보완 | 4d | 2008-06-09 A | 2008-06-12 A | 92 | 100% |  | 2008-06-09 | 2008-06-12 | 4d |  | start no earlier than 2008-06-09 | 이윤경; 이진희; 설계자; 개발자 | 128h | 128h | 16 | 16 | 16 | 코딩 및 단위테스트 실시 | C02-1 1.4.1 |  |
| 94 | 3.3 | **단계완료 품질검토** | 107d | 2008-01-14 A | 2008-06-17 A |  | 100% |  | 2008-01-14 | 2008-06-17 | 107d |  |  |  | 6064h | 6064h | 758 | 758 | 758 | 단계완료 | C02-1 1.6.8 |  |
| 95 | 3.3.1 | QAO심사(3차)조치 | 69d | 2008-02-04 A | 2008-05-14 A |  | 100% |  | 2008-02-04 | 2008-05-14 | 69d |  | start no earlier than 2008-02-04 |  |  |  |  |  |  | 단계완료 | C02-1 1.6.8 |  |
| 96 | 3.3.2 | **산출물 Inspection** | 94d | 2008-01-14 A | 2008-05-28 A |  | 100% |  | 2008-01-14 | 2008-05-28 | 94d |  |  |  | 6012h | 6012h | 751.5 | 751.5 | 751.5 | 단계완료 | C02-1 1.6.8 |  |
| 97 | 3.3.2.1 | Inspection(3차)실시 | 94d | 2008-01-14 A | 2008-05-28 A |  | 100% |  | 2008-01-14 | 2008-05-28 | 94d |  | start no earlier than 2008-01-14 | 이윤경; 이진희; 설계자; 개발자 | 3004h | 3004h | 375.5 | 375.5 | 375.5 | 단계완료 | C02-1 1.6.8 |  |
| 98 | 3.3.2.2 | 조치계획수립 및 수행 | 94d | 2008-01-14 A | 2008-05-28 A | 97SS | 100% |  | 2008-01-14 | 2008-05-28 | 94d |  |  | 이윤경; 이진희; 설계자; 개발자 | 3008h | 3008h | 376 | 376 | 376 | 단계완료 | C02-1 1.6.8 |  |
| 99 | 3.3.3 | 개발요구사항추적표 매핑 | 3d | 2008-06-13 A | 2008-06-17 A | 93 | 100% |  | 2008-06-13 | 2008-06-17 | 3d |  |  | 이윤경; 이진희; 설계자; 개발자 | 52h | 52h | 6.5 | 6.5 | 6.5 | 단계완료 | C02-1 1.6.8 |  |
| 100 | 4 | **통합테스트** | 119d? | 2008-04-22 A | 2008-10-08 |  | 97% | 3.32d? | 2008-04-22 | 2008-10-08 | 119d? | 121d |  |  | 1318h | 1318h | 164.75 | 164.75 | 164.75 | 개발 | C02-1 1.4 |  |
| 101 | 4.1 | **단계착수** | 15d? | 2008-05-19 A | 2008-06-09 A |  | 100% |  | 2008-05-19 | 2008-06-09 | 15d? |  |  |  | 16h | 16h | 2 | 2 | 2 | 단계착수 | C02-1 1.6.1 |  |
| 102 | 4.1.1 | 통합테스트 단계 계획검토 및 수정 | 5d? | 2008-05-19 A | 2008-05-23 A |  | 100% |  | 2008-05-19 | 2008-05-23 | 5d? |  | start no earlier than 2008-05-19 |  |  |  |  |  |  | 단계착수 | C02-1 1.6.1 |  |
| 103 | 4.1.2 | 통합테스트SPM검토 및 수정 | 1d | 2008-05-19 A | 2008-05-19 A |  | 100% |  | 2008-05-19 | 2008-05-19 | 1d |  | start no earlier than 2008-05-19 | 이윤경 [25%] | 2h | 2h | 0.25 | 0.25 | 0.25 | 단계착수 | C02-1 1.6.1 |  |
| 104 | 4.1.3 | 오리엔테이션(4차)실시 | 7d | 2008-05-29 A | 2008-06-09 A | 103SS | 100% |  | 2008-05-29 | 2008-06-09 | 7d |  | start no earlier than 2008-05-29 | 이윤경 [25%]; 이진희 [50%]; 설계자 [50%]; 개발자 [50%] | 14h | 14h | 1.75 | 1.75 | 1.75 | 단계착수 | C02-1 1.6.1 |  |
| 105 | 4.2 | 통합테스트계획 수립 | 13d | 2008-04-28 A | 2008-05-16 A |  | 100% |  | 2008-04-28 | 2008-05-16 | 13d |  |  | 이윤경 [46.2%] | 42h | 42h | 5.25 | 5.25 | 5.25 | 단계착수 | C02-1 1.6.1 | 통합테스트계획서 |
| 106 | 4.3 | 통합테스트계획서보완 | 5d | 2008-05-26 A | 2008-05-30 A |  | 100% |  | 2008-05-26 | 2008-05-30 | 5d |  | start no earlier than 2008-05-26 |  |  |  |  |  |  | 단계착수 | C02-1 1.6.1 |  |
| 107 | 4.4 | 통합테스트목록작성 | 1d | 2008-04-22 A | 2008-04-22 A | 105SS | 100% |  | 2008-04-22 | 2008-04-22 | 1d |  |  | 이윤경 [50%]; 이진희; 설계자; 개발자 | 28h | 28h | 3.5 | 3.5 | 3.5 | 단계착수 | C02-1 1.6.1 | 통합테스트시나리오 |
| 108 | 4.5 | 통합테스트시나리오목록보완 | 4d? | 2008-05-13 A | 2008-05-16 A |  | 100% |  | 2008-05-13 | 2008-05-16 | 4d? |  | start no earlier than 2008-05-13 |  |  |  |  |  |  | 단계착수 | C02-1 1.6.1 |  |
| 109 | 4.6 | 통합테스트시나리오작성(1차) | 9d? | 2008-05-01 A | 2008-05-15 A |  | 100% |  | 2008-05-01 | 2008-05-15 | 9d? |  | start no earlier than 2008-05-01 |  |  |  |  |  |  | 단계착수 | C02-1 1.6.1 |  |
| 110 | 4.7 | 통합테스트시나리오작성(2차) | 5d? | 2008-05-19 A | 2008-05-23 A |  | 100% |  | 2008-05-19 | 2008-05-23 | 5d? |  | start no earlier than 2008-05-19 |  |  |  |  |  |  | 단계착수 | C02-1 1.6.1 |  |
| 111 | 4.8 | 통합테스트시나리오보완 | 5d? | 2008-05-26 A | 2008-05-30 A |  | 100% |  | 2008-05-26 | 2008-05-30 | 5d? |  | start no earlier than 2008-05-26 |  |  |  |  |  |  | 단계착수 | C02-1 1.6.1 |  |
| 112 | 4.9 | 화면오퍼레이션메뉴얼 작성 | 15d | 2008-04-28 A | 2008-05-20 A | 105SS | 100% |  | 2008-04-28 | 2008-05-20 | 15d |  |  |  |  |  |  |  |  | 단계착수 | C02-1 1.6.1 |  |

Notes:
- 82: 1차 mig가 2월말에 되면 1~2월 단위테스트를 위한 테스트데이터 확보방안 필요

| ID | WBS | Task | Duration | Start | Finish | Predecessors | Complete | Remaining | Baseline start | Baseline finish | Baseline duration | Total slack | Constraint | Resources | Work | Actual work | Cost | Baseline cost | Actual cost | Text20 | Text26 | Text30 |
| --- | --- | --- | --- | --- | --- | --- | --- | --- | --- | --- | --- | --- | --- | --- | --- | --- | --- | --- | --- | --- | --- | --- |
| 113 | 4.10 | **통합테스트 실시** | 88d | 2008-06-05 A | 2008-10-08 A |  | 100% |  | 2008-06-05 | 2008-10-08 | 88d |  |  |  | 848h | 848h | 106 | 106 | 106 | 테스트 실시 | C02-1 1.4.2 | 통합테스트시나리오(결과) |
| 114 | 4.10.1 | 통합테스트 환경구축 | 1d | 2008-06-05 A | 2008-06-05 A |  | 100% |  | 2008-06-05 | 2008-06-05 | 1d |  | must finish on 2008-06-06 | 이윤경 [25%]; 이진희 [50%]; 설계자 [50%]; 개발자 [50%] | 14h | 14h | 1.75 | 1.75 | 1.75 | 테스트 실시 | C02-1 1.4.2 |  |
| 115 | 4.10.2 | 통합테스트 실시 1 | 7d | 2008-06-09 A | 2008-06-17 A |  | 100% |  | 2008-06-09 | 2008-06-17 | 7d |  | start no earlier than 2008-06-09 |  |  |  |  |  |  | 테스트 실시 | C02-1 1.4.2 |  |
| 116 | 4.10.3 | 통합테스트 실시 2 | 7d | 2008-06-23 A | 2008-07-01 A |  | 100% |  | 2008-06-23 | 2008-07-01 | 7d |  | start no earlier than 2008-06-23 |  |  |  |  |  |  | 테스트 실시 | C02-1 1.4.2 |  |
| 117 | 4.10.4 | 통합테스트 실시 3 | 10d | 2008-07-07 A | 2008-07-21 A |  | 100% |  | 2008-07-07 | 2008-07-21 | 10d |  | start no earlier than 2008-07-07 |  |  |  |  |  |  | 테스트 실시 | C02-1 1.4.2 |  |
| 118 | 4.10.5 | 통합테스트 실시 4 | 11d | 2008-07-21 A | 2008-08-04 A |  | 100% |  | 2008-07-21 | 2008-08-04 | 11d |  | start no earlier than 2008-07-21 |  |  |  |  |  |  | 테스트 실시 | C02-1 1.4.2 |  |
| 119 | 4.10.6 | Query 성능 튜닝 | 43d | 2008-08-05 A | 2008-10-01 A | 118 | 100% |  | 2008-08-05 | 2008-10-01 | 43d |  |  | 이윤경; 이진희; 설계자; 개발자 | 808h | 808h | 101 | 101 | 101 | 테스트 실시 | C02-1 1.4.2 |  |
| 120 | 4.10.7 | 통합테스트 결과서 작성 | 4d | 2008-10-02 A | 2008-10-08 A | 119 | 100% |  | 2008-10-02 | 2008-10-08 | 4d |  |  | 이진희 [25%]; 설계자 [50%]; 이윤경 [25%] | 26h | 26h | 3.25 | 3.25 | 3.25 | 테스트 실시 | C02-1 1.4.2 |  |
| 121 | 4.11 | 요구사항추적표 작성 | 2d | 2008-07-28 A | 2008-07-29 A |  | 100% |  | 2008-07-28 | 2008-07-29 | 2d |  | start no earlier than 2008-07-28 | 이윤경 [25%]; 이진희 [25%]; 설계자 [25%]; 개발자 [25%] | 16h | 16h | 2 | 2 | 2 | 품질활동수행 | C02-1 1.6.2 |  |
| 122 | 4.12 | **단계완료** | 64d | 2008-06-16 A | 2008-09-11 |  | 79% | 13.33d | 2008-06-16 | 2008-09-11 | 64d | 139d |  |  | 368h | 368h | 46 | 46 | 46 | 단계완료 | C02-1 1.6.8 |  |
| 123 | 4.12.1 | QAO심사(4차)조치 | 5d | 2008-06-16 A | 2008-06-20 A |  | 100% |  | 2008-06-16 | 2008-06-20 | 5d |  | finish no earlier than 2008-06-20 |  |  |  |  |  |  | 품질활동수행 | C02-1 1.6.2 |  |
| 124 | 4.12.2 | **산출물 Inspection** | 10d | 2008-07-14 A | 2008-07-28 A |  | 100% |  | 2008-07-14 | 2008-07-28 | 10d |  |  |  | 316h | 316h | 39.5 | 39.5 | 39.5 | 품질활동수행 | C02-1 1.6.2 |  |
| 125 | 4.12.2.1 | Inspection(4차)실시 | 5d | 2008-07-14 A | 2008-07-21 A |  | 100% |  | 2008-07-14 | 2008-07-21 | 5d |  | start no earlier than 2008-07-14 | 이윤경; 이진희; 설계자; 개발자 | 156h | 156h | 19.5 | 19.5 | 19.5 | 품질활동수행 | C02-1 1.6.2 |  |
| 126 | 4.12.2.2 | 조치계획수립 및 수행 | 5d | 2008-07-22 A | 2008-07-28 A | 125 | 100% |  | 2008-07-22 | 2008-07-28 | 5d |  |  | 이윤경; 이진희; 설계자; 개발자 | 160h | 160h | 20 | 20 | 20 | 품질활동수행 | C02-1 1.6.2 |  |
| 127 | 4.12.3 | 통합테스트요구사항추적표 매핑 | 4d | 2008-09-08 A | 2008-09-11 A |  | 100% |  | 2008-09-08 | 2008-09-11 | 4d |  | start no earlier than 2008-09-08 | 이윤경; 이진희; 설계자; 개발자 | 52h | 52h | 6.5 | 6.5 | 6.5 | 품질활동수행 | C02-1 1.6.2 |  |
| 128 | 4.12.4 | 실적규모측정방법교육및측정 | 5d | 2008-07-28 | 2008-08-01 |  |  |  | 2008-07-28 | 2008-08-01 | 5d | 169d | start no earlier than 2008-07-28 |  |  |  |  |  |  | 품질활동수행 | C02-1 1.6.2 |  |
| 129 | 5 | **영업점테스트** | 151d? | 2008-07-07 A | 2009-01-30 |  | 62% | 57.05d? | 2008-07-07 | 2009-01-30 | 151d? | 37d |  |  | 2226h | 680h | 278.25 | 278.25 | 85 | 개발 | C02-1 1.4 |  |
| 130 | 5.1 | **단계착수** | 25d | 2008-07-07 A | 2008-08-10 A |  | 100% |  | 2008-07-07 | 2008-08-10 | 25d |  |  |  | 18h | 18h | 2.25 | 2.25 | 2.25 | 단계착수 | C02-1 1.6.1 |  |
| 131 | 5.1.1 | 영업점테스트 단계 계획검토 및 수정 | 1d | 2008-07-07 A | 2008-07-07 A |  | 100% |  | 2008-07-07 | 2008-07-07 | 1d |  | start no earlier than 2008-07-07 | 이윤경 [25%] | 2h | 2h | 0.25 | 0.25 | 0.25 | 단계착수 | C02-1 1.6.1 |  |
| 132 | 5.1.2 | 영업점테스트SPM검토 및 수정 | 1d | 2008-07-14 A | 2008-07-14 A |  | 100% |  | 2008-07-14 | 2008-07-14 | 1d |  | start no earlier than 2008-07-14 | 이윤경 [25%] | 2h | 2h | 0.25 | 0.25 | 0.25 | 단계착수 | C02-1 1.6.1 |  |
| 133 | 5.1.3 | 오리엔테이션(5차)실시 | 7d | 2008-08-01 A | 2008-08-10 A | 132SS | 100% |  | 2008-08-01 | 2008-08-10 | 7d |  | start no earlier than 2008-08-01 | 이윤경 [25%]; 이진희 [50%]; 설계자 [50%]; 개발자 [50%] | 14h | 14h | 1.75 | 1.75 | 1.75 | 단계착수 | C02-1 1.6.1 |  |
| 134 | 5.2 | **시스템 사용교육** | 117d? | 2008-07-15 A | 2008-12-19 |  | 88% | 14.62d? | 2008-07-15 | 2008-12-19 | 117d? | 65d |  |  | 690h | 582h | 86.25 | 86.25 | 72.75 | 시스템 사용교육 | C02-1 1.5.3 |  |
| 135 | 5.2.1 | 교육훈련계획 수립 | 10d | 2008-07-15 A | 2008-07-29 A | 121FF | 100% |  | 2008-07-15 | 2008-07-29 | 10d |  | start no earlier than 2008-07-07 | 이윤경 [50%]; 이진희 [25%]; 설계자; 개발자 [50%] | 72h | 72h | 9 | 9 | 9 | 시스템 사용교육 | C02-1 1.5.3 | 교육계획서 |
| 136 | 5.2.2 | 사용자매뉴얼 작성 | 10d | 2008-07-28 A | 2008-08-08 A | 135FF | 100% |  | 2008-07-28 | 2008-08-08 | 10d |  | start no earlier than 2008-07-28 | 이윤경 [25%]; 이진희 [50%]; 설계자 [50%]; 개발자 [50%] | 102h | 102h | 12.75 | 12.75 | 12.75 | 시스템 사용교육 | C02-1 1.5.3 | 사용자매뉴얼 |
| 137 | 5.2.3 | 운영매뉴얼 작성 | 10d | 2008-11-10 A | 2008-11-20 |  | 50% | 5d | 2008-11-10 | 2008-11-20 | 10d | 87d | start no earlier than 2008-11-10 | 이윤경; 이진희 [50%]; 설계자 [50%]; 개발자 [50%] | 85h | 53h | 10.62 | 10.62 | 6.62 | 시스템 사용교육 | C02-1 1.5.3 | 운영매뉴얼 |

| ID | WBS | Task | Duration | Start | Finish | Predecessors | Complete | Remaining | Baseline start | Baseline finish | Baseline duration | Total slack | Free slack | Constraint | Resources | Work | Actual work | Cost | Baseline cost | Actual cost | Text20 | Text26 | Text30 |
| --- | --- | --- | --- | --- | --- | --- | --- | --- | --- | --- | --- | --- | --- | --- | --- | --- | --- | --- | --- | --- | --- | --- | --- |
| 138 | 5.2.4 | **사용자교육 실시** | 33d? | 2008-08-10 A | 2008-09-23 A | 136 | 100% |  | 2008-08-10 | 2008-09-23 | 33d? |  |  |  | 이윤경 [50%]; 이진희 [50%]; 설계자 [50%]; 개발자 [50%] | 355h | 355h | 44.38 | 44.38 | 44.38 | 시스템 사용교육 | C02-1 1.5.3 | 교육결과서 |
| 139 | 5.2.4.1 | 동영상교재작성(화면설명) | 9d? | 2008-08-10 A | 2008-08-21 A |  | 100% |  | 2008-08-10 | 2008-08-21 | 9d? |  |  | start no earlier than 2008-07-07 |  |  |  |  |  |  | 시스템 사용교육 | C02-1 1.5.3 |  |
| 140 | 5.2.4.2 | 집합교육교재작성 | 9d? | 2008-08-10 A | 2008-08-21 A |  | 100% |  | 2008-08-10 | 2008-08-21 | 9d? |  |  | start no earlier than 2008-07-14 |  |  |  |  |  |  | 시스템 사용교육 | C02-1 1.5.3 |  |
| 141 | 5.2.4.3 | 시범점사용자교육 | 6d? | 2008-08-10 A | 2008-08-18 A |  | 100% |  | 2008-08-10 | 2008-08-18 | 6d? |  |  | start no earlier than 2008-08-05 |  |  |  |  |  |  | 시스템 사용교육 | C02-1 1.5.3 |  |
| 142 | 5.2.4.4 | 영업점사용자교육 | 28d? | 2008-08-18 A | 2008-09-23 A |  | 100% |  | 2008-08-18 | 2008-09-23 | 28d? |  |  | start no earlier than 2008-08-18 |  |  |  |  |  |  | 시스템 사용교육 | C02-1 1.5.3 |  |
| 143 | 5.2.5 | 운영자교육 실시 | 6d | 2008-12-12 | 2008-12-19 |  |  |  | 2008-12-12 | 2008-12-19 | 6d | 65d |  | finish no earlier than 2008-12-19 | 이진희 [50%]; 설계자 [75%]; 개발자 [50%] | 76h |  | 9.5 | 9.5 |  | 시스템 사용교육 | C02-1 1.5.3 | 교육결과서 |
| 144 | 5.3 | **영업점테스트** | 98d | 2008-08-10 A | 2008-12-18 |  | 89% | 10.65d | 2008-08-10 | 2008-12-18 | 98d | 66d |  |  |  | 80h | 80h | 10 | 10 | 10 | 테스트 실시 | C02-1 1.4.2 |  |
| 145 | 5.3.1 | 영업점테스트계획 수립 | 10d | 2008-09-10 A | 2008-09-23 A | 138FF | 100% |  | 2008-09-10 | 2008-09-23 | 10d |  |  | start no earlier than 2008-07-21 | 이윤경 [50%]; 이진희 [25%] | 50h | 50h | 6.25 | 6.25 | 6.25 | 테스트 실시 | C02-1 1.4.2 | 영업점테스트계획서 |
| 146 | 5.3.2 | 영업점테스트 시나리오 작성 | 7d | 2008-09-16 A | 2008-09-23 A | 145FF | 100% |  | 2008-09-16 | 2008-09-23 | 7d |  |  | start no earlier than 2008-07-21 | 이윤경; 이진희 [25%]; 설계자 [25%]; 개발자 [25%] | 30h | 30h | 3.75 | 3.75 | 3.75 | 테스트 실시 | C02-1 1.4.2 | 영업점테스트시나리오 |
| 147 | 5.3.3 | **시범테스트실시및보완** | 29d | 2008-08-10 A | 2008-09-18 A |  | 100% |  | 2008-08-10 | 2008-09-18 | 29d |  |  |  |  |  |  |  |  |  | 테스트 실시 | C02-1 1.4.2 |  |
| 148 | 5.3.3.1 | 시범테스트실시및보완 1 | 14d | 2008-08-10 A | 2008-08-28 A |  | 100% |  | 2008-08-10 | 2008-08-28 | 14d |  |  | start no earlier than 2008-08-10 |  |  |  |  |  |  | 테스트 실시 | C02-1 1.4.2 |  |
| 149 | 5.3.3.2 | 시범테스트실시및보완 2 | 14d | 2008-08-31 A | 2008-09-18 A |  | 100% |  | 2008-08-31 | 2008-09-18 | 14d |  |  | start no earlier than 2008-08-31 |  |  |  |  |  |  | 테스트 실시 | C02-1 1.4.2 |  |
| 150 | 5.3.4 | **영업점테스트실시및보완** | 68d | 2008-09-21 A | 2008-12-18 |  | 79% | 14.47d | 2008-09-21 | 2008-12-18 | 68d | 66d |  |  |  |  |  |  |  |  | 테스트 실시 | C02-1 1.4.2 |  |
| 151 | 5.3.4.1 | 영업점테스트실시및보완 1 | 7d | 2008-09-21 A | 2008-09-29 A |  | 100% |  | 2008-09-21 | 2008-09-29 | 7d |  |  | start no earlier than 2008-09-21 |  |  |  |  |  |  | 테스트 실시 | C02-1 1.4.2 |  |
| 152 | 5.3.4.2 | 영업점테스트실시및보완 2 | 14d | 2008-10-12 A | 2008-10-29 A |  | 100% |  | 2008-10-12 | 2008-10-29 | 14d |  |  | start no earlier than 2008-10-12 |  |  |  |  |  |  | 테스트 실시 | C02-1 1.4.2 |  |
| 153 | 5.3.4.3 | 영업점테스트실시및보완 3 | 6d | 2008-11-02 A | 2008-11-07 A |  | 100% |  | 2008-11-02 | 2008-11-07 | 6d |  |  | start no earlier than 2008-11-02 |  |  |  |  |  |  | 테스트 실시 | C02-1 1.4.2 |  |
| 154 | 5.3.4.4 | 영업점테스트실시및보완 4 | 10d | 2008-11-15 A | 2008-11-27 A | 153 | 100% |  | 2008-11-15 | 2008-11-27 | 10d |  |  | start no earlier than 2008-11-15 |  |  |  |  |  |  | 테스트 실시 | C02-1 1.4.2 |  |
| 155 | 5.3.4.5 | 영업점테스트실시및보완 5 | 10d | 2008-12-07 | 2008-12-18 |  |  |  | 2008-12-07 | 2008-12-18 | 10d | 66d | 19d | start no earlier than 2008-12-07 |  |  |  |  |  |  | 테스트 실시 | C02-1 1.4.2 |  |
| 156 | 5.4 | **인수테스트** | 28d | 2008-12-22 | 2009-01-30 |  |  |  | 2008-12-22 | 2009-01-30 | 28d | 37d |  |  |  | 656h |  | 82 | 82 |  | 테스트 실시 | C02-1 1.4.2 |  |
| 157 | 5.4.1 | 인수테스트실시 | 28d | 2008-12-22 | 2009-01-30 |  |  |  | 2008-12-22 | 2009-01-30 | 28d | 37d |  | start no earlier than 2008-12-22 | 이윤경; 이진희; 설계자; 개발자 | 656h |  | 82 | 82 |  | 테스트 실시 | C02-1 1.4.2 | 인수테스트기준서(결과),결함보고서(인수) |
| 158 | 5.5 | **이행** | 20d | 2009-01-05 | 2009-01-30 |  |  |  | 2009-01-05 | 2009-01-30 | 20d | 15d |  |  |  | 446h |  | 55.75 | 55.75 |  | 컨버전 및 릴리이즈 | C02-1 1.5.2 |  |
| 159 | 5.5.1 | 이행계획 수립 | 10d | 2009-01-05 | 2009-01-16 | 155FF |  |  | 2009-01-05 | 2009-01-16 | 10d | 47d |  | start no earlier than 2009-01-05 | 이윤경 [50%]; 이진희 [50%]; 설계자; 개발자 [50%] | 110h |  | 13.75 | 13.75 |  | 컨버전 및 릴리이즈 | C02-1 1.5.2 | 이행계획서 |
| 160 | 5.5.2 | 이행시나리오 작성 | 15d | 2009-01-12 | 2009-01-30 |  |  |  | 2009-01-12 | 2009-01-30 | 15d | 37d |  | start no earlier than 2009-01-12 | 이윤경 [50%]; 이진희 [50%]; 설계자 [50%]; 개발자 [50%] | 240h |  | 30 | 30 |  | 컨버전 및 릴리이즈 | C02-1 1.5.2 | 이행시나리오 |
| 161 | 5.5.3 | **이행실시** | 5d | 2009-01-21 | 2009-01-27 |  |  |  | 2009-01-21 | 2009-01-27 | 5d | 3d |  |  |  | 96h |  | 12 | 12 |  | 컨버전 및 릴리이즈 | C02-1 1.5.2 | 운영시스템 |
| 162 | 5.5.3.1 | 최종MIG | 2d | 2009-01-24 | 2009-01-27 |  |  |  | 2009-01-24 | 2009-01-27 | 2d | 0d |  | must start on 2009-01-24 | 이윤경; 이진희; 설계자; 개발자 | 64h |  | 8 | 8 |  | 컨버전 및 릴리이즈 | C02-1 1.5.2 |  |
| 163 | 5.5.3.2 | 이행 실시 | 1d | 2009-01-21 | 2009-01-21 |  |  |  | 2009-01-21 | 2009-01-21 | 1d | 44d |  | start no earlier than 2009-01-21 | 이윤경; 이진희; 설계자; 개발자 | 32h |  | 4 | 4 |  | 컨버전 및 릴리이즈 | C02-1 1.5.2 |  |

| ID | WBS | Task | Duration | Start | Finish | Predecessors | Complete | Remaining | Baseline start | Baseline finish | Baseline duration | Total slack | Free slack | Constraint | Resources | Work | Cost | Baseline cost | Text20 | Text26 | Text30 |
| --- | --- | --- | --- | --- | --- | --- | --- | --- | --- | --- | --- | --- | --- | --- | --- | --- | --- | --- | --- | --- | --- |
| 164 | 5.6 | **단계완료** | 101d | 2008-09-08 A | 2009-01-23 |  | 48% | 52.86d | 2008-09-08 | 2009-01-23 | 101d | 42d |  |  |  | 336h | 42 | 42 | 단계완료 | C02-1 1.6.8 |  |
| 165 | 5.6.1 | QAO심사(5차)조치 | 51d | 2008-09-08 A | 2008-11-14 A |  | 100% |  | 2008-09-08 | 2008-11-14 | 51d |  |  | start no earlier than 2008-09-08 |  |  |  |  | 품질활동수행 | C02-1 1.6.2 |  |
| 166 | 5.6.2 | **산출물 Inspection** | 9d | 2008-12-01 | 2008-12-10 |  |  |  | 2008-12-01 | 2008-12-10 | 9d | 72d |  |  |  | 284h | 35.5 | 35.5 | 품질활동수행 | C02-1 1.6.2 |  |
| 167 | 5.6.2.1 | Inspection(5차)실시 | 5d | 2008-12-01 | 2008-12-05 |  |  |  | 2008-12-01 | 2008-12-05 | 5d | 72d | 0d | start no earlier than 2008-12-01 | 이윤경; 이진희; 설계자; 개발자 | 156h | 19.5 | 19.5 | 품질활동수행 | C02-1 1.6.2 |  |
| 168 | 5.6.2.2 | 조치계획수립 및 수행 | 4d | 2008-12-07 | 2008-12-10 | 167 |  |  | 2008-12-07 | 2008-12-10 | 4d | 72d |  |  | 이윤경; 이진희; 설계자; 개발자 | 128h | 16 | 16 | 품질활동수행 | C02-1 1.6.2 |  |
| 169 | 5.6.3 | 최종요구사항추적표 매핑 | 4d | 2009-01-05 | 2009-01-08 |  |  |  | 2009-01-05 | 2009-01-08 | 4d | 53d |  | start no earlier than 2009-01-05 | 이윤경; 이진희; 설계자; 개발자 | 52h | 6.5 | 6.5 | 품질활동수행 | C02-1 1.6.2 |  |
| 170 | 5.6.4 | 고객검토(3차)실시 및 조치 | 8d | 2008-12-22 | 2009-01-02 |  |  |  | 2008-12-22 | 2009-01-02 | 8d | 57d |  | finish no earlier than 2009-01-02 |  |  |  |  | 품질활동수행 | C02-1 1.6.2 |  |
| 171 | 5.6.5 | 예비제품검사조치 | 7d | 2008-12-22 | 2008-12-31 |  |  |  | 2008-12-22 | 2008-12-31 | 7d | 58d |  | start no earlier than 2008-12-22 |  |  |  |  | 품질활동수행 | C02-1 1.6.2 |  |
| 172 | 5.6.6 | 제품검사조치 | 28d | 2008-12-15 | 2009-01-23 |  |  |  | 2008-12-15 | 2009-01-23 | 28d | 42d |  | start no earlier than 2008-12-15 |  |  |  |  | 품질활동수행 | C02-1 1.6.2 |  |
| 173 | 6 | **시스템안정화** | 47d | 2009-01-19 | 2009-03-24 |  |  |  | 2009-01-19 | 2009-03-24 | 47d | 0d |  |  |  | 472h | 59 | 59 | 구현 | C02-1 1.5 |  |
| 174 | 6.1 | **시스템운영** | 47d | 2009-01-19 | 2009-03-24 |  |  |  | 2009-01-19 | 2009-03-24 | 47d | 0d |  |  |  | 472h | 59 | 59 | 시범운영 | C02-1 1.5.4 |  |
| 175 | 6.1.1 | 시스템운영실시 | 39d | 2009-01-29 | 2009-03-24 |  |  |  | 2009-01-29 | 2009-03-24 | 39d | 0d |  | must start on 2009-01-29 | 이윤경; 이진희 | 472h | 59 | 59 | 시범운영 | C02-1 1.5.4 | 시스템운영일지 |
| 176 | 6.1.2 | 과업대비표 매핑 | 5d | 2009-01-19 | 2009-01-23 |  |  |  | 2009-01-19 | 2009-01-23 | 5d | 42d |  | start no earlier than 2009-01-19 |  |  |  |  | 시범운영 | C02-1 1.5.4 |  |
