# 공통(고객)_고객통합

Schedule from MS Project, 2007-09-03 to 2009-03-24, costs in ₩, A marks actual dates.
HSIC0600001
�궪�꽦SDS

## Calendars

- 농협신용신시스템: Mon-Fri 08:00-12:00, 13:00-17:00; Sat-Sun off. Exceptions (off unless hours are given): 2007-09-24 to 2007-09-26, 2007-10-03, 2007-12-25, 2008-01-01, 2008-02-06 to 2008-02-08, 2008-05-01, 2008-05-05, 2008-05-12, 2008-06-06, 2008-07-17, 2008-08-15, 2008-09-15, 2008-10-03, 2008-12-25, 2009-01-01.

## Resources

| Resource | Rate |
| --- | --- |
| 이윤경 | 0.12 |
| 이진희 | 0.12 |
| 설계자 | 0.12 |
| 개발자 | 0.12 |
| 프레임웍 |  |
| 노승진 |  |
| 윤정준 |  |
| 윤정진 |  |
| 김연진 |  |
| 신성훈 |  |
| 장동희 |  |
| KB 채널 IT담당자 |  |
| KB IT |  |
| 김정채 |  |
| 윤중식 |  |
| 강영욱 |  |
| 윤영호 |  |
| 남양섭 |  |
| 서용덕 |  |
| 이정아 |  |
| 김현식 |  |
| 김준형 |  |
| 서석진 |  |
| 김상배 |  |
| 남상우 |  |
| IDS#1 |  |
| 이현희 |  |
| IDS#2 |  |
| TBD#1 |  |
| TBD#2 |  |
| TBD#3 |  |
| TBD#4 |  |
| 김상호 |  |
| 금은호 |  |
| TBD1 |  |

## Schedule

| ID | WBS | Task | Duration | Start | Finish | Predecessors | Complete | Baseline start | Baseline finish | Baseline duration | Resources | Work | Actual work | Cost | Baseline cost | Actual cost | Text20 | Text26 | Text30 |
| --- | --- | --- | --- | --- | --- | --- | --- | --- | --- | --- | --- | --- | --- | --- | --- | --- | --- | --- | --- |
| 1 | 1 | **사전준비** | 18d | 2007-09-03 A | 2007-10-01 A |  | 100% | 2007-09-03 | 2007-10-01 | 18d |  | 280h | 280h | 35 | 35 | 35 | 프로젝트 착수 | C02-1 1.1 |  |
| 2 | 1.1 | 과업범위 정의 | 5d | 2007-09-03 A | 2007-09-07 A |  | 100% | 2007-09-03 | 2007-09-07 | 5d | 이윤경 | 40h | 40h | 5 | 5 | 5 | 착수준비 | C02-1 1.1.1 |  |
| 3 | 1.2 | 공수산정 | 5d | 2007-09-03 A | 2007-09-07 A | 2SS | 100% | 2007-09-03 | 2007-09-07 | 5d | 이윤경 | 40h | 40h | 5 | 5 | 5 | 착수준비 | C02-1 1.1.1 |  |
| 4 | 1.3 | 추진방안 수립(추진목적,범위,계획,일정) | 10d | 2007-09-10 A | 2007-09-21 A | 3 | 100% | 2007-09-10 | 2007-09-21 | 10d | 이윤경 | 80h | 80h | 10 | 10 | 10 | 착수준비 | C02-1 1.1.1 |  |
| 5 | 1.4 | **이슈도출** | 13d | 2007-09-10 A | 2007-10-01 A |  | 100% | 2007-09-10 | 2007-10-01 | 13d |  | 120h | 120h | 15 | 15 | 15 | 착수준비 | C02-1 1.1.1 |  |
| 6 | 1.4.1 | 업무팀 이슈회의 | 10d | 2007-09-10 A | 2007-09-21 A | 4SS | 100% | 2007-09-10 | 2007-09-21 | 10d | 이윤경 | 80h | 80h | 10 | 10 | 10 | 착수준비 | C02-1 1.1.1 |  |
| 7 | 1.4.2 | 공통이슈 해결방안 수립 | 5d | 2007-09-20 A | 2007-10-01 A | 6FF+3d | 100% | 2007-09-20 | 2007-10-01 | 5d | 이윤경 | 40h | 40h | 5 | 5 | 5 | 착수준비 | C02-1 1.1.1 |  |
| 8 | 2 | **분석** | 67d | 2007-10-02 A | 2008-01-07 A |  | 100% | 2007-10-02 | 2008-01-07 | 67d |  | 2888h | 2888h | 139 | 139 | 139 | 분석 | C02-1 1.2 |  |
| 9 | 2.1 | **현황평가** | 53d | 2007-10-02 A | 2007-12-14 A |  | 100% | 2007-10-02 | 2007-12-14 | 53d |  | 2888h | 2888h | 139 | 139 | 139 | 현황 평가 | C02-1 1.2.1 |  |
| 10 | 2.1.1 | **현행업무 분석** | 15d | 2007-10-02 A | 2007-10-23 A |  | 100% | 2007-10-02 | 2007-10-23 | 15d |  | 896h | 896h | 40 | 40 | 40 | 현황 평가 | C02-1 1.2.1 | 현행업무분장표, 현행업무흐름도 |
| 11 | 2.1.1.1 | **AS-IS 자료수집** | 5d | 2007-10-02 A | 2007-10-09 A |  | 100% | 2007-10-02 | 2007-10-09 | 5d |  | 176h | 176h | 10 | 10 | 10 | 현황 평가 | C02-1 1.2.1 |  |
| 12 | 2.1.1.1.1 | CRM(신고객) ERD, 화면, 프로그램, 코드정의서 수집 | 5d | 2007-10-02 A | 2007-10-09 A | 7 | 100% | 2007-10-02 | 2007-10-09 | 5d | 김상호; 이진희 | 88h | 88h | 5 | 5 | 5 | 현황 평가 | C02-1 1.2.1 |  |
| 13 | 2.1.1.1.2 | 업무팀계좌원장, 카드/공제/경제 ERD 수집 | 5d | 2007-10-02 A | 2007-10-09 A | 12SS | 100% | 2007-10-02 | 2007-10-09 | 5d | 김상호; 이진희 | 88h | 88h | 5 | 5 | 5 | 현황 평가 | C02-1 1.2.1 |  |
| 14 | 2.1.1.2 | **현행 업무흐름 및 고객정보 항목분석** | 10d | 2007-10-10 A | 2007-10-23 A |  | 100% | 2007-10-10 | 2007-10-23 | 10d |  | 720h | 720h | 30 | 30 | 30 | 현황 평가 | C02-1 1.2.1 |  |
| 15 | 2.1.1.2.1 | CRM(신고객),카드/공제/경제 고객항목 분석 | 10d | 2007-10-10 A | 2007-10-23 A | 13 | 100% | 2007-10-10 | 2007-10-23 | 10d | 김상호; 이진희; 금은호 | 240h | 240h | 10 | 10 | 10 | 현황 평가 | C02-1 1.2.1 |  |
| 16 | 2.1.1.2.2 | 정리대상 코드정의 | 10d | 2007-10-10 A | 2007-10-23 A | 15SS | 100% | 2007-10-10 | 2007-10-23 | 10d | 김상호; 이진희; 금은호 | 240h | 240h | 10 | 10 | 10 | 현황 평가 | C02-1 1.2.1 |  |
| 17 | 2.1.1.2.3 | 전환대상업무범위정의 | 10d | 2007-10-10 A | 2007-10-23 A | 15SS | 100% | 2007-10-10 | 2007-10-23 | 10d | 김상호; 이진희; 금은호 | 240h | 240h | 10 | 10 | 10 | 현황 평가 | C02-1 1.2.1 | 전환대상업무범위정의서 |
| 18 | 2.1.2 | **현행시스템 분석** | 36d | 2007-10-24 A | 2007-12-12 A |  | 100% | 2007-10-24 | 2007-12-12 | 36d |  | 1992h | 1992h | 99 | 99 | 99 | 현황 평가 | C02-1 1.2.1 | 현행시스템분석서 |
| 19 | 2.1.2.1 | CRM(신고객) 변경대상 테이블 선정 | 3d | 2007-10-24 A | 2007-10-26 A | 17 | 100% | 2007-10-24 | 2007-10-26 | 3d | 김상호; 이진희; 금은호 | 72h | 72h | 3 | 3 | 3 | 현황 평가 | C02-1 1.2.1 |  |
| 20 | 2.1.2.2 | CRM(신고객) 테이블/프로그램/화면 연관분석 | 10d | 2007-10-24 A | 2007-11-06 A | 19SS | 100% | 2007-10-24 | 2007-11-06 | 10d | 김상호; 이진희; 금은호 | 240h | 240h | 10 | 10 | 10 | 현황 평가 | C02-1 1.2.1 |  |
| 21 | 2.1.2.3 | CRM(신고객)과 타시스템간 고객정보 I/F분석 | 10d | 2007-10-24 A | 2007-11-06 A | 19SS | 100% | 2007-10-24 | 2007-11-06 | 10d | 김상호; 이진희; 금은호 | 240h | 240h | 10 | 10 | 10 | 현황 평가 | C02-1 1.2.1 |  |
| 22 | 2.1.2.4 | **현행데이터 분석환경 준비** | 10d | 2007-10-24 A | 2007-11-06 A |  | 100% | 2007-10-24 | 2007-11-06 | 10d |  | 120h | 120h |  |  |  | 현황 평가 | C02-1 1.2.1 |  |
| 23 | 2.1.2.4.1 | 데이터 분석을 위한 서버 및 DBMS 준비 | 5d | 2007-10-24 A | 2007-10-30 A | 17 | 100% | 2007-10-24 | 2007-10-30 | 5d | TBD1 | 40h | 40h |  |  |  | 현황 평가 | C02-1 1.2.1 |  |
| 24 | 2.1.2.4.2 | 항목별 통합 Biz Rule 적용 분석을 위한 기초데이터 준비 | 5d | 2007-10-31 A | 2007-11-06 A | 23 | 100% | 2007-10-31 | 2007-11-06 | 5d | TBD1 | 40h | 40h |  |  |  | 현황 평가 | C02-1 1.2.1 |  |
| 25 | 2.1.2.4.3 | 고객번호 매핑 분석을 위한 기초데이터 준비 | 5d | 2007-10-31 A | 2007-11-06 A | 24SS | 100% | 2007-10-31 | 2007-11-06 | 5d | TBD1 | 40h | 40h |  |  |  | 현황 평가 | C02-1 1.2.1 |  |

Notes:
- 16: 고객구분코드, 과세코드, 직업코드, 국가코드 등
- 17: 전환대상테이블, 전환범위(활동고객 등) 결정
- 20: 변경대상 테이블과 연관된 화면,프로그램목록 도축 -->변경범위
- 21: 뱅킹시스템, 카드/공제/경제/전자금융/조합원/경영정보 등 I/F대상 및 목록분석

| ID | WBS | Task | Duration | Start | Finish | Predecessors | Complete | Baseline start | Baseline finish | Baseline duration | Resources | Work | Actual work | Cost | Baseline cost | Actual cost | Text20 | Text26 | Text30 |
| --- | --- | --- | --- | --- | --- | --- | --- | --- | --- | --- | --- | --- | --- | --- | --- | --- | --- | --- | --- |
| 26 | 2.1.2.5 | **현행데이터 분석** | 36d | 2007-10-24 A | 2007-12-12 A |  | 100% | 2007-10-24 | 2007-12-12 | 36d |  | 1320h | 1320h | 76 | 76 | 76 | 현황 평가 | C02-1 1.2.1 | 현행DB분석서 |
| 27 | 2.1.2.5.1 | **항목별 통합 Biz Rule 적용을 위한 분석 작업** | 17d | 2007-10-24 A | 2007-11-15 A |  | 100% | 2007-10-24 | 2007-11-15 | 17d |  | 312h | 312h | 13 | 13 | 13 | 현황 평가 | C02-1 1.2.1 |  |
| 28 | 2.1.2.5.1.1 | 데이터 분석 대상항목 선정 | 1d | 2007-10-24 A | 2007-10-24 A | 19SS | 100% | 2007-10-24 | 2007-10-24 | 1d | 김상호; 이진희; 금은호 | 24h | 24h | 1 | 1 | 1 | 현황 평가 | C02-1 1.2.1 |  |
| 29 | 2.1.2.5.1.2 | 데이터 분석 방법 및 기준 정의 | 2d | 2007-10-24 A | 2007-10-25 A | 28SS | 100% | 2007-10-24 | 2007-10-25 | 2d | 김상호; 이진희; 금은호 | 48h | 48h | 2 | 2 | 2 | 현황 평가 | C02-1 1.2.1 |  |
| 30 | 2.1.2.5.1.3 | 데이터 분석 | 8d | 2007-11-02 A | 2007-11-13 A | 24SS+2d | 100% | 2007-11-02 | 2007-11-13 | 8d | 김상호; 이진희; 금은호 | 192h | 192h | 8 | 8 | 8 | 현황 평가 | C02-1 1.2.1 |  |
| 31 | 2.1.2.5.1.4 | 분석 결과 취합 및 통합 Biz Rule 적용 기준 정의 | 2d | 2007-11-14 A | 2007-11-15 A | 30 | 100% | 2007-11-14 | 2007-11-15 | 2d | 김상호; 이진희; 금은호 | 48h | 48h | 2 | 2 | 2 | 현황 평가 | C02-1 1.2.1 |  |
| 32 | 2.1.2.5.2 | **고객번호매핑테이블 생성** | 36d | 2007-10-24 A | 2007-12-12 A |  | 100% | 2007-10-24 | 2007-12-12 | 36d |  | 1008h | 1008h | 63 | 63 | 63 | 현황 평가 | C02-1 1.2.1 |  |
| 33 | 2.1.2.5.2.1 | 고객번호 식별기준 항목정의 | 3d | 2007-10-24 A | 2007-10-26 A | 17 | 100% | 2007-10-24 | 2007-10-26 | 3d | 이진희; 금은호 | 48h | 48h | 3 | 3 | 3 | 현황 평가 | C02-1 1.2.1 |  |
| 34 | 2.1.2.5.2.2 | 고객번호 매핑설계 | 10d | 2007-10-29 A | 2007-11-09 A | 33 | 100% | 2007-10-29 | 2007-11-09 | 10d | 이진희; 금은호 | 160h | 160h | 10 | 10 | 10 | 현황 평가 | C02-1 1.2.1 |  |
| 35 | 2.1.2.5.2.3 | 매핑테이블 생성 | 10d | 2007-11-12 A | 2007-11-23 A | 34 | 100% | 2007-11-12 | 2007-11-23 | 10d | 이진희; 금은호 | 160h | 160h | 10 | 10 | 10 | 현황 평가 | C02-1 1.2.1 |  |
| 36 | 2.1.2.5.2.4 | 정비대상 정의 | 20d | 2007-11-05 A | 2007-11-30 A | 24SS+3d | 100% | 2007-11-05 | 2007-11-30 | 20d | 이진희; 금은호 | 320h | 320h | 20 | 20 | 20 | 현황 평가 | C02-1 1.2.1 |  |
| 37 | 2.1.2.5.2.5 | 정비방안 수립 | 20d | 2007-11-15 A | 2007-12-12 A | 35SS+3d | 100% | 2007-11-15 | 2007-12-12 | 20d | 이진희; 금은호 | 320h | 320h | 20 | 20 | 20 | 현황 평가 | C02-1 1.2.1 | 데이터정비방안 |
| 38 | 2.1.2.6 | **이슈 및 요건 도출** | 30d | 2007-10-29 A | 2007-12-07 A |  | 100% | 2007-10-29 | 2007-12-07 | 30d |  |  |  |  |  |  | 현황 평가 | C02-1 1.2.1 |  |
| 39 | 2.1.2.6.1 | 고객식별체계 변경에 따른 업무팀별 이슈도출 | 15d | 2007-10-29 A | 2007-11-16 A | 20SS+3d | 100% | 2007-10-29 | 2007-11-16 | 15d |  |  |  |  |  |  | 현황 평가 | C02-1 1.2.1 |  |
| 40 | 2.1.2.6.2 | 고객통합에 따른 업무팀별 이슈도출 | 15d | 2007-10-29 A | 2007-11-16 A | 39SS | 100% | 2007-10-29 | 2007-11-16 | 15d |  |  |  |  |  |  | 현황 평가 | C02-1 1.2.1 |  |
| 41 | 2.1.2.6.3 | 정리대상 코드의 사용처조사 및 요건 도출 | 15d | 2007-10-29 A | 2007-11-16 A | 39FF, 40FF | 100% | 2007-10-29 | 2007-11-16 | 15d |  |  |  |  |  |  | 현황 평가 | C02-1 1.2.1 |  |
| 42 | 2.1.2.6.4 | CRM(신고객) 변경요건 도출 | 7d | 2007-11-15 A | 2007-11-23 A | 41FF+5d | 100% | 2007-11-15 | 2007-11-23 | 7d |  |  |  |  |  |  | 현황 평가 | C02-1 1.2.1 |  |
| 43 | 2.1.2.6.5 | 경영정보 I/F 범위 및 이슈 도출 | 7d | 2007-11-26 A | 2007-12-04 A | 42 | 100% | 2007-11-26 | 2007-12-04 | 7d |  |  |  |  |  |  | 현황 평가 | C02-1 1.2.1 |  |
| 44 | 2.1.2.6.6 | 데이터정비/전환 이슈 도출 | 10d | 2007-11-26 A | 2007-12-07 A | 43FF+3d | 100% | 2007-11-26 | 2007-12-07 | 10d |  |  |  |  |  |  | 현황 평가 | C02-1 1.2.1 |  |
| 45 | 2.1.3 | **인터뷰실시** | 38d | 2007-10-24 A | 2007-12-14 A |  | 100% | 2007-10-24 | 2007-12-14 | 38d |  |  |  |  |  |  | 현황 평가 | C02-1 1.2.1 | 인터뷰결과서 |
| 46 | 2.1.3.1 | **현업인터뷰** | 5d | 2007-10-24 A | 2007-10-30 A |  | 100% | 2007-10-24 | 2007-10-30 | 5d |  |  |  |  |  |  | 현황 평가 | C02-1 1.2.1 |  |
| 47 | 2.1.3.1.1 | 인터뷰대상선정 | 1d | 2007-10-24 A | 2007-10-24 A | 17 | 100% | 2007-10-24 | 2007-10-24 | 1d |  |  |  |  |  |  | 현황 평가 | C02-1 1.2.1 |  |
| 48 | 2.1.3.1.2 | 인터뷰질의서작성 | 2d | 2007-10-24 A | 2007-10-25 A | 47SS | 100% | 2007-10-24 | 2007-10-25 | 2d |  |  |  |  |  |  | 현황 평가 | C02-1 1.2.1 |  |
| 49 | 2.1.3.1.3 | 인터뷰실시및결과작성 | 3d | 2007-10-26 A | 2007-10-30 A | 48 | 100% | 2007-10-26 | 2007-10-30 | 3d |  |  |  |  |  |  | 현황 평가 | C02-1 1.2.1 |  |

Notes:
- 33: 실명번호,고객구분코드,과세코드,개인사업자코드,부기명 등

| ID | WBS | Task | Duration | Start | Finish | Predecessors | Complete | Baseline start | Baseline finish | Baseline duration | Text20 | Text26 | Text30 |
| --- | --- | --- | --- | --- | --- | --- | --- | --- | --- | --- | --- | --- | --- |
| 50 | 2.1.3.2 | **이슈협의 및 확정을 위한 업무팀 인터뷰** | 30d | 2007-11-05 A | 2007-12-14 A |  | 100% | 2007-11-05 | 2007-12-14 | 30d | 현황 평가 | C02-1 1.2.1 |  |
| 51 | 2.1.3.2.1 | 고객식별체계 변경에 따른 업무팀별 이슈협의 및 확정 | 15d | 2007-11-05 A | 2007-11-23 A | 39SS+5d | 100% | 2007-11-05 | 2007-11-23 | 15d | 현황 평가 | C02-1 1.2.1 |  |
| 52 | 2.1.3.2.2 | 고객통합에 따른 업무팀별 이슈협의 및 확정 | 15d | 2007-11-05 A | 2007-11-23 A | 40SS+5d | 100% | 2007-11-05 | 2007-11-23 | 15d | 현황 평가 | C02-1 1.2.1 |  |
| 53 | 2.1.3.2.3 | 정리대상 코드의 요건 협의 및 확정 | 15d | 2007-11-05 A | 2007-11-23 A | 41SS+5d | 100% | 2007-11-05 | 2007-11-23 | 15d | 현황 평가 | C02-1 1.2.1 |  |
| 54 | 2.1.3.2.4 | CRM(신고객) 변경요건 협의 및 확정 | 7d | 2007-11-22 A | 2007-11-30 A | 42SS+5d | 100% | 2007-11-22 | 2007-11-30 | 7d | 현황 평가 | C02-1 1.2.1 |  |
| 55 | 2.1.3.2.5 | 경영정보 I/F 범위 및 이슈 협의 및 확정 | 10d | 2007-11-26 A | 2007-12-07 A | 54FF+5d | 100% | 2007-11-26 | 2007-12-07 | 10d | 현황 평가 | C02-1 1.2.1 |  |
| 56 | 2.1.3.2.6 | 데이터정비/전환 이슈 협의 및 확정 | 10d | 2007-12-03 A | 2007-12-14 A | 55FF+5d | 100% | 2007-12-03 | 2007-12-14 | 10d | 현황 평가 | C02-1 1.2.1 |  |
| 57 | 2.2 | **요구사항 정의** | 18d | 2007-11-26 A | 2007-12-19 A |  | 100% | 2007-11-26 | 2007-12-19 | 18d | 요구사항 정의 | C02-1 1.2.2 |  |
| 58 | 2.2.1 | 데이터(통합대상항목,식별체계변경,코드)요구사항정의 | 3d | 2007-11-26 A | 2007-11-28 A | 51, 52, 53 | 100% | 2007-11-26 | 2007-11-28 | 3d | 요구사항 정의 | C02-1 1.2.2 |  |
| 59 | 2.2.2 | CRM(신고객)화면변경요구사항정의 | 3d | 2007-12-03 A | 2007-12-05 A | 54 | 100% | 2007-12-03 | 2007-12-05 | 3d | 요구사항 정의 | C02-1 1.2.2 |  |
| 60 | 2.2.3 | CRM(신고객)과 타시스템간 I/F요구사항정의 | 3d | 2007-12-10 A | 2007-12-12 A | 55 | 100% | 2007-12-10 | 2007-12-12 | 3d | 요구사항 정의 | C02-1 1.2.2 |  |
| 61 | 2.2.4 | 데이터정비및전환요구사항정의 | 3d | 2007-12-17 A | 2007-12-19 A | 56 | 100% | 2007-12-17 | 2007-12-19 | 3d | 요구사항 정의 | C02-1 1.2.2 |  |
| 62 | 2.2.5 | **통합항목/인터페이스 확정 및 통합 Biz Rule 정의** | 15d | 2007-11-26 A | 2007-12-14 A |  | 100% | 2007-11-26 | 2007-12-14 | 15d | 요구사항 정의 | C02-1 1.2.2 |  |
| 63 | 2.2.5.1 | 각 시스템/채널별 통합항목 정의 | 5d | 2007-11-26 A | 2007-11-30 A | 58SS | 100% | 2007-11-26 | 2007-11-30 | 5d | 요구사항 정의 | C02-1 1.2.2 |  |
| 64 | 2.2.5.2 | 각 시스템/채널별 인터페이스 정의 | 5d | 2007-12-10 A | 2007-12-14 A | 60SS | 100% | 2007-12-10 | 2007-12-14 | 5d | 요구사항 정의 | C02-1 1.2.2 |  |
| 65 | 2.2.5.3 | 통합 Biz Rule 정의 | 5d | 2007-12-10 A | 2007-12-14 A | 60SS | 100% | 2007-12-10 | 2007-12-14 | 5d | 요구사항 정의 | C02-1 1.2.2 |  |
| 66 | 2.3 | **신논리모델 구축** | 15d | 2007-11-29 A | 2007-12-19 A |  | 100% | 2007-11-29 | 2007-12-19 | 15d | 신논리모델 구축 | C02-1 1.2.3 |  |
| 67 | 2.3.1 | **프로세스모델링** | 5d | 2007-12-13 A | 2007-12-19 A |  | 100% | 2007-12-13 | 2007-12-19 | 5d | 신논리모델 구축 | C02-1 1.2.3 | 프로세스정의서,인터페이스정의서,기능차트 |
| 68 | 2.3.1.1 | CRM(신고객)변경 기능 정의 | 5d | 2007-12-13 A | 2007-12-19 A | 59, 60 | 100% | 2007-12-13 | 2007-12-19 | 5d | 신논리모델 구축 | C02-1 1.2.3 |  |
| 69 | 2.3.1.2 | CRM(신고객)변경 프로세스 정의 | 5d | 2007-12-13 A | 2007-12-19 A | 68SS | 100% | 2007-12-13 | 2007-12-19 | 5d | 신논리모델 구축 | C02-1 1.2.3 |  |
| 70 | 2.3.1.3 | CRM(신고객)과 타시스템간 인터페이스 정의 | 5d | 2007-12-13 A | 2007-12-19 A | 68SS | 100% | 2007-12-13 | 2007-12-19 | 5d | 신논리모델 구축 | C02-1 1.2.3 |  |
| 71 | 2.3.2 | **CRM(신고객) 데이터모델링** | 10d | 2007-11-29 A | 2007-12-12 A |  | 100% | 2007-11-29 | 2007-12-12 | 10d | 신논리모델 구축 | C02-1 1.2.3 | 엔티티정의서,엔티티목록,ERD(논리) |
| 72 | 2.3.2.1 | 고객마스터및프로파일중심 실체구조정의 | 5d | 2007-11-29 A | 2007-12-05 A | 58 | 100% | 2007-11-29 | 2007-12-05 | 5d | 신논리모델 구축 | C02-1 1.2.3 |  |
| 73 | 2.3.2.2 | 통합대상 속성정의 | 5d | 2007-11-29 A | 2007-12-05 A | 72SS | 100% | 2007-11-29 | 2007-12-05 | 5d | 신논리모델 구축 | C02-1 1.2.3 |  |
| 74 | 2.3.2.3 | 모델리뷰 및 보완 | 5d | 2007-12-06 A | 2007-12-12 A | 73 | 100% | 2007-12-06 | 2007-12-12 | 5d | 신논리모델 구축 | C02-1 1.2.3 |  |
| 75 | 2.3.2.4 | TO-BE 데이터분석 | 5d | 2007-12-06 A | 2007-12-12 A | 73 | 100% | 2007-12-06 | 2007-12-12 | 5d | 신논리모델 구축 | C02-1 1.2.3 | 데이터모델분석서 |
| 76 | 2.3.3 | 인수테스트기준 정의 | 3d | 2007-12-13 A | 2007-12-17 A | 75 | 100% | 2007-12-13 | 2007-12-17 | 3d | 신논리모델 구축 | C02-1 1.2.3 |  |

Notes:
- 58: 데이터요구사항 -> 통합대상항목, 통합 Biz Rule

| ID | WBS | Task | Type | Duration | Start | Finish | Predecessors | Complete | Baseline start | Baseline finish | Baseline duration | Text20 | Text26 | Text30 |
| --- | --- | --- | --- | --- | --- | --- | --- | --- | --- | --- | --- | --- | --- | --- |
| 77 | 2.4 | **단계완료 품질검토** |  | 13d | 2007-12-18 A | 2008-01-07 A |  | 100% | 2007-12-18 | 2008-01-07 | 13d | 품질활동수행 | C02-1 1.6.2 |  |
| 78 | 2.4.1 | **산출물 Inspection** |  | 2d | 2007-12-18 A | 2007-12-19 A |  | 100% | 2007-12-18 | 2007-12-19 | 2d | 품질활동수행 | C02-1 1.6.2 |  |
| 79 | 2.4.1.1 | Inspection실시 |  | 1d | 2007-12-18 A | 2007-12-18 A | 76 | 100% | 2007-12-18 | 2007-12-18 | 1d | 품질활동수행 | C02-1 1.6.2 |  |
| 80 | 2.4.1.2 | 조치계획수립 및 수행 |  | 1d | 2007-12-19 A | 2007-12-19 A | 79 | 100% | 2007-12-19 | 2007-12-19 | 1d | 품질활동수행 | C02-1 1.6.2 |  |
| 81 | 2.4.2 | 요구사항추적표매핑 |  | 1d | 2007-12-20 A | 2007-12-20 A | 80 | 100% | 2007-12-20 | 2007-12-20 | 1d | 품질활동수행 | C02-1 1.6.2 |  |
| 82 | 2.4.3 | 고객검토 |  | 10d | 2007-12-21 A | 2008-01-07 A | 81 | 100% | 2007-12-21 | 2008-01-07 | 10d | 품질활동수행 | C02-1 1.6.2 |  |
| 83 | 2.5 | 분석완료보고 |  | 1d | 2007-12-21 A | 2007-12-21 A | 81 | 100% | 2007-12-21 | 2007-12-21 | 1d | 단계완료 | C02-1 1.6.8 |  |
| 84 | 3 | **설계** |  | 70d | 2007-12-03 A | 2008-03-14 A |  | 100% | 2007-12-03 | 2008-03-14 | 70d | 설계 | C02-1 1.3 |  |
| 85 | 3.1 | **단계착수** |  | 13d | 2007-12-21 A | 2008-01-10 A |  | 100% | 2007-12-21 | 2008-01-10 | 13d | 단계착수 | C02-1 1.6.1 |  |
| 86 | 3.1.1 | 오리엔테이션(2차)실시 |  | 1d | 2007-12-21 A | 2007-12-21 A | 81 | 100% | 2007-12-21 | 2007-12-21 | 1d | 단계착수 | C02-1 1.6.1 |  |
| 87 | 3.1.2 | 설계가이드 | milestone | 0d | 2007-12-21 A | 2007-12-21 A | 86 | 100% | 2007-12-21 | 2007-12-21 | 0d | 단계착수 | C02-1 1.6.1 |  |
| 88 | 3.1.3 | 분석감리조치 |  | 3d | 2008-01-08 A | 2008-01-10 A | 82 | 100% | 2008-01-08 | 2008-01-10 | 3d | 단계착수 | C02-1 1.6.1 |  |
| 89 | 3.2 | **기본설계** |  | 14d | 2007-12-24 A | 2008-01-14 A |  | 100% | 2007-12-24 | 2008-01-14 | 14d | 기본설계 | C02-1 1.3.1 |  |
| 90 | 3.2.1 | **시스템구조 설계** |  | 10d | 2007-12-24 A | 2008-01-08 A |  | 100% | 2007-12-24 | 2008-01-08 | 10d | 기본설계 | C02-1 1.3.1 | 어플리케이션구조도 |
| 91 | 3.2.1.1 | 어플리케이션구조도작성 |  | 5d | 2007-12-24 A | 2007-12-31 A | 87 | 100% | 2007-12-24 | 2007-12-31 | 5d | 기본설계 | C02-1 1.3.1 | 프로그램목록 |
| 92 | 3.2.1.2 | 프로그램목록작성 |  | 5d | 2008-01-02 A | 2008-01-08 A | 91 | 100% | 2008-01-02 | 2008-01-08 | 5d | 기본설계 | C02-1 1.3.1 | 데이터코드정의서,데이터코드목록 |
| 93 | 3.2.2 | 데이터코드설계 |  | 5d | 2007-12-24 A | 2007-12-31 A | 87 | 100% | 2007-12-24 | 2007-12-31 | 5d | 기본설계 | C02-1 1.3.1 |  |
| 94 | 3.2.3 | 데이터베이스기본설계-프로세스vs엔티티 상관도 |  | 5d | 2007-12-24 A | 2007-12-31 A | 93SS | 100% | 2007-12-24 | 2007-12-31 | 5d | 기본설계 | C02-1 1.3.1 |  |
| 95 | 3.2.4 | **화면 및 보고서 설계** |  | 14d | 2007-12-24 A | 2008-01-14 A |  | 100% | 2007-12-24 | 2008-01-14 | 14d | 기본설계 | C02-1 1.3.1 |  |
| 96 | 3.2.4.1 | CRM(신고객)변경 화면 설계 |  | 10d | 2007-12-24 A | 2008-01-08 A | 87 | 100% | 2007-12-24 | 2008-01-08 | 10d | 기본설계 | C02-1 1.3.1 | 화면목록,화면레이아웃 |
| 97 | 3.2.4.2 | CRM(신고객)변경 보고서 설계 |  | 10d | 2007-12-27 A | 2008-01-10 A | 96FF+2d | 100% | 2007-12-27 | 2008-01-10 | 10d | 기본설계 | C02-1 1.3.1 | 보고서목록,보고서레이아웃 |
| 98 | 3.2.4.3 | 화면 및 보고서 리뷰 |  | 2d | 2008-01-11 A | 2008-01-14 A | 97 | 100% | 2008-01-11 | 2008-01-14 | 2d | 기본설계 | C02-1 1.3.1 |  |
| 99 | 3.3 | **상세설계** |  | 57d | 2007-12-03 A | 2008-02-26 A |  | 100% | 2007-12-03 | 2008-02-26 | 57d | 상세설계 | C02-1 1.3.3 |  |
| 100 | 3.3.1 | **데이터베이스 상세설계** |  | 3d | 2008-01-15 A | 2008-01-17 A |  | 100% | 2008-01-15 | 2008-01-17 | 3d | 상세설계 | C02-1 1.3.3 | 프로그램대테이블상관도,테이블정의서,테이블목록,ERD(물리) |
| 101 | 3.3.1.1 | 물리모델 전환 |  | 2d | 2008-01-15 A | 2008-01-16 A | 98 | 100% | 2008-01-15 | 2008-01-16 | 2d | 상세설계 | C02-1 1.3.3 |  |
| 102 | 3.3.1.2 | 물리 모델 리뷰 및 보완사항 반영 |  | 1d | 2008-01-17 A | 2008-01-17 A | 101 | 100% | 2008-01-17 | 2008-01-17 | 1d | 상세설계 | C02-1 1.3.3 |  |
| 103 | 3.3.2 | 공통프로그램 설계 |  | 10d | 2008-01-18 A | 2008-01-31 A | 102 | 100% | 2008-01-18 | 2008-01-31 | 10d | 상세설계 | C02-1 1.3.3 | 프로그램사양서(공통) |

Notes:
- 93: 정리대상코드에 대해 TO-BE 코드 설계
- 94: 고객관리 프로세싱에 적합한 모델인지 검증

| ID | WBS | Task | Duration | Start | Finish | Predecessors | Complete | Remaining | Baseline start | Baseline finish | Baseline duration | Total slack | Work | Actual work | Cost | Baseline cost | Actual cost | Text20 | Text26 | Text30 |
| --- | --- | --- | --- | --- | --- | --- | --- | --- | --- | --- | --- | --- | --- | --- | --- | --- | --- | --- | --- | --- |
| 104 | 3.3.3 | **서버프로그램 설계** | 20d | 2008-01-25 A | 2008-02-26 A |  | 100% |  | 2008-01-25 | 2008-02-26 | 20d |  |  |  |  |  |  | 상세설계 | C02-1 1.3.3 | 프로그램사양서(서버) |
| 105 | 3.3.3.1 | 온라인프로그램설계 | 15d | 2008-01-25 A | 2008-02-19 A | 103SS+5d | 100% |  | 2008-01-25 | 2008-02-19 | 15d |  |  |  |  |  |  | 상세설계 | C02-1 1.3.3 |  |
| 106 | 3.3.3.2 | 배치프로그램설계 | 15d | 2008-02-01 A | 2008-02-26 A | 105FF+5d | 100% |  | 2008-02-01 | 2008-02-26 | 15d |  |  |  |  |  |  | 상세설계 | C02-1 1.3.3 |  |
| 107 | 3.3.4 | 클라이언트프로그램 설계 | 15d | 2008-01-25 A | 2008-02-19 A | 105SS | 100% |  | 2008-01-25 | 2008-02-19 | 15d |  |  |  |  |  |  | 상세설계 | C02-1 1.3.3 | 프로그램사양서(클라이언트) |
| 108 | 3.3.5 | **컨버전설계** | 57d | 2007-12-03 A | 2008-02-26 A |  | 100% |  | 2007-12-03 | 2008-02-26 | 57d |  |  |  |  |  |  | 상세설계 | C02-1 1.3.3 |  |
| 109 | 3.3.5.1 | 컨버전계획 수립 | 5d | 2008-02-20 A | 2008-02-26 A | 107 | 100% |  | 2008-02-20 | 2008-02-26 | 5d |  |  |  |  |  |  | 상세설계 | C02-1 1.3.3 | 컨버전계획서 |
| 110 | 3.3.5.2 | **데이터정비** | 53d | 2007-12-03 A | 2008-02-20 A |  | 100% |  | 2007-12-03 | 2008-02-20 | 53d |  |  |  |  |  |  | 상세설계 | C02-1 1.3.3 |  |
| 111 | 3.3.5.2.1 | 정비대상 정의 | 50d | 2007-12-03 A | 2008-02-15 A | 63 | 100% |  | 2007-12-03 | 2008-02-15 | 50d |  |  |  |  |  |  | 상세설계 | C02-1 1.3.3 |  |
| 112 | 3.3.5.2.2 | 정비방안 수립 | 50d | 2007-12-06 A | 2008-02-20 A | 111SS+3d | 100% |  | 2007-12-06 | 2008-02-20 | 50d |  |  |  |  |  |  | 상세설계 | C02-1 1.3.3 | 데이터정비방안 |
| 113 | 3.3.5.3 | **데이터매핑설계** | 50d | 2007-12-10 A | 2008-02-22 A |  | 100% |  | 2007-12-10 | 2008-02-22 | 50d |  |  |  |  |  |  | 상세설계 | C02-1 1.3.3 | 매핑정의서 |
| 114 | 3.3.5.3.1 | 데이터매핑정의 | 45d | 2007-12-10 A | 2008-02-15 A | 111SS+5d | 100% |  | 2007-12-10 | 2008-02-15 | 45d |  |  |  |  |  |  | 상세설계 | C02-1 1.3.3 |  |
| 115 | 3.3.5.3.2 | 데이터매핑프로그램설계 | 45d | 2007-12-17 A | 2008-02-22 A | 114SS+5d | 100% |  | 2007-12-17 | 2008-02-22 | 45d |  |  |  |  |  |  | 상세설계 | C02-1 1.3.3 |  |
| 116 | 3.3.6 | **인터페이스설계** | 15d | 2008-01-09 A | 2008-01-29 A |  | 100% |  | 2008-01-09 | 2008-01-29 | 15d |  |  |  |  |  |  | 상세설계 | C02-1 1.3.3 |  |
| 117 | 3.3.6.1 | 인터페이스목록작성 | 5d | 2008-01-09 A | 2008-01-15 A | 92 | 100% |  | 2008-01-09 | 2008-01-15 | 5d |  |  |  |  |  |  | 상세설계 | C02-1 1.3.3 |  |
| 118 | 3.3.6.2 | 인터페이스정의서작성 | 10d | 2008-01-16 A | 2008-01-29 A | 117 | 100% |  | 2008-01-16 | 2008-01-29 | 10d |  |  |  |  |  |  | 상세설계 | C02-1 1.3.3 |  |
| 119 | 3.4 | **단계완료 품질검토** | 25d | 2008-02-11 A | 2008-03-14 A |  | 100% |  | 2008-02-11 | 2008-03-14 | 25d |  |  |  |  |  |  | 품질활동수행 | C02-1 1.6.2 |  |
| 120 | 3.4.1 | QAO심사(2차)조치 | 10d | 2008-02-11 A | 2008-02-22 A | 118FF, 107FF, 115FF | 100% |  | 2008-02-11 | 2008-02-22 | 10d |  |  |  |  |  |  | 품질활동수행 | C02-1 1.6.2 |  |
| 121 | 3.4.2 | **산출물 Inspection** | 4d | 2008-02-25 A | 2008-02-28 A |  | 100% |  | 2008-02-25 | 2008-02-28 | 4d |  |  |  |  |  |  | 품질활동수행 | C02-1 1.6.2 |  |
| 122 | 3.4.2.1 | Inspection(2차)실시 및 조치 | 2d | 2008-02-25 A | 2008-02-26 A | 120 | 100% |  | 2008-02-25 | 2008-02-26 | 2d |  |  |  |  |  |  | 품질활동수행 | C02-1 1.6.2 |  |
| 123 | 3.4.2.2 | 조치계획수립 및 수행 | 2d | 2008-02-27 A | 2008-02-28 A | 122 | 100% |  | 2008-02-27 | 2008-02-28 | 2d |  |  |  |  |  |  | 품질활동수행 | C02-1 1.6.2 |  |
| 124 | 3.4.3 | 설계요구사항추적표 매핑 | 1d | 2008-02-29 A | 2008-02-29 A | 123 | 100% |  | 2008-02-29 | 2008-02-29 | 1d |  |  |  |  |  |  | 품질활동수행 | C02-1 1.6.2 |  |
| 125 | 3.4.4 | 고객검토(2차)실시 및 조치 | 10d | 2008-03-03 A | 2008-03-14 A | 124 | 100% |  | 2008-03-03 | 2008-03-14 | 10d |  |  |  |  |  |  | 품질활동수행 | C02-1 1.6.2 |  |
| 126 | 4 | **개발** | 118d | 2008-01-14 A | 2008-07-04 |  | 99% | 0.17d | 2008-01-14 | 2008-07-04 | 118d | 181d | 6640h | 6640h | 830 | 830 | 830 | 개발 | C02-1 1.4 |  |
| 127 | 4.1 | **단계착수** | 15d | 2008-03-03 A | 2008-03-21 A |  | 100% |  | 2008-03-03 | 2008-03-21 | 15d |  |  |  |  |  |  | 단계착수 | C02-1 1.6.1 |  |
| 128 | 4.1.1 | 개발SPM검토 및 수정 | 1d | 2008-03-03 A | 2008-03-03 A | 124 | 100% |  | 2008-03-03 | 2008-03-03 | 1d |  |  |  |  |  |  | 단계착수 | C02-1 1.6.1 |  |
| 129 | 4.1.2 | 오리엔테이션(3차) 실시 | 1d | 2008-03-03 A | 2008-03-03 A | 128SS | 100% |  | 2008-03-03 | 2008-03-03 | 1d |  |  |  |  |  |  | 단계착수 | C02-1 1.6.1 |  |
| 130 | 4.1.3 | 개발표준 및 개발환경교육 | 5d | 2008-03-04 A | 2008-03-10 A | 129 | 100% |  | 2008-03-04 | 2008-03-10 | 5d |  |  |  |  |  |  | 단계착수 | C02-1 1.6.1 |  |
| 131 | 4.1.4 | 설계감리조치 | 5d | 2008-03-17 A | 2008-03-21 A | 125 | 100% |  | 2008-03-17 | 2008-03-21 | 5d |  |  |  |  |  |  | 단계착수 | C02-1 1.6.1 |  |

Notes:
- 113: 데이터매핑설계(15일)를 하위작업 두개로 분할함.

| ID | WBS | Task | Duration | Start | Finish | Predecessors | Complete | Remaining | Baseline start | Baseline finish | Baseline duration | Total slack | Free slack | Constraint | Resources | Work | Actual work | Cost | Baseline cost | Actual cost | Text20 | Text26 | Text30 |
| --- | --- | --- | --- | --- | --- | --- | --- | --- | --- | --- | --- | --- | --- | --- | --- | --- | --- | --- | --- | --- | --- | --- | --- |
| 132 | 4.2 | **코딩 및 단위테스트 실시** | 85d | 2008-03-04 A | 2008-07-04 |  | 99% | 0.29d | 2008-03-04 | 2008-07-04 | 85d | 181d |  |  |  | 576h | 576h | 72 | 72 | 72 | 코딩 및 단위테스트 실시 | C02-1 1.4.1 |  |
| 133 | 4.2.1 | 단위테스트체크리스트작성 | 2d | 2008-03-04 A | 2008-03-05 A | 129 | 100% |  | 2008-03-04 | 2008-03-05 | 2d |  |  |  |  |  |  |  |  |  | 코딩 및 단위테스트 실시 | C02-1 1.4.1 |  |
| 134 | 4.2.2 | **프로그램모델 및 공통프로그램 개발** | 33d | 2008-03-06 A | 2008-04-21 A |  | 100% |  | 2008-03-06 | 2008-04-21 | 33d |  |  |  |  |  |  |  |  |  | 코딩 및 단위테스트 실시 | C02-1 1.4.1 | 소스코드(공통) |
| 135 | 4.2.2.1 | 프로그램모델링 | 10d | 2008-03-06 A | 2008-03-19 A | 133 | 100% |  | 2008-03-06 | 2008-03-19 | 10d |  |  |  |  |  |  |  |  |  | 코딩 및 단위테스트 실시 | C02-1 1.4.1 |  |
| 136 | 4.2.2.2 | 테스트데이터확보 | 10d | 2008-03-20 A | 2008-04-02 A | 135 | 100% |  | 2008-03-20 | 2008-04-02 | 10d |  |  |  |  |  |  |  |  |  | 코딩 및 단위테스트 실시 | C02-1 1.4.1 |  |
| 137 | 4.2.2.3 | 공통프로그램개발 | 20d | 2008-03-25 A | 2008-04-21 A | 136SS+3d | 100% |  | 2008-03-25 | 2008-04-21 | 20d |  |  |  |  |  |  |  |  |  | 코딩 및 단위테스트 실시 | C02-1 1.4.1 |  |
| 138 | 4.2.3 | 프로그램 코딩 | 70d | 2008-03-11 A | 2008-06-20 | 130 | 99% | 0.7d | 2008-03-11 | 2008-06-20 | 70d | 191d | 0d |  |  |  |  |  |  |  | 코딩 및 단위테스트 실시 | C02-1 1.4.1 | 소스코드 |
| 139 | 4.2.4 | **단위테스트실시** | 75d | 2008-03-18 A | 2008-07-04 A |  | 100% |  | 2008-03-18 | 2008-07-04 | 75d |  |  |  |  | 576h | 576h | 72 | 72 | 72 | 코딩 및 단위테스트 실시 | C02-1 1.4.1 |  |
| 140 | 4.2.4.1 | 단위테스트 실시 | 70d | 2008-03-18 A | 2008-06-27 A | 138SS+5d | 100% |  | 2008-03-18 | 2008-06-27 | 70d |  |  |  |  |  |  |  |  |  | 코딩 및 단위테스트 실시 | C02-1 1.4.1 | 단위테스트결과서 |
| 141 | 4.2.4.2 | 산출물보완 | 5d | 2008-06-30 A | 2008-07-04 A | 140 | 100% |  | 2008-06-30 | 2008-07-04 | 5d |  |  |  |  |  |  |  |  |  | 코딩 및 단위테스트 실시 | C02-1 1.4.1 |  |
| 142 | 4.2.4.3 | **데이터전환 검증 및 매핑 보완** | 45d | 2008-04-07 A | 2008-06-12 A |  | 100% |  | 2008-04-07 | 2008-06-12 | 45d |  |  |  |  | 576h | 576h | 72 | 72 | 72 | 코딩 및 단위테스트 실시 | C02-1 1.4.1 |  |
| 143 | 4.2.4.3.1 | 1차데이터검증및 매핑보완 | 5d | 2008-04-07 A | 2008-04-11 A |  | 100% |  | 2008-04-07 | 2008-04-11 | 5d |  |  | start no earlier than 2008-04-05 | 이윤경; 이진희; 설계자; 개발자 | 160h | 160h | 20 | 20 | 20 | 코딩 및 단위테스트 실시 | C02-1 1.4.1 |  |
| 144 | 4.2.4.3.2 | 2차데이터검증및 매핑보완 | 3d | 2008-04-28 A | 2008-04-30 A | 143 | 100% |  | 2008-04-28 | 2008-04-30 | 3d |  |  | start no earlier than 2008-04-28 | 이윤경; 이진희; 설계자; 개발자 | 96h | 96h | 12 | 12 | 12 | 코딩 및 단위테스트 실시 | C02-1 1.4.1 |  |
| 145 | 4.2.4.3.3 | 3차데이터검증및 매핑보완 | 3d | 2008-05-13 A | 2008-05-15 A | 144 | 100% |  | 2008-05-13 | 2008-05-15 | 3d |  |  | start no earlier than 2008-05-13 | 이윤경; 이진희; 설계자; 개발자 | 96h | 96h | 12 | 12 | 12 | 코딩 및 단위테스트 실시 | C02-1 1.4.1 |  |
| 146 | 4.2.4.3.4 | 4차데이터검증및 매핑보완 | 3d | 2008-05-26 A | 2008-05-28 A | 145 | 100% |  | 2008-05-26 | 2008-05-28 | 3d |  |  | start no earlier than 2008-05-26 | 이윤경; 이진희; 설계자; 개발자 | 96h | 96h | 12 | 12 | 12 | 코딩 및 단위테스트 실시 | C02-1 1.4.1 |  |
| 147 | 4.2.4.3.5 | 5차데이터검증및 매핑보완 | 4d | 2008-06-09 A | 2008-06-12 A | 146 | 100% |  | 2008-06-09 | 2008-06-12 | 4d |  |  | start no earlier than 2008-06-09 | 이윤경; 이진희; 설계자; 개발자 | 128h | 128h | 16 | 16 | 16 | 코딩 및 단위테스트 실시 | C02-1 1.4.1 |  |
| 148 | 4.3 | **단계완료 품질검토** | 106d | 2008-01-14 A | 2008-06-18 A |  | 100% |  | 2008-01-14 | 2008-06-18 | 106d |  |  |  |  | 6064h | 6064h | 758 | 758 | 758 | 단계완료 | C02-1 1.6.8 |  |
| 149 | 4.3.1 | QAO심사(3차)조치 | 69d | 2008-02-04 A | 2008-05-16 A |  | 100% |  | 2008-02-04 | 2008-05-16 | 69d |  |  | start no earlier than 2008-02-04 |  |  |  |  |  |  | 단계완료 | C02-1 1.6.8 |  |
| 150 | 4.3.2 | **산출물 Inspection** | 94d | 2008-01-14 A | 2008-05-30 A |  | 100% |  | 2008-01-14 | 2008-05-30 | 94d |  |  |  |  | 6012h | 6012h | 751.5 | 751.5 | 751.5 | 단계완료 | C02-1 1.6.8 |  |
| 151 | 4.3.2.1 | Inspection(3차)실시 | 94d | 2008-01-14 A | 2008-05-30 A |  | 100% |  | 2008-01-14 | 2008-05-30 | 94d |  |  | start no earlier than 2008-01-14 | 이윤경; 이진희; 설계자; 개발자 | 3004h | 3004h | 375.5 | 375.5 | 375.5 | 단계완료 | C02-1 1.6.8 |  |
| 152 | 4.3.2.2 | 조치계획수립 및 수행 | 94d | 2008-01-14 A | 2008-05-30 A | 151SS | 100% |  | 2008-01-14 | 2008-05-30 | 94d |  |  |  | 이윤경; 이진희; 설계자; 개발자 | 3008h | 3008h | 376 | 376 | 376 | 단계완료 | C02-1 1.6.8 |  |
| 153 | 4.3.3 | 개발요구사항추적표 매핑 | 4d | 2008-06-13 A | 2008-06-18 A | 147 | 100% |  | 2008-06-13 | 2008-06-18 | 4d |  |  |  | 이윤경; 이진희; 설계자; 개발자 | 52h | 52h | 6.5 | 6.5 | 6.5 | 단계완료 | C02-1 1.6.8 |  |
| 154 | 5 | **통합테스트** | 117d? | 2008-04-22 A | 2008-10-13 |  | 72% | 32.46d? | 2008-04-22 | 2008-10-13 | 117d? | 114d |  |  |  | 1318h | 510h | 164.75 | 164.75 | 63.75 | 개발 | C02-1 1.4 |  |
| 155 | 5.1 | **단계착수** | 9d? | 2008-05-19 A | 2008-05-29 A |  | 100% |  | 2008-05-19 | 2008-06-09 | 15d? |  |  |  |  | 16h | 16h | 2 | 2 | 2 | 단계착수 | C02-1 1.6.1 |  |
| 156 | 5.1.1 | 통합테스트 단계 계획검토 및 수정 | 5d? | 2008-05-19 A | 2008-05-23 A |  | 100% |  | 2008-05-19 | 2008-05-23 | 5d? |  |  | start no earlier than 2008-05-19 |  |  |  |  |  |  | 단계착수 | C02-1 1.6.1 |  |
| 157 | 5.1.2 | 통합테스트SPM검토 및 수정 | 1d | 2008-05-19 A | 2008-05-19 A |  | 100% |  | 2008-05-19 | 2008-05-19 | 1d |  |  | start no earlier than 2008-05-19 | 이윤경 [25%] | 2h | 2h | 0.25 | 0.25 | 0.25 | 단계착수 | C02-1 1.6.1 |  |
| 158 | 5.1.3 | 오리엔테이션(4차)실시 | 1d | 2008-05-29 A | 2008-05-29 A | 157SS | 100% |  | 2008-05-29 | 2008-06-09 | 7d |  |  | start no earlier than 2008-05-29 | 이윤경 [25%]; 이진희 [50%]; 설계자 [50%]; 개발자 [50%] | 14h | 14h | 1.75 | 1.75 | 1.75 | 단계착수 | C02-1 1.6.1 |  |
| 159 | 5.2 | 통합테스트계획 수립 | 13d | 2008-04-28 A | 2008-05-19 A |  | 100% |  | 2008-04-28 | 2008-05-19 | 13d |  |  |  | 이윤경 [46.2%] | 42h | 42h | 5.25 | 5.25 | 5.25 | 단계착수 | C02-1 1.6.1 | 통합테스트계획서 |
| 160 | 5.3 | 통합테스트계획서보완 | 5d | 2008-05-26 A | 2008-05-30 A |  | 100% |  | 2008-05-26 | 2008-05-30 | 5d |  |  | start no earlier than 2008-05-26 |  |  |  |  |  |  | 단계착수 | C02-1 1.6.1 |  |
| 161 | 5.4 | 통합테스트목록작성 | 1d | 2008-04-22 A | 2008-04-22 A | 159SS | 100% |  | 2008-04-22 | 2008-04-22 | 1d |  |  |  | 이윤경 [50%]; 이진희; 설계자; 개발자 | 28h | 28h | 3.5 | 3.5 | 3.5 | 단계착수 | C02-1 1.6.1 | 통합테스트시나리오 |
| 162 | 5.5 | 통합테스트시나리오목록보완 | 4d? | 2008-05-13 A | 2008-05-16 A |  | 100% |  | 2008-05-13 | 2008-05-16 | 4d? |  |  | start no earlier than 2008-05-13 |  |  |  |  |  |  | 단계착수 | C02-1 1.6.1 |  |
| 163 | 5.6 | 통합테스트시나리오작성(1차) | 9d? | 2008-05-01 A | 2008-05-16 A |  | 100% |  | 2008-05-01 | 2008-05-16 | 9d? |  |  | start no earlier than 2008-05-01 |  |  |  |  |  |  | 단계착수 | C02-1 1.6.1 |  |
| 164 | 5.7 | 통합테스트시나리오작성(2차) | 5d? | 2008-05-19 A | 2008-05-23 A |  | 100% |  | 2008-05-19 | 2008-05-23 | 5d? |  |  | start no earlier than 2008-05-19 |  |  |  |  |  |  | 단계착수 | C02-1 1.6.1 |  |
| 165 | 5.8 | 통합테스트시나리오보완 | 5d? | 2008-05-26 A | 2008-05-30 A |  | 100% |  | 2008-05-26 | 2008-05-30 | 5d? |  |  | start no earlier than 2008-05-26 |  |  |  |  |  |  | 단계착수 | C02-1 1.6.1 |  |
| 166 | 5.9 | 화면오퍼레이션메뉴얼 작성 | 15d | 2008-04-28 A | 2008-05-21 A | 159SS | 100% |  | 2008-04-28 | 2008-05-21 | 15d |  |  |  |  |  |  |  |  |  | 단계착수 | C02-1 1.6.1 |  |

Notes:
- 136: 1차 mig가 2월말에 되면 1~2월 단위테스트를 위한 테스트데이터 확보방안 필요

| ID | WBS | Task | Duration | Start | Finish | Predecessors | Complete | Remaining | Baseline start | Baseline finish | Baseline duration | Total slack | Constraint | Resources | Work | Actual work | Cost | Baseline cost | Actual cost | Text20 | Text26 | Text30 |
| --- | --- | --- | --- | --- | --- | --- | --- | --- | --- | --- | --- | --- | --- | --- | --- | --- | --- | --- | --- | --- | --- | --- |
| 167 | 5.10 | **통합테스트 실시** | 88d | 2008-06-05 A | 2008-10-13 |  | 48% | 45.59d | 2008-06-05 | 2008-10-13 | 88d | 114d |  |  | 848h | 40h | 106 | 106 | 5 | 테스트 실시 | C02-1 1.4.2 | 통합테스트시나리오(결과) |
| 168 | 5.10.1 | 통합테스트 환경구축 | 1d | 2008-06-05 A | 2008-06-06 A |  | 100% |  | 2008-06-05 | 2008-06-06 | 1d |  | must finish on 2008-06-06 | 이윤경 [25%]; 이진희 [50%]; 설계자 [50%]; 개발자 [50%] | 14h | 14h | 1.75 | 1.75 | 1.75 | 테스트 실시 | C02-1 1.4.2 |  |
| 169 | 5.10.2 | 통합테스트 실시 1 | 7d | 2008-06-09 A | 2008-06-17 A |  | 100% |  | 2008-06-09 | 2008-06-17 | 7d |  | start no earlier than 2008-06-09 |  |  |  |  |  |  | 테스트 실시 | C02-1 1.4.2 |  |
| 170 | 5.10.3 | 통합테스트 실시 2 | 7d | 2008-06-23 A | 2008-07-01 A |  | 100% |  | 2008-06-23 | 2008-07-01 | 7d |  | start no earlier than 2008-06-23 |  |  |  |  |  |  | 테스트 실시 | C02-1 1.4.2 |  |
| 171 | 5.10.4 | 통합테스트 실시 3 | 10d | 2008-07-07 A | 2008-07-21 A |  | 100% |  | 2008-07-07 | 2008-07-21 | 10d |  | start no earlier than 2008-07-07 |  |  |  |  |  |  | 테스트 실시 | C02-1 1.4.2 |  |
| 172 | 5.10.5 | 통합테스트 실시 4 | 11d | 2008-07-21 A | 2008-08-04 A |  | 100% |  | 2008-07-21 | 2008-08-04 | 11d |  | start no earlier than 2008-07-21 |  |  |  |  |  |  | 테스트 실시 | C02-1 1.4.2 |  |
| 173 | 5.10.6 | Query 성능 튜닝 | 43d | 2008-08-05 | 2008-10-07 | 172 |  |  | 2008-08-05 | 2008-10-07 | 43d | 118d |  | 이윤경; 이진희; 설계자; 개발자 | 808h |  | 101 | 101 |  | 테스트 실시 | C02-1 1.4.2 |  |
| 174 | 5.10.7 | 통합테스트 결과서 작성 | 4d | 2008-10-08 A | 2008-10-13 A | 173 | 100% |  | 2008-10-08 | 2008-10-13 | 4d |  |  | 이진희 [25%]; 설계자 [50%]; 이윤경 [25%] | 26h | 26h | 3.25 | 3.25 | 3.25 | 테스트 실시 | C02-1 1.4.2 |  |
| 175 | 5.11 | 요구사항추적표 작성 | 2d | 2008-07-28 A | 2008-07-29 A |  | 100% |  | 2008-07-28 | 2008-07-29 | 2d |  | start no earlier than 2008-07-28 | 이윤경 [25%]; 이진희 [25%]; 설계자 [25%]; 개발자 [25%] | 16h | 16h | 2 | 2 | 2 | 테스트 실시 | C02-1 1.4.2 |  |
| 176 | 5.12 | **단계완료** | 62d | 2008-06-16 A | 2008-09-11 |  | 79% | 12.92d | 2008-06-16 | 2008-09-11 | 62d | 134d |  |  | 368h | 368h | 46 | 46 | 46 | 품질활동수행 | C02-1 1.6.2 |  |
| 177 | 5.12.1 | QAO심사(4차)조치 | 5d | 2008-06-16 A | 2008-06-20 A |  | 100% |  | 2008-06-16 | 2008-06-20 | 5d |  | finish no earlier than 2008-06-20 |  |  |  |  |  |  | 품질활동수행 | C02-1 1.6.2 |  |
| 178 | 5.12.2 | **산출물 Inspection** | 10d | 2008-07-14 A | 2008-07-28 A |  | 100% |  | 2008-07-14 | 2008-07-28 | 10d |  |  |  | 316h | 316h | 39.5 | 39.5 | 39.5 | 품질활동수행 | C02-1 1.6.2 |  |
| 179 | 5.12.2.1 | Inspection(4차)실시 | 5d | 2008-07-14 A | 2008-07-21 A |  | 100% |  | 2008-07-14 | 2008-07-21 | 5d |  | start no earlier than 2008-07-14 | 이윤경; 이진희; 설계자; 개발자 | 156h | 156h | 19.5 | 19.5 | 19.5 | 품질활동수행 | C02-1 1.6.2 |  |
| 180 | 5.12.2.2 | 조치계획수립 및 수행 | 5d | 2008-07-22 A | 2008-07-28 A | 179 | 100% |  | 2008-07-22 | 2008-07-28 | 5d |  |  | 이윤경; 이진희; 설계자; 개발자 | 160h | 160h | 20 | 20 | 20 | 품질활동수행 | C02-1 1.6.2 |  |
| 181 | 5.12.3 | 통합테스트요구사항추적표 매핑 | 4d | 2008-09-08 A | 2008-09-11 A |  | 100% |  | 2008-09-08 | 2008-09-11 | 4d |  | start no earlier than 2008-09-08 | 이윤경; 이진희; 설계자; 개발자 | 52h | 52h | 6.5 | 6.5 | 6.5 | 품질활동수행 | C02-1 1.6.2 |  |
| 182 | 5.12.4 | 실적규모측정방법교육및측정 | 5d | 2008-07-28 | 2008-08-01 |  |  |  | 2008-07-28 | 2008-08-01 | 5d | 162d | start no earlier than 2008-07-28 |  |  |  |  |  |  | 품질활동수행 | C02-1 1.6.2 |  |
| 183 | 6 | **영업점테스트** | 144d? | 2008-07-07 A | 2009-01-30 |  | 62% | 54.41d? | 2008-07-07 | 2009-01-30 | 144d? | 37d |  |  | 2216h | 670h | 277 | 277 | 83.75 | 개발 | C02-1 1.4 |  |
| 184 | 6.1 | **단계착수** | 25d | 2008-07-07 A | 2008-08-11 A |  | 100% |  | 2008-07-07 | 2008-08-11 | 25d |  |  |  | 18h | 18h | 2.25 | 2.25 | 2.25 | 단계착수 | C02-1 1.6.1 |  |
| 185 | 6.1.1 | 영업점테스트 단계 계획검토 및 수정 | 1d | 2008-07-07 A | 2008-07-07 A |  | 100% |  | 2008-07-07 | 2008-07-07 | 1d |  | start no earlier than 2008-07-07 | 이윤경 [25%] | 2h | 2h | 0.25 | 0.25 | 0.25 | 단계착수 | C02-1 1.6.1 |  |
| 186 | 6.1.2 | 영업점테스트SPM검토 및 수정 | 1d | 2008-07-14 A | 2008-07-14 A |  | 100% |  | 2008-07-14 | 2008-07-14 | 1d |  | start no earlier than 2008-07-14 | 이윤경 [25%] | 2h | 2h | 0.25 | 0.25 | 0.25 | 단계착수 | C02-1 1.6.1 |  |
| 187 | 6.1.3 | 오리엔테이션(5차)실시 | 7d | 2008-08-01 A | 2008-08-11 A | 186SS | 100% |  | 2008-08-01 | 2008-08-11 | 7d |  | start no earlier than 2008-08-01 | 이윤경 [25%]; 이진희 [50%]; 설계자 [50%]; 개발자 [50%] | 14h | 14h | 1.75 | 1.75 | 1.75 | 단계착수 | C02-1 1.6.1 |  |
| 188 | 6.2 | **시스템 사용교육** | 116d? | 2008-07-07 A | 2008-12-19 |  | 88% | 14.5d? | 2008-07-07 | 2008-12-19 | 116d? | 65d |  |  | 680h | 572h | 85 | 85 | 71.5 | 시스템 사용교육 | C02-1 1.5.3 |  |
| 189 | 6.2.1 | 교육훈련계획 수립 | 10d | 2008-07-07 A | 2008-07-21 A |  | 100% |  | 2008-07-07 | 2008-07-21 | 10d |  | start no earlier than 2008-07-07 | 이윤경 [50%]; 이진희 [25%]; 설계자; 개발자 [50%] | 72h | 72h | 9 | 9 | 9 | 시스템 사용교육 | C02-1 1.5.3 | 교육계획서 |
| 190 | 6.2.2 | 사용자매뉴얼 작성 | 10d | 2008-07-28 A | 2008-08-08 A | 189FF | 100% |  | 2008-07-28 | 2008-08-08 | 10d |  | start no earlier than 2008-07-28 | 이윤경 [25%]; 이진희 [50%]; 설계자 [50%]; 개발자 [50%] | 102h | 102h | 12.75 | 12.75 | 12.75 | 시스템 사용교육 | C02-1 1.5.3 | 사용자매뉴얼 |
| 191 | 6.2.3 | 운영매뉴얼 작성 | 10d | 2008-11-10 A | 2008-11-21 |  | 50% | 5d | 2008-11-10 | 2008-11-21 | 10d | 85d | start no earlier than 2008-11-10 | 이윤경; 이진희 [50%]; 설계자 [50%]; 개발자 [50%] | 85h | 53h | 10.62 | 10.62 | 6.62 | 시스템 사용교육 | C02-1 1.5.3 | 운영매뉴얼 |

| ID | WBS | Task | Duration | Start | Finish | Predecessors | Complete | Remaining | Baseline start | Baseline finish | Baseline duration | Total slack | Free slack | Constraint | Resources | Work | Actual work | Cost | Baseline cost | Actual cost | Text20 | Text26 | Text30 |
| --- | --- | --- | --- | --- | --- | --- | --- | --- | --- | --- | --- | --- | --- | --- | --- | --- | --- | --- | --- | --- | --- | --- | --- |
| 192 | 6.2.4 | **사용자교육 실시** | 32d? | 2008-08-11 A | 2008-09-25 A | 190 | 100% |  | 2008-08-11 | 2008-09-25 | 32d? |  |  |  | 이윤경 [50%]; 이진희 [50%]; 설계자 [50%]; 개발자 [50%] | 345h | 345h | 43.12 | 43.12 | 43.12 | 시스템 사용교육 | C02-1 1.5.3 | 교육결과서 |
| 193 | 6.2.4.1 | 동영상교재작성(화면설명) | 9d? | 2008-08-11 A | 2008-08-22 A |  | 100% |  | 2008-08-11 | 2008-08-22 | 9d? |  |  | start no earlier than 2008-07-07 |  |  |  |  |  |  | 시스템 사용교육 | C02-1 1.5.3 |  |
| 194 | 6.2.4.2 | 집합교육교재작성 | 9d? | 2008-08-11 A | 2008-08-22 A |  | 100% |  | 2008-08-11 | 2008-08-22 | 9d? |  |  | start no earlier than 2008-07-14 |  |  |  |  |  |  | 시스템 사용교육 | C02-1 1.5.3 |  |
| 195 | 6.2.4.3 | 시범점사용자교육 | 6d? | 2008-08-11 A | 2008-08-19 A |  | 100% |  | 2008-08-11 | 2008-08-19 | 6d? |  |  | start no earlier than 2008-08-05 |  |  |  |  |  |  | 시스템 사용교육 | C02-1 1.5.3 |  |
| 196 | 6.2.4.4 | 영업점사용자교육 | 28d? | 2008-08-18 A | 2008-09-25 A |  | 100% |  | 2008-08-18 | 2008-09-25 | 28d? |  |  | start no earlier than 2008-08-18 |  |  |  |  |  |  | 시스템 사용교육 | C02-1 1.5.3 |  |
| 197 | 6.2.5 | 운영자교육 실시 | 6d | 2008-12-12 | 2008-12-19 |  |  |  | 2008-12-12 | 2008-12-19 | 6d | 65d |  | finish no earlier than 2008-12-19 | 이진희 [50%]; 설계자 [75%]; 개발자 [50%] | 76h |  | 9.5 | 9.5 |  | 시스템 사용교육 | C02-1 1.5.3 | 교육결과서 |
| 198 | 6.3 | **영업점테스트** | 92d | 2008-08-11 A | 2008-12-19 |  | 89% | 10d | 2008-08-11 | 2008-12-19 | 92d | 65d |  |  |  | 80h | 80h | 10 | 10 | 10 | 테스트 실시 | C02-1 1.4.2 |  |
| 199 | 6.3.1 | 영업점테스트계획 수립 | 10d | 2008-09-11 A | 2008-09-25 A | 192FF | 100% |  | 2008-09-11 | 2008-09-25 | 10d |  |  | start no earlier than 2008-07-21 | 이윤경 [50%]; 이진희 [25%] | 50h | 50h | 6.25 | 6.25 | 6.25 | 테스트 실시 | C02-1 1.4.2 | 영업점테스트계획서 |
| 200 | 6.3.2 | 영업점테스트 시나리오 작성 | 7d | 2008-09-17 A | 2008-09-25 A | 199FF | 100% |  | 2008-09-17 | 2008-09-25 | 7d |  |  | start no earlier than 2008-07-21 | 이윤경; 이진희 [25%]; 설계자 [25%]; 개발자 [25%] | 30h | 30h | 3.75 | 3.75 | 3.75 | 테스트 실시 | C02-1 1.4.2 | 영업점테스트시나리오 |
| 201 | 6.3.3 | **시범테스트실시및보완** | 28d | 2008-08-11 A | 2008-09-19 A |  | 100% |  | 2008-08-11 | 2008-09-19 | 28d |  |  |  |  |  |  |  |  |  | 테스트 실시 | C02-1 1.4.2 |  |
| 202 | 6.3.3.1 | 시범테스트실시및보완 1 | 14d | 2008-08-11 A | 2008-08-29 A |  | 100% |  | 2008-08-11 | 2008-08-29 | 14d |  |  | start no earlier than 2008-08-10 |  |  |  |  |  |  | 테스트 실시 | C02-1 1.4.2 |  |
| 203 | 6.3.3.2 | 시범테스트실시및보완 2 | 14d | 2008-09-01 A | 2008-09-19 A |  | 100% |  | 2008-09-01 | 2008-09-19 | 14d |  |  | start no earlier than 2008-08-31 |  |  |  |  |  |  | 테스트 실시 | C02-1 1.4.2 |  |
| 204 | 6.3.4 | **영업점테스트실시및보완** | 64d | 2008-09-22 A | 2008-12-19 |  | 79% | 13.62d | 2008-09-22 | 2008-12-19 | 64d | 65d |  |  |  |  |  |  |  |  | 테스트 실시 | C02-1 1.4.2 |  |
| 205 | 6.3.4.1 | 영업점테스트실시및보완 1 | 7d | 2008-09-22 A | 2008-09-30 A |  | 100% |  | 2008-09-22 | 2008-09-30 | 7d |  |  | start no earlier than 2008-09-21 |  |  |  |  |  |  | 테스트 실시 | C02-1 1.4.2 |  |
| 206 | 6.3.4.2 | 영업점테스트실시및보완 2 | 14d | 2008-10-13 A | 2008-10-30 A |  | 100% |  | 2008-10-13 | 2008-10-30 | 14d |  |  | start no earlier than 2008-10-12 |  |  |  |  |  |  | 테스트 실시 | C02-1 1.4.2 |  |
| 207 | 6.3.4.3 | 영업점테스트실시및보완 3 | 6d | 2008-11-03 A | 2008-11-10 A |  | 100% |  | 2008-11-03 | 2008-11-10 | 6d |  |  | start no earlier than 2008-11-02 |  |  |  |  |  |  | 테스트 실시 | C02-1 1.4.2 |  |
| 208 | 6.3.4.4 | 영업점테스트실시및보완 4 | 10d | 2008-11-17 A | 2008-11-28 A | 207 | 100% |  | 2008-11-17 | 2008-11-28 | 10d |  |  | start no earlier than 2008-11-15 |  |  |  |  |  |  | 테스트 실시 | C02-1 1.4.2 |  |
| 209 | 6.3.4.5 | 영업점테스트실시및보완 5 | 10d | 2008-12-08 | 2008-12-19 |  |  |  | 2008-12-08 | 2008-12-19 | 10d | 65d | 18d | start no earlier than 2008-12-07 |  |  |  |  |  |  | 테스트 실시 | C02-1 1.4.2 |  |
| 210 | 6.4 | **인수테스트** | 28d | 2008-12-22 | 2009-01-30 |  |  |  | 2008-12-22 | 2009-01-30 | 28d | 37d |  |  |  | 656h |  | 82 | 82 |  | 테스트 실시 | C02-1 1.4.2 |  |
| 211 | 6.4.1 | 인수테스트실시 | 28d | 2008-12-22 | 2009-01-30 |  |  |  | 2008-12-22 | 2009-01-30 | 28d | 37d |  | start no earlier than 2008-12-22 | 이윤경; 이진희; 설계자; 개발자 | 656h |  | 82 | 82 |  | 테스트 실시 | C02-1 1.4.2 | 인수테스트기준서(결과),결함보고서(인수) |
| 212 | 6.5 | **이행** | 20d | 2009-01-05 | 2009-01-30 |  |  |  | 2009-01-05 | 2009-01-30 | 20d | 15d |  |  |  | 446h |  | 55.75 | 55.75 |  | 컨버전 및 릴리이즈 | C02-1 1.5.2 |  |
| 213 | 6.5.1 | 이행계획 수립 | 10d | 2009-01-05 | 2009-01-16 | 209FF |  |  | 2009-01-05 | 2009-01-16 | 10d | 47d |  | start no earlier than 2009-01-05 | 이윤경 [50%]; 이진희 [50%]; 설계자; 개발자 [50%] | 110h |  | 13.75 | 13.75 |  | 컨버전 및 릴리이즈 | C02-1 1.5.2 | 이행계획서 |
| 214 | 6.5.2 | 이행시나리오 작성 | 15d | 2009-01-12 | 2009-01-30 |  |  |  | 2009-01-12 | 2009-01-30 | 15d | 37d |  | start no earlier than 2009-01-12 | 이윤경 [50%]; 이진희 [50%]; 설계자 [50%]; 개발자 [50%] | 240h |  | 30 | 30 |  | 컨버전 및 릴리이즈 | C02-1 1.5.2 | 이행시나리오 |
| 215 | 6.5.3 | **이행실시** | 5d | 2009-01-21 | 2009-01-27 |  |  |  | 2009-01-21 | 2009-01-27 | 5d | 3d |  |  |  | 96h |  | 12 | 12 |  | 컨버전 및 릴리이즈 | C02-1 1.5.2 | 운영시스템 |
| 216 | 6.5.3.1 | 최종MIG | 2d | 2009-01-24 | 2009-01-27 |  |  |  | 2009-01-24 | 2009-01-27 | 2d | 0d |  | must start on 2009-01-24 | 이윤경; 이진희; 설계자; 개발자 | 64h |  | 8 | 8 |  | 컨버전 및 릴리이즈 | C02-1 1.5.2 |  |
| 217 | 6.5.3.2 | 이행 실시 | 1d | 2009-01-21 | 2009-01-21 |  |  |  | 2009-01-21 | 2009-01-21 | 1d | 44d |  | start no earlier than 2009-01-21 | 이윤경; 이진희; 설계자; 개발자 | 32h |  | 4 | 4 |  | 컨버전 및 릴리이즈 | C02-1 1.5.2 |  |

| ID | WBS | Task | Duration | Start | Finish | Predecessors | Complete | Remaining | Baseline start | Baseline finish | Baseline duration | Total slack | Free slack | Constraint | Resources | Work | Cost | Baseline cost | Text20 | Text26 | Text30 |
| --- | --- | --- | --- | --- | --- | --- | --- | --- | --- | --- | --- | --- | --- | --- | --- | --- | --- | --- | --- | --- | --- |
| 218 | 6.6 | **단계완료** | 96d | 2008-09-08 A | 2009-01-23 |  | 48% | 50.24d | 2008-09-08 | 2009-01-23 | 96d | 42d |  |  |  | 336h | 42 | 42 | 단계완료 | C02-1 1.6.8 |  |
| 219 | 6.6.1 | QAO심사(5차)조치 | 51d | 2008-09-08 A | 2008-11-19 A |  | 100% |  | 2008-09-08 | 2008-11-19 | 51d |  |  | start no earlier than 2008-09-08 |  |  |  |  | 품질활동수행 | C02-1 1.6.2 |  |
| 220 | 6.6.2 | **산출물 Inspection** | 9d | 2008-12-01 | 2008-12-11 |  |  |  | 2008-12-01 | 2008-12-11 | 9d | 71d |  |  |  | 284h | 35.5 | 35.5 | 품질활동수행 | C02-1 1.6.2 |  |
| 221 | 6.6.2.1 | Inspection(5차)실시 | 5d | 2008-12-01 | 2008-12-05 |  |  |  | 2008-12-01 | 2008-12-05 | 5d | 71d | 0d | start no earlier than 2008-12-01 | 이윤경; 이진희; 설계자; 개발자 | 156h | 19.5 | 19.5 | 품질활동수행 | C02-1 1.6.2 |  |
| 222 | 6.6.2.2 | 조치계획수립 및 수행 | 4d | 2008-12-08 | 2008-12-11 | 221 |  |  | 2008-12-08 | 2008-12-11 | 4d | 71d |  |  | 이윤경; 이진희; 설계자; 개발자 | 128h | 16 | 16 | 품질활동수행 | C02-1 1.6.2 |  |
| 223 | 6.6.3 | 최종요구사항추적표 매핑 | 4d | 2009-01-05 | 2009-01-08 |  |  |  | 2009-01-05 | 2009-01-08 | 4d | 53d |  | start no earlier than 2009-01-05 | 이윤경; 이진희; 설계자; 개발자 | 52h | 6.5 | 6.5 | 품질활동수행 | C02-1 1.6.2 |  |
| 224 | 6.6.4 | 고객검토(3차)실시 및 조치 | 8d | 2008-12-22 | 2009-01-02 |  |  |  | 2008-12-22 | 2009-01-02 | 8d | 57d |  | finish no earlier than 2009-01-02 |  |  |  |  | 품질활동수행 | C02-1 1.6.2 |  |
| 225 | 6.6.5 | 예비제품검사조치 | 7d | 2008-12-22 | 2008-12-31 |  |  |  | 2008-12-22 | 2008-12-31 | 7d | 58d |  | start no earlier than 2008-12-22 |  |  |  |  | 품질활동수행 | C02-1 1.6.2 |  |
| 226 | 6.6.6 | 제품검사조치 | 28d | 2008-12-15 | 2009-01-23 |  |  |  | 2008-12-15 | 2009-01-23 | 28d | 42d |  | start no earlier than 2008-12-15 |  |  |  |  | 품질활동수행 | C02-1 1.6.2 |  |
| 227 | 7 | **시스템안정화** | 47d | 2009-01-19 | 2009-03-24 |  |  |  | 2009-01-19 | 2009-03-24 | 47d | 0d |  |  |  | 472h | 59 | 59 | 구현 | C02-1 1.5 |  |
| 228 | 7.1 | **시스템운영** | 47d | 2009-01-19 | 2009-03-24 |  |  |  | 2009-01-19 | 2009-03-24 | 47d | 0d |  |  |  | 472h | 59 | 59 | 시범운영 | C02-1 1.5.4 |  |
| 229 | 7.1.1 | 시스템운영실시 | 39d | 2009-01-29 | 2009-03-24 |  |  |  | 2009-01-29 | 2009-03-24 | 39d | 0d |  | must start on 2009-01-29 | 이윤경; 이진희 | 472h | 59 | 59 | 시범운영 | C02-1 1.5.4 | 시스템운영일지 |
| 230 | 7.1.2 | 과업대비표 매핑 | 5d | 2009-01-19 | 2009-01-23 |  |  |  | 2009-01-19 | 2009-01-23 | 5d | 42d |  | start no earlier than 2009-01-19 |  |  |  |  | 시범운영 | C02-1 1.5.4 |  |
