# 공통(공통정보)

Schedule from MS Project, 2007-04-25 to 2009-03-24, costs in ₩, A marks actual dates.
HSIC-0600001
�궪�꽦SDS

## Calendars

- 농협신용신시스템: Mon-Fri 08:00-12:00, 13:00-17:00; Sat-Sun off. Exceptions (off unless hours are given): 2007-04-28 08:00-12:00, 13:00-17:00, 2007-05-01, 2007-05-24, 2007-06-06, 2007-07-17, 2007-08-15, 2007-09-24 to 2007-09-26, 2007-10-03, 2007-12-25, 2008-01-01, 2008-02-06 to 2008-02-08, 2008-05-01 08:00-12:00, 13:00-17:00, 2008-05-05, 2008-05-12, 2008-06-06, 2008-07-17, 2008-08-09 to 2008-08-10 08:00-12:00, 13:00-17:00, 2008-08-15, 2008-08-31 08:00-12:00, 13:00-17:00, 2008-09-15, 2008-09-21 08:00-12:00, 13:00-17:00, 2008-10-03, 2008-10-12 08:00-12:00, 13:00-17:00, 2008-11-02 08:00-12:00, 13:00-17:00, 2008-11-15 08:00-12:00, 13:00-17:00, 2008-11-29 08:00-12:00, 13:00-17:00, 2008-12-07 08:00-12:00, 13:00-17:00, 2008-12-20 08:00-12:00, 13:00-17:00, 2008-12-25, 2009-01-01, 2009-01-17 08:00-12:00, 13:00-17:00.

## Resources

| Resource | Rate |
| --- | --- |
| 박순성 | 0.12 |
| 양남열 | 0.12 |
| 안은영 | 0.12 |
| 박승규 | 0.12 |
| 박순성.박승규.안은영.양남열 | 0.12 |
| 박순성.안은영.양남열.박승규.고홍복.김은영 | 0.12 |
| 고홍복 | 0.12 |
| 김은영 | 0.12 |
| 박승규.김은영 | 0.12 |
| 박승규.김은영.안은영 | 0.12 |
| 박순성.양남열 | 0.12 |
| 고성환 | 0.12 |

## Schedule

| ID | WBS | Task | Duration | Start | Finish | Predecessors | Complete | Baseline start | Baseline finish | Baseline duration | Constraint | Resources | Work | Actual work | Cost | Baseline cost | Actual cost | Text2 | Text3 | Text20 | Text26 | Text30 |
| --- | --- | --- | --- | --- | --- | --- | --- | --- | --- | --- | --- | --- | --- | --- | --- | --- | --- | --- | --- | --- | --- | --- |
| 1 | 1 | **분석** | 56d | 2007-04-25 A | 2007-07-13 A |  | 100% | 2007-04-25 | 2007-07-13 | 56d |  |  | 1350h | 1350h | 168.75 | 168.75 | 168.75 | 1100 | 소프트웨어 요구사항 분석 | 분석 | C02-1 1.2 |  |
| 2 | 1.1 | **단계착수** | 3d | 2007-04-25 A | 2007-04-27 A |  | 100% | 2007-04-25 | 2007-04-27 | 3d |  |  | 24h | 24h | 3 | 3 | 3 |  |  | 단계착수 | C02-1 1.6.1 |  |
| 3 | 1.1.1 | 프로젝트계획검토 | 1d | 2007-04-25 A | 2007-04-25 A |  | 100% | 2007-04-25 | 2007-04-25 | 1d |  | 고홍복 | 8h | 8h | 1 | 1 | 1 |  |  | 단계착수 | C02-1 1.6.1 |  |
| 4 | 1.1.2 | SPM검토 및 보완 | 1d | 2007-04-26 A | 2007-04-26 A |  | 100% | 2007-04-26 | 2007-04-26 | 1d | start no earlier than 2007-04-26 | 박순성.안은영.양남열.박승규.고홍복.김은영 | 8h | 8h | 1 | 1 | 1 |  |  | 단계착수 | C02-1 1.6.1 |  |
| 5 | 1.1.3 | 단계착수 오리엔테이션 | 1d | 2007-04-27 A | 2007-04-27 A |  | 100% | 2007-04-27 | 2007-04-27 | 1d | start no earlier than 2007-04-27 | 박순성.안은영.양남열.박승규.고홍복.김은영 | 8h | 8h | 1 | 1 | 1 |  |  | 단계착수 | C02-1 1.6.1 |  |
| 6 | 1.2 | **현황평가** | 26d | 2007-04-25 A | 2007-05-31 A |  | 100% | 2007-04-25 | 2007-05-31 | 26d |  |  | 660h | 660h | 82.5 | 82.5 | 82.5 |  |  | 현황 평가 | C02-1 1.2.1 |  |
| 7 | 1.2.1 | **현행업무 분석** | 18d | 2007-04-25 A | 2007-05-18 A |  | 100% | 2007-04-25 | 2007-05-18 | 18d |  |  | 492h | 492h | 61.5 | 61.5 | 61.5 |  |  | 현황 평가 | C02-1 1.2.1 | 현행업무분장표, 현행업무흐름도 |
| 8 | 1.2.1.1 | 공통정보조사 | 3d | 2007-04-30 A | 2007-05-03 A |  | 100% | 2007-04-30 | 2007-05-03 | 3d | start no earlier than 2007-04-30 | 박승규; 김은영 | 48h | 48h | 6 | 6 | 6 |  |  | 현황 평가 | C02-1 1.2.1 |  |
| 9 | 1.2.1.2 | 공통지원조사 | 5d | 2007-05-14 A | 2007-05-18 A | 8 | 100% | 2007-05-14 | 2007-05-18 | 5d |  | 박승규; 안은영 [50%]; 김은영 | 100h | 100h | 12.5 | 12.5 | 12.5 |  |  | 현황 평가 | C02-1 1.2.1 |  |
| 10 | 1.2.1.3 | 현행 HelpDesk 지원 분석 | 8d | 2007-04-25 A | 2007-05-04 A |  | 100% | 2007-04-25 | 2007-05-04 | 8d |  | 고홍복 [43.8%] | 28h | 28h | 3.5 | 3.5 | 3.5 |  |  | 현황 평가 | C02-1 1.2.1 |  |
| 11 | 1.2.1.4 | 사고신고 분석 | 12d | 2007-04-30 A | 2007-05-16 A |  | 100% | 2007-04-30 | 2007-05-16 | 12d | start no earlier than 2007-04-30 | 박순성.양남열 | 96h | 96h | 12 | 12 | 12 |  |  | 현황 평가 | C02-1 1.2.1 |  |
| 12 | 1.2.1.5 | 금유정보 지원 분석 | 10d | 2007-05-07 A | 2007-05-18 A |  | 100% | 2007-05-07 | 2007-05-18 | 10d | start no earlier than 2007-05-07 | 박순성 | 80h | 80h | 10 | 10 | 10 |  |  | 현황 평가 | C02-1 1.2.1 |  |
| 13 | 1.2.1.6 | 중요증서 관리업무 분석 | 10d | 2007-05-07 A | 2007-05-18 A |  | 100% | 2007-05-07 | 2007-05-18 | 10d | start no earlier than 2007-05-07 | 양남열 | 80h | 80h | 10 | 10 | 10 |  |  | 현황 평가 | C02-1 1.2.1 |  |
| 14 | 1.2.1.7 | 권유비 지원업무 조사 | 10d | 2007-05-07 A | 2007-05-18 A |  | 100% | 2007-05-07 | 2007-05-18 | 10d | start no earlier than 2007-05-07 | 안은영 | 60h | 60h | 7.5 | 7.5 | 7.5 |  |  | 현황 평가 | C02-1 1.2.1 |  |
| 15 | 1.2.2 | **현행시스템 분석** | 8d | 2007-05-21 A | 2007-05-31 A |  | 100% | 2007-05-21 | 2007-05-31 | 8d |  |  | 144h | 144h | 18 | 18 | 18 |  |  | 현황 평가 | C02-1 1.2.1 | 현행시스템분석서 |
| 16 | 1.2.2.1 | As-Is 공통코드/ 표준화 작업 대상 조사 | 3d | 2007-05-21 A | 2007-05-23 A |  | 100% | 2007-05-21 | 2007-05-23 | 3d | start no earlier than 2007-05-21 | 박승규.김은영 | 24h | 24h | 3 | 3 | 3 |  |  | 현황 평가 | C02-1 1.2.1 |  |
| 17 | 1.2.2.2 | As-Is 공통화면/장표/어플리케이션조사 | 3d | 2007-05-25 A | 2007-05-29 A | 16 | 100% | 2007-05-25 | 2007-05-29 | 3d | start no earlier than 2007-05-21 | 박승규.김은영.안은영 | 24h | 24h | 3 | 3 | 3 |  |  | 현황 평가 | C02-1 1.2.1 |  |
| 18 | 1.2.2.3 | As-Is공통보고서 조사 | 2d | 2007-05-30 A | 2007-05-31 A | 17 | 100% | 2007-05-30 | 2007-05-31 | 2d |  | 박승규 | 12h | 12h | 1.5 | 1.5 | 1.5 |  |  | 현황 평가 | C02-1 1.2.1 |  |
| 19 | 1.2.2.4 | As-Is 단위 시스템과의 연관관계 조사 | 5d | 2007-05-21 A | 2007-05-28 A |  | 100% | 2007-05-21 | 2007-05-28 | 5d | start no earlier than 2007-05-21 | 고홍복 | 28h | 28h | 3.5 | 3.5 | 3.5 |  |  | 현황 평가 | C02-1 1.2.1 |  |
| 20 | 1.2.2.5 | As-Is 사고신고 모듈/화면 조사 | 3d | 2007-05-21 A | 2007-05-23 A |  | 100% | 2007-05-21 | 2007-05-23 | 3d | start no earlier than 2007-05-21 | 박순성 | 24h | 24h | 3 | 3 | 3 |  |  | 현황 평가 | C02-1 1.2.1 |  |
| 21 | 1.2.2.6 | As-IS 중요증서 처리 화면/모듈 조사 | 2d | 2007-05-21 A | 2007-05-22 A |  | 100% | 2007-05-21 | 2007-05-22 | 2d | start no earlier than 2007-05-21 | 양남열 | 16h | 16h | 2 | 2 | 2 |  |  | 현황 평가 | C02-1 1.2.1 |  |
| 22 | 1.2.2.7 | As-Is 권유비 처리 조사 | 2d | 2007-05-21 A | 2007-05-22 A |  | 100% | 2007-05-21 | 2007-05-22 | 2d | start no earlier than 2007-05-21 | 안은영 | 16h | 16h | 2 | 2 | 2 |  |  | 현황 평가 | C02-1 1.2.1 |  |
| 23 | 1.2.3 | **인터뷰실시** | 3d | 2007-05-28 A | 2007-05-30 A |  | 100% | 2007-05-28 | 2007-05-30 | 3d |  |  | 24h | 24h | 3 | 3 | 3 |  |  | 현황 평가 | C02-1 1.2.1 | 인터뷰결과 |
| 24 | 1.2.3.1 | 운영자 인터뷰 실시 | 3d | 2007-05-28 A | 2007-05-30 A |  | 100% | 2007-05-28 | 2007-05-30 | 3d | start no earlier than 2007-05-28 | 박순성.안은영.양남열.박승규.고홍복.김은영 [37.5%] | 9h | 9h | 1.13 | 1.13 | 1.13 |  |  | 현황 평가 | C02-1 1.2.1 |  |
| 25 | 1.2.3.2 | 사용자 인터뷰 실시 | 3d | 2007-05-28 A | 2007-05-30 A |  | 100% | 2007-05-28 | 2007-05-30 | 3d | start no earlier than 2007-05-28 | 박순성.안은영.양남열.박승규.고홍복.김은영 [37.5%] | 9h | 9h | 1.13 | 1.13 | 1.13 |  |  | 현황 평가 | C02-1 1.2.1 |  |
| 26 | 1.2.3.3 | 현업 인터뷰 실시 | 3d | 2007-05-28 A | 2007-05-30 A |  | 100% | 2007-05-28 | 2007-05-30 | 3d | start no earlier than 2007-05-28 | 박순성.안은영.양남열.박승규.고홍복.김은영 [25%] | 6h | 6h | 0.75 | 0.75 | 0.75 |  |  | 현황 평가 | C02-1 1.2.1 |  |

| ID | WBS | Task | Duration | Start | Finish | Predecessors | Complete | Baseline start | Baseline finish | Baseline duration | Constraint | Resources | Work | Actual work | Cost | Baseline cost | Actual cost | Text20 | Text26 | Text30 | Text2 | Text3 |
| --- | --- | --- | --- | --- | --- | --- | --- | --- | --- | --- | --- | --- | --- | --- | --- | --- | --- | --- | --- | --- | --- | --- |
| 27 | 1.3 | **요구사항정의** | 10d | 2007-05-31 A | 2007-06-14 A |  | 100% | 2007-05-31 | 2007-06-14 | 10d |  |  | 276h | 276h | 34.5 | 34.5 | 34.5 | 요구사항 정의 | C02-1 1.2.2 |  |  |  |
| 28 | 1.3.1 | **기능 요구사항 정의** | 6d | 2007-05-31 A | 2007-06-08 A |  | 100% | 2007-05-31 | 2007-06-08 | 6d |  |  | 136h | 136h | 17 | 17 | 17 | 요구사항 정의 | C02-1 1.2.2 | 현업요구사항정의서 |  |  |
| 29 | 1.3.1.1 | 공통정보영역정의 | 3d | 2007-05-31 A | 2007-06-04 A | 26 | 100% | 2007-05-31 | 2007-06-04 | 3d |  | 박승규.김은영 | 24h | 24h | 3 | 3 | 3 | 요구사항 정의 | C02-1 1.2.2 |  |  |  |
| 30 | 1.3.1.2 | 공통지원업무영역정의 | 3d | 2007-05-31 A | 2007-06-04 A |  | 100% | 2007-05-31 | 2007-06-04 | 3d | start no earlier than 2007-05-31 | 박승규.김은영.안은영 | 24h | 24h | 3 | 3 | 3 | 요구사항 정의 | C02-1 1.2.2 |  |  |  |
| 31 | 1.3.1.3 | HelpDesk처리 영역 정의 | 3d | 2007-05-31 A | 2007-06-04 A |  | 100% | 2007-05-31 | 2007-06-04 | 3d | start no earlier than 2007-05-31 | 고홍복 | 24h | 24h | 3 | 3 | 3 | 요구사항 정의 | C02-1 1.2.2 |  |  |  |
| 32 | 1.3.1.4 | 사고신고 영역정의 | 3d | 2007-06-05 A | 2007-06-08 A |  | 100% | 2007-06-05 | 2007-06-08 | 3d | start no earlier than 2007-06-05 | 박순성.양남열 | 24h | 24h | 3 | 3 | 3 | 요구사항 정의 | C02-1 1.2.2 |  |  |  |
| 33 | 1.3.1.5 | 금융정보지원 영역 정의 | 2d | 2007-06-05 A | 2007-06-07 A |  | 100% | 2007-06-05 | 2007-06-07 | 2d | start no earlier than 2007-06-05 | 박순성 | 16h | 16h | 2 | 2 | 2 | 요구사항 정의 | C02-1 1.2.2 |  |  |  |
| 34 | 1.3.1.6 | 중요증서 요구사항 정의 | 2d | 2007-06-05 A | 2007-06-07 A |  | 100% | 2007-06-05 | 2007-06-07 | 2d | start no earlier than 2007-06-05 | 양남열 | 16h | 16h | 2 | 2 | 2 | 요구사항 정의 | C02-1 1.2.2 |  |  |  |
| 35 | 1.3.1.7 | 권유비 요구사항 정의 | 1d | 2007-06-05 A | 2007-06-05 A |  | 100% | 2007-06-05 | 2007-06-05 | 1d | start no earlier than 2007-06-05 | 안은영 | 8h | 8h | 1 | 1 | 1 | 요구사항 정의 | C02-1 1.2.2 |  |  |  |
| 36 | 1.3.2 | **인터페이스 요구사항 정의** | 7d | 2007-06-05 A | 2007-06-14 A |  | 100% | 2007-06-05 | 2007-06-14 | 7d | start no earlier than 2007-06-04 |  | 108h | 108h | 13.5 | 13.5 | 13.5 | 요구사항 정의 | C02-1 1.2.2 | 현업요구사항정의서 |  |  |
| 37 | 1.3.2.1 | 공통모듈 인터페이스 | 3d | 2007-06-11 A | 2007-06-13 A |  | 100% | 2007-06-11 | 2007-06-13 | 3d | start no earlier than 2007-06-06 | 박승규.김은영 | 24h | 24h | 3 | 3 | 3 | 요구사항 정의 | C02-1 1.2.2 |  |  |  |
| 38 | 1.3.2.2 | 공통어플리케이션 인터페이스 | 3d | 2007-06-11 A | 2007-06-13 A |  | 100% | 2007-06-11 | 2007-06-13 | 3d | start no earlier than 2007-06-07 | 박승규.김은영.안은영 | 24h | 24h | 3 | 3 | 3 | 요구사항 정의 | C02-1 1.2.2 |  |  |  |
| 39 | 1.3.2.3 | HelpDesk | 2d | 2007-06-05 A | 2007-06-07 A |  | 100% | 2007-06-05 | 2007-06-07 | 2d |  | 고홍복 [50%] | 8h | 8h | 1 | 1 | 1 | 요구사항 정의 | C02-1 1.2.2 |  |  |  |
| 40 | 1.3.2.4 | 사고신고 | 3d | 2007-06-12 A | 2007-06-14 A |  | 100% | 2007-06-12 | 2007-06-14 | 3d | start no earlier than 2007-06-12 | 박순성.양남열 | 24h | 24h | 3 | 3 | 3 | 요구사항 정의 | C02-1 1.2.2 |  |  |  |
| 41 | 1.3.2.5 | 금융정보지원 | 3d | 2007-06-12 A | 2007-06-14 A |  | 100% | 2007-06-12 | 2007-06-14 | 3d | start no earlier than 2007-06-12 | 박순성 | 20h | 20h | 2.5 | 2.5 | 2.5 | 요구사항 정의 | C02-1 1.2.2 |  |  |  |
| 42 | 1.3.2.6 | 중요증서 | 1d | 2007-06-07 A | 2007-06-07 A |  | 100% | 2007-06-07 | 2007-06-07 | 1d | start no earlier than 2007-06-07 | 양남열 [50%] | 4h | 4h | 0.5 | 0.5 | 0.5 | 요구사항 정의 | C02-1 1.2.2 |  |  |  |
| 43 | 1.3.2.7 | 권유비 | 1d | 2007-06-07 A | 2007-06-07 A |  | 100% | 2007-06-07 | 2007-06-07 | 1d | start no earlier than 2007-06-07 | 안은영 [50%] | 4h | 4h | 0.5 | 0.5 | 0.5 | 요구사항 정의 | C02-1 1.2.2 |  |  |  |
| 44 | 1.3.3 | 시스템화 범위결정 | 2d | 2007-06-08 A | 2007-06-11 A |  | 100% | 2007-06-08 | 2007-06-11 | 2d | start no earlier than 2007-06-08 | 박순성.안은영.양남열.박승규.고홍복.김은영; 김은영 | 32h | 32h | 4 | 4 | 4 | 요구사항 정의 | C02-1 1.2.2 | 현업요구사항정의서 |  |  |
| 45 | 1.4 | **신논리모델 구축** | 25d | 2007-06-11 A | 2007-07-13 A |  | 100% | 2007-06-11 | 2007-07-13 | 25d |  |  | 226h | 226h | 28.25 | 28.25 | 28.25 | 신논리모델 구축 | C02-1 1.2.3 |  | 1100 | 소프트웨어 요구사항 분석 |
| 46 | 1.4.1 | **프로세스모델링** | 6d | 2007-06-11 A | 2007-06-18 A |  | 100% | 2007-06-11 | 2007-06-18 | 6d |  |  | 104h | 104h | 13 | 13 | 13 | 신논리모델 구축 | C02-1 1.2.3 | 프로세스정의서,인터페이스정의서,기능챠트 | 1100 | 소프트웨어 요구사항 분석 |
| 47 | 1.4.1.1 | 공통정보업무프로세스 | 3d | 2007-06-12 A | 2007-06-14 A |  | 100% | 2007-06-12 | 2007-06-14 | 3d | start no earlier than 2007-06-12 | 박승규.김은영 | 24h | 24h | 3 | 3 | 3 | 신논리모델 구축 | C02-1 1.2.3 |  |  |  |
| 48 | 1.4.1.2 | 공통지원업무프로세스 | 2d | 2007-06-12 A | 2007-06-13 A |  | 100% | 2007-06-12 | 2007-06-13 | 2d | start no earlier than 2007-06-12 | 박승규.김은영.안은영 | 16h | 16h | 2 | 2 | 2 | 신논리모델 구축 | C02-1 1.2.3 |  |  |  |
| 49 | 1.4.1.3 | HelpDesk | 2d | 2007-06-12 A | 2007-06-13 A |  | 100% | 2007-06-12 | 2007-06-13 | 2d | start no earlier than 2007-06-12 | 고홍복 [50%] | 8h | 8h | 1 | 1 | 1 | 신논리모델 구축 | C02-1 1.2.3 |  |  |  |
| 50 | 1.4.1.4 | 사고신고 | 3d | 2007-06-14 A | 2007-06-18 A |  | 100% | 2007-06-14 | 2007-06-18 | 3d | start no earlier than 2007-06-14 | 박순성.양남열 | 24h | 24h | 3 | 3 | 3 | 신논리모델 구축 | C02-1 1.2.3 |  |  |  |
| 51 | 1.4.1.5 | 금융정보지원 | 3d | 2007-06-14 A | 2007-06-18 A |  | 100% | 2007-06-14 | 2007-06-18 | 3d | start no earlier than 2007-06-14 | 박순성 | 16h | 16h | 2 | 2 | 2 | 신논리모델 구축 | C02-1 1.2.3 |  |  |  |
| 52 | 1.4.1.6 | 중요증서 | 3d | 2007-06-14 A | 2007-06-18 A |  | 100% | 2007-06-14 | 2007-06-18 | 3d | start no earlier than 2007-06-14 | 양남열 [50%] | 12h | 12h | 1.5 | 1.5 | 1.5 | 신논리모델 구축 | C02-1 1.2.3 |  |  |  |
| 53 | 1.4.1.7 | 권유비 | 1d | 2007-06-11 A | 2007-06-11 A |  | 100% | 2007-06-11 | 2007-06-11 | 1d | start no earlier than 2007-06-11 | 안은영 [50%] | 4h | 4h | 0.5 | 0.5 | 0.5 | 신논리모델 구축 | C02-1 1.2.3 |  |  |  |

| ID | WBS | Task | Duration | Start | Finish | Predecessors | Complete | Baseline start | Baseline finish | Baseline duration | Constraint | Deadline | Resources | Work | Actual work | Cost | Baseline cost | Actual cost | Text1 | Text2 | Text3 | Text20 | Text26 | Text30 |
| --- | --- | --- | --- | --- | --- | --- | --- | --- | --- | --- | --- | --- | --- | --- | --- | --- | --- | --- | --- | --- | --- | --- | --- | --- |
| 54 | 1.4.2 | **데이터 모델링** | 7d | 2007-06-15 A | 2007-06-25 A |  | 100% | 2007-06-15 | 2007-06-25 | 7d | start no earlier than 2007-06-15 |  |  | 122h | 122h | 15.25 | 15.25 | 15.25 | 업무 배경도 | 1100 | 소프트웨어 요구사항 분석 | 신논리모델 구축 | C02-1 1.2.3 | 엔티티정의서,엔티티목록,ERD(논리) |
| 55 | 1.4.2.1 | 공통정보업무 | 3d | 2007-06-15 A | 2007-06-19 A |  | 100% | 2007-06-15 | 2007-06-19 | 3d | start no earlier than 2007-06-15 | 2007-08-17 | 박승규 [50%]; 김은영 [50%] | 24h | 24h | 3 | 3 | 3 |  |  |  | 신논리모델 구축 | C02-1 1.2.3 |  |
| 56 | 1.4.2.2 | 공통지원 | 3d | 2007-06-15 A | 2007-06-19 A |  | 100% | 2007-06-15 | 2007-06-19 | 3d |  |  | 박승규 [50%]; 안은영 [25%] | 18h | 18h | 2.25 | 2.25 | 2.25 |  |  |  | 신논리모델 구축 | C02-1 1.2.3 |  |
| 57 | 1.4.2.3 | HelpDesk | 3d | 2007-06-15 A | 2007-06-19 A |  | 100% | 2007-06-15 | 2007-06-19 | 3d | start no earlier than 2007-06-15 |  | 고홍복 [50%] | 12h | 12h | 1.5 | 1.5 | 1.5 |  |  |  | 신논리모델 구축 | C02-1 1.2.3 |  |
| 58 | 1.4.2.4 | 사고신고 | 3d | 2007-06-20 A | 2007-06-22 A |  | 100% | 2007-06-20 | 2007-06-22 | 3d | start no earlier than 2007-06-20 |  | 박순성.양남열 | 24h | 24h | 3 | 3 | 3 |  |  |  | 신논리모델 구축 | C02-1 1.2.3 |  |
| 59 | 1.4.2.5 | 금융정보지원 | 3d | 2007-06-20 A | 2007-06-22 A |  | 100% | 2007-06-20 | 2007-06-22 | 3d | start no earlier than 2007-06-20 |  | 박순성 | 24h | 24h | 3 | 3 | 3 |  |  |  | 신논리모델 구축 | C02-1 1.2.3 |  |
| 60 | 1.4.2.6 | 중요증서 | 4d | 2007-06-20 A | 2007-06-25 A |  | 100% | 2007-06-20 | 2007-06-25 | 4d | start no earlier than 2007-06-20 |  | 양남열 [50%] | 16h | 16h | 2 | 2 | 2 |  |  |  | 신논리모델 구축 | C02-1 1.2.3 |  |
| 61 | 1.4.2.7 | 권유비 | 1d | 2007-06-15 A | 2007-06-15 A |  | 100% | 2007-06-15 | 2007-06-15 | 1d | start no earlier than 2007-06-15 |  | 안은영 [50%] | 4h | 4h | 0.5 | 0.5 | 0.5 |  |  |  | 신논리모델 구축 | C02-1 1.2.3 |  |
| 62 | 1.4.3 | 인수테스트 기준정의 | 2d | 2007-07-12 A | 2007-07-13 A |  | 100% | 2007-07-12 | 2007-07-13 | 2d | start no earlier than 2007-07-12 |  |  |  |  |  |  |  | 검토결과서 | 1100 | 소프트웨어 요구사항 분석 | 신논리모델 구축 | C02-1 1.2.3 | 인수테스트기준서 |
| 63 | 1.5 | **단계완료품질검토** | 5d | 2007-07-02 A | 2007-07-06 A |  | 100% | 2007-07-02 | 2007-07-06 | 5d |  |  |  | 20h | 20h | 2.5 | 2.5 | 2.5 |  |  |  | 품질활동수행 | C02-1 1.6.2 |  |
| 64 | 1.5.1 | 산출물검증 | 5d | 2007-07-02 A | 2007-07-06 A |  | 100% | 2007-07-02 | 2007-07-06 | 5d | start no earlier than 2007-07-02 |  | 박순성.안은영.양남열.박승규.고홍복.김은영 [50%] | 20h | 20h | 2.5 | 2.5 | 2.5 |  |  |  | 품질활동수행 | C02-1 1.6.2 |  |
| 65 | 1.6 | **분석단계 관리활동** | 41d | 2007-05-03 A | 2007-07-02 A |  | 100% | 2007-05-03 | 2007-07-02 | 41d |  |  |  | 144h | 144h | 18 | 18 | 18 |  |  |  | 단계완료 | C02-1 1.6.8 |  |
| 66 | 1.6.1 | 오리엔테이션실시 | 1d | 2007-05-03 A | 2007-05-03 A |  | 100% | 2007-05-03 | 2007-05-03 | 1d | start no earlier than 2007-05-03 |  | 박순성.안은영.양남열.박승규.고홍복.김은영 | 8h | 8h | 1 | 1 | 1 |  |  |  | 단계완료 | C02-1 1.6.8 |  |
| 67 | 1.6.2 | 과업대비표 매핑 | 3d | 2007-05-07 A | 2007-05-09 A |  | 100% | 2007-05-07 | 2007-05-09 | 3d | start no earlier than 2007-05-07 |  | 박순성.안은영.양남열.박승규.고홍복.김은영 | 24h | 24h | 3 | 3 | 3 |  |  |  | 단계완료 | C02-1 1.6.8 |  |
| 68 | 1.6.3 | 형상관리 Tool 교육 | 2d | 2007-05-17 A | 2007-05-18 A |  | 100% | 2007-05-17 | 2007-05-18 | 2d | start no earlier than 2007-05-17 |  | 박순성.안은영.양남열.박승규.고홍복.김은영 | 16h | 16h | 2 | 2 | 2 |  |  |  | 단계완료 | C02-1 1.6.8 |  |
| 69 | 1.6.4 | Inspection(1차)실시및 조치 | 5d | 2007-06-25 A | 2007-06-29 A |  | 100% | 2007-06-25 | 2007-06-29 | 5d | start no earlier than 2007-06-25 |  | 박순성.안은영.양남열.박승규.고홍복.김은영 | 40h | 40h | 5 | 5 | 5 |  |  |  | 단계완료 | C02-1 1.6.8 |  |
| 70 | 1.6.5 | 요구사항 추적표 매핑 | 2d | 2007-06-25 A | 2007-06-26 A |  | 100% | 2007-06-25 | 2007-06-26 | 2d | start no earlier than 2007-06-25 |  | 박순성.안은영.양남열.박승규.고홍복.김은영 [25%] | 4h | 4h | 0.5 | 0.5 | 0.5 |  |  |  | 단계완료 | C02-1 1.6.8 |  |
| 71 | 1.6.6 | 요구사항 규모측정방법 교육및 측정 | 5d | 2007-06-25 A | 2007-06-29 A |  | 100% | 2007-06-25 | 2007-06-29 | 5d | start no earlier than 2007-06-25 |  | 박순성.안은영.양남열.박승규.고홍복.김은영 | 28h | 28h | 3.5 | 3.5 | 3.5 |  |  |  | 단계완료 | C02-1 1.6.8 |  |
| 72 | 1.6.7 | 고객검토(1차) 실시 및 조치 | 5d | 2007-06-26 A | 2007-07-02 A |  | 100% | 2007-06-26 | 2007-07-02 | 5d | start no earlier than 2007-06-26 |  | 박순성.안은영.양남열.박승규.고홍복.김은영 | 24h | 24h | 3 | 3 | 3 |  |  |  | 단계완료 | C02-1 1.6.8 |  |
| 73 | 2 | **설계** | 99d? | 2007-07-16 A | 2007-12-07 A |  | 100% | 2007-07-16 | 2007-12-07 | 99d? |  |  |  | 4448h | 4448h | 556 | 556 | 556 |  |  |  | 설계 | C02-1 1.3 |  |
| 74 | 2.1 | **단계착수** | 9d | 2007-07-16 A | 2007-07-27 A |  | 100% | 2007-07-16 | 2007-07-27 | 9d |  |  |  |  |  |  |  |  |  |  |  | 단계착수 | C02-1 1.6.1 |  |
| 75 | 2.1.1 | SPM검토 및 보완 | 2d | 2007-07-16 A | 2007-07-18 A |  | 100% | 2007-07-16 | 2007-07-18 | 2d | start no earlier than 2007-07-16 |  |  |  |  |  |  |  |  |  |  | 단계착수 | C02-1 1.6.1 |  |
| 76 | 2.1.2 | 단계착수 오리엔테이션 | 5d | 2007-07-23 A | 2007-07-27 A | 75SS | 100% | 2007-07-23 | 2007-07-27 | 5d |  |  |  |  |  |  |  |  |  |  |  | 단계착수 | C02-1 1.6.1 |  |
| 77 | 2.2 | **기본설계** | 30d | 2007-07-18 A | 2007-08-29 A |  | 100% | 2007-07-18 | 2007-08-29 | 30d |  |  |  | 1176h | 1176h | 147 | 147 | 147 |  |  |  | 기본설계 | C02-1 1.3.1 |  |
| 78 | 2.2.1 | **시스템구조 설계** | 6d | 2007-07-18 A | 2007-07-25 A |  | 100% | 2007-07-18 | 2007-07-25 | 6d |  |  |  | 288h | 288h | 36 | 36 | 36 |  |  |  | 기본설계 | C02-1 1.3.1 |  |
| 79 | 2.2.1.1 | **어플리케이션구조도작성** | 3d | 2007-07-18 A | 2007-07-20 A |  | 100% | 2007-07-18 | 2007-07-20 | 3d |  |  |  | 144h | 144h | 18 | 18 | 18 |  |  |  | 기본설계 | C02-1 1.3.1 | 어플리케이션구조도 |
| 80 | 2.2.1.1.1 | 공통정보 | 3d | 2007-07-18 A | 2007-07-20 A |  | 100% | 2007-07-18 | 2007-07-20 | 3d |  |  | 안은영; 박승규; 김은영; 고성환 | 96h | 96h | 12 | 12 | 12 |  |  |  | 기본설계 | C02-1 1.3.1 |  |
| 81 | 2.2.1.1.2 | 공통지원 | 3d | 2007-07-18 A | 2007-07-20 A |  | 100% | 2007-07-18 | 2007-07-20 | 3d |  |  | 양남열; 박순성 | 48h | 48h | 6 | 6 | 6 |  |  |  | 기본설계 | C02-1 1.3.1 |  |

| ID | WBS | Task | Duration | Start | Finish | Predecessors | Complete | Baseline start | Baseline finish | Baseline duration | Constraint | Resources | Work | Actual work | Cost | Baseline cost | Actual cost | Text20 | Text26 | Text30 |
| --- | --- | --- | --- | --- | --- | --- | --- | --- | --- | --- | --- | --- | --- | --- | --- | --- | --- | --- | --- | --- |
| 82 | 2.2.1.2 | **프로그램목록작성** | 3d | 2007-07-23 A | 2007-07-25 A |  | 100% | 2007-07-23 | 2007-07-25 | 3d |  |  | 144h | 144h | 18 | 18 | 18 | 기본설계 | C02-1 1.3.1 | 프로그램목록 |
| 83 | 2.2.1.2.1 | 공통정보 | 3d | 2007-07-23 A | 2007-07-25 A | 81 | 100% | 2007-07-23 | 2007-07-25 | 3d |  | 안은영; 박승규; 김은영; 고성환 | 96h | 96h | 12 | 12 | 12 | 기본설계 | C02-1 1.3.1 |  |
| 84 | 2.2.1.2.2 | 공통지원 | 3d | 2007-07-23 A | 2007-07-25 A | 81 | 100% | 2007-07-23 | 2007-07-25 | 3d |  | 박순성; 양남열 | 48h | 48h | 6 | 6 | 6 | 기본설계 | C02-1 1.3.1 |  |
| 85 | 2.2.2 | **데이터코드 설계** | 5d | 2007-07-26 A | 2007-08-01 A |  | 100% | 2007-07-26 | 2007-08-01 | 5d |  |  | 240h | 240h | 30 | 30 | 30 | 기본설계 | C02-1 1.3.1 | 데이터코드설계서,데이터코드목록 |
| 86 | 2.2.2.1 | 공통정보 | 5d | 2007-07-26 A | 2007-08-01 A | 84 | 100% | 2007-07-26 | 2007-08-01 | 5d |  | 안은영; 박승규; 김은영; 고성환 | 160h | 160h | 20 | 20 | 20 | 기본설계 | C02-1 1.3.1 |  |
| 87 | 2.2.2.2 | 공통지원 | 5d | 2007-07-26 A | 2007-08-01 A | 84 | 100% | 2007-07-26 | 2007-08-01 | 5d |  | 박순성; 양남열 | 80h | 80h | 10 | 10 | 10 | 기본설계 | C02-1 1.3.1 |  |
| 88 | 2.2.3 | **화면 및 보고서 설계** | 13d | 2007-08-02 A | 2007-08-21 A |  | 100% | 2007-08-02 | 2007-08-21 | 13d |  |  | 624h | 624h | 78 | 78 | 78 | 기본설계 | C02-1 1.3.1 |  |
| 89 | 2.2.3.1 | **화면설계** | 10d | 2007-08-02 A | 2007-08-16 A |  | 100% | 2007-08-02 | 2007-08-16 | 10d |  |  | 480h | 480h | 60 | 60 | 60 | 기본설계 | C02-1 1.3.1 | 화면목록,화면레이아웃 |
| 90 | 2.2.3.1.1 | 공통정보 | 10d | 2007-08-02 A | 2007-08-16 A | 87 | 100% | 2007-08-02 | 2007-08-16 | 10d |  | 안은영; 박승규; 김은영; 고성환 | 320h | 320h | 40 | 40 | 40 | 기본설계 | C02-1 1.3.1 |  |
| 91 | 2.2.3.1.2 | 공통지원 | 10d | 2007-08-02 A | 2007-08-16 A | 87 | 100% | 2007-08-02 | 2007-08-16 | 10d |  | 박순성; 양남열 | 160h | 160h | 20 | 20 | 20 | 기본설계 | C02-1 1.3.1 |  |
| 92 | 2.2.3.2 | **보고서설계** | 3d | 2007-08-17 A | 2007-08-21 A |  | 100% | 2007-08-17 | 2007-08-21 | 3d |  |  | 144h | 144h | 18 | 18 | 18 | 기본설계 | C02-1 1.3.1 | 보고서목록,보고서레이아웃 |
| 93 | 2.2.3.2.1 | 공통정보 | 3d | 2007-08-17 A | 2007-08-21 A | 91 | 100% | 2007-08-17 | 2007-08-21 | 3d |  | 안은영; 박승규; 김은영; 고성환 | 96h | 96h | 12 | 12 | 12 | 기본설계 | C02-1 1.3.1 |  |
| 94 | 2.2.3.2.2 | 공통지원 | 3d | 2007-08-17 A | 2007-08-21 A | 91 | 100% | 2007-08-17 | 2007-08-21 | 3d |  | 박순성; 양남열 | 48h | 48h | 6 | 6 | 6 | 기본설계 | C02-1 1.3.1 |  |
| 95 | 2.2.4 | **상세논리모델링** | 6d | 2007-08-22 A | 2007-08-29 A |  | 100% | 2007-08-22 | 2007-08-29 | 6d |  |  | 24h | 24h | 3 | 3 | 3 | 기본설계 | C02-1 1.3.1 |  |
| 96 | 2.2.4.1 | 논리모델 상세화 | 4d | 2007-08-22 A | 2007-08-27 A |  | 100% | 2007-08-22 | 2007-08-27 | 4d | start no earlier than 2007-08-22 | 안은영 [50%] | 16h | 16h | 2 | 2 | 2 | 기본설계 | C02-1 1.3.1 |  |
| 97 | 2.2.4.2 | 논리모델검증 | 2d | 2007-08-28 A | 2007-08-29 A | 96 | 100% | 2007-08-28 | 2007-08-29 | 2d |  | 안은영 [50%] | 8h | 8h | 1 | 1 | 1 | 기본설계 | C02-1 1.3.1 |  |
| 98 | 2.3 | **상세설계** | 46d | 2007-08-22 A | 2007-10-30 A |  | 100% | 2007-08-22 | 2007-10-30 | 46d |  |  | 2200h | 2200h | 275 | 275 | 275 | 상세설계 | C02-1 1.3.3 |  |
| 99 | 2.3.1 | **데이터베이스 상세설계** | 5d | 2007-08-22 A | 2007-08-28 A |  | 100% | 2007-08-22 | 2007-08-28 | 5d |  |  | 240h | 240h | 30 | 30 | 30 | 상세설계 | C02-1 1.3.3 | 테이블정의서,테이블목록,ERD(물리),프로그램대테이블상관도 |
| 100 | 2.3.1.1 | 공통정보 | 5d | 2007-08-22 A | 2007-08-28 A | 94 | 100% | 2007-08-22 | 2007-08-28 | 5d |  | 안은영; 박승규; 김은영; 고성환 | 160h | 160h | 20 | 20 | 20 | 상세설계 | C02-1 1.3.3 |  |
| 101 | 2.3.1.2 | 공통지원 | 5d | 2007-08-22 A | 2007-08-28 A | 94 | 100% | 2007-08-22 | 2007-08-28 | 5d |  | 박순성; 양남열 | 80h | 80h | 10 | 10 | 10 | 상세설계 | C02-1 1.3.3 |  |
| 102 | 2.3.2 | **공통프로그램 설계** | 15d | 2007-08-29 A | 2007-09-18 A |  | 100% | 2007-08-29 | 2007-09-18 | 15d |  |  | 720h | 720h | 90 | 90 | 90 | 상세설계 | C02-1 1.3.3 | 프로그램사양서(공통) |
| 103 | 2.3.2.1 | 공통정보 | 15d | 2007-08-29 A | 2007-09-18 A | 100 | 100% | 2007-08-29 | 2007-09-18 | 15d |  | 안은영; 박승규; 김은영; 고성환 | 480h | 480h | 60 | 60 | 60 | 상세설계 | C02-1 1.3.3 |  |
| 104 | 2.3.2.2 | 공통지원 | 15d | 2007-08-29 A | 2007-09-18 A | 101 | 100% | 2007-08-29 | 2007-09-18 | 15d |  | 박순성; 양남열 | 240h | 240h | 30 | 30 | 30 | 상세설계 | C02-1 1.3.3 |  |
| 105 | 2.3.3 | 온라인도움말 설계 | 1d | 2007-09-19 A | 2007-09-19 A | 104 | 100% | 2007-09-19 | 2007-09-19 | 1d |  | 고성환 | 8h | 8h | 1 | 1 | 1 | 상세설계 | C02-1 1.3.3 | 온라인도움말설계서 |

| ID | WBS | Task | Duration | Start | Finish | Predecessors | Complete | Remaining | Baseline start | Baseline finish | Baseline duration | Total slack | Constraint | Resources | Work | Actual work | Cost | Baseline cost | Actual cost | Text20 | Text26 | Text30 |
| --- | --- | --- | --- | --- | --- | --- | --- | --- | --- | --- | --- | --- | --- | --- | --- | --- | --- | --- | --- | --- | --- | --- |
| 106 | 2.3.4 | **서버프로그램 설계** | 16d | 2007-09-19 A | 2007-10-16 A |  | 100% |  | 2007-09-19 | 2007-10-16 | 16d |  |  |  | 752h | 752h | 94 | 94 | 94 | 상세설계 | C02-1 1.3.3 | 프로그램사양서(서버) |
| 107 | 2.3.4.1 | 공통정보 | 16d | 2007-09-19 A | 2007-10-16 A | 103 | 100% |  | 2007-09-19 | 2007-10-16 | 16d |  |  | 안은영; 박승규; 김은영; 고성환 | 512h | 512h | 64 | 64 | 64 | 상세설계 | C02-1 1.3.3 |  |
| 108 | 2.3.4.2 | 공통지원 | 15d | 2007-09-20 A | 2007-10-16 A | 105 | 100% |  | 2007-09-20 | 2007-10-16 | 15d |  |  | 박순성; 양남열 | 240h | 240h | 30 | 30 | 30 | 상세설계 | C02-1 1.3.3 |  |
| 109 | 2.3.5 | **클라이언트프로그램 설계** | 10d | 2007-10-17 A | 2007-10-30 A |  | 100% |  | 2007-10-17 | 2007-10-30 | 10d |  |  |  | 480h | 480h | 60 | 60 | 60 | 상세설계 | C02-1 1.3.3 | 프로그램사양서(클라이언트) |
| 110 | 2.3.5.1 | 공통정보 | 10d | 2007-10-17 A | 2007-10-30 A | 107 | 100% |  | 2007-10-17 | 2007-10-30 | 10d |  |  | 안은영; 박승규; 김은영; 고성환 | 320h | 320h | 40 | 40 | 40 | 상세설계 | C02-1 1.3.3 |  |
| 111 | 2.3.5.2 | 공통지원 | 10d | 2007-10-17 A | 2007-10-30 A | 107 | 100% |  | 2007-10-17 | 2007-10-30 | 10d |  |  | 박순성; 양남열 | 160h | 160h | 20 | 20 | 20 | 상세설계 | C02-1 1.3.3 |  |
| 112 | 2.4 | **컨버전설계** | 4d? | 2007-10-31 A | 2007-11-05 A |  | 100% |  | 2007-10-31 | 2007-11-05 | 4d? |  |  |  | 192h | 192h | 24 | 24 | 24 | 컨버전 설계 | C02-1 1.3.5 |  |
| 113 | 2.4.1 | **컨버전계획 수립** | 1d? | 2007-10-31 A | 2007-10-31 A |  | 100% |  | 2007-10-31 | 2007-10-31 | 1d? |  |  |  | 48h | 48h | 6 | 6 | 6 | 컨버전 설계 | C02-1 1.3.5 | 컨버전계획서 |
| 114 | 2.4.1.1 | 공통정보 | 1d? | 2007-10-31 A | 2007-10-31 A | 111 | 100% |  | 2007-10-31 | 2007-10-31 | 1d? |  |  | 안은영; 박승규; 김은영; 고성환 | 32h | 32h | 4 | 4 | 4 | 컨버전 설계 | C02-1 1.3.5 |  |
| 115 | 2.4.1.2 | 공통지원 | 1d? | 2007-10-31 A | 2007-10-31 A | 111 | 100% |  | 2007-10-31 | 2007-10-31 | 1d? |  |  | 박순성; 양남열 | 16h | 16h | 2 | 2 | 2 | 컨버전 설계 | C02-1 1.3.5 |  |
| 116 | 2.4.2 | **데이터매핑설계** | 3d | 2007-11-01 A | 2007-11-05 A |  | 100% |  | 2007-11-01 | 2007-11-05 | 3d |  |  |  | 144h | 144h | 18 | 18 | 18 | 컨버전 설계 | C02-1 1.3.5 | 매핑정의서 |
| 117 | 2.4.2.1 | 공통정보 | 3d | 2007-11-01 A | 2007-11-05 A | 115 | 100% |  | 2007-11-01 | 2007-11-05 | 3d |  |  | 안은영; 박승규; 김은영; 고성환 | 96h | 96h | 12 | 12 | 12 | 컨버전 설계 | C02-1 1.3.5 |  |
| 118 | 2.4.2.2 | 공통지원 | 3d | 2007-11-01 A | 2007-11-05 A | 115 | 100% |  | 2007-11-01 | 2007-11-05 | 3d |  |  | 박순성; 양남열 | 48h | 48h | 6 | 6 | 6 | 컨버전 설계 | C02-1 1.3.5 |  |
| 119 | 2.5 | QAO심사(2차) 조치 | 51d? | 2007-09-03 A | 2007-11-16 A |  | 100% |  | 2007-09-03 | 2007-11-16 | 51d? |  | finish no earlier than 2007-11-16 |  |  |  |  |  |  | 품질활동수행 | C02-1 1.6.2 |  |
| 120 | 2.6 | **단계완료 품질검토** | 15d | 2007-11-19 A | 2007-12-07 A |  | 100% |  | 2007-11-19 | 2007-12-07 | 15d |  |  |  | 880h | 880h | 110 | 110 | 110 | 단계완료 | C02-1 1.6.8 |  |
| 121 | 2.6.1 | 요구사항추적표 작성 | 5d | 2007-11-26 A | 2007-11-30 A |  | 100% |  | 2007-11-26 | 2007-11-30 | 5d |  | start no earlier than 2007-11-26 | 박순성; 양남열; 안은영; 박승규 | 160h | 160h | 20 | 20 | 20 | 단계완료 | C02-1 1.6.8 |  |
| 122 | 2.6.2 | **산출물 Inspection** | 10d | 2007-11-19 A | 2007-11-30 A |  | 100% |  | 2007-11-19 | 2007-11-30 | 10d |  |  |  | 480h | 480h | 60 | 60 | 60 | 단계완료 | C02-1 1.6.8 |  |
| 123 | 2.6.2.1 | Inspection실시 | 5d | 2007-11-19 A | 2007-11-23 A |  | 100% |  | 2007-11-19 | 2007-11-23 | 5d |  | start no earlier than 2007-11-19 | 박순성; 양남열; 안은영; 박승규; 김은영; 고성환 | 240h | 240h | 30 | 30 | 30 | 단계완료 | C02-1 1.6.8 |  |
| 124 | 2.6.2.2 | 조치계획수립 및 수행 | 5d | 2007-11-26 A | 2007-11-30 A | 123 | 100% |  | 2007-11-26 | 2007-11-30 | 5d |  |  | 박순성; 양남열; 안은영; 박승규; 김은영; 고성환 | 240h | 240h | 30 | 30 | 30 | 단계완료 | C02-1 1.6.8 |  |
| 125 | 2.6.3 | 고객검토 | 5d | 2007-12-03 A | 2007-12-07 A | 124 | 100% |  | 2007-12-03 | 2007-12-07 | 5d |  |  | 박순성; 양남열; 안은영; 박승규; 김은영; 고성환 | 240h | 240h | 30 | 30 | 30 | 단계완료 | C02-1 1.6.8 |  |
| 126 | 3 | **개발** | 123d? | 2007-12-03 A | 2008-05-30 |  | 99% | 0.14d? | 2007-12-03 | 2008-05-30 | 123d? | 216d |  |  |  |  |  |  |  | 개발 | C02-1 1.4 |  |
| 127 | 3.1 | **단계착수** | 25d | 2007-12-03 A | 2008-01-08 A |  | 100% |  | 2007-12-03 | 2008-01-08 | 25d |  |  |  |  |  |  |  |  | 단계착수 | C02-1 1.6.1 |  |
| 128 | 3.1.1 | 설계감리조치 | 5d | 2007-12-03 A | 2007-12-07 A |  | 100% |  | 2007-12-03 | 2007-12-07 | 5d |  | start no earlier than 2007-12-03 |  |  |  |  |  |  | 단계착수 | C02-1 1.6.1 |  |
| 129 | 3.1.2 | SPM검토 및 보완 | 5d | 2007-12-10 A | 2007-12-14 A |  | 100% |  | 2007-12-10 | 2007-12-14 | 5d |  | start no earlier than 2007-12-10 |  |  |  |  |  |  | 단계착수 | C02-1 1.6.1 |  |
| 130 | 3.1.3 | 단계착수 오리엔테이션 | 5d | 2007-12-17 A | 2007-12-21 A |  | 100% |  | 2007-12-17 | 2007-12-21 | 5d |  | start no earlier than 2007-12-17 |  |  |  |  |  |  | 단계착수 | C02-1 1.6.1 |  |
| 131 | 3.1.4 | 개발표준 및 개발환경교육 | 5d | 2008-01-02 A | 2008-01-08 A |  | 100% |  | 2008-01-02 | 2008-01-08 | 5d |  | start no earlier than 2008-01-02 |  |  |  |  |  |  | 단계착수 | C02-1 1.6.1 |  |

Notes:
- 116: 업무단에서는 매핑정의서로 대체요망

| ID | WBS | Task | Duration | Start | Finish | Predecessors | Complete | Remaining | Baseline start | Baseline finish | Baseline duration | Total slack | Constraint | Text20 | Text26 | Text30 |
| --- | --- | --- | --- | --- | --- | --- | --- | --- | --- | --- | --- | --- | --- | --- | --- | --- |
| 132 | 3.2 | **코딩 및 단위테스트 실시** | 103d | 2008-01-02 A | 2008-05-30 |  | 99% | 0.3d | 2008-01-02 | 2008-05-30 | 103d | 216d |  | 코딩 및 단위테스트 실시 | C02-1 1.4.1 |  |
| 133 | 3.2.1 | 단위테스트체크리스트작성 | 2d | 2008-01-02 A | 2008-01-03 A |  | 100% |  | 2008-01-02 | 2008-01-03 | 2d |  | start no earlier than 2008-01-02 | 코딩 및 단위테스트 실시 | C02-1 1.4.1 | 단위테스트체크리스트 |
| 134 | 3.2.2 | **프로그램 코딩** | 80d | 2008-01-04 A | 2008-04-29 |  | 99% | 0.3d | 2008-01-04 | 2008-04-29 | 80d | 237d |  | 코딩 및 단위테스트 실시 | C02-1 1.4.1 | 소스코드 |
| 135 | 3.2.2.1 | 공통프로그램개발 | 20d | 2008-01-04 A | 2008-01-31 A | 133 | 100% |  | 2008-01-04 | 2008-01-31 | 20d |  | start no earlier than 2007-11-05 | 코딩 및 단위테스트 실시 | C02-1 1.4.1 |  |
| 136 | 3.2.2.2 | 업무내 프로그램 개발 | 30d | 2008-02-01 A | 2008-03-18 A | 135 | 100% |  | 2008-02-01 | 2008-03-18 | 30d |  |  | 코딩 및 단위테스트 실시 | C02-1 1.4.1 |  |
| 137 | 3.2.2.3 | 서버간 | 30d | 2008-03-19 A | 2008-04-29 | 136 | 99% | 0.3d | 2008-03-19 | 2008-04-29 | 30d | 237d |  | 코딩 및 단위테스트 실시 | C02-1 1.4.1 |  |
| 138 | 3.2.3 | 단위테스트 실시 | 21d | 2008-04-30 A | 2008-05-30 A | 137 | 100% |  | 2008-04-30 | 2008-05-30 | 21d |  | finish no earlier than 2008-05-30 | 코딩 및 단위테스트 실시 | C02-1 1.4.1 | 단위테스트결과서 |
| 139 | 3.3 | 통합테스트시나리오작성 | 32d? | 2008-04-01 A | 2008-05-16 A |  | 100% |  | 2008-04-01 | 2008-05-16 | 32d? |  | finish no earlier than 2008-05-16 | 코딩 및 단위테스트 실시 | C02-1 1.4.1 | 통합테스트시나리오 |
| 140 | 3.4 | 화면 오퍼레이션 메뉴얼작성 | 26d? | 2008-04-22 A | 2008-05-30 A |  | 100% |  | 2008-04-22 | 2008-05-30 | 26d? |  | finish no earlier than 2008-05-30 | 코딩 및 단위테스트 실시 | C02-1 1.4.1 |  |
| 141 | 3.5 | **단계완료 품질검토** | 80d? | 2008-02-04 A | 2008-05-30 A |  | 100% |  | 2008-02-04 | 2008-05-30 | 80d? |  |  | 단계완료 | C02-1 1.6.8 |  |
| 142 | 3.5.1 | 요구사항추적표 작성 | 2d | 2008-05-06 A | 2008-05-07 A |  | 100% |  | 2008-05-06 | 2008-05-07 | 2d |  | start no earlier than 2008-05-06 | 단계완료 | C02-1 1.6.8 |  |
| 143 | 3.5.2 | QAO심사(3차) 조치 | 70d? | 2008-02-04 A | 2008-05-16 A |  | 100% |  | 2008-02-04 | 2008-05-16 | 70d? |  | finish no earlier than 2008-05-16 | 단계완료 | C02-1 1.6.8 |  |
| 144 | 3.5.3 | **산출물 Inspection** | 11d | 2008-05-16 A | 2008-05-30 A |  | 100% |  | 2008-05-16 | 2008-05-30 | 11d |  |  | 단계완료 | C02-1 1.6.8 |  |
| 145 | 3.5.3.1 | Inspection실시 | 11d | 2008-05-16 A | 2008-05-30 A |  | 100% |  | 2008-05-16 | 2008-05-30 | 11d |  | finish no earlier than 2008-05-30 | 단계완료 | C02-1 1.6.8 |  |
| 146 | 4 | **통합테스트** | 70d? | 2008-04-22 A | 2008-08-01 A |  | 100% |  | 2008-04-22 | 2008-08-01 | 70d? |  |  | 개발 | C02-1 1.4 |  |
| 147 | 4.1 | **통합테스트 시나리오작성** | 27d? | 2008-04-22 A | 2008-05-30 A |  | 100% |  | 2008-04-22 | 2008-05-30 | 27d? |  |  | 테스트 실시 | C02-1 1.4.2 |  |
| 148 | 4.1.1 | 통합테스트시나리오목록작성 | 7d | 2008-04-22 A | 2008-04-30 A |  | 100% |  | 2008-04-22 | 2008-04-30 | 7d |  | start no earlier than 2008-04-22 | 테스트 실시 | C02-1 1.4.2 |  |
| 149 | 4.1.2 | 통합테스트시나리오목록보완 | 4d? | 2008-05-13 A | 2008-05-16 A |  | 100% |  | 2008-05-13 | 2008-05-16 | 4d? |  | finish no earlier than 2008-05-16 | 테스트 실시 | C02-1 1.4.2 |  |
| 150 | 4.1.3 | 통합테스트시나리오작성(1차) | 10d? | 2008-05-01 A | 2008-05-16 A |  | 100% |  | 2008-05-01 | 2008-05-16 | 10d? |  | finish no earlier than 2008-05-16 | 테스트 실시 | C02-1 1.4.2 |  |
| 151 | 4.1.4 | 통합테스트시나리오작성(2차) | 5d? | 2008-05-19 A | 2008-05-23 A |  | 100% |  | 2008-05-19 | 2008-05-23 | 5d? |  | finish no earlier than 2008-05-23 | 테스트 실시 | C02-1 1.4.2 |  |
| 152 | 4.1.5 | 통합테스트시나리오보완 | 5d? | 2008-05-26 A | 2008-05-30 A |  | 100% |  | 2008-05-26 | 2008-05-30 | 5d? |  | finish no earlier than 2008-05-30 | 테스트 실시 | C02-1 1.4.2 |  |
| 153 | 4.2 | **단계착수** | 26d? | 2008-04-28 A | 2008-06-04 A |  | 100% |  | 2008-04-28 | 2008-06-04 | 26d? |  |  | 단계착수 | C02-1 1.6.1 |  |
| 154 | 4.2.1 | **통합테스트 계획수립** | 23d? | 2008-04-28 A | 2008-05-30 A |  | 100% |  | 2008-04-28 | 2008-05-30 | 23d? |  |  | 단계착수 | C02-1 1.6.1 |  |
| 155 | 4.2.1.1 | 통합테스트 계획서작성 | 13d? | 2008-04-28 A | 2008-05-16 A |  | 100% |  | 2008-04-28 | 2008-05-16 | 13d? |  | start no earlier than 2008-04-28 | 단계착수 | C02-1 1.6.1 |  |
| 156 | 4.2.1.2 | 통합테스트 계획서보완 | 5d? | 2008-05-26 A | 2008-05-30 A |  | 100% |  | 2008-05-26 | 2008-05-30 | 5d? |  | finish no earlier than 2008-05-30 | 단계착수 | C02-1 1.6.1 |  |
| 157 | 4.2.2 | 통합테스트 단계 계획 검토 및 수정 | 5d | 2008-05-19 A | 2008-05-23 A |  | 100% |  | 2008-05-19 | 2008-05-23 | 5d |  | start no earlier than 2008-05-19 | 단계착수 | C02-1 1.6.1 |  |
| 158 | 4.2.3 | 통합테스트 SPM 검토 및 수정 | 5d | 2008-05-19 A | 2008-05-23 A |  | 100% |  | 2008-05-19 | 2008-05-23 | 5d |  | start no earlier than 2008-05-19 | 단계착수 | C02-1 1.6.1 |  |
| 159 | 4.2.4 | 오리엔테이션(4차) 실시 | 5d | 2008-05-29 A | 2008-06-04 A |  | 100% |  | 2008-05-29 | 2008-06-04 | 5d |  | start no earlier than 2008-05-29 | 단계착수 | C02-1 1.6.1 |  |

| ID | WBS | Task | Duration | Start | Finish | Complete | Remaining | Baseline start | Baseline finish | Baseline duration | Total slack | Constraint | Text20 | Text26 | Text30 |
| --- | --- | --- | --- | --- | --- | --- | --- | --- | --- | --- | --- | --- | --- | --- | --- |
| 160 | 4.3 | **통합테스트** | 38d? | 2008-06-09 A | 2008-07-31 A | 100% |  | 2008-06-09 | 2008-07-31 | 38d? |  |  | 테스트 실시 | C02-1 1.4.2 |  |
| 161 | 4.3.1 | 1차 통합테스트 | 5d | 2008-06-09 A | 2008-06-13 A | 100% |  | 2008-06-09 | 2008-06-13 | 5d |  | start no earlier than 2008-06-09 | 테스트 실시 | C02-1 1.4.2 |  |
| 162 | 4.3.2 | 2차 통합테스트 | 5d | 2008-06-23 A | 2008-06-27 A | 100% |  | 2008-06-23 | 2008-06-27 | 5d |  | start no earlier than 2008-06-23 | 테스트 실시 | C02-1 1.4.2 |  |
| 163 | 4.3.3 | 3차 통합테스트 | 5d | 2008-07-07 A | 2008-07-11 A | 100% |  | 2008-07-07 | 2008-07-11 | 5d |  | start no earlier than 2008-07-07 | 테스트 실시 | C02-1 1.4.2 |  |
| 164 | 4.3.4 | 4차 통합테스트 | 5d | 2008-07-21 A | 2008-07-25 A | 100% |  | 2008-07-21 | 2008-07-25 | 5d |  | start no earlier than 2008-07-21 | 테스트 실시 | C02-1 1.4.2 |  |
| 165 | 4.3.5 | 통합테스트 결과 수정보완 | 33d? | 2008-06-16 A | 2008-07-31 A | 100% |  | 2008-06-16 | 2008-07-31 | 33d? |  | finish no earlier than 2008-07-31 | 품질활동수행 | C02-1 1.6.2 |  |
| 166 | 4.4 | **단계완료 품질검토** | 34d | 2008-06-16 A | 2008-08-01 A | 100% |  | 2008-06-16 | 2008-08-01 | 34d |  |  | 품질활동수행 | C02-1 1.6.2 |  |
| 167 | 4.4.1 | QAO심사(4차) 조치 | 5d | 2008-06-16 A | 2008-06-20 A | 100% |  | 2008-06-16 | 2008-06-20 | 5d |  | start no earlier than 2008-06-16 | 품질활동수행 | C02-1 1.6.2 |  |
| 168 | 4.4.2 | Inspection(4차) 실시 및 조치 | 4d | 2008-07-14 A | 2008-07-18 A | 100% |  | 2008-07-14 | 2008-07-18 | 4d |  | start no earlier than 2008-07-14 | 품질활동수행 | C02-1 1.6.2 |  |
| 169 | 4.4.3 | 통합테스트 요구사항추적표 맵핑 | 5d | 2008-07-28 A | 2008-08-01 A | 100% |  | 2008-07-28 | 2008-08-01 | 5d |  | start no earlier than 2008-07-28 | 품질활동수행 | C02-1 1.6.2 |  |
| 170 | 5 | **영업점테스트** | 152d? | 2008-07-07 A | 2009-01-27 | 71% | 44.38d? | 2008-07-07 | 2009-01-27 | 152d? | 40d |  | 개발 | C02-1 1.4 |  |
| 171 | 5.1 | **단계착수** | 24d? | 2008-07-07 A | 2008-08-08 A | 100% |  | 2008-07-07 | 2008-08-08 | 24d? |  |  | 단계착수 | C02-1 1.6.1 |  |
| 172 | 5.1.1 | 단계계획 검토 및 수정 | 5d? | 2008-07-07 A | 2008-07-11 A | 100% |  | 2008-07-07 | 2008-07-11 | 5d? |  | finish no earlier than 2008-07-11 | 단계착수 | C02-1 1.6.1 |  |
| 173 | 5.1.2 | SPM검토 | 4d? | 2008-07-14 A | 2008-07-18 A | 100% |  | 2008-07-14 | 2008-07-18 | 4d? |  | finish no earlier than 2008-07-18 | 단계착수 | C02-1 1.6.1 |  |
| 174 | 5.1.3 | 오리엔테이션(5차) 실시 | 6d | 2008-08-01 A | 2008-08-08 A | 100% |  | 2008-08-01 | 2008-08-08 | 6d |  | start no earlier than 2008-08-01 | 단계착수 | C02-1 1.6.1 |  |
| 175 | 5.2 | **시스템사용자교육** | 125d? | 2008-07-07 A | 2008-12-19 A | 100% |  | 2008-07-07 | 2008-12-19 | 125d? |  |  | 시스템 사용교육 | C02-1 1.5.3 |  |
| 176 | 5.2.1 | 교육계획 수립 | 2d | 2008-08-04 A | 2008-08-05 A | 100% |  | 2008-08-04 | 2008-08-05 | 2d |  | start no earlier than 2008-08-04 | 시스템 사용교육 | C02-1 1.5.3 | 교육계획서 |
| 177 | 5.2.2 | 사용자메뉴얼 작성 | 20d | 2008-07-29 A | 2008-08-22 A | 100% |  | 2008-07-29 | 2008-08-22 | 20d |  | finish no earlier than 2008-08-22 | 시스템 사용교육 | C02-1 1.5.3 | 사용자매뉴얼 |
| 178 | 5.2.3 | 운영 매뉴얼 작성 | 16d | 2008-11-10 A | 2008-11-28 A | 100% |  | 2008-11-10 | 2008-11-28 | 16d |  | finish no earlier than 2008-11-28 | 시스템 사용교육 | C02-1 1.5.3 | 운영매뉴얼 |
| 179 | 5.2.4 | **사용자교육 실시** | 60d? | 2008-07-07 A | 2008-09-25 A | 100% |  | 2008-07-07 | 2008-09-25 | 60d? |  |  | 시스템 사용교육 | C02-1 1.5.3 | 교육결과서 |
| 180 | 5.2.4.1 | 동영상 교재 작성(화면 설명) | 9d? | 2008-07-07 A | 2008-07-18 A | 100% |  | 2008-07-07 | 2008-07-18 | 9d? |  | finish no earlier than 2008-07-18 | 시스템 사용교육 | C02-1 1.5.3 |  |
| 181 | 5.2.4.2 | 집합교육 교재 작성 | 9d? | 2008-07-14 A | 2008-07-25 A | 100% |  | 2008-07-14 | 2008-07-25 | 9d? |  | finish no earlier than 2008-07-25 | 시스템 사용교육 | C02-1 1.5.3 |  |
| 182 | 5.2.4.3 | 시범점 사용자 교육 | 7d? | 2008-08-06 A | 2008-08-12 A | 100% |  | 2008-08-06 | 2008-08-12 | 7d? |  | finish no earlier than 2008-08-12 | 시스템 사용교육 | C02-1 1.5.3 |  |
| 183 | 5.2.4.4 | 영업점 사용자 교육 | 30d? | 2008-08-18 A | 2008-09-25 A | 100% |  | 2008-08-18 | 2008-09-25 | 30d? |  | finish no earlier than 2008-09-25 | 시스템 사용교육 | C02-1 1.5.3 |  |
| 184 | 5.2.5 | 운영자 교육 실시 | 16d | 2008-12-01 A | 2008-12-19 A | 100% |  | 2008-12-01 | 2008-12-19 | 16d |  | finish no earlier than 2008-12-19 | 시스템 사용교육 | C02-1 1.5.3 | 교육결과서 |

| ID | WBS | Task | Duration | Start | Finish | Complete | Remaining | Baseline start | Baseline finish | Baseline duration | Total slack | Constraint | Text20 | Text26 | Text30 |
| --- | --- | --- | --- | --- | --- | --- | --- | --- | --- | --- | --- | --- | --- | --- | --- |
| 185 | 5.3 | **영업점테스트** | 117d? | 2008-07-21 A | 2008-12-20 | 89% | 13.36d? | 2008-07-21 | 2008-12-20 | 117d? | 66d |  | 테스트 실시 | C02-1 1.4.2 |  |
| 186 | 5.3.1 | 영업점테스트 계획 수립 | 9d? | 2008-07-21 A | 2008-07-31 A | 100% |  | 2008-07-21 | 2008-07-31 | 9d? |  | finish no earlier than 2008-07-31 | 테스트 실시 | C02-1 1.4.2 | 영업점테스트 계획서 |
| 187 | 5.3.2 | 영업점 테스트 시나리오 | 9d? | 2008-07-21 A | 2008-07-31 A | 100% |  | 2008-07-21 | 2008-07-31 | 9d? |  | finish no earlier than 2008-07-31 | 테스트 실시 | C02-1 1.4.2 | 영업점 테스트 시나리오 |
| 188 | 5.3.3 | **시범점 테스트** | 31d? | 2008-08-09 A | 2008-09-19 A | 100% |  | 2008-08-09 | 2008-09-19 | 31d? |  |  | 테스트 실시 | C02-1 1.4.2 |  |
| 189 | 5.3.3.1 | 1차 시범점 테스트 및 보완 | 16d? | 2008-08-09 A | 2008-08-29 A | 100% |  | 2008-08-09 | 2008-08-29 | 16d? |  | finish no earlier than 2008-08-29 | 테스트 실시 | C02-1 1.4.2 |  |
| 190 | 5.3.3.2 | 2차 시범점 테스트 및 보완 | 15d? | 2008-08-31 A | 2008-09-19 A | 100% |  | 2008-08-31 | 2008-09-19 | 15d? |  | finish no earlier than 2008-09-19 | 테스트 실시 | C02-1 1.4.2 |  |
| 191 | 5.3.4 | **영업점 테스트** | 71d? | 2008-09-21 A | 2008-12-20 | 81% | 13.7d? | 2008-09-21 | 2008-12-20 | 71d? | 66d |  | 테스트 실시 | C02-1 1.4.2 |  |
| 192 | 5.3.4.1 | 1차 영업점 테스트 및 보완 | 15d? | 2008-09-21 A | 2008-10-10 A | 100% |  | 2008-09-21 | 2008-10-10 | 15d? |  | finish no earlier than 2008-10-10 | 테스트 실시 | C02-1 1.4.2 |  |
| 193 | 5.3.4.2 | 2차 영업점 테스트 및 보완 | 16d? | 2008-10-12 A | 2008-10-31 A | 100% |  | 2008-10-12 | 2008-10-31 | 16d? |  | finish no earlier than 2008-10-31 | 테스트 실시 | C02-1 1.4.2 |  |
| 194 | 5.3.4.3 | 3차 영업점 테스트 및 보완 | 11d? | 2008-11-02 A | 2008-11-14 A | 100% |  | 2008-11-02 | 2008-11-14 | 11d? |  | finish no earlier than 2008-11-14 | 테스트 실시 | C02-1 1.4.2 |  |
| 195 | 5.3.4.4 | 4차 영업점 테스트 및 보완 | 17d? | 2008-11-15 A | 2008-12-05 | 90% | 1.7d? | 2008-11-15 | 2008-12-05 | 17d? | 78d | finish no earlier than 2008-12-05 | 테스트 실시 | C02-1 1.4.2 |  |
| 196 | 5.3.4.5 | 5차 영업점 테스트 및 보완 | 12d? | 2008-12-07 | 2008-12-20 |  |  | 2008-12-07 | 2008-12-20 | 12d? | 66d | start no earlier than 2008-12-07 | 테스트 실시 | C02-1 1.4.2 |  |
| 197 | 5.4 | **인수테스트** | 20d | 2008-12-12 | 2009-01-09 |  |  | 2008-12-12 | 2009-01-09 | 20d | 53d |  | 테스트 실시 | C02-1 1.4.2 |  |
| 198 | 5.4.1 | 인수테스트 실시 | 20d | 2008-12-12 | 2009-01-09 |  |  | 2008-12-12 | 2009-01-09 | 20d | 53d | finish no earlier than 2009-01-09 | 테스트 실시 | C02-1 1.4.2 | 인수테스트기준서(결과), 결함보고서(인수) |
| 199 | 5.5 | **단계완료 품질검토** | 104d? | 2008-09-08 A | 2009-01-23 | 46% | 56.37d? | 2008-09-08 | 2009-01-23 | 104d? | 42d |  | 품질활동수행 | C02-1 1.6.2 |  |
| 200 | 5.5.1 | QAO심사(5차) 조치 | 51d? | 2008-09-08 A | 2008-11-14 A | 100% |  | 2008-09-08 | 2008-11-14 | 51d? |  | finish no earlier than 2008-11-14 | 품질활동수행 | C02-1 1.6.2 |  |
| 201 | 5.5.2 | 통합테스트 요구사항추적표 매핑 | 9d? | 2008-09-08 A | 2008-09-19 A | 100% |  | 2008-09-08 | 2008-09-19 | 9d? |  | finish no earlier than 2008-09-19 | 품질활동수행 | C02-1 1.6.2 |  |
| 202 | 5.5.3 | Inspection(5차) 실시 및 조치 | 11d | 2008-12-01 | 2008-12-12 |  |  | 2008-12-01 | 2008-12-12 | 11d | 72d | finish no earlier than 2008-12-12 | 품질활동수행 | C02-1 1.6.2 |  |
| 203 | 5.5.4 | 예비제품검사 조치 | 7d | 2008-12-22 | 2008-12-31 |  |  | 2008-12-22 | 2008-12-31 | 7d | 59d | finish no earlier than 2008-12-31 | 품질활동수행 | C02-1 1.6.2 |  |
| 204 | 5.5.5 | 제품검사 실시 | 30d? | 2008-12-15 | 2009-01-23 |  |  | 2008-12-15 | 2009-01-23 | 30d? | 42d | finish no earlier than 2009-01-23 | 품질활동수행 | C02-1 1.6.2 |  |
| 205 | 5.5.6 | 최종 요구사항 추적표 맵핑 | 10d | 2009-01-05 | 2009-01-16 |  |  | 2009-01-05 | 2009-01-16 | 10d | 48d | finish no earlier than 2009-01-16 | 품질활동수행 | C02-1 1.6.2 |  |
| 206 | 5.5.7 | 고객검토(3차) 실시 및 조치 | 8d | 2008-12-22 | 2009-01-02 |  |  | 2008-12-22 | 2009-01-02 | 8d | 58d | finish no earlier than 2009-01-02 | 품질활동수행 | C02-1 1.6.2 |  |
| 207 | 5.5.8 | 과업대비표 맵핑 | 5d | 2009-01-19 | 2009-01-23 |  |  | 2009-01-19 | 2009-01-23 | 5d | 42d | start no earlier than 2009-01-19 | 품질활동수행 | C02-1 1.6.2 |  |
| 208 | 5.6 | **이행** | 18d | 2009-01-05 | 2009-01-27 |  |  | 2009-01-05 | 2009-01-27 | 18d | 40d |  | 컨버전 및 릴리이즈 | C02-1 1.5.2 |  |
| 209 | 5.6.1 | 이행계획 수립 | 5d | 2009-01-05 | 2009-01-09 |  |  | 2009-01-05 | 2009-01-09 | 5d | 53d | finish no earlier than 2009-01-09 | 컨버전 및 릴리이즈 | C02-1 1.5.2 | 이행계획서 |
| 210 | 5.6.2 | 이행시나리오 작성 | 5d | 2009-01-12 | 2009-01-16 |  |  | 2009-01-12 | 2009-01-16 | 5d | 48d | start no earlier than 2009-01-12 | 컨버전 및 릴리이즈 | C02-1 1.5.2 | 이행시나리오 |
| 211 | 5.6.3 | 이행 실시 | 5d | 2009-01-21 | 2009-01-27 |  |  | 2009-01-21 | 2009-01-27 | 5d | 40d | finish no earlier than 2009-01-27 | 컨버전 및 릴리이즈 | C02-1 1.5.2 | 운영시스템 |

| ID | WBS | Task | Duration | Start | Finish | Baseline start | Baseline finish | Baseline duration | Total slack | Constraint | Text20 | Text26 | Text30 |
| --- | --- | --- | --- | --- | --- | --- | --- | --- | --- | --- | --- | --- | --- |
| 212 | 6 | **시스템안정화** | 37d? | 2009-02-02 | 2009-03-24 | 2009-02-02 | 2009-03-24 | 37d? | 0d |  | 구현 | C02-1 1.5 |  |
| 213 | 6.1 | **시스템운영** | 37d? | 2009-02-02 | 2009-03-24 | 2009-02-02 | 2009-03-24 | 37d? | 0d |  | 시범운영 | C02-1 1.5.4 |  |
| 214 | 6.1.1 | 시스템운영실시 | 37d | 2009-02-02 | 2009-03-24 | 2009-02-02 | 2009-03-24 | 37d | 0d | start no earlier than 2009-02-02 | 시범운영 | C02-1 1.5.4 | 시범운영일지 |
| 215 | 6.1.2 | 실적규모측정 | 5d? | 2009-02-16 | 2009-02-20 | 2009-02-16 | 2009-02-20 | 5d? | 22d | finish no earlier than 2009-02-20 |  |  |  |
