# 공통(상품)

Schedule from MS Project, 2007-04-25 to 2009-03-24, costs in ₩, A marks actual dates.
HSIC-0600001
�궪�꽦SDS

## Calendars

- 농협신용신시스템: Mon-Fri 08:00-12:00, 13:00-17:00; Sat-Sun off. Exceptions (off unless hours are given): 2007-05-01, 2007-05-24, 2007-06-06, 2007-07-17, 2007-08-15, 2007-09-24 to 2007-09-26, 2007-10-03, 2007-12-25, 2008-01-01, 2008-02-06 to 2008-02-08, 2008-05-01, 2008-05-05, 2008-05-12, 2008-06-06, 2008-07-17, 2008-08-10 08:00-12:00, 13:00-17:00, 2008-08-15, 2008-08-30 to 2008-08-31 08:00-12:00, 13:00-17:00, 2008-09-15, 2008-09-20 to 2008-09-21 08:00-12:00, 13:00-17:00, 2008-10-03, 2008-10-12 08:00-12:00, 13:00-17:00, 2008-11-02 08:00-12:00, 13:00-17:00, 2008-11-15 08:00-12:00, 13:00-17:00, 2008-11-29 08:00-12:00, 13:00-17:00, 2008-12-07 08:00-12:00, 13:00-17:00, 2008-12-20 08:00-12:00, 13:00-17:00, 2008-12-25, 2009-01-01.

## Resources

| Resource | Rate |
| --- | --- |
| 현년수 | 0.12 |
| 김건원 | 0.12 |
| 박정수 | 0.12 |
| 문성태 | 0.12 |
| 이현승 | 0.12 |
| 개발자 | 0.12 |
| 차중기 | 0.12 |

## Schedule

| ID | WBS | Task | Type | Duration | Start | Finish | Complete | Baseline start | Baseline finish | Baseline duration | Constraint | Resources | Work | Actual work | Cost | Baseline cost | Actual cost | Text20 | Text26 | Text30 |
| --- | --- | --- | --- | --- | --- | --- | --- | --- | --- | --- | --- | --- | --- | --- | --- | --- | --- | --- | --- | --- |
| 1 | 1 | **분석** |  | 66d | 2007-04-25 A | 2007-07-31 A | 100% | 2007-04-25 | 2007-07-31 | 66d |  |  | 2256h | 2256h | 282 | 282 | 282 | 분석 | C02-1 1.2 |  |
| 2 | 1.1 | **현황 평가** |  | 30d | 2007-04-25 A | 2007-06-08 A | 100% | 2007-04-25 | 2007-06-08 | 30d |  |  | 642h | 642h | 80.25 | 80.25 | 80.25 | 현황 평가 | C02-1 1.2.1 |  |
| 3 | 1.1.1 | **현행업무 분석** |  | 15d | 2007-04-25 A | 2007-05-16 A | 100% | 2007-04-25 | 2007-05-16 | 15d |  |  | 566h | 566h | 70.75 | 70.75 | 70.75 | 현황 평가 | C02-1 1.2.1 | 현행업무분장표, 현행업무흐름도 |
| 4 | 1.1.1.1 | 현행업무 분장 파악 |  | 6d | 2007-04-25 A | 2007-05-03 A | 100% | 2007-04-25 | 2007-05-03 | 6d |  | 현년수; 김건원; 박정수; 문성태; 이현승 | 230h | 230h | 28.75 | 28.75 | 28.75 | 현황 평가 | C02-1 1.2.1 |  |
| 5 | 1.1.1.2 | As-Is 상품개발 프로세스 분석 |  | 7d | 2007-05-04 A | 2007-05-14 A | 100% | 2007-05-04 | 2007-05-14 | 7d | start no earlier than 2007-05-04 | 김건원; 박정수; 문성태; 이현승; 현년수 | 232h | 232h | 29 | 29 | 29 | 현황 평가 | C02-1 1.2.1 |  |
| 6 | 1.1.1.3 | 상품정의서 양식 작성 |  | 3d | 2007-05-14 A | 2007-05-16 A | 100% | 2007-05-14 | 2007-05-16 | 3d | start no earlier than 2007-05-14 | 김건원; 박정수; 문성태; 이현승 | 96h | 96h | 12 | 12 | 12 | 현황 평가 | C02-1 1.2.1 |  |
| 7 | 1.1.1.4 | 상품정의서 작성 가이드라인 배포 |  | 1d | 2007-05-16 A | 2007-05-16 A | 100% | 2007-05-16 | 2007-05-16 | 1d | start no earlier than 2007-05-16 | 현년수 | 8h | 8h | 1 | 1 | 1 | 현황 평가 | C02-1 1.2.1 |  |
| 8 | 1.1.2 | **현행시스템 분석** |  | 6d | 2007-05-21 A | 2007-05-29 A | 100% | 2007-05-21 | 2007-05-29 | 6d |  |  |  |  |  |  |  | 현황 평가 | C02-1 1.2.1 | 현행시스템분석서 |
| 9 | 1.1.2.1 | 현행어플리케이션구조분석 |  | 1d | 2007-05-21 A | 2007-05-21 A | 100% | 2007-05-21 | 2007-05-21 | 1d | start no earlier than 2007-05-21 |  |  |  |  |  |  | 현황 평가 | C02-1 1.2.1 |  |
| 10 | 1.1.2.2 | 현행DB구조분석 |  | 1d | 2007-05-22 A | 2007-05-22 A | 100% | 2007-05-22 | 2007-05-22 | 1d | start no earlier than 2007-05-22 |  |  |  |  |  |  | 현황 평가 | C02-1 1.2.1 |  |
| 11 | 1.1.2.3 | 현행기술구조분석 |  | 1d | 2007-05-23 A | 2007-05-23 A | 100% | 2007-05-23 | 2007-05-23 | 1d | start no earlier than 2007-05-23 |  |  |  |  |  |  | 현황 평가 | C02-1 1.2.1 |  |
| 12 | 1.1.2.4 | 문제점 및 개선사항 파악 |  | 3d | 2007-05-25 A | 2007-05-29 A | 100% | 2007-05-25 | 2007-05-29 | 3d | start no earlier than 2007-05-24 |  |  |  |  |  |  | 현황 평가 | C02-1 1.2.1 |  |
| 13 | 1.1.3 | **인터뷰 실시** |  | 16d | 2007-05-16 A | 2007-06-08 A | 100% | 2007-05-16 | 2007-06-08 | 16d |  |  | 76h | 76h | 9.5 | 9.5 | 9.5 | 현황 평가 | C02-1 1.2.1 | 인터뷰결과 |
| 14 | 1.1.3.1 | 현업 인터뷰 준비 |  | 1d | 2007-05-16 A | 2007-05-30 A | 100% | 2007-05-16 | 2007-05-30 | 1d | finish no earlier than 2007-05-30 | 현년수 [50%] | 4h | 4h | 0.5 | 0.5 | 0.5 | 현황 평가 | C02-1 1.2.1 |  |
| 15 | 1.1.3.2 | **현업인터뷰** |  | 13d | 2007-05-21 A | 2007-06-08 A | 100% | 2007-05-21 | 2007-06-08 | 13d |  |  | 72h | 72h | 9 | 9 | 9 | 현황 평가 | C02-1 1.2.1 |  |
| 16 | 1.1.3.2.1 | 상품개발 및 프로세스관련 인터뷰 |  | 2d | 2007-05-21 A | 2007-06-01 A | 100% | 2007-05-21 | 2007-06-01 | 2d | finish no earlier than 2007-06-01 | 현년수 [50%]; 이현승 [50%] | 16h | 16h | 2 | 2 | 2 | 현황 평가 | C02-1 1.2.1 |  |
| 17 | 1.1.3.2.2 | 경영관리 및 CRM I/F 관련 인터뷰 |  | 2d | 2007-06-04 A | 2007-06-05 A | 100% | 2007-06-04 | 2007-06-05 | 2d | finish no earlier than 2007-06-06 | 현년수 [50%]; 이현승 [50%] | 16h | 16h | 2 | 2 | 2 | 현황 평가 | C02-1 1.2.1 |  |
| 18 | 1.1.3.2.3 | 여신,수신,외환,대행,카드 인터페이스 관련 인터뷰 |  | 2d | 2007-06-07 A | 2007-06-08 A | 100% | 2007-06-07 | 2007-06-08 | 2d | finish no earlier than 2007-06-08 | 김건원 [50%]; 박정수 [50%]; 문성태 [50%]; 현년수 [50%]; 이현승 [50%] | 40h | 40h | 5 | 5 | 5 | 현황 평가 | C02-1 1.2.1 |  |
| 19 | 1.2 | **요구사항 정의** |  | 20d | 2007-05-18 A | 2007-06-18 A | 100% | 2007-05-18 | 2007-06-18 | 20d |  |  | 580h | 580h | 72.5 | 72.5 | 72.5 | 요구사항 정의 | C02-1 1.2.2 |  |
| 20 | 1.2.1 | **기능요구사항 정의** |  | 5d | 2007-05-18 A | 2007-05-25 A | 100% | 2007-05-18 | 2007-05-25 | 5d |  |  | 200h | 200h | 25 | 25 | 25 | 요구사항 정의 | C02-1 1.2.2 | 현업요구사항정의서 |
| 21 | 1.2.1.1 | 상품영역정의 |  | 2d | 2007-05-18 A | 2007-05-21 A | 100% | 2007-05-18 | 2007-05-21 | 2d | start no earlier than 2007-05-18 | 현년수 | 16h | 16h | 2 | 2 | 2 | 요구사항 정의 | C02-1 1.2.2 |  |
| 22 | 1.2.1.2 | 조건영역 Pool정의 |  | 2d | 2007-05-18 A | 2007-05-21 A | 100% | 2007-05-18 | 2007-05-21 | 2d | start no earlier than 2007-05-18 | 김건원 | 16h | 16h | 2 | 2 | 2 | 요구사항 정의 | C02-1 1.2.2 |  |
| 23 | 1.2.1.3 | 속성Pool영역 정의 |  | 2d | 2007-05-18 A | 2007-05-21 A | 100% | 2007-05-18 | 2007-05-21 | 2d | start no earlier than 2007-05-18 | 문성태 [50%] | 8h | 8h | 1 | 1 | 1 | 요구사항 정의 | C02-1 1.2.2 |  |
| 24 | 1.2.1.4 | 상품조건관계 정의 |  | 2d | 2007-05-18 A | 2007-05-21 A | 100% | 2007-05-18 | 2007-05-21 | 2d | start no earlier than 2007-05-18 | 이현승 | 16h | 16h | 2 | 2 | 2 | 요구사항 정의 | C02-1 1.2.2 |  |
| 25 | 1.2.1.5 | 상품개발 프로세스 기능 정의 |  | 3d | 2007-05-22 A | 2007-05-25 A | 100% | 2007-05-22 | 2007-05-25 | 3d | start no earlier than 2007-05-22 | 김건원 | 24h | 24h | 3 | 3 | 3 | 요구사항 정의 | C02-1 1.2.2 |  |
| 26 | 1.2.1.6 | 상품해석서비스 기능 정의 |  | 5d | 2007-05-18 A | 2007-05-25 A | 100% | 2007-05-18 | 2007-05-25 | 5d | start no earlier than 2007-05-18 | 박정수; 문성태 | 72h | 72h | 9 | 9 | 9 | 요구사항 정의 | C02-1 1.2.2 |  |
| 27 | 1.2.1.7 | 상품시뮬레이션 기능 및 관련 보고서 정의 |  | 3d | 2007-05-22 A | 2007-05-25 A | 100% | 2007-05-22 | 2007-05-25 | 3d | start no earlier than 2007-05-22 | 현년수 | 24h | 24h | 3 | 3 | 3 | 요구사항 정의 | C02-1 1.2.2 |  |
| 28 | 1.2.1.8 | 상품실적관리 기능 및 관련 보고서 정의 |  | 3d | 2007-05-22 A | 2007-05-25 A | 100% | 2007-05-22 | 2007-05-25 | 3d | start no earlier than 2007-05-22 | 이현승 | 24h | 24h | 3 | 3 | 3 | 요구사항 정의 | C02-1 1.2.2 |  |
| 29 | 1.2.2 | 기술요구사항 정의 | milestone | 0d | 2007-05-28 A | 2007-05-28 A | 100% | 2007-05-28 | 2007-05-28 | 0d | start no earlier than 2007-05-28 |  |  |  |  |  |  | 요구사항 정의 | C02-1 1.2.2 |  |

| ID | WBS | Task | Type | Duration | Start | Finish | Complete | Baseline start | Baseline finish | Baseline duration | Constraint | Resources | Work | Actual work | Cost | Baseline cost | Actual cost | Text20 | Text26 | Text30 |
| --- | --- | --- | --- | --- | --- | --- | --- | --- | --- | --- | --- | --- | --- | --- | --- | --- | --- | --- | --- | --- |
| 30 | 1.2.3 | **인터페이스요구사항 정의** |  | 15d | 2007-05-28 A | 2007-06-18 A | 100% | 2007-05-28 | 2007-06-18 | 15d |  |  | 308h | 308h | 38.5 | 38.5 | 38.5 | 요구사항 정의 | C02-1 1.2.2 | 현업요구사항정의서 |
| 31 | 1.2.3.1 | **상품해석서비스관련 인터페이스 정의** |  | 6d | 2007-05-28 A | 2007-06-04 A | 100% | 2007-05-28 | 2007-06-04 | 6d |  |  | 84h | 84h | 10.5 | 10.5 | 10.5 | 요구사항 정의 | C02-1 1.2.2 |  |
| 32 | 1.2.3.1.1 | 상품해석 서비스 인터페이스 요건 정의 |  | 3d | 2007-05-28 A | 2007-05-30 A | 100% | 2007-05-28 | 2007-05-30 | 3d | start no earlier than 2007-05-28 | 박정수 [50%] | 12h | 12h | 1.5 | 1.5 | 1.5 | 요구사항 정의 | C02-1 1.2.2 |  |
| 33 | 1.2.3.1.2 | 여신, 수신 상품해석 서비스 인터페이스 정의 |  | 3d | 2007-05-28 A | 2007-05-30 A | 100% | 2007-05-28 | 2007-05-30 | 3d | start no earlier than 2007-05-28 | 김건원; 박정수 [50%] | 36h | 36h | 4.5 | 4.5 | 4.5 | 요구사항 정의 | C02-1 1.2.2 |  |
| 34 | 1.2.3.1.3 | 외환, 대행 및 서비스상품해석 서비스 인터페이스 정의 |  | 6d | 2007-05-28 A | 2007-06-04 A | 100% | 2007-05-28 | 2007-06-04 | 6d | start no earlier than 2007-05-28 | 문성태 | 36h | 36h | 4.5 | 4.5 | 4.5 | 요구사항 정의 | C02-1 1.2.2 |  |
| 35 | 1.2.3.2 | **상품검증관련 서비스 인터페이스 정의** |  | 12d | 2007-05-31 A | 2007-06-18 A | 100% | 2007-05-31 | 2007-06-18 | 12d |  |  | 132h | 132h | 16.5 | 16.5 | 16.5 | 요구사항 정의 | C02-1 1.2.2 |  |
| 36 | 1.2.3.2.1 | 여신, 수신 상품검증 서비스 인터페이스 정의 |  | 6d | 2007-05-31 A | 2007-06-08 A | 100% | 2007-05-31 | 2007-06-08 | 6d | start no earlier than 2007-05-31 | 김건원; 박정수 | 80h | 80h | 10 | 10 | 10 | 요구사항 정의 | C02-1 1.2.2 |  |
| 37 | 1.2.3.2.2 | 외환, 대행 및 서비스 상품검증 서비스 인터페이스 정의 |  | 12d | 2007-05-31 A | 2007-06-18 A | 100% | 2007-05-31 | 2007-06-18 | 12d | start no earlier than 2007-05-31 | 문성태 | 52h | 52h | 6.5 | 6.5 | 6.5 | 요구사항 정의 | C02-1 1.2.2 |  |
| 38 | 1.2.3.3 | **상품시뮬레이션 인터페이스 정의** |  | 9d | 2007-05-28 A | 2007-06-08 A | 100% | 2007-05-28 | 2007-06-08 | 9d |  |  | 44h | 44h | 5.5 | 5.5 | 5.5 | 요구사항 정의 | C02-1 1.2.2 |  |
| 39 | 1.2.3.3.1 | 상품시뮬레이션 입력관련 인터페이스 파라메타 요구사항 정의 |  | 3d | 2007-05-28 A | 2007-05-30 A | 100% | 2007-05-28 | 2007-05-30 | 3d | start no earlier than 2007-05-28 | 현년수 | 20h | 20h | 2.5 | 2.5 | 2.5 | 요구사항 정의 | C02-1 1.2.2 |  |
| 40 | 1.2.3.3.2 | 상품시뮬레이션 출력 및 보고서 관련 인터페이스 정의 |  | 6d | 2007-05-31 A | 2007-06-08 A | 100% | 2007-05-31 | 2007-06-08 | 6d | start no earlier than 2007-05-31 | 현년수 [50%] | 24h | 24h | 3 | 3 | 3 | 요구사항 정의 | C02-1 1.2.2 |  |
| 41 | 1.2.3.4 | **상품실적관리 인터페이스 정의** |  | 9d | 2007-05-28 A | 2007-06-08 A | 100% | 2007-05-28 | 2007-06-08 | 9d |  |  | 48h | 48h | 6 | 6 | 6 | 요구사항 정의 | C02-1 1.2.2 |  |
| 42 | 1.2.3.4.1 | 상품실적관리 보고서 관련 인터페이스 요구사항 정의 |  | 3d | 2007-05-28 A | 2007-05-30 A | 100% | 2007-05-28 | 2007-05-30 | 3d | start no earlier than 2007-05-28 | 이현승 | 24h | 24h | 3 | 3 | 3 | 요구사항 정의 | C02-1 1.2.2 |  |
| 43 | 1.2.3.4.2 | 상품실적관리 보고서 관련 출력 인터페이스 항목 정의 |  | 6d | 2007-05-31 A | 2007-06-08 A | 100% | 2007-05-31 | 2007-06-08 | 6d | start no earlier than 2007-05-31 | 이현승 [50%] | 24h | 24h | 3 | 3 | 3 | 요구사항 정의 | C02-1 1.2.2 |  |
| 44 | 1.2.4 | 시스템기본요건요구사항 정의 | milestone | 0d | 2007-06-18 A | 2007-06-18 A | 100% | 2007-06-18 | 2007-06-18 | 0d | start no earlier than 2007-06-18 |  |  |  |  |  |  | 요구사항 정의 | C02-1 1.2.2 |  |
| 45 | 1.2.5 | **시스템화범위 결정** |  | 2d | 2007-06-11 A | 2007-06-12 A | 100% | 2007-06-11 | 2007-06-12 | 2d |  |  | 72h | 72h | 9 | 9 | 9 | 요구사항 정의 | C02-1 1.2.2 |  |
| 46 | 1.2.5.1 | 상품팩토리 대상 상품 및 서비스 범위 결정 |  | 2d | 2007-06-11 A | 2007-06-12 A | 100% | 2007-06-11 | 2007-06-12 | 2d | start no earlier than 2007-06-11 | 문성태 [50%] | 8h | 8h | 1 | 1 | 1 | 요구사항 정의 | C02-1 1.2.2 |  |
| 47 | 1.2.5.2 | 상품개발시스템 업무 대상 범위 결정 |  | 2d | 2007-06-11 A | 2007-06-12 A | 100% | 2007-06-11 | 2007-06-12 | 2d | start no earlier than 2007-06-11 | 김건원 | 16h | 16h | 2 | 2 | 2 | 요구사항 정의 | C02-1 1.2.2 |  |
| 48 | 1.2.5.3 | 상품시뮬레이션관리 업무 대상 범위 결정 |  | 2d | 2007-06-11 A | 2007-06-12 A | 100% | 2007-06-11 | 2007-06-12 | 2d | start no earlier than 2007-06-11 | 현년수 | 16h | 16h | 2 | 2 | 2 | 요구사항 정의 | C02-1 1.2.2 |  |
| 49 | 1.2.5.4 | 상품실적관리 업무 대상 범위 결정 |  | 2d | 2007-06-11 A | 2007-06-12 A | 100% | 2007-06-11 | 2007-06-12 | 2d | start no earlier than 2007-06-11 | 이현승 | 16h | 16h | 2 | 2 | 2 | 요구사항 정의 | C02-1 1.2.2 |  |
| 50 | 1.2.5.5 | 상품해석서비스 업무 대상 범위 결정 |  | 2d | 2007-06-11 A | 2007-06-12 A | 100% | 2007-06-11 | 2007-06-12 | 2d | start no earlier than 2007-06-11 | 박정수 | 16h | 16h | 2 | 2 | 2 | 요구사항 정의 | C02-1 1.2.2 |  |
| 51 | 1.3 | **신논리모델 구축** |  | 14d | 2007-06-13 A | 2007-07-02 A | 100% | 2007-06-13 | 2007-07-02 | 14d |  |  | 352h | 352h | 44 | 44 | 44 | 신논리모델 구축 | C02-1 1.2.3 |  |
| 52 | 1.3.1 | **프로세스 모델링** |  | 3d | 2007-06-13 A | 2007-06-15 A | 100% | 2007-06-13 | 2007-06-15 | 3d |  |  | 108h | 108h | 13.5 | 13.5 | 13.5 | 신논리모델 구축 | C02-1 1.2.3 | 프로세스정의서,인터페이스정의서,기능차트 |
| 53 | 1.3.1.1 | 상품개발 프로세스 모델링 |  | 3d | 2007-06-13 A | 2007-06-15 A | 100% | 2007-06-13 | 2007-06-15 | 3d | start no earlier than 2007-06-13 | 김건원; 현년수; 박정수 | 72h | 72h | 9 | 9 | 9 | 신논리모델 구축 | C02-1 1.2.3 |  |
| 54 | 1.3.1.2 | 해석서비스제공 프로세스 모델링 |  | 3d | 2007-06-13 A | 2007-06-15 A | 100% | 2007-06-13 | 2007-06-15 | 3d | start no earlier than 2007-06-13 | 문성태 [50%]; 이현승 | 36h | 36h | 4.5 | 4.5 | 4.5 | 신논리모델 구축 | C02-1 1.2.3 |  |

| ID | WBS | Task | Duration | Start | Finish | Complete | Baseline start | Baseline finish | Baseline duration | Constraint | Resources | Work | Actual work | Cost | Baseline cost | Actual cost | Text20 | Text26 | Text30 |
| --- | --- | --- | --- | --- | --- | --- | --- | --- | --- | --- | --- | --- | --- | --- | --- | --- | --- | --- | --- |
| 55 | 1.3.2 | **데이터 모델링** | 10d | 2007-06-18 A | 2007-06-29 A | 100% | 2007-06-18 | 2007-06-29 | 10d |  |  | 240h | 240h | 30 | 30 | 30 | 신논리모델 구축 | C02-1 1.2.3 | 엔티티정의서,엔티티목록,ERD(논리) |
| 56 | 1.3.2.1 | 상품영역정의 | 4d | 2007-06-18 A | 2007-06-21 A | 100% | 2007-06-18 | 2007-06-21 | 4d | start no earlier than 2007-06-18 | 현년수 | 24h | 24h | 3 | 3 | 3 | 신논리모델 구축 | C02-1 1.2.3 |  |
| 57 | 1.3.2.2 | 조건영역 Pool정의 | 4d | 2007-06-18 A | 2007-06-21 A | 100% | 2007-06-18 | 2007-06-21 | 4d | start no earlier than 2007-06-18 | 김건원 | 24h | 24h | 3 | 3 | 3 | 신논리모델 구축 | C02-1 1.2.3 |  |
| 58 | 1.3.2.3 | 속성Pool영역 정의 | 4d | 2007-06-18 A | 2007-06-21 A | 100% | 2007-06-18 | 2007-06-21 | 4d | start no earlier than 2007-06-18 | 문성태 | 20h | 20h | 2.5 | 2.5 | 2.5 | 신논리모델 구축 | C02-1 1.2.3 |  |
| 59 | 1.3.2.4 | 상품조건관계 정의 | 4d | 2007-06-18 A | 2007-06-21 A | 100% | 2007-06-18 | 2007-06-21 | 4d | start no earlier than 2007-06-18 | 이현승 | 24h | 24h | 3 | 3 | 3 | 신논리모델 구축 | C02-1 1.2.3 |  |
| 60 | 1.3.2.5 | 복합상품관계 정의 | 4d | 2007-06-18 A | 2007-06-21 A | 100% | 2007-06-18 | 2007-06-21 | 4d | start no earlier than 2007-06-18 | 박정수 | 24h | 24h | 3 | 3 | 3 | 신논리모델 구축 | C02-1 1.2.3 |  |
| 61 | 1.3.2.6 | 상품통합모델링 | 4d | 2007-06-25 A | 2007-06-28 A | 100% | 2007-06-25 | 2007-06-28 | 4d | start no earlier than 2007-06-25 | 김건원; 박정수; 문성태; 이현승 | 88h | 88h | 11 | 11 | 11 | 신논리모델 구축 | C02-1 1.2.3 |  |
| 62 | 1.3.2.7 | 상품초기데이터 이행 | 1d | 2007-06-29 A | 2007-06-29 A | 100% | 2007-06-29 | 2007-06-29 | 1d | start no earlier than 2007-06-29 | 현년수 [50%]; 김건원; 박정수; 문성태; 이현승 | 36h | 36h | 4.5 | 4.5 | 4.5 | 신논리모델 구축 | C02-1 1.2.3 |  |
| 63 | 1.3.3 | 인수테스트기준 정의 | 1d | 2007-07-02 A | 2007-07-02 A | 100% | 2007-07-02 | 2007-07-02 | 1d | start no earlier than 2007-07-02 | 현년수 [50%] | 4h | 4h | 0.5 | 0.5 | 0.5 | 신논리모델 구축 | C02-1 1.2.3 | 인수테스트기준서 |
| 64 | 1.4 | **분석단계관리활동** | 61d | 2007-05-03 A | 2007-07-31 A | 100% | 2007-05-03 | 2007-07-31 | 61d |  |  | 682h | 682h | 85.25 | 85.25 | 85.25 | 단계완료 | C02-1 1.6.8 |  |
| 65 | 1.4.1 | 오리엔테이션(1차) 실시 | 1d | 2007-05-03 A | 2007-05-03 A | 100% | 2007-05-03 | 2007-05-03 | 1d | start no earlier than 2007-05-03 | 현년수 [25%]; 김건원 [25%]; 박정수 [25%]; 문성태 [25%]; 이현승 [25%] | 10h | 10h | 1.25 | 1.25 | 1.25 | 단계완료 | C02-1 1.6.8 |  |
| 66 | 1.4.2 | 과업대비표매핑 | 1d | 2007-05-07 A | 2007-05-07 A | 100% | 2007-05-07 | 2007-05-07 | 1d | start no earlier than 2007-05-07 | 현년수 | 8h | 8h | 1 | 1 | 1 | 단계완료 | C02-1 1.6.8 |  |
| 67 | 1.4.3 | 상품팩토리 개발방향 설명회(1차) | 1d | 2007-05-15 A | 2007-05-15 A | 100% | 2007-05-15 | 2007-05-15 | 1d | start no earlier than 2007-05-08 | 현년수 | 8h | 8h | 1 | 1 | 1 | 단계완료 | C02-1 1.6.8 |  |
| 68 | 1.4.4 | 형상관리 Tool 교육 | 1d | 2007-05-17 A | 2007-05-17 A | 100% | 2007-05-17 | 2007-05-17 | 1d | start no earlier than 2007-05-17 | 김건원; 박정수; 문성태; 이현승; 현년수 | 40h | 40h | 5 | 5 | 5 | 단계완료 | C02-1 1.6.8 |  |
| 69 | 1.4.5 | Inspection(1차) 실시 및 조치 | 3d | 2007-07-04 A | 2007-07-06 A | 100% | 2007-07-04 | 2007-07-06 | 3d | start no earlier than 2007-07-04 | 현년수; 김건원; 박정수; 문성태; 이현승 | 80h | 80h | 10 | 10 | 10 | 단계완료 | C02-1 1.6.8 |  |
| 70 | 1.4.6 | 상품팩토리 개발방향 설명회(2차) | 3d | 2007-06-28 A | 2007-07-02 A | 100% | 2007-06-28 | 2007-07-02 | 3d | start no earlier than 2007-06-28 | 현년수 | 16h | 16h | 2 | 2 | 2 | 단계완료 | C02-1 1.6.8 |  |
| 71 | 1.4.7 | 요구사항추적표 매핑 | 1d | 2007-06-25 A | 2007-06-25 A | 100% | 2007-06-25 | 2007-06-25 | 1d | start no earlier than 2007-06-25 | 현년수; 김건원 [50%]; 박정수 [50%]; 문성태 [50%]; 이현승 [50%] | 24h | 24h | 3 | 3 | 3 | 단계완료 | C02-1 1.6.8 |  |
| 72 | 1.4.8 | 요구사항규모측정방법 교육 및 측정 | 1d | 2007-06-26 A | 2007-06-26 A | 100% | 2007-06-26 | 2007-06-26 | 1d | start no earlier than 2007-06-26 | 현년수; 김건원 [50%]; 박정수 [50%]; 문성태 [50%]; 이현승 [50%] | 24h | 24h | 3 | 3 | 3 | 단계완료 | C02-1 1.6.8 |  |
| 73 | 1.4.9 | 고객검토(1차) 실시 및 조치 | 11d | 2007-07-16 A | 2007-07-31 A | 100% | 2007-07-16 | 2007-07-31 | 11d | start no earlier than 2007-07-16 | 현년수 [110%]; 김건원 [109.1%]; 박정수 [109.1%]; 문성태 [109.1%]; 이현승 [109.1%] | 472h | 472h | 59 | 59 | 59 | 단계완료 | C02-1 1.6.8 |  |
| 74 | 2 | **설계** | 104d | 2007-07-09 A | 2007-12-07 A | 100% | 2007-07-09 | 2007-12-07 | 104d |  |  | 7352h | 7352h | 919 | 919 | 919 | 설계 | C02-1 1.3 |  |
| 75 | 2.1 | **기본설계** | 32d | 2007-08-01 A | 2007-09-14 A | 100% | 2007-08-01 | 2007-09-14 | 32d |  |  | 1808h | 1808h | 226 | 226 | 226 | 기본설계 | C02-1 1.3.1 |  |
| 76 | 2.1.1 | 시스템구조 설계 | 14d | 2007-08-01 A | 2007-08-21 A | 100% | 2007-08-01 | 2007-08-21 | 14d | finish no earlier than 2007-08-21 | 현년수; 김건원; 문성태; 박정수; 이현승; 차중기 | 672h | 672h | 84 | 84 | 84 | 기본설계 | C02-1 1.3.1 | 프로그램목록,어플리케이션구조도 |
| 77 | 2.1.2 | 데이터코드 설계 | 6d | 2007-08-20 A | 2007-08-27 A | 100% | 2007-08-20 | 2007-08-27 | 6d | finish no earlier than 2007-08-27 | 박정수; 차중기; 문성태; 현년수; 김건원; 이현승 | 280h | 280h | 35 | 35 | 35 | 기본설계 | C02-1 1.3.1 | 데이터코드정의서,데이터코드목록 |
| 78 | 2.1.3 | **화면 및 보고서 설계** | 18d | 2007-08-22 A | 2007-09-14 A | 100% | 2007-08-22 | 2007-09-14 | 18d |  | 문성태; 이현승; 현년수; 김건원; 박정수; 차중기 | 856h | 856h | 107 | 107 | 107 | 기본설계 | C02-1 1.3.1 | 화면목록,화면레이아웃,보고서목록,보고서레이아웃 |
| 79 | 2.1.3.1 | 상품개발관리 화면 및 보고서 설계 | 9d | 2007-08-22 A | 2007-09-03 A | 100% | 2007-08-22 | 2007-09-03 | 9d | start no earlier than 2007-08-22 |  |  |  |  |  |  | 기본설계 | C02-1 1.3.1 |  |
| 80 | 2.1.3.2 | 상품/수수료 정보 및 이율관련 정보관리 화면 설계 | 9d | 2007-09-04 A | 2007-09-14 A | 100% | 2007-09-04 | 2007-09-14 | 9d | finish no earlier than 2007-09-14 |  |  |  |  |  |  | 기본설계 | C02-1 1.3.1 |  |

Notes:
- 70: 각 업무별 상품협의회 활동으로 대체
- 79: 여신, 수신 수지분석(시뮬레이션)관련 산출물(클라이언트 프로그램사양서 2본)은 현업의 요건 미정의로 인하여 추후 업무협의 결과에 따라 진행하는 것으로 함

| ID | WBS | Task | Duration | Start | Finish | Complete | Baseline start | Baseline finish | Baseline duration | Constraint | Resources | Work | Actual work | Cost | Baseline cost | Actual cost | Text20 | Text26 | Text30 |
| --- | --- | --- | --- | --- | --- | --- | --- | --- | --- | --- | --- | --- | --- | --- | --- | --- | --- | --- | --- |
| 81 | 2.2 | **상세설계** | 51d | 2007-09-17 A | 2007-11-30 A | 100% | 2007-09-17 | 2007-11-30 | 51d |  |  | 5544h | 5544h | 693 | 693 | 693 | 상세설계 | C02-1 1.3.3 |  |
| 82 | 2.2.1 | 데이터베이스 상세설계 | 9d | 2007-09-17 A | 2007-10-02 A | 100% | 2007-09-17 | 2007-10-02 | 9d | finish no earlier than 2007-10-02 | 문성태; 현년수; 김건원; 박정수; 이현승; 차중기 | 432h | 432h | 54 | 54 | 54 | 상세설계 | C02-1 1.3.3 | 테이블정의서,테이블목록,ERD(물리),프로그램대테이블상관도 |
| 83 | 2.2.2 | **공통프로그램 설계** | 38d | 2007-10-10 A | 2007-11-30 A | 100% | 2007-10-10 | 2007-11-30 | 38d |  | 문성태; 현년수; 김건원; 박정수; 이현승; 차중기 | 1344h | 1344h | 168 | 168 | 168 | 상세설계 | C02-1 1.3.3 | 프로그램사양서(공통) |
| 84 | 2.2.2.1 | 상품 해석서비스 프로그램 설계 | 21d | 2007-10-24 A | 2007-11-21 A | 100% | 2007-10-24 | 2007-11-21 | 21d | start no earlier than 2007-10-24 |  |  |  |  |  |  | 상세설계 | C02-1 1.3.3 |  |
| 85 | 2.2.2.2 | 수수료 해석서비스 및 수수료 거래내역관리 프로그램 설계 | 21d | 2007-10-24 A | 2007-11-21 A | 100% | 2007-10-24 | 2007-11-21 | 21d | start no earlier than 2007-10-24 |  |  |  |  |  |  | 상세설계 | C02-1 1.3.3 |  |
| 86 | 2.2.2.3 | ProFactory 상품비즈니스 Rule 설계 | 25d | 2007-10-29 A | 2007-11-30 A | 100% | 2007-10-29 | 2007-11-30 | 25d | start no earlier than 2007-10-29 |  |  |  |  |  |  | 상세설계 | C02-1 1.3.3 | Rule 설계서 |
| 87 | 2.2.2.4 | ProFactory 상품속성 및 상품구조 설계 | 22d | 2007-10-22 A | 2007-11-20 A | 100% | 2007-10-22 | 2007-11-20 | 22d | start no earlier than 2007-10-22 |  |  |  |  |  |  | 상세설계 | C02-1 1.3.3 |  |
| 88 | 2.2.2.5 | **ProFactory API 설계** | 35d | 2007-10-10 A | 2007-11-27 A | 100% | 2007-10-10 | 2007-11-27 | 35d |  |  |  |  |  |  |  | 상세설계 | C02-1 1.3.3 | API 목록, API 사양서 |
| 89 | 2.2.2.5.1 | 인터페이스 서비스 지원 API 설계 | 18d | 2007-10-10 A | 2007-11-02 A | 100% | 2007-10-10 | 2007-11-02 | 18d | start no earlier than 2007-10-10 |  |  |  |  |  |  | 상세설계 | C02-1 1.3.3 |  |
| 90 | 2.2.2.5.2 | 상품개발관리 화면 UI 지원 API 설계 | 19d | 2007-11-01 A | 2007-11-27 A | 100% | 2007-11-01 | 2007-11-27 | 19d | start no earlier than 2007-11-01 |  |  |  |  |  |  | 상세설계 | C02-1 1.3.3 |  |
| 91 | 2.2.3 | 온라인도움말 설계 | 10d | 2007-10-17 A | 2007-10-30 A | 100% | 2007-10-17 | 2007-10-30 | 10d | start no earlier than 2007-10-17 | 문성태; 현년수; 김건원; 박정수; 이현승; 차중기 | 408h | 408h | 51 | 51 | 51 | 상세설계 | C02-1 1.3.3 |  |
| 92 | 2.2.4 | **서버프로그램 설계** | 35d | 2007-09-27 A | 2007-11-15 A | 100% | 2007-09-27 | 2007-11-15 | 35d |  | 문성태; 현년수; 김건원; 박정수; 이현승; 차중기 | 1680h | 1680h | 210 | 210 | 210 | 상세설계 | C02-1 1.3.3 | 프로그램사양서(서버) |
| 93 | 2.2.4.1 | 상품개발관리관련 서버 프로그램 설계 | 35d | 2007-09-27 A | 2007-11-15 A | 100% | 2007-09-27 | 2007-11-15 | 35d | finish no earlier than 2007-11-15 |  |  |  |  |  |  | 상세설계 | C02-1 1.3.3 |  |
| 94 | 2.2.4.2 | 수수료 및 서비스 상품개발관리관련 서버 프로그램 설계 | 16d | 2007-10-10 A | 2007-10-31 A | 100% | 2007-10-10 | 2007-10-31 | 16d | start no earlier than 2007-10-10 |  |  |  |  |  |  | 상세설계 | C02-1 1.3.3 |  |
| 95 | 2.2.5 | **클라이언트프로그램 설계** | 35d | 2007-09-27 A | 2007-11-15 A | 100% | 2007-09-27 | 2007-11-15 | 35d |  | 문성태; 현년수; 김건원; 박정수; 이현승; 차중기 | 1680h | 1680h | 210 | 210 | 210 | 상세설계 | C02-1 1.3.3 | 프로그램사양서(클라이언트) |
| 96 | 2.2.5.1 | 상품개발관리관련 클라이언트 프로그램 설계 | 35d | 2007-09-27 A | 2007-11-15 A | 100% | 2007-09-27 | 2007-11-15 | 35d | finish no earlier than 2007-11-15 |  |  |  |  |  |  | 상세설계 | C02-1 1.3.3 |  |
| 97 | 2.2.5.2 | 수수료 및 서비스 상품개발관리관련 클라이언트 프로그갬 설계 | 13d | 2007-10-15 A | 2007-10-31 A | 100% | 2007-10-15 | 2007-10-31 | 13d | start no earlier than 2007-10-15 |  |  |  |  |  |  | 상세설계 | C02-1 1.3.3 |  |
| 98 | 2.2.6 | **컨버전설계** | 27d | 2007-10-25 A | 2007-11-30 A | 100% | 2007-10-25 | 2007-11-30 | 27d |  |  |  |  |  |  |  | 상세설계 | C02-1 1.3.3 |  |
| 99 | 2.2.6.1 | 컨버전계획서 및 검증요건서 작성 | 17d | 2007-10-25 A | 2007-11-16 A | 100% | 2007-10-25 | 2007-11-16 | 17d | finish no earlier than 2007-11-16 |  |  |  |  |  |  | 상세설계 | C02-1 1.3.3 | 컨버전계획서, 매핑정의서, 검증요건정의서 |
| 100 | 2.2.6.2 | 상품정의서 ProFactory Import Export Form 작성 | 15d | 2007-11-12 A | 2007-11-30 A | 100% | 2007-11-12 | 2007-11-30 | 15d | finish no earlier than 2007-11-30 |  |  |  |  |  |  | 상세설계 | C02-1 1.3.3 | 상품속성그룹정의서, 상품속성정의서, 상품구조정의서 |
| 101 | 2.3 | **설계단계관리활동** | 104d | 2007-07-09 A | 2007-12-07 A | 100% | 2007-07-09 | 2007-12-07 | 104d |  |  |  |  |  |  |  | 단계완료 | C02-1 1.6.8 |  |
| 102 | 2.3.1 | 상품협의회 활동 | 28d | 2007-07-24 A | 2007-08-31 A | 100% | 2007-07-24 | 2007-08-31 | 28d | start no earlier than 2007-07-24 |  |  |  |  |  |  | 단계완료 | C02-1 1.6.8 |  |
| 103 | 2.3.2 | 상품정의서 2차 배포 | 5d | 2007-09-03 A | 2007-09-07 A | 100% | 2007-09-03 | 2007-09-07 | 5d | finish no earlier than 2007-09-07 |  |  |  |  |  |  | 단계완료 | C02-1 1.6.8 |  |
| 104 | 2.3.3 | 상품정의서 배포자료 취합 및 확인 | 37d | 2007-10-18 A | 2007-12-07 A | 100% | 2007-10-18 | 2007-12-07 | 37d | finish no earlier than 2007-12-07 |  |  |  |  |  |  | 단계완료 | C02-1 1.6.8 |  |
| 105 | 2.3.4 | 설계 SPM 검토 및 수정 | 5d | 2007-07-09 A | 2007-07-13 A | 100% | 2007-07-09 | 2007-07-13 | 5d | finish no earlier than 2007-07-13 |  |  |  |  |  |  | 단계완료 | C02-1 1.6.8 |  |
| 106 | 2.3.5 | 분석 감리 조치 | 5d | 2007-07-23 A | 2007-07-27 A | 100% | 2007-07-23 | 2007-07-27 | 5d | finish no earlier than 2007-07-27 |  |  |  |  |  |  | 단계완료 | C02-1 1.6.8 |  |
| 107 | 2.3.6 | 오리엔테이션(2차) 실시 | 5d | 2007-07-23 A | 2007-07-27 A | 100% | 2007-07-23 | 2007-07-27 | 5d | finish no earlier than 2007-07-27 |  |  |  |  |  |  | 단계완료 | C02-1 1.6.8 |  |
| 108 | 2.3.7 | QAO심사(2차) 실시 및 조치 | 51d | 2007-09-03 A | 2007-11-16 A | 100% | 2007-09-03 | 2007-11-16 | 51d | finish no earlier than 2007-11-16 |  |  |  |  |  |  | 단계완료 | C02-1 1.6.8 |  |
| 109 | 2.3.8 | Inspection(2차) 실시 및 조치 | 10d | 2007-11-19 A | 2007-11-30 A | 100% | 2007-11-19 | 2007-11-30 | 10d | finish no earlier than 2007-11-30 |  |  |  |  |  |  | 단계완료 | C02-1 1.6.8 |  |
| 110 | 2.3.9 | 설계 요구사항추적표 매핑 | 5d | 2007-11-26 A | 2007-11-30 A | 100% | 2007-11-26 | 2007-11-30 | 5d | finish no earlier than 2007-11-30 |  |  |  |  |  |  | 단계완료 | C02-1 1.6.8 |  |
| 111 | 2.3.10 | 고객검토(2차) 실시 및 조치 | 5d | 2007-12-03 A | 2007-12-07 A | 100% | 2007-12-03 | 2007-12-07 | 5d | finish no earlier than 2007-12-07 |  |  |  |  |  |  | 단계완료 | C02-1 1.6.8 |  |

Notes:
- 93: 여신, 수신 수지분석(시뮬레이션)관련 산출물(서버 프로그램사양서 2본)은 현업의 요건 미정의로 인하여 추후 업무협의 결과에 따라 진행하는 것으로 함
- 96: 여신, 수신 수지분석(시뮬레이션)관련 산출물(클라이언트 프로그램사양서 2본)은 현업의 요건 미정의로 인하여 추후 업무협의 결과에 따라 진행하는 것으로 함

| ID | WBS | Task | Duration | Start | Finish | Complete | Baseline start | Baseline finish | Baseline duration | Constraint | Resources | Work | Actual work | Cost | Baseline cost | Actual cost | Text20 | Text26 | Text30 |
| --- | --- | --- | --- | --- | --- | --- | --- | --- | --- | --- | --- | --- | --- | --- | --- | --- | --- | --- | --- |
| 112 | 3 | **개발** | 144d | 2007-11-01 A | 2008-05-30 A | 100% | 2007-11-01 | 2008-05-30 | 144d |  |  | 7520h | 7520h | 940 | 940 | 940 | 개발 | C02-1 1.4 |  |
| 113 | 3.1 | **코딩 및 단위테스트 실시** | 144d | 2007-11-01 A | 2008-05-30 A | 100% | 2007-11-01 | 2008-05-30 | 144d |  |  | 7520h | 7520h | 940 | 940 | 940 | 코딩 및 단위테스트 실시 | C02-1 1.4.1 |  |
| 114 | 3.1.1 | 단위테스트체크리스트작성 | 13d | 2007-12-18 A | 2008-01-07 A | 100% | 2007-12-18 | 2008-01-07 | 13d | start no earlier than 2007-12-18 | 문성태; 현년수; 김건원; 박정수; 이현승; 개발자; 차중기 | 672h | 672h | 84 | 84 | 84 | 코딩 및 단위테스트 실시 | C02-1 1.4.1 | 단위테스트체크리스트 |
| 115 | 3.1.2 | **프로그램모델 및 공통프로그램 개발** | 82d | 2007-11-01 A | 2008-02-29 A | 100% | 2007-11-01 | 2008-02-29 | 82d |  | 문성태 [50%]; 현년수 [50%]; 김건원 [50%]; 박정수 [50%]; 이현승 [50%]; 개발자 [50%]; 차중기 [50%] | 2296h | 2296h | 287 | 287 | 287 | 코딩 및 단위테스트 실시 | C02-1 1.4.1 | 소스코드(공통) |
| 116 | 3.1.2.1 | **상품 해석서비스 프로그램 개발** | 62d | 2007-11-19 A | 2008-02-19 A | 100% | 2007-11-19 | 2008-02-19 | 62d |  |  |  |  |  |  |  | 코딩 및 단위테스트 실시 | C02-1 1.4.1 |  |
| 117 | 3.1.2.1.1 | 여신상품해석서비스 프로그램 개발 | 62d | 2007-11-19 A | 2008-02-19 A | 100% | 2007-11-19 | 2008-02-19 | 62d | start no earlier than 2007-11-19 |  |  |  |  |  |  | 코딩 및 단위테스트 실시 | C02-1 1.4.1 |  |
| 118 | 3.1.2.1.2 | 수신상품해석서비스 프로그램 개발 | 62d | 2007-11-19 A | 2008-02-19 A | 100% | 2007-11-19 | 2008-02-19 | 62d | start no earlier than 2007-11-19 |  |  |  |  |  |  | 코딩 및 단위테스트 실시 | C02-1 1.4.1 |  |
| 119 | 3.1.2.1.3 | 외환상품해석서비스 프로그램 개발 | 62d | 2007-11-19 A | 2008-02-19 A | 100% | 2007-11-19 | 2008-02-19 | 62d | start no earlier than 2007-11-19 |  |  |  |  |  |  | 코딩 및 단위테스트 실시 | C02-1 1.4.1 |  |
| 120 | 3.1.2.1.4 | 수수료 및 기타서비스상품해석 프로그램 개발 | 62d | 2007-11-19 A | 2008-02-19 A | 100% | 2007-11-19 | 2008-02-19 | 62d | start no earlier than 2007-11-19 |  |  |  |  |  |  | 코딩 및 단위테스트 실시 | C02-1 1.4.1 |  |
| 121 | 3.1.2.2 | **ProFactory 커스터마이징** | 82d | 2007-11-01 A | 2008-02-29 A | 100% | 2007-11-01 | 2008-02-29 | 82d |  |  |  |  |  |  |  | 코딩 및 단위테스트 실시 | C02-1 1.4.1 | 소스코드, 상품 Repository |
| 122 | 3.1.2.2.1 | 상품속성 및 상품구조 ProFactory 반영 | 41d | 2007-11-01 A | 2007-12-28 A | 100% | 2007-11-01 | 2007-12-28 | 41d | start no earlier than 2007-11-01 |  |  |  |  |  |  | 코딩 및 단위테스트 실시 | C02-1 1.4.1 |  |
| 123 | 3.1.2.2.2 | 상품비즈니스 Rule 개발 | 69d | 2007-11-19 A | 2008-02-28 A | 100% | 2007-11-19 | 2008-02-28 | 69d | start no earlier than 2007-11-19 |  |  |  |  |  |  | 코딩 및 단위테스트 실시 | C02-1 1.4.1 |  |
| 124 | 3.1.2.2.3 | **ProFactory API 개발** | 82d | 2007-11-01 A | 2008-02-29 A | 100% | 2007-11-01 | 2008-02-29 | 82d |  |  |  |  |  |  |  | 코딩 및 단위테스트 실시 | C02-1 1.4.1 |  |
| 125 | 3.1.2.2.3.1 | 인터페이스 서비스 지원 API 개발 | 41d | 2007-11-01 A | 2007-12-28 A | 100% | 2007-11-01 | 2007-12-28 | 41d | start no earlier than 2007-11-01 |  |  |  |  |  |  | 코딩 및 단위테스트 실시 | C02-1 1.4.1 |  |
| 126 | 3.1.2.2.3.2 | 상품개발관리 화면 UI 지원 API 개발 | 60d | 2007-12-03 A | 2008-02-29 A | 100% | 2007-12-03 | 2008-02-29 | 60d | start no earlier than 2007-12-03 |  |  |  |  |  |  | 코딩 및 단위테스트 실시 | C02-1 1.4.1 |  |
| 127 | 3.1.3 | **프로그램 코딩** | 84d | 2008-01-01 A | 2008-05-02 A | 100% | 2008-01-01 | 2008-05-02 | 84d |  | 문성태; 현년수; 김건원; 박정수; 이현승; 개발자 [50%]; 차중기 [50%] | 2256h | 2256h | 282 | 282 | 282 | 코딩 및 단위테스트 실시 | C02-1 1.4.1 | 소스코드 |
| 128 | 3.1.3.1 | 상품개발관리관련 프로그램 개발 | 47d | 2008-01-01 A | 2008-03-11 A | 100% | 2008-01-01 | 2008-03-11 | 47d | start no earlier than 2008-02-27 |  |  |  |  |  |  | 코딩 및 단위테스트 실시 | C02-1 1.4.1 |  |
| 129 | 3.1.3.2 | 수수료 및 서비스 상품개발관리관련 프로그갬 개발 | 47d | 2008-02-27 A | 2008-05-02 A | 100% | 2008-02-27 | 2008-05-02 | 47d | start no earlier than 2008-02-27 |  |  |  |  |  |  | 코딩 및 단위테스트 실시 | C02-1 1.4.1 |  |
| 130 | 3.1.4 | 단위테스트 실시 | 27d | 2008-04-01 A | 2008-05-12 A | 100% | 2008-04-01 | 2008-05-12 | 27d | finish no earlier than 2008-05-12 | 문성태; 현년수; 김건원; 박정수; 이현승; 개발자; 차중기 | 1512h | 1512h | 189 | 189 | 189 | 코딩 및 단위테스트 실시 | C02-1 1.4.1 | 단위테스트결과서 |
| 131 | 3.1.5 | 개발산출물 검토 | 14d | 2008-05-13 A | 2008-05-30 A | 100% | 2008-05-13 | 2008-05-30 | 14d | finish no earlier than 2008-05-30 | 문성태; 현년수; 김건원; 박정수; 이현승; 개발자; 차중기 | 784h | 784h | 98 | 98 | 98 | 코딩 및 단위테스트 실시 | C02-1 1.4.1 |  |
| 132 | 3.2 | **개발단계관리활동** | 121d | 2007-12-03 A | 2008-05-29 A | 100% | 2007-12-03 | 2008-05-29 | 121d |  |  |  |  |  |  |  | 단계완료 | C02-1 1.6.8 |  |
| 133 | 3.2.1 | 개발 SPM 검토 및 수정 | 5d | 2007-12-10 A | 2007-12-14 A | 100% | 2007-12-10 | 2007-12-14 | 5d | finish no earlier than 2007-12-14 |  |  |  |  |  |  | 단계완료 | C02-1 1.6.8 |  |
| 134 | 3.2.2 | 설계 감리 조치 | 5d | 2007-12-03 A | 2007-12-07 A | 100% | 2007-12-03 | 2007-12-07 | 5d | finish no earlier than 2007-12-07 |  |  |  |  |  |  | 단계완료 | C02-1 1.6.8 |  |
| 135 | 3.2.3 | 오리엔테이션(3차) 실시 | 5d | 2007-12-17 A | 2007-12-21 A | 100% | 2007-12-17 | 2007-12-21 | 5d | finish no earlier than 2007-12-21 |  |  |  |  |  |  | 단계완료 | C02-1 1.6.8 |  |
| 136 | 3.2.4 | QAO심사(3차) 조치 | 70d | 2008-02-01 A | 2008-05-16 A | 100% | 2008-02-01 | 2008-05-16 | 70d | finish no earlier than 2008-05-16 |  |  |  |  |  |  | 단계완료 | C02-1 1.6.8 |  |
| 137 | 3.2.5 | Inspection(3차) 실시 및 조치 | 63d | 2008-02-22 A | 2008-05-23 A | 100% | 2008-02-22 | 2008-05-23 | 63d | finish no earlier than 2008-05-23 |  |  |  |  |  |  | 단계완료 | C02-1 1.6.8 |  |
| 138 | 3.2.6 | 개발요구사항추적표 매핑 | 4d | 2008-05-26 A | 2008-05-29 A | 100% | 2008-05-26 | 2008-05-29 | 4d | start no earlier than 2008-05-26 |  |  |  |  |  |  | 단계완료 | C02-1 1.6.8 |  |
| 139 | 3.2.7 | 상품자료 현업 검증 실시 및 조치(1차) | 24d | 2008-03-03 A | 2008-04-03 A | 100% | 2008-03-03 | 2008-04-03 | 24d | finish no earlier than 2008-04-03 |  |  |  |  |  |  | 단계완료 | C02-1 1.6.8 |  |
| 140 | 3.2.8 | 상품자료 현업 검증 실시 및 조치(2차) | 10d | 2008-05-02 A | 2008-05-19 A | 100% | 2008-05-02 | 2008-05-19 | 10d | start no earlier than 2008-05-02 |  |  |  |  |  |  | 단계완료 | C02-1 1.6.8 |  |

| ID | WBS | Task | Duration | Start | Finish | Complete | Remaining | Baseline start | Baseline finish | Baseline duration | Total slack | Constraint | Resources | Work | Actual work | Cost | Baseline cost | Actual cost | Text20 | Text26 | Text30 |
| --- | --- | --- | --- | --- | --- | --- | --- | --- | --- | --- | --- | --- | --- | --- | --- | --- | --- | --- | --- | --- | --- |
| 141 | 4 | **통합테스트** | 97d | 2008-05-06 A | 2008-09-19 | 86% | 13.86d | 2008-05-06 | 2008-09-19 | 97d | 137d |  |  | 1280h | 1280h | 160 | 160 | 160 | 개발 | C02-1 1.4 |  |
| 142 | 4.1 | **통합테스트** | 56d | 2008-05-06 A | 2008-07-26 A | 100% |  | 2008-05-06 | 2008-07-26 | 56d |  |  |  | 1280h | 1280h | 160 | 160 | 160 | 테스트 실시 | C02-1 1.4.2 |  |
| 143 | 4.1.1 | 통합테스트계획 수립 | 8d | 2008-05-06 A | 2008-05-16 A | 100% |  | 2008-05-06 | 2008-05-16 | 8d |  | finish no earlier than 2008-05-16 | 문성태; 현년수; 김건원; 박정수; 이현승; 개발자; 차중기 | 448h | 448h | 56 | 56 | 56 | 테스트 실시 | C02-1 1.4.2 | 통합테스트계획서 |
| 144 | 4.1.2 | 통합테스트 시나리오 작성 | 10d | 2008-05-19 A | 2008-05-30 A | 100% |  | 2008-05-19 | 2008-05-30 | 10d |  | finish no earlier than 2008-05-30 | 문성태; 현년수; 김건원; 박정수; 이현승; 개발자; 차중기 | 560h | 560h | 70 | 70 | 70 | 테스트 실시 | C02-1 1.4.2 | 통합테스트시나리오 |
| 145 | 4.1.3 | 1차 통합테스트 실시 | 5d | 2008-06-09 A | 2008-06-13 A | 100% |  | 2008-06-09 | 2008-06-13 | 5d |  | finish no earlier than 2008-06-14 |  |  |  |  |  |  | 테스트 실시 | C02-1 1.4.2 | 통합테스트시나리오(결과) |
| 146 | 4.1.4 | 2차 통합테스트 실시 | 5d | 2008-06-23 A | 2008-06-27 A | 100% |  | 2008-06-23 | 2008-06-28 | 5d |  | finish no earlier than 2008-06-28 |  |  |  |  |  |  | 테스트 실시 | C02-1 1.4.2 | 통합테스트시나리오(결과) |
| 147 | 4.1.5 | 3차 통합테스트 실시 | 5d | 2008-07-07 A | 2008-07-12 A | 100% |  | 2008-07-07 | 2008-07-12 | 5d |  | finish no earlier than 2008-07-12 |  |  |  |  |  |  | 테스트 실시 | C02-1 1.4.2 | 통합테스트시나리오(결과) |
| 148 | 4.1.6 | 4차 통합테스트 실시 | 5d | 2008-07-21 A | 2008-07-26 A | 100% |  | 2008-07-21 | 2008-07-26 | 5d |  | finish no earlier than 2008-07-26 | 문성태; 현년수; 김건원; 박정수; 이현승; 개발자; 차중기 | 272h | 272h | 34 | 34 | 34 | 테스트 실시 | C02-1 1.4.2 | 통합테스트시나리오(결과) |
| 149 | 4.2 | **통합테스트단계관리활동** | 89d | 2008-05-19 A | 2008-09-19 | 74% | 23.22d | 2008-05-19 | 2008-09-19 | 89d | 137d |  |  |  |  |  |  |  | 품질활동수행 | C02-1 1.6.2 |  |
| 150 | 4.2.1 | 통합테스트 SPM 검토 및 수정 | 5d | 2008-05-19 A | 2008-05-23 A | 100% |  | 2008-05-19 | 2008-05-23 | 5d |  | start no earlier than 2008-05-19 |  |  |  |  |  |  | 품질활동수행 | C02-1 1.6.2 |  |
| 151 | 4.2.2 | 오리엔테이션(4차) 실시 | 5d | 2008-05-26 A | 2008-05-30 A | 100% |  | 2008-05-26 | 2008-05-30 | 5d |  | start no earlier than 2008-05-26 |  |  |  |  |  |  | 품질활동수행 | C02-1 1.6.2 |  |
| 152 | 4.2.3 | QAO심사(4차) 조치 | 10d | 2008-06-16 A | 2008-06-27 A | 100% |  | 2008-06-16 | 2008-06-27 | 10d |  | finish no earlier than 2008-06-27 |  |  |  |  |  |  | 품질활동수행 | C02-1 1.6.2 |  |
| 153 | 4.2.4 | Inspection(4차) 조치 | 14d | 2008-07-07 A | 2008-07-25 A | 100% |  | 2008-07-07 | 2008-07-25 | 14d |  | finish no earlier than 2008-07-25 |  |  |  |  |  |  | 품질활동수행 | C02-1 1.6.2 |  |
| 154 | 4.2.5 | 통합테스트 요구사항추적표 매핑 | 9d | 2008-09-08 | 2008-09-19 |  |  | 2008-09-08 | 2008-09-19 | 9d | 137d | finish no earlier than 2008-09-19 |  |  |  |  |  |  | 품질활동수행 | C02-1 1.6.2 |  |
| 155 | 4.2.6 | 실적규모측정방법 교육 및 측정 | 3d | 2008-07-30 | 2008-08-01 |  |  | 2008-07-30 | 2008-08-01 | 3d | 173d | finish no earlier than 2008-08-01 |  |  |  |  |  |  | 품질활동수행 | C02-1 1.6.2 |  |
| 156 | 5 | **영업점테스트** | 185d? | 2008-07-07 A | 2009-03-13 | 61% | 71.23d? | 2008-07-07 | 2009-03-13 | 185d? | 7d |  |  | 6216h | 4681.2h | 777 | 777 | 585.15 | 개발 | C02-1 1.4 |  |
| 157 | 5.1 | **시스템사용자교육** | 126d | 2008-07-07 A | 2008-12-19 | 70% | 38.4d | 2008-07-07 | 2008-12-19 | 126d | 66d |  |  | 4864h | 3888h | 608 | 608 | 486 | 시스템 사용교육 | C02-1 1.5.3 |  |
| 158 | 5.1.1 | 교육계획 수립 | 5d | 2008-07-07 A | 2008-07-11 A | 100% |  | 2008-07-07 | 2008-07-11 | 5d |  | finish no earlier than 2008-07-11 | 문성태; 현년수; 김건원; 박정수; 이현승; 개발자; 차중기 | 236h | 236h | 29.5 | 29.5 | 29.5 | 시스템 사용교육 | C02-1 1.5.3 | 교육계획서 |
| 159 | 5.1.2 | 사용자메뉴얼 작성 | 20d | 2008-07-28 A | 2008-08-22 A | 100% |  | 2008-07-28 | 2008-08-22 | 20d |  | start no earlier than 2008-07-28 | 문성태; 현년수; 김건원; 박정수; 이현승; 개발자; 차중기 | 964h | 964h | 120.5 | 120.5 | 120.5 | 시스템 사용교육 | C02-1 1.5.3 | 사용자매뉴얼 |
| 160 | 5.1.3 | 운영 매뉴얼 작성 | 16d | 2008-11-10 | 2008-11-28 |  |  | 2008-11-10 | 2008-11-28 | 16d | 83d | finish no earlier than 2008-11-28 | 문성태; 현년수; 김건원; 박정수; 이현승; 개발자 | 768h |  | 96 | 96 |  | 시스템 사용교육 | C02-1 1.5.3 | 운영매뉴얼 |
| 161 | 5.1.4 | **사용자교육 실시** | 56d | 2008-07-14 A | 2008-09-25 A | 100% |  | 2008-07-14 | 2008-09-25 | 56d |  |  | 문성태; 현년수; 김건원; 박정수; 이현승; 개발자 | 2688h | 2688h | 336 | 336 | 336 | 시스템 사용교육 | C02-1 1.5.3 | 교육결과서 |
| 162 | 5.1.4.1 | 동영상교재작성 | 4d | 2008-07-14 A | 2008-07-18 A | 100% |  | 2008-07-14 | 2008-07-18 | 4d |  | start no earlier than 2008-07-14 |  |  |  |  |  |  | 시스템 사용교육 | C02-1 1.5.3 |  |
| 163 | 5.1.4.2 | 집합교육교재작성 | 5d | 2008-07-21 A | 2008-07-25 A | 100% |  | 2008-07-21 | 2008-07-25 | 5d |  | finish no earlier than 2008-07-25 |  |  |  |  |  |  | 시스템 사용교육 | C02-1 1.5.3 |  |
| 164 | 5.1.4.3 | 시범점사용자교육 | 7d | 2008-08-05 A | 2008-08-12 A | 100% |  | 2008-08-05 | 2008-08-12 | 7d |  | finish no earlier than 2008-08-12 |  |  |  |  |  |  | 시스템 사용교육 | C02-1 1.5.3 |  |
| 165 | 5.1.4.4 | 영업점사용자교육 | 32d | 2008-08-18 A | 2008-09-25 A | 100% |  | 2008-08-18 | 2008-09-25 | 32d |  | finish no earlier than 2008-09-25 |  |  |  |  |  |  | 시스템 사용교육 | C02-1 1.5.3 |  |
| 166 | 5.1.5 | 운영자 교육 실시 | 16d | 2008-12-01 | 2008-12-19 |  |  | 2008-12-01 | 2008-12-19 | 16d | 66d | finish no earlier than 2008-12-19 | 문성태; 현년수; 김건원; 박정수; 이현승; 개발자 | 208h |  | 26 | 26 |  | 시스템 사용교육 | C02-1 1.5.3 | 교육결과서 |

| ID | WBS | Task | Duration | Start | Finish | Predecessors | Complete | Remaining | Baseline start | Baseline finish | Baseline duration | Total slack | Constraint | Resources | Work | Actual work | Cost | Baseline cost | Actual cost | Text20 | Text26 | Text30 |
| --- | --- | --- | --- | --- | --- | --- | --- | --- | --- | --- | --- | --- | --- | --- | --- | --- | --- | --- | --- | --- | --- | --- |
| 167 | 5.2 | **영업점테스트** | 118d | 2008-07-21 A | 2008-12-20 |  | 88% | 13.88d | 2008-07-21 | 2008-12-20 | 118d | 65d |  |  | 736h | 736h | 92 | 92 | 92 | 테스트 실시 | C02-1 1.4.2 |  |
| 168 | 5.2.1 | 영업점 테스트계획 수립 | 9d | 2008-07-21 A | 2008-07-31 A |  | 100% |  | 2008-07-21 | 2008-07-31 | 9d |  | finish no earlier than 2008-07-31 | 문성태; 현년수; 김건원; 박정수; 이현승; 개발자 | 432h | 432h | 54 | 54 | 54 | 테스트 실시 | C02-1 1.4.2 | 영업점테스트계획서 |
| 169 | 5.2.2 | 영업점테스트 시나리오 작성 | 9d | 2008-07-21 A | 2008-07-31 A |  | 100% |  | 2008-07-21 | 2008-07-31 | 9d |  | finish no earlier than 2008-07-31 | 문성태; 현년수; 김건원; 박정수; 이현승; 개발자 | 304h | 304h | 38 | 38 | 38 | 테스트 실시 | C02-1 1.4.2 | 영업점테스트시나리오 |
| 170 | 5.2.3 | 1차 시범점테스트 실시 및 보완 | 16d | 2008-08-10 A | 2008-08-30 A |  | 100% |  | 2008-08-10 | 2008-08-30 | 16d |  | finish no earlier than 2008-08-30 |  |  |  |  |  |  | 테스트 실시 | C02-1 1.4.2 | 영업점테스트시나리오(결과) |
| 171 | 5.2.4 | 2차 시범점테스트 실시 및 보완 | 15d | 2008-08-31 A | 2008-09-19 A |  | 100% |  | 2008-08-31 | 2008-09-19 | 15d |  | start no earlier than 2008-08-31 |  |  |  |  |  |  | 테스트 실시 | C02-1 1.4.2 | 영업점테스트시나리오(결과) |
| 172 | 5.2.5 | 1차 영업점테스트 실시 및 보완 | 8d | 2008-09-21 A | 2008-09-30 A | 171 | 100% |  | 2008-09-21 | 2008-09-30 | 8d |  | finish no earlier than 2008-09-30 |  |  |  |  |  |  | 테스트 실시 | C02-1 1.4.2 | 영업점테스트시나리오(결과) |
| 173 | 5.2.6 | 2차 영업점테스트 실시 및 보완 | 15d | 2008-10-12 A | 2008-10-30 A |  | 100% |  | 2008-10-12 | 2008-10-30 | 15d |  | finish no earlier than 2008-10-30 |  |  |  |  |  |  | 테스트 실시 | C02-1 1.4.2 | 영업점테스트시나리오(결과) |
| 174 | 5.2.7 | 3차 영업점테스트 실시 및 보완 | 7d | 2008-11-02 A | 2008-11-10 A |  | 100% |  | 2008-11-02 | 2008-11-10 | 7d |  | finish no earlier than 2008-11-10 |  |  |  |  |  |  | 테스트 실시 | C02-1 1.4.2 | 영업점테스트시나리오(결과) |
| 175 | 5.2.8 | 4차 영업점테스트 실시 및 보완 | 11d | 2008-11-15 A | 2008-11-28 A |  | 100% |  | 2008-11-15 | 2008-11-28 | 11d |  | start no earlier than 2008-11-15 |  |  |  |  |  |  | 테스트 실시 | C02-1 1.4.2 | 영업점테스트시나리오(결과) |
| 176 | 5.2.9 | 5차 영업점테스트 실시 및 보완 | 12d | 2008-12-07 | 2008-12-20 |  |  |  | 2008-12-07 | 2008-12-20 | 12d | 65d | start no earlier than 2008-12-07 |  |  |  |  |  |  | 테스트 실시 | C02-1 1.4.2 | 영업점테스트시나리오(결과) |
| 177 | 5.3 | **인수테스트** | 13d | 2008-12-22 A | 2009-01-09 |  | 10% | 11.7d | 2008-12-22 | 2009-01-09 | 13d | 52d |  |  | 616h | 57.2h | 77 | 77 | 7.15 | 테스트 실시 | C02-1 1.4.2 |  |
| 178 | 5.3.1 | 인수테스터 실시 | 13d | 2008-12-22 A | 2009-01-09 |  | 10% | 11.7d | 2008-12-22 | 2009-01-09 | 13d | 52d | finish no earlier than 2009-01-09 | 문성태; 현년수; 김건원; 박정수; 이현승; 개발자 | 616h | 57.2h | 77 | 77 | 7.15 | 테스트 실시 | C02-1 1.4.2 | 인수테스트기준서(결과), 결함보고서(인수) |
| 179 | 5.4 | **이행** | 17d | 2009-01-05 | 2009-01-27 |  |  |  | 2009-01-05 | 2009-01-27 | 17d | 40d |  |  |  |  |  |  |  | 컨버전 및 릴리이즈 | C02-1 1.5.2 |  |
| 180 | 5.4.1 | 이행계획 수립 | 5d | 2009-01-05 | 2009-01-09 |  |  |  | 2009-01-05 | 2009-01-09 | 5d | 52d | finish no earlier than 2009-01-09 |  |  |  |  |  |  | 컨버전 및 릴리이즈 | C02-1 1.5.2 | 이행계획서 |
| 181 | 5.4.2 | 이행시나리오 작성 | 5d | 2009-01-12 | 2009-01-16 |  |  |  | 2009-01-12 | 2009-01-16 | 5d | 47d | start no earlier than 2009-01-12 |  |  |  |  |  |  | 컨버전 및 릴리이즈 | C02-1 1.5.2 | 이행시나리오 |
| 182 | 5.4.3 | 이행 실시 | 5d | 2009-01-21 | 2009-01-27 |  |  |  | 2009-01-21 | 2009-01-27 | 5d | 40d | finish no earlier than 2009-01-27 |  |  |  |  |  |  | 컨버전 및 릴리이즈 | C02-1 1.5.2 | 운영시스템 |
| 183 | 5.5 | **영업점테스트단계관리활동** | 185d? | 2008-07-07 A | 2009-03-13 |  | 49% | 94.25d? | 2008-07-07 | 2009-03-13 | 185d? | 7d |  |  |  |  |  |  |  | 품질활동수행 | C02-1 1.6.2 |  |
| 184 | 5.5.1 | 영업점테스트단계계획검토및수정 | 5d? | 2008-07-07 A | 2008-07-11 A |  | 100% |  | 2008-07-07 | 2008-07-11 | 5d? |  | finish no earlier than 2008-07-11 |  |  |  |  |  |  | 품질활동수행 | C02-1 1.6.2 |  |
| 185 | 5.5.2 | 영업점테스트 SPM 검토 및 수정 | 4d | 2008-07-14 A | 2008-07-18 A |  | 100% |  | 2008-07-14 | 2008-07-18 | 4d |  | start no earlier than 2008-07-14 |  |  |  |  |  |  | 품질활동수행 | C02-1 1.6.2 |  |
| 186 | 5.5.3 | 오리엔테이션(5차) 실시 | 6d | 2008-08-01 A | 2008-08-08 A |  | 100% |  | 2008-08-01 | 2008-08-08 | 6d |  | finish no earlier than 2008-08-08 |  |  |  |  |  |  | 품질활동수행 | C02-1 1.6.2 |  |
| 187 | 5.5.4 | QAO심사(5차) 조치 | 52d | 2008-09-08 A | 2008-11-14 A |  | 100% |  | 2008-09-08 | 2008-11-14 | 52d |  | finish no earlier than 2008-11-14 |  |  |  |  |  |  | 품질활동수행 | C02-1 1.6.2 |  |
| 188 | 5.5.5 | Inspection(5차) 조치 | 11d | 2008-12-01 A | 2008-12-12 A |  | 100% |  | 2008-12-01 | 2008-12-12 | 11d |  | finish no earlier than 2008-12-12 |  |  |  |  |  |  | 품질활동수행 | C02-1 1.6.2 |  |
| 189 | 5.5.6 | 예비제품검사조치 | 29d | 2008-12-15 | 2009-01-23 |  |  |  | 2008-12-15 | 2009-01-23 | 29d | 42d | finish no earlier than 2009-01-23 |  |  |  |  |  |  | 품질활동수행 | C02-1 1.6.2 |  |
| 190 | 5.5.7 | 제품검사조치 | 29d | 2008-12-15 | 2009-01-23 |  |  |  | 2008-12-15 | 2009-01-23 | 29d | 42d | finish no earlier than 2009-01-23 |  |  |  |  |  |  | 품질활동수행 | C02-1 1.6.2 |  |
| 191 | 5.5.8 | 최종요구사항추적표 매핑 | 10d | 2009-01-05 | 2009-01-16 |  |  |  | 2009-01-05 | 2009-01-16 | 10d | 47d | finish no earlier than 2009-01-16 |  |  |  |  |  |  | 품질활동수행 | C02-1 1.6.2 |  |
| 192 | 5.5.9 | 고객검토(3차) 실시 및 조치 | 8d | 2008-12-22 | 2009-01-02 |  |  |  | 2008-12-22 | 2009-01-02 | 8d | 57d | finish no earlier than 2009-01-02 |  |  |  |  |  |  | 품질활동수행 | C02-1 1.6.2 |  |
| 193 | 5.5.10 | 과업대비표 매핑 | 5d | 2009-03-09 | 2009-03-13 |  |  |  | 2009-03-09 | 2009-03-13 | 5d | 7d | finish no earlier than 2009-03-13 |  |  |  |  |  |  | 품질활동수행 | C02-1 1.6.2 |  |

| ID | WBS | Task | Duration | Start | Finish | Baseline start | Baseline finish | Baseline duration | Total slack | Constraint | Resources | Work | Cost | Baseline cost | Text20 | Text26 | Text30 |
| --- | --- | --- | --- | --- | --- | --- | --- | --- | --- | --- | --- | --- | --- | --- | --- | --- | --- |
| 194 | 6 | **시스템안정화** | 37d | 2009-02-02 | 2009-03-24 | 2009-02-02 | 2009-03-24 | 37d | 0d |  |  | 1760h | 220 | 220 | 구현 | C02-1 1.5 |  |
| 195 | 6.1 | **시스템운영** | 37d | 2009-02-02 | 2009-03-24 | 2009-02-02 | 2009-03-24 | 37d | 0d |  |  | 1760h | 220 | 220 | 시범운영 | C02-1 1.5.4 |  |
| 196 | 6.1.1 | 시스템운영실시 | 37d | 2009-02-02 | 2009-03-24 | 2009-02-02 | 2009-03-24 | 37d | 0d | start no earlier than 2009-02-02 | 문성태; 현년수; 김건원; 박정수; 이현승; 개발자 | 1760h | 220 | 220 | 시범운영 | C02-1 1.5.4 | 시범운영일지 |
