# 대외통합

Schedule from MS Project, 2007-04-25 to 2009-03-24, costs in ₩, A marks actual dates.
HSIC-0600001
�궪�꽦SDS

## Calendars

- 농협신용신시스템: Mon-Fri 08:00-12:00, 13:00-17:00; Sat-Sun off. Exceptions (off unless hours are given): 2007-05-01, 2007-05-24, 2007-06-06, 2007-07-17, 2007-08-15, 2007-09-24 to 2007-09-26, 2007-10-03, 2007-12-25, 2008-01-01, 2008-02-06 to 2008-02-08, 2008-05-01 08:00-12:00, 13:00-17:00, 2008-05-05, 2008-05-12, 2008-06-06, 2008-07-17, 2008-08-09 08:00-12:00, 13:00-17:00, 2008-08-15, 2008-08-31 08:00-12:00, 13:00-17:00, 2008-09-15, 2008-09-21 08:00-12:00, 13:00-17:00, 2008-10-03, 2008-10-12 08:00-12:00, 13:00-17:00, 2008-11-02 08:00-12:00, 13:00-17:00, 2008-11-15 08:00-12:00, 13:00-17:00, 2008-12-07 08:00-12:00, 13:00-17:00, 2008-12-25, 2009-01-01, 2009-01-24 to 2009-01-25.

## Resources

| Resource | Rate |
| --- | --- |
| 이병훈 | 0.12 |
| 이기호 | 0.12 |
| 김도현 | 0.12 |
| 함미숙 | 0.12 |
| 정연봉 | 0.12 |
| 김대일 | 0.12 |
| 최진원 | 0.12 |
| 차진욱 | 0.12 |
| 주은영 | 0.12 |
| 정동호 | 0.12 |
| 목진국 | 0.12 |
| 장인기 | 0.12 |
| 이동민 | 0.12 |
| 최덕원 | 0.12 |
| 박제성 | 0.12 |
| 김철희 | 0.12 |
| 심은경 | 0.12 |
| 조병권 | 0.12 |
| 배민선 | 0.12 |
| 남길원 | 0.12 |

## Schedule

| ID | WBS | Task | Duration | Start | Finish | Complete | Baseline start | Baseline finish | Baseline duration | Constraint | Resources | Work | Actual work | Cost | Baseline cost | Actual cost | Text20 | Text26 | Text30 |
| --- | --- | --- | --- | --- | --- | --- | --- | --- | --- | --- | --- | --- | --- | --- | --- | --- | --- | --- | --- |
| 1 | 1 | **분석** | 62d | 2007-04-25 A | 2007-07-25 A | 100% | 2007-04-25 | 2007-07-25 | 62d |  |  | 6672h | 6672h | 834 | 834 | 834 | 분석 | C02-1 1.2 |  |
| 2 | 1.1 | **현황 평가** | 29d | 2007-04-25 A | 2007-06-07 A | 100% | 2007-04-25 | 2007-06-07 | 29d |  |  | 3200h | 3200h | 400 | 400 | 400 | 현황 평가 | C02-1 1.2.1 |  |
| 3 | 1.1.1 | **현행업무 분석** | 19d | 2007-04-25 A | 2007-05-22 A | 100% | 2007-04-25 | 2007-05-22 | 19d |  |  | 1248h | 1248h | 156 | 156 | 156 | 현황 평가 | C02-1 1.2.1 | 현행업무분장표, 현행업무흐름도 |
| 4 | 1.1.1.1 | **공동망업무분석** | 19d | 2007-04-25 A | 2007-05-22 A | 100% | 2007-04-25 | 2007-05-22 | 19d |  | 이병훈; 김도현; 이기호 | 456h | 456h | 57 | 57 | 57 | 현황 평가 | C02-1 1.2.1 |  |
| 5 | 1.1.1.1.1 | 타행환공동망 | 8d | 2007-04-25 A | 2007-05-07 A | 100% | 2007-04-25 | 2007-05-07 | 8d | start no earlier than 2007-04-25 |  |  |  |  |  |  | 현황 평가 | C02-1 1.2.1 |  |
| 6 | 1.1.1.1.2 | ARS공동망 | 8d | 2007-04-25 A | 2007-05-07 A | 100% | 2007-04-25 | 2007-05-07 | 8d | start no earlier than 2007-04-25 |  |  |  |  |  |  | 현황 평가 | C02-1 1.2.1 |  |
| 7 | 1.1.1.1.3 | 경찰전산망 | 5d | 2007-05-08 A | 2007-05-14 A | 100% | 2007-05-08 | 2007-05-14 | 5d | start no earlier than 2007-05-08 |  |  |  |  |  |  | 현황 평가 | C02-1 1.2.1 |  |
| 8 | 1.1.1.1.4 | CMS공동망 | 5d | 2007-05-07 A | 2007-05-11 A | 100% | 2007-05-07 | 2007-05-11 | 5d | start no earlier than 2007-05-08 |  |  |  |  |  |  | 현황 평가 | C02-1 1.2.1 |  |
| 9 | 1.1.1.1.5 | B2B공동망 | 5d | 2007-05-07 A | 2007-05-11 A | 100% | 2007-05-07 | 2007-05-11 | 5d | start no earlier than 2007-05-15 |  |  |  |  |  |  | 현황 평가 | C02-1 1.2.1 |  |
| 10 | 1.1.1.1.6 | 물류결제공동망 | 5d | 2007-05-04 A | 2007-05-10 A | 100% | 2007-05-04 | 2007-05-10 | 5d | start no earlier than 2007-05-15 |  |  |  |  |  |  | 현황 평가 | C02-1 1.2.1 |  |
| 11 | 1.1.1.1.7 | 인터넷지로공동망 | 5d | 2007-05-09 A | 2007-05-15 A | 100% | 2007-05-09 | 2007-05-15 | 5d | start no earlier than 2007-05-22 |  |  |  |  |  |  | 현황 평가 | C02-1 1.2.1 |  |
| 12 | 1.1.1.1.8 | 전자어음공동망 | 5d | 2007-05-09 A | 2007-05-15 A | 100% | 2007-05-09 | 2007-05-15 | 5d | start no earlier than 2007-05-22 |  |  |  |  |  |  | 현황 평가 | C02-1 1.2.1 |  |
| 13 | 1.1.1.1.9 | CD공동망 | 7d | 2007-05-14 A | 2007-05-22 A | 100% | 2007-05-14 | 2007-05-22 | 7d | start no earlier than 2007-05-30 |  |  |  |  |  |  | 현황 평가 | C02-1 1.2.1 |  |
| 14 | 1.1.1.1.10 | 전자금융공동망 | 7d | 2007-05-09 A | 2007-05-17 A | 100% | 2007-05-09 | 2007-05-17 | 7d | start no earlier than 2007-05-30 |  |  |  |  |  |  | 현황 평가 | C02-1 1.2.1 |  |
| 15 | 1.1.1.1.11 | 점외제휴CD | 7d | 2007-05-10 A | 2007-05-18 A | 100% | 2007-05-10 | 2007-05-18 | 7d | start no earlier than 2007-05-30 |  |  |  |  |  |  | 현황 평가 | C02-1 1.2.1 |  |
| 16 | 1.1.1.1.12 | 타사카드 | 7d | 2007-05-09 A | 2007-05-17 A | 100% | 2007-05-09 | 2007-05-17 | 7d | start no earlier than 2007-05-30 |  |  |  |  |  |  | 현황 평가 | C02-1 1.2.1 |  |
| 17 | 1.1.1.2 | **대행업무분석** | 16d | 2007-04-25 A | 2007-05-17 A | 100% | 2007-04-25 | 2007-05-17 | 16d |  | 함미숙; 김대일; 정연봉 | 384h | 384h | 48 | 48 | 48 | 현황 평가 | C02-1 1.2.1 |  |
| 18 | 1.1.1.2.1 | 관리대행 | 10d | 2007-04-25 A | 2007-05-09 A | 100% | 2007-04-25 | 2007-05-09 | 10d | start no earlier than 2007-04-25 |  |  |  |  |  |  | 현황 평가 | C02-1 1.2.1 |  |
| 19 | 1.1.1.2.2 | 법원대행 | 5d | 2007-05-10 A | 2007-05-16 A | 100% | 2007-05-10 | 2007-05-16 | 5d | start no earlier than 2007-05-10 |  |  |  |  |  |  | 현황 평가 | C02-1 1.2.1 |  |
| 20 | 1.1.1.2.3 | 지급대행 | 5d | 2007-05-10 A | 2007-05-16 A | 100% | 2007-05-10 | 2007-05-16 | 5d | start no earlier than 2007-05-17 |  |  |  |  |  |  | 현황 평가 | C02-1 1.2.1 |  |
| 21 | 1.1.1.2.4 | 수납대행 | 5d | 2007-05-11 A | 2007-05-17 A | 100% | 2007-05-11 | 2007-05-17 | 5d | start no earlier than 2007-05-24 |  |  |  |  |  |  | 현황 평가 | C02-1 1.2.1 |  |
| 22 | 1.1.1.2.5 | 판매대행 | 5d | 2007-05-10 A | 2007-05-16 A | 100% | 2007-05-10 | 2007-05-16 | 5d | start no earlier than 2007-06-01 |  |  |  |  |  |  | 현황 평가 | C02-1 1.2.1 |  |
| 23 | 1.1.1.3 | **CMS/FB 분석** | 17d | 2007-04-25 A | 2007-05-18 A | 100% | 2007-04-25 | 2007-05-18 | 17d |  | 최진원; 주은영; 차진욱 | 408h | 408h | 51 | 51 | 51 | 현황 평가 | C02-1 1.2.1 |  |
| 24 | 1.1.1.3.1 | 하나로펌PLUS | 5d | 2007-05-07 A | 2007-05-11 A | 100% | 2007-05-07 | 2007-05-11 | 5d | start no earlier than 2007-05-07 |  |  |  |  |  |  | 현황 평가 | C02-1 1.2.1 |  |
| 25 | 1.1.1.3.2 | 하나로펌VAN | 5d | 2007-05-10 A | 2007-05-16 A | 100% | 2007-05-10 | 2007-05-16 | 5d | start no earlier than 2007-05-14 |  |  |  |  |  |  | 현황 평가 | C02-1 1.2.1 |  |
| 26 | 1.1.1.3.3 | 실시간이체서비스 | 10d | 2007-04-25 A | 2007-05-09 A | 100% | 2007-04-25 | 2007-05-09 | 10d | start no earlier than 2007-04-25 |  |  |  |  |  |  | 현황 평가 | C02-1 1.2.1 |  |
| 27 | 1.1.1.3.4 | 예금거래내역전송서비스 | 6d | 2007-05-10 A | 2007-05-17 A | 100% | 2007-05-10 | 2007-05-17 | 6d | start no earlier than 2007-05-10 |  |  |  |  |  |  | 현황 평가 | C02-1 1.2.1 |  |
| 28 | 1.1.1.3.5 | 기업자금관리서비스 | 6d | 2007-05-10 A | 2007-05-17 A | 100% | 2007-05-10 | 2007-05-17 | 6d | start no earlier than 2007-05-18 |  |  |  |  |  |  | 현황 평가 | C02-1 1.2.1 |  |
| 29 | 1.1.1.3.6 | 증권제휴서비스 | 7d | 2007-05-10 A | 2007-05-18 A | 100% | 2007-05-10 | 2007-05-18 | 7d | start no earlier than 2007-05-29 |  |  |  |  |  |  | 현황 평가 | C02-1 1.2.1 |  |

| ID | WBS | Task | Duration | Start | Finish | Complete | Baseline start | Baseline finish | Baseline duration | Constraint | Resources | Work | Actual work | Cost | Baseline cost | Actual cost | Text20 | Text26 | Text30 |
| --- | --- | --- | --- | --- | --- | --- | --- | --- | --- | --- | --- | --- | --- | --- | --- | --- | --- | --- | --- |
| 30 | 1.1.2 | **현행시스템 분석** | 29d | 2007-04-25 A | 2007-06-07 A | 100% | 2007-04-25 | 2007-06-07 | 29d |  |  | 1608h | 1608h | 201 | 201 | 201 | 현황 평가 | C02-1 1.2.1 | 현행시스템분석서 |
| 31 | 1.1.2.1 | **공동망업무시스템 분석** | 22d | 2007-04-25 A | 2007-05-28 A | 100% | 2007-04-25 | 2007-05-28 | 22d |  | 이병훈; 김도현; 이기호 | 528h | 528h | 66 | 66 | 66 | 현황 평가 | C02-1 1.2.1 |  |
| 32 | 1.1.2.1.1 | 타행환공동망 | 8d | 2007-04-25 A | 2007-05-07 A | 100% | 2007-04-25 | 2007-05-07 | 8d | start no earlier than 2007-04-25 |  |  |  |  |  |  | 현황 평가 | C02-1 1.2.1 |  |
| 33 | 1.1.2.1.2 | ARS공동망 | 8d | 2007-04-25 A | 2007-05-07 A | 100% | 2007-04-25 | 2007-05-07 | 8d | start no earlier than 2007-04-25 |  |  |  |  |  |  | 현황 평가 | C02-1 1.2.1 |  |
| 34 | 1.1.2.1.3 | 경찰전산망 | 5d | 2007-05-08 A | 2007-05-14 A | 100% | 2007-05-08 | 2007-05-14 | 5d | start no earlier than 2007-05-08 |  |  |  |  |  |  | 현황 평가 | C02-1 1.2.1 |  |
| 35 | 1.1.2.1.4 | CMS공동망 | 5d | 2007-05-08 A | 2007-05-14 A | 100% | 2007-05-08 | 2007-05-14 | 5d | start no earlier than 2007-05-08 |  |  |  |  |  |  | 현황 평가 | C02-1 1.2.1 |  |
| 36 | 1.1.2.1.5 | B2B공동망 | 5d | 2007-05-15 A | 2007-05-21 A | 100% | 2007-05-15 | 2007-05-21 | 5d | start no earlier than 2007-05-15 |  |  |  |  |  |  | 현황 평가 | C02-1 1.2.1 |  |
| 37 | 1.1.2.1.6 | 물류결제공동망 | 5d | 2007-05-17 A | 2007-05-23 A | 100% | 2007-05-17 | 2007-05-23 | 5d | start no earlier than 2007-05-15 |  |  |  |  |  |  | 현황 평가 | C02-1 1.2.1 |  |
| 38 | 1.1.2.1.7 | 인터넷지로공동망 | 5d | 2007-05-18 A | 2007-05-25 A | 100% | 2007-05-18 | 2007-05-25 | 5d | start no earlier than 2007-05-22 |  |  |  |  |  |  | 현황 평가 | C02-1 1.2.1 |  |
| 39 | 1.1.2.1.8 | 전자어음공동망 | 5d | 2007-05-21 A | 2007-05-28 A | 100% | 2007-05-21 | 2007-05-28 | 5d | start no earlier than 2007-05-22 |  |  |  |  |  |  | 현황 평가 | C02-1 1.2.1 |  |
| 40 | 1.1.2.1.9 | CD공동망 | 7d | 2007-05-14 A | 2007-05-22 A | 100% | 2007-05-14 | 2007-05-22 | 7d | start no earlier than 2007-05-30 |  |  |  |  |  |  | 현황 평가 | C02-1 1.2.1 |  |
| 41 | 1.1.2.1.10 | 전자금융공동망 | 7d | 2007-05-11 A | 2007-05-21 A | 100% | 2007-05-11 | 2007-05-21 | 7d | start no earlier than 2007-05-30 |  |  |  |  |  |  | 현황 평가 | C02-1 1.2.1 |  |
| 42 | 1.1.2.1.11 | 점외제휴CD | 7d | 2007-05-11 A | 2007-05-21 A | 100% | 2007-05-11 | 2007-05-21 | 7d | start no earlier than 2007-05-30 |  |  |  |  |  |  | 현황 평가 | C02-1 1.2.1 |  |
| 43 | 1.1.2.1.12 | 타사카드 | 7d | 2007-05-11 A | 2007-05-21 A | 100% | 2007-05-11 | 2007-05-21 | 7d | start no earlier than 2007-05-30 |  |  |  |  |  |  | 현황 평가 | C02-1 1.2.1 |  |
| 44 | 1.1.2.2 | **대행업무시스템 분석** | 16d | 2007-04-25 A | 2007-05-17 A | 100% | 2007-04-25 | 2007-05-17 | 16d |  | 함미숙; 김대일; 정연봉 | 384h | 384h | 48 | 48 | 48 | 현황 평가 | C02-1 1.2.1 |  |
| 45 | 1.1.2.2.1 | 관리대행 | 10d | 2007-04-25 A | 2007-05-09 A | 100% | 2007-04-25 | 2007-05-09 | 10d | start no earlier than 2007-04-25 |  |  |  |  |  |  | 현황 평가 | C02-1 1.2.1 |  |
| 46 | 1.1.2.2.2 | 법원대행 | 5d | 2007-05-10 A | 2007-05-16 A | 100% | 2007-05-10 | 2007-05-16 | 5d | start no earlier than 2007-05-10 |  |  |  |  |  |  | 현황 평가 | C02-1 1.2.1 |  |
| 47 | 1.1.2.2.3 | 지급대행 | 5d | 2007-05-11 A | 2007-05-17 A | 100% | 2007-05-11 | 2007-05-17 | 5d | start no earlier than 2007-05-17 |  |  |  |  |  |  | 현황 평가 | C02-1 1.2.1 |  |
| 48 | 1.1.2.2.4 | 수납대행 | 5d | 2007-05-11 A | 2007-05-17 A | 100% | 2007-05-11 | 2007-05-17 | 5d | start no earlier than 2007-05-24 |  |  |  |  |  |  | 현황 평가 | C02-1 1.2.1 |  |
| 49 | 1.1.2.2.5 | 판매대행 | 5d | 2007-05-10 A | 2007-05-16 A | 100% | 2007-05-10 | 2007-05-16 | 5d | start no earlier than 2007-06-01 |  |  |  |  |  |  | 현황 평가 | C02-1 1.2.1 |  |
| 50 | 1.1.2.3 | **CMS/FB시스템 분석** | 29d | 2007-04-25 A | 2007-06-07 A | 100% | 2007-04-25 | 2007-06-07 | 29d |  | 최진원; 주은영; 차진욱 | 696h | 696h | 87 | 87 | 87 | 현황 평가 | C02-1 1.2.1 |  |
| 51 | 1.1.2.3.1 | 하나로펌PLUS | 5d | 2007-05-07 A | 2007-05-11 A | 100% | 2007-05-07 | 2007-05-11 | 5d | start no earlier than 2007-05-07 |  |  |  |  |  |  | 현황 평가 | C02-1 1.2.1 |  |
| 52 | 1.1.2.3.2 | 하나로펌VAN | 5d | 2007-05-14 A | 2007-05-18 A | 100% | 2007-05-14 | 2007-05-18 | 5d | start no earlier than 2007-05-14 |  |  |  |  |  |  | 현황 평가 | C02-1 1.2.1 |  |
| 53 | 1.1.2.3.3 | 실시간이체서비스 | 10d | 2007-04-25 A | 2007-05-09 A | 100% | 2007-04-25 | 2007-05-09 | 10d | start no earlier than 2007-04-25 |  |  |  |  |  |  | 현황 평가 | C02-1 1.2.1 |  |
| 54 | 1.1.2.3.4 | 예금거래내역전송서비스 | 6d | 2007-05-10 A | 2007-05-17 A | 100% | 2007-05-10 | 2007-05-17 | 6d | start no earlier than 2007-05-10 |  |  |  |  |  |  | 현황 평가 | C02-1 1.2.1 |  |
| 55 | 1.1.2.3.5 | 기업자금관리서비스 | 6d | 2007-05-18 A | 2007-05-28 A | 100% | 2007-05-18 | 2007-05-28 | 6d | start no earlier than 2007-05-18 |  |  |  |  |  |  | 현황 평가 | C02-1 1.2.1 |  |
| 56 | 1.1.2.3.6 | 증권제휴서비스 | 7d | 2007-05-29 A | 2007-06-07 A | 100% | 2007-05-29 | 2007-06-07 | 7d | start no earlier than 2007-05-29 |  |  |  |  |  |  | 현황 평가 | C02-1 1.2.1 |  |

| ID | WBS | Task | Duration | Start | Finish | Complete | Baseline start | Baseline finish | Baseline duration | Constraint | Resources | Work | Actual work | Cost | Baseline cost | Actual cost | Text20 | Text26 | Text30 |
| --- | --- | --- | --- | --- | --- | --- | --- | --- | --- | --- | --- | --- | --- | --- | --- | --- | --- | --- | --- |
| 57 | 1.1.3 | **인터뷰 실시** | 10d | 2007-05-16 A | 2007-05-30 A | 100% | 2007-05-16 | 2007-05-30 | 10d |  |  | 344h | 344h | 43 | 43 | 43 | 현황 평가 | C02-1 1.2.1 |  |
| 58 | 1.1.3.1 | 인터뷰 계획 | 3d | 2007-05-16 A | 2007-05-18 A | 100% | 2007-05-16 | 2007-05-18 | 3d | start no earlier than 2007-05-16 | 이병훈; 함미숙; 김대일; 최진원 | 96h | 96h | 12 | 12 | 12 | 현황 평가 | C02-1 1.2.1 |  |
| 59 | 1.1.3.2 | 사업본부인터뷰실시 | 7d | 2007-05-21 A | 2007-05-30 A | 100% | 2007-05-21 | 2007-05-30 | 7d | start no earlier than 2007-05-21 | 이병훈 | 56h | 56h | 7 | 7 | 7 | 현황 평가 | C02-1 1.2.1 |  |
| 60 | 1.1.3.3 | 영업점대상인터뷰실시 | 7d | 2007-05-21 A | 2007-05-30 A | 100% | 2007-05-21 | 2007-05-30 | 7d | start no earlier than 2007-05-21 | 김대일 | 56h | 56h | 7 | 7 | 7 | 현황 평가 | C02-1 1.2.1 |  |
| 61 | 1.1.3.4 | 문서를통한인터뷰집계 | 7d | 2007-05-21 A | 2007-05-30 A | 100% | 2007-05-21 | 2007-05-30 | 7d | start no earlier than 2007-05-21 | 최진원 | 56h | 56h | 7 | 7 | 7 | 현황 평가 | C02-1 1.2.1 |  |
| 62 | 1.1.3.5 | 개발방향수립 | 10d | 2007-05-16 A | 2007-05-30 A | 100% | 2007-05-16 | 2007-05-30 | 10d | start no earlier than 2007-05-16 | 최진원 | 80h | 80h | 10 | 10 | 10 | 현황 평가 | C02-1 1.2.1 |  |
| 63 | 1.2 | **요구사항 정의** | 18d | 2007-06-04 A | 2007-06-28 A | 100% | 2007-06-04 | 2007-06-28 | 18d |  |  | 1368h | 1368h | 171 | 171 | 171 | 요구사항 정의 | C02-1 1.2.2 |  |
| 64 | 1.2.1 | **기능요구사항 정의** | 18d | 2007-06-04 A | 2007-06-28 A | 100% | 2007-06-04 | 2007-06-28 | 18d |  |  | 432h | 432h | 54 | 54 | 54 | 요구사항 정의 | C02-1 1.2.2 | 현업요구사항정의서 |
| 65 | 1.2.1.1 | 공통기능 요구사항 정의 | 7d | 2007-06-04 A | 2007-06-13 A | 100% | 2007-06-04 | 2007-06-13 | 7d | start no earlier than 2007-06-04 | 이병훈; 김도현; 이기호 | 168h | 168h | 21 | 21 | 21 | 요구사항 정의 | C02-1 1.2.2 |  |
| 66 | 1.2.1.2 | 업무 기능별 요구사항 정의 | 6d | 2007-06-14 A | 2007-06-21 A | 100% | 2007-06-14 | 2007-06-21 | 6d | start no earlier than 2007-06-14 | 함미숙; 김대일; 정연봉 | 144h | 144h | 18 | 18 | 18 | 요구사항 정의 | C02-1 1.2.2 |  |
| 67 | 1.2.1.3 | 인터페이스유형별 요구사항 정의 | 5d | 2007-06-22 A | 2007-06-28 A | 100% | 2007-06-22 | 2007-06-28 | 5d | start no earlier than 2007-06-22 | 최진원; 주은영; 차진욱 | 120h | 120h | 15 | 15 | 15 | 요구사항 정의 | C02-1 1.2.2 |  |
| 68 | 1.2.2 | **인터페이스 요구사항 정의** | 18d | 2007-06-04 A | 2007-06-28 A | 100% | 2007-06-04 | 2007-06-28 | 18d |  |  | 576h | 576h | 72 | 72 | 72 | 요구사항 정의 | C02-1 1.2.2 | 현업요구사항정의서 |
| 69 | 1.2.2.1 | 뱅킹신시스템과의인터페이스도출 및 정의 | 5d | 2007-06-04 A | 2007-06-11 A | 100% | 2007-06-04 | 2007-06-11 | 5d | start no earlier than 2007-06-04 | 이병훈; 김도현; 이기호 | 120h | 120h | 15 | 15 | 15 | 요구사항 정의 | C02-1 1.2.2 |  |
| 70 | 1.2.2.2 | 대외채널과의인터페이스도출 및 정의 | 6d | 2007-06-12 A | 2007-06-19 A | 100% | 2007-06-12 | 2007-06-19 | 6d | start no earlier than 2007-06-12 | 함미숙; 김대일; 정연봉 | 144h | 144h | 18 | 18 | 18 | 요구사항 정의 | C02-1 1.2.2 |  |
| 71 | 1.2.2.3 | 신용채널과의인터페이스도출 및 정의 | 6d | 2007-06-12 A | 2007-06-19 A | 100% | 2007-06-12 | 2007-06-19 | 6d | start no earlier than 2007-06-12 | 최진원; 주은영; 차진욱 | 144h | 144h | 18 | 18 | 18 | 요구사항 정의 | C02-1 1.2.2 |  |
| 72 | 1.2.2.4 | 업무시스템과의인터페이스도출 및 정의 | 7d | 2007-06-20 A | 2007-06-28 A | 100% | 2007-06-20 | 2007-06-28 | 7d | start no earlier than 2007-06-20 | 최진원; 주은영; 차진욱 | 168h | 168h | 21 | 21 | 21 | 요구사항 정의 | C02-1 1.2.2 |  |
| 73 | 1.2.3 | **시스템화 범위 결정** | 11d | 2007-06-14 A | 2007-06-28 A | 100% | 2007-06-14 | 2007-06-28 | 11d |  |  | 360h | 360h | 45 | 45 | 45 | 요구사항 정의 | C02-1 1.2.2 | 현업요구사항정의서 |
| 74 | 1.2.3.1 | 공통업무 시스템화 범위 결정 | 5d | 2007-06-14 A | 2007-06-20 A | 100% | 2007-06-14 | 2007-06-20 | 5d | start no earlier than 2007-06-14 | 이병훈; 김도현; 이기호 | 120h | 120h | 15 | 15 | 15 | 요구사항 정의 | C02-1 1.2.2 |  |
| 75 | 1.2.3.2 | 기능별 시스템화 범위 결정 | 5d | 2007-06-22 A | 2007-06-28 A | 100% | 2007-06-22 | 2007-06-28 | 5d | start no earlier than 2007-06-22 | 함미숙; 김대일; 정연봉 | 120h | 120h | 15 | 15 | 15 | 요구사항 정의 | C02-1 1.2.2 |  |
| 76 | 1.2.3.3 | 인터페이스유형별 시스템화 범위 결정 | 5d | 2007-06-22 A | 2007-06-28 A | 100% | 2007-06-22 | 2007-06-28 | 5d | start no earlier than 2007-06-22 | 최진원; 주은영; 차진욱 | 120h | 120h | 15 | 15 | 15 | 요구사항 정의 | C02-1 1.2.2 |  |
| 77 | 1.3 | **신논리모델 구축** | 17d | 2007-06-22 A | 2007-07-16 A | 100% | 2007-06-22 | 2007-07-16 | 17d |  |  | 2032h | 2032h | 254 | 254 | 254 | 신논리모델 구축 | C02-1 1.2.3 |  |
| 78 | 1.3.1 | **프로세스 모델링** | 17d | 2007-06-22 A | 2007-07-16 A | 100% | 2007-06-22 | 2007-07-16 | 17d |  |  | 1408h | 1408h | 176 | 176 | 176 | 신논리모델 구축 | C02-1 1.2.3 |  |
| 79 | 1.3.1.1 | **프로세스 도출 및 정의** | 12d | 2007-06-22 A | 2007-07-09 A | 100% | 2007-06-22 | 2007-07-09 | 12d |  |  | 768h | 768h | 96 | 96 | 96 | 신논리모델 구축 | C02-1 1.2.3 | 프로세스정의서,기능차트 |
| 80 | 1.3.1.1.1 | 공통프로세스(시스템) 도출 및 정의 | 6d | 2007-06-22 A | 2007-06-29 A | 100% | 2007-06-22 | 2007-06-29 | 6d | start no earlier than 2007-06-22 | 이병훈; 함미숙 | 96h | 96h | 12 | 12 | 12 | 신논리모델 구축 | C02-1 1.2.3 |  |
| 81 | 1.3.1.1.2 | 공통프로세스(업무) 도출 및 정의 | 6d | 2007-07-02 A | 2007-07-09 A | 100% | 2007-07-02 | 2007-07-09 | 6d | start no earlier than 2007-07-02 | 이병훈; 함미숙 | 96h | 96h | 12 | 12 | 12 | 신논리모델 구축 | C02-1 1.2.3 |  |
| 82 | 1.3.1.1.3 | 채널프로세스 도출 및 정의 | 12d | 2007-06-22 A | 2007-07-09 A | 100% | 2007-06-22 | 2007-07-09 | 12d | start no earlier than 2007-06-22 | 이기호; 차진욱 | 192h | 192h | 24 | 24 | 24 | 신논리모델 구축 | C02-1 1.2.3 |  |
| 83 | 1.3.1.1.4 | 기능별 프로세스(서비스) 도출 및 정의 | 6d | 2007-06-22 A | 2007-06-29 A | 100% | 2007-06-22 | 2007-06-29 | 6d | start no earlier than 2007-06-22 | 주은영; 김대일; 정연봉 | 144h | 144h | 18 | 18 | 18 | 신논리모델 구축 | C02-1 1.2.3 |  |
| 84 | 1.3.1.1.5 | 기능별 프로세스(화면관련기능) 도출 및 정의 | 6d | 2007-07-02 A | 2007-07-09 A | 100% | 2007-07-02 | 2007-07-09 | 6d | start no earlier than 2007-07-02 | 주은영; 김대일; 정연봉 | 144h | 144h | 18 | 18 | 18 | 신논리모델 구축 | C02-1 1.2.3 |  |
| 85 | 1.3.1.1.6 | 관리프로세스(관리서비스) 도출 및 정의 | 6d | 2007-06-22 A | 2007-06-29 A | 100% | 2007-06-22 | 2007-06-29 | 6d | start no earlier than 2007-06-22 | 최진원 | 48h | 48h | 6 | 6 | 6 | 신논리모델 구축 | C02-1 1.2.3 |  |
| 86 | 1.3.1.1.7 | 관리프로세스(관리 화면서비스) 도출 및 정의 | 6d | 2007-07-02 A | 2007-07-09 A | 100% | 2007-07-02 | 2007-07-09 | 6d | start no earlier than 2007-07-02 | 최진원 | 48h | 48h | 6 | 6 | 6 | 신논리모델 구축 | C02-1 1.2.3 |  |

| ID | WBS | Task | Duration | Start | Finish | Complete | Baseline start | Baseline finish | Baseline duration | Constraint | Resources | Work | Actual work | Cost | Baseline cost | Actual cost | Text20 | Text26 | Text30 |
| --- | --- | --- | --- | --- | --- | --- | --- | --- | --- | --- | --- | --- | --- | --- | --- | --- | --- | --- | --- |
| 87 | 1.3.1.2 | **내부인터페이스도출 및 정의** | 5d | 2007-07-10 A | 2007-07-16 A | 100% | 2007-07-10 | 2007-07-16 | 5d |  |  | 160h | 160h | 20 | 20 | 20 | 신논리모델 구축 | C02-1 1.2.3 | 인터페이스정의서 |
| 88 | 1.3.1.2.1 | 기능프로세스와 채널프로세스 인터페이스 도출 및 정의 | 5d | 2007-07-10 A | 2007-07-16 A | 100% | 2007-07-10 | 2007-07-16 | 5d | start no earlier than 2007-07-10 | 이병훈; 이기호; 차진욱 | 120h | 120h | 15 | 15 | 15 | 신논리모델 구축 | C02-1 1.2.3 |  |
| 89 | 1.3.1.2.2 | DB 인터페이스 도출 및 정의 | 5d | 2007-07-10 A | 2007-07-16 A | 100% | 2007-07-10 | 2007-07-16 | 5d | start no earlier than 2007-07-10 | 김도현 | 40h | 40h | 5 | 5 | 5 | 신논리모델 구축 | C02-1 1.2.3 |  |
| 90 | 1.3.1.3 | **외부인터페이스도출 및 정의** | 5d | 2007-07-10 A | 2007-07-16 A | 100% | 2007-07-10 | 2007-07-16 | 5d |  |  | 480h | 480h | 60 | 60 | 60 | 신논리모델 구축 | C02-1 1.2.3 | 인터페이스정의서 |
| 91 | 1.3.1.3.1 | 뱅킹신시스템과의인터페이스도출 및 정의 | 5d | 2007-07-10 A | 2007-07-16 A | 100% | 2007-07-10 | 2007-07-16 | 5d | start no earlier than 2007-07-10 | 이병훈; 김도현; 함미숙 | 120h | 120h | 15 | 15 | 15 | 신논리모델 구축 | C02-1 1.2.3 |  |
| 92 | 1.3.1.3.2 | 대외채널과의인터페이스도출 및 정의 | 5d | 2007-07-10 A | 2007-07-16 A | 100% | 2007-07-10 | 2007-07-16 | 5d | start no earlier than 2007-07-10 | 김대일; 정연봉; 이기호 | 120h | 120h | 15 | 15 | 15 | 신논리모델 구축 | C02-1 1.2.3 |  |
| 93 | 1.3.1.3.3 | 신용채널과의인터페이스도출 및 정의 | 5d | 2007-07-10 A | 2007-07-16 A | 100% | 2007-07-10 | 2007-07-16 | 5d | start no earlier than 2007-07-10 | 최진원; 주은영; 차진욱 | 120h | 120h | 15 | 15 | 15 | 신논리모델 구축 | C02-1 1.2.3 |  |
| 94 | 1.3.1.3.4 | 업무시스템과의인터페이스도출 및 정의 | 5d | 2007-07-10 A | 2007-07-16 A | 100% | 2007-07-10 | 2007-07-16 | 5d | start no earlier than 2007-07-10 | 최진원; 주은영; 차진욱 | 120h | 120h | 15 | 15 | 15 | 신논리모델 구축 | C02-1 1.2.3 |  |
| 95 | 1.3.2 | **데이터 모델링** | 15d | 2007-06-26 A | 2007-07-16 A | 100% | 2007-06-26 | 2007-07-16 | 15d |  |  | 480h | 480h | 60 | 60 | 60 | 신논리모델 구축 | C02-1 1.2.3 |  |
| 96 | 1.3.2.1 | **엔티티 도출 및 논리 모델링** | 10d | 2007-06-26 A | 2007-07-09 A | 100% | 2007-06-26 | 2007-07-09 | 10d |  |  | 320h | 320h | 40 | 40 | 40 | 신논리모델 구축 | C02-1 1.2.3 | 엔티티목록, ERD |
| 97 | 1.3.2.1.1 | 공통업무 엔티티 도출 및 정의 | 7d | 2007-06-26 A | 2007-07-04 A | 100% | 2007-06-26 | 2007-07-04 | 7d | start no earlier than 2007-06-26 | 김도현 | 56h | 56h | 7 | 7 | 7 | 신논리모델 구축 | C02-1 1.2.3 |  |
| 98 | 1.3.2.1.2 | 공통업무 엔티티 속성 도출 및 정의 | 3d | 2007-07-05 A | 2007-07-09 A | 100% | 2007-07-05 | 2007-07-09 | 3d | start no earlier than 2007-07-05 | 김도현 | 24h | 24h | 3 | 3 | 3 | 신논리모델 구축 | C02-1 1.2.3 |  |
| 99 | 1.3.2.1.3 | 채널업무 엔티티 속성 도출 및 정의 | 7d | 2007-06-26 A | 2007-07-04 A | 100% | 2007-06-26 | 2007-07-04 | 7d | start no earlier than 2007-06-26 | 차진욱 | 56h | 56h | 7 | 7 | 7 | 신논리모델 구축 | C02-1 1.2.3 |  |
| 100 | 1.3.2.1.4 | 채널업무 엔티티 도출 및 정의 | 3d | 2007-07-05 A | 2007-07-09 A | 100% | 2007-07-05 | 2007-07-09 | 3d | start no earlier than 2007-07-05 | 차진욱 | 24h | 24h | 3 | 3 | 3 | 신논리모델 구축 | C02-1 1.2.3 |  |
| 101 | 1.3.2.1.5 | 기능업무단위 엔티티 도출 및 정의 | 7d | 2007-06-26 A | 2007-07-04 A | 100% | 2007-06-26 | 2007-07-04 | 7d | start no earlier than 2007-06-26 | 김대일 | 56h | 56h | 7 | 7 | 7 | 신논리모델 구축 | C02-1 1.2.3 |  |
| 102 | 1.3.2.1.6 | 기능업무단위 엔티티 속성 도출 및 정의 | 3d | 2007-07-05 A | 2007-07-09 A | 100% | 2007-07-05 | 2007-07-09 | 3d | start no earlier than 2007-07-05 | 김대일 | 24h | 24h | 3 | 3 | 3 | 신논리모델 구축 | C02-1 1.2.3 |  |
| 103 | 1.3.2.1.7 | 대외통합 관리업무 엔티티 도출 및 정의 | 7d | 2007-06-26 A | 2007-07-04 A | 100% | 2007-06-26 | 2007-07-04 | 7d | start no earlier than 2007-06-26 | 최진원 | 56h | 56h | 7 | 7 | 7 | 신논리모델 구축 | C02-1 1.2.3 |  |
| 104 | 1.3.2.1.8 | 대외통합 관리업무 엔티티 속성 도출 및 정의 | 3d | 2007-07-05 A | 2007-07-09 A | 100% | 2007-07-05 | 2007-07-09 | 3d | start no earlier than 2007-07-05 | 최진원 | 24h | 24h | 3 | 3 | 3 | 신논리모델 구축 | C02-1 1.2.3 |  |
| 105 | 1.3.2.2 | **엔티티 정의** | 5d | 2007-07-10 A | 2007-07-16 A | 100% | 2007-07-10 | 2007-07-16 | 5d |  |  | 160h | 160h | 20 | 20 | 20 | 신논리모델 구축 | C02-1 1.2.3 | 엔티티정의서 |
| 106 | 1.3.2.2.1 | 공통업무 엔티티 정의 | 5d | 2007-07-10 A | 2007-07-16 A | 100% | 2007-07-10 | 2007-07-16 | 5d | start no earlier than 2007-07-10 | 김도현 | 40h | 40h | 5 | 5 | 5 | 신논리모델 구축 | C02-1 1.2.3 |  |
| 107 | 1.3.2.2.2 | 채널업무 엔티티 정의 | 5d | 2007-07-10 A | 2007-07-16 A | 100% | 2007-07-10 | 2007-07-16 | 5d | start no earlier than 2007-07-10 | 김대일 | 40h | 40h | 5 | 5 | 5 | 신논리모델 구축 | C02-1 1.2.3 |  |
| 108 | 1.3.2.2.3 | 기능업무 엔티티 정의 | 5d | 2007-07-10 A | 2007-07-16 A | 100% | 2007-07-10 | 2007-07-16 | 5d | start no earlier than 2007-07-10 | 차진욱 | 40h | 40h | 5 | 5 | 5 | 신논리모델 구축 | C02-1 1.2.3 |  |
| 109 | 1.3.2.2.4 | 대외통합관리업무 엔티티 정의 | 5d | 2007-07-10 A | 2007-07-16 A | 100% | 2007-07-10 | 2007-07-16 | 5d | start no earlier than 2007-07-10 | 최진원 | 40h | 40h | 5 | 5 | 5 | 신논리모델 구축 | C02-1 1.2.3 |  |
| 110 | 1.3.3 | 인수테스트기준정의 | 6d | 2007-07-09 A | 2007-07-16 A | 100% | 2007-07-09 | 2007-07-16 | 6d | start no earlier than 2007-07-09 | 이병훈; 함미숙; 최진원 | 144h | 144h | 18 | 18 | 18 | 신논리모델 구축 | C02-1 1.2.3 | 인수테스트기준서 |

| ID | WBS | Task | Duration | Start | Finish | Complete | Baseline start | Baseline finish | Baseline duration | Constraint | Resources | Work | Actual work | Cost | Baseline cost | Actual cost | Text20 | Text26 | Text30 |
| --- | --- | --- | --- | --- | --- | --- | --- | --- | --- | --- | --- | --- | --- | --- | --- | --- | --- | --- | --- |
| 111 | 1.4 | **분석단계관리활동** | 57d | 2007-05-03 A | 2007-07-25 A | 100% | 2007-05-03 | 2007-07-25 | 57d |  |  | 72h | 72h | 9 | 9 | 9 | 단계완료 | C02-1 1.6.8 |  |
| 112 | 1.4.1 | 오리엔테이션(1차) 실시 | 1d | 2007-05-03 A | 2007-05-03 A | 100% | 2007-05-03 | 2007-05-03 | 1d | start no earlier than 2007-05-03 |  |  |  |  |  |  | 단계완료 | C02-1 1.6.8 |  |
| 113 | 1.4.2 | 과업대비표 매핑 | 3d | 2007-05-07 A | 2007-05-09 A | 100% | 2007-05-07 | 2007-05-09 | 3d | start no earlier than 2007-05-07 |  |  |  |  |  |  | 단계완료 | C02-1 1.6.8 |  |
| 114 | 1.4.3 | 형상관리 Tool 교육 | 2d | 2007-05-17 A | 2007-05-18 A | 100% | 2007-05-17 | 2007-05-18 | 2d | start no earlier than 2007-05-17 |  |  |  |  |  |  | 단계완료 | C02-1 1.6.8 |  |
| 115 | 1.4.4 | Inspection(1차) 실시 및 조치 | 3d | 2007-07-04 A | 2007-07-06 A | 100% | 2007-07-04 | 2007-07-06 | 3d | start no earlier than 2007-07-04 |  |  |  |  |  |  | 단계완료 | C02-1 1.6.8 |  |
| 116 | 1.4.5 | 요구사항추적표 매핑 | 2d | 2007-07-09 A | 2007-07-10 A | 100% | 2007-07-09 | 2007-07-10 | 2d | start no earlier than 2007-07-09 |  |  |  |  |  |  | 단계완료 | C02-1 1.6.8 |  |
| 117 | 1.4.6 | 요구사항규모측정방법 교육 및 측정 | 1d | 2007-07-13 A | 2007-07-13 A | 100% | 2007-07-13 | 2007-07-13 | 1d | start no earlier than 2007-07-13 |  |  |  |  |  |  | 단계완료 | C02-1 1.6.8 |  |
| 118 | 1.4.7 | 고객검토(1차) 실시 및 조치 | 3d | 2007-07-23 A | 2007-07-25 A | 100% | 2007-07-23 | 2007-07-25 | 3d | start no earlier than 2007-07-23 | 이병훈; 함미숙; 최진원 | 72h | 72h | 9 | 9 | 9 | 단계완료 | C02-1 1.6.8 |  |
| 119 | 2 | **설계** | 116d | 2007-07-09 A | 2007-12-26 A | 100% | 2007-07-09 | 2007-12-26 | 116d |  |  | 8000.96h | 8000.96h | 1,000.12 | 1,000.12 | 1,000.12 | 설계 | C02-1 1.3 |  |
| 120 | 2.1 | **기본 설계** | 39d | 2007-08-01 A | 2007-09-28 A | 100% | 2007-08-01 | 2007-09-28 | 39d |  |  | 2736h | 2736h | 342 | 342 | 342 | 기본설계 | C02-1 1.3.1 |  |
| 121 | 2.1.1 | **단계착수준비** | 6d | 2007-08-01 A | 2007-08-08 A | 100% | 2007-08-01 | 2007-08-08 | 6d |  |  | 80h | 80h | 10 | 10 | 10 | 기본설계 | C02-1 1.3.1 |  |
| 122 | 2.1.1.1 | 분석단계 산출물 시정조치 | 4d | 2007-08-01 A | 2007-08-06 A | 100% | 2007-08-01 | 2007-08-06 | 4d | start no earlier than 2007-08-01 | 김대일 [66.7%]; 이병훈 [66.7%]; 최진원 [66.7%] | 64h | 64h | 8 | 8 | 8 | 기본설계 | C02-1 1.3.1 |  |
| 123 | 2.1.1.2 | Arispm 검토 및 보완 | 2d | 2007-08-07 A | 2007-08-08 A | 100% | 2007-08-07 | 2007-08-08 | 2d | start no earlier than 2007-08-07 | 함미숙 | 16h | 16h | 2 | 2 | 2 | 기본설계 | C02-1 1.3.1 |  |
| 124 | 2.1.2 | **시스템구조 설계** | 30d | 2007-08-09 A | 2007-09-20 A | 100% | 2007-08-09 | 2007-09-20 | 30d |  |  | 680h | 680h | 85 | 85 | 85 | 기본설계 | C02-1 1.3.1 |  |
| 125 | 2.1.2.1 | 어플리케이션구조도작성 | 30d | 2007-08-09 A | 2007-09-20 A | 100% | 2007-08-09 | 2007-09-20 | 30d | start no earlier than 2007-08-09 | 김대일 [66.7%]; 이병훈 [66.7%]; 최진원 [66.7%] | 480h | 480h | 60 | 60 | 60 | 기본설계 | C02-1 1.3.1 | 어플리케이션구조도 |
| 126 | 2.1.2.2 | 프로그램목록작성 | 5d | 2007-08-27 A | 2007-08-31 A | 100% | 2007-08-27 | 2007-08-31 | 5d | start no earlier than 2007-08-27 | 김대일 [83.3%]; 김도현 [83.3%]; 이기호 [83.3%]; 이병훈 [83.3%]; 주은영 [83.3%]; 최진원 [83.3%] | 200h | 200h | 25 | 25 | 25 | 기본설계 | C02-1 1.3.1 | 프로그램목록 |
| 127 | 2.1.3 | **데이터코드 설계** | 5d | 2007-08-20 A | 2007-08-24 A | 100% | 2007-08-20 | 2007-08-24 | 5d |  |  | 40h | 40h | 5 | 5 | 5 | 기본설계 | C02-1 1.3.1 |  |
| 128 | 2.1.3.1 | 데이터코드 설계서 Draft작성 | 1d | 2007-08-20 A | 2007-08-20 A | 100% | 2007-08-20 | 2007-08-20 | 1d | start no earlier than 2007-08-20 | 김도현 | 8h | 8h | 1 | 1 | 1 | 기본설계 | C02-1 1.3.1 | 데이터코드설계서 |
| 129 | 2.1.3.2 | 데이터코드 설계서 상세 1차 작성 | 2d | 2007-08-21 A | 2007-08-22 A | 100% | 2007-08-21 | 2007-08-22 | 2d | start no earlier than 2007-08-21 | 김도현 | 16h | 16h | 2 | 2 | 2 | 기본설계 | C02-1 1.3.1 | 데이터코드설계서 |
| 130 | 2.1.3.3 | 데이터코드 설계서 상세 2차 작성 | 2d | 2007-08-23 A | 2007-08-24 A | 100% | 2007-08-23 | 2007-08-24 | 2d | start no earlier than 2007-08-23 | 김도현 | 16h | 16h | 2 | 2 | 2 | 기본설계 | C02-1 1.3.1 | 데이터코드설계서 |
| 131 | 2.1.4 | **데이터베이스 기본설계** | 31d | 2007-08-13 A | 2007-09-28 A | 100% | 2007-08-13 | 2007-09-28 | 31d |  |  | 824h | 824h | 103 | 103 | 103 | 기본설계 | C02-1 1.3.1 |  |
| 132 | 2.1.4.1 | 상세논리모델링 1차 작성 | 14d | 2007-08-13 A | 2007-08-31 A | 100% | 2007-08-13 | 2007-08-31 | 14d | start no earlier than 2007-08-13 | 김대일 [75%]; 김도현 [75%]; 차진욱 [75%]; 주은영 [75%] | 336h | 336h | 42 | 42 | 42 | 기본설계 | C02-1 1.3.1 | ERD(논리) |
| 133 | 2.1.4.2 | 상세논리모델링 2차 작성 | 10d | 2007-09-03 A | 2007-09-14 A | 100% | 2007-09-03 | 2007-09-14 | 10d | start no earlier than 2007-09-03 | 김대일 [80%]; 김도현 [80%]; 이기호 [80%]; 주은영 [80%]; 차진욱 [80%] | 320h | 320h | 40 | 40 | 40 | 기본설계 | C02-1 1.3.1 | ERD(논리) |
| 134 | 2.1.4.3 | 상세논리모델링 검토 및 검증 | 7d | 2007-09-17 A | 2007-09-28 A | 100% | 2007-09-17 | 2007-09-28 | 7d | start no earlier than 2007-09-17 | 김대일 [75%]; 김도현 [75%]; 차진욱 [75%]; 최진원 [75%] | 168h | 168h | 21 | 21 | 21 | 기본설계 | C02-1 1.3.1 | ERD(논리) |
| 135 | 2.1.5 | 인터페이스설계(공동망) | 7d | 2007-09-17 A | 2007-09-28 A | 100% | 2007-09-17 | 2007-09-28 | 7d | start no earlier than 2007-09-17 | 김도현 [75%]; 이기호 [75%]; 이병훈 [75%]; 정동호 [75%] | 168h | 168h | 21 | 21 | 21 | 기본설계 | C02-1 1.3.1 | 인터페이스설계서 |

| ID | WBS | Task | Duration | Start | Finish | Predecessors | Complete | Baseline start | Baseline finish | Baseline duration | Constraint | Resources | Work | Actual work | Cost | Baseline cost | Actual cost | Text20 | Text26 | Text30 |
| --- | --- | --- | --- | --- | --- | --- | --- | --- | --- | --- | --- | --- | --- | --- | --- | --- | --- | --- | --- | --- |
| 136 | 2.1.6 | **화면 및 보고서 설계** | 22d | 2007-08-27 A | 2007-09-28 A |  | 100% | 2007-08-27 | 2007-09-28 | 22d |  |  | 912h | 912h | 114 | 114 | 114 | 기본설계 | C02-1 1.3.1 |  |
| 137 | 2.1.6.1 | **화면설계** | 22d | 2007-08-27 A | 2007-09-28 A |  | 100% | 2007-08-27 | 2007-09-28 | 22d |  |  | 832h | 832h | 104 | 104 | 104 | 기본설계 | C02-1 1.3.1 |  |
| 138 | 2.1.6.1.1 | 화면표준정의서 작성 | 2d | 2007-08-27 A | 2007-08-28 A |  | 100% | 2007-08-27 | 2007-08-28 | 2d | start no earlier than 2007-08-27 | 최진원 [66.7%]; 김대일 [66.7%]; 조병권 [66.7%] | 32h | 32h | 4 | 4 | 4 | 기본설계 | C02-1 1.3.1 |  |
| 139 | 2.1.6.1.2 | 화면목록작성 | 2d | 2007-08-29 A | 2007-08-30 A |  | 100% | 2007-08-29 | 2007-08-30 | 2d | start no earlier than 2007-08-29 | 조병권 [66.7%]; 김대일 [66.7%]; 최진원 [66.7%] | 32h | 32h | 4 | 4 | 4 | 기본설계 | C02-1 1.3.1 | 화면목록 |
| 140 | 2.1.6.1.3 | 화면레이아웃작성 | 10d | 2007-08-31 A | 2007-09-13 A |  | 100% | 2007-08-31 | 2007-09-13 | 10d | start no earlier than 2007-08-31 | 최진원 [85.7%]; 김대일 [85.7%]; 김철희 [85.7%]; 목진국 [85.7%]; 박제성 [85.7%]; 배민선 [85.7%]; 최덕원 [85.7%] | 480h | 480h | 60 | 60 | 60 | 기본설계 | C02-1 1.3.1 | 화면레이아웃 |
| 141 | 2.1.6.1.4 | 사용자검토 및 확인 | 3d | 2007-09-14 A | 2007-09-18 A |  | 100% | 2007-09-14 | 2007-09-18 | 3d | start no earlier than 2007-09-14 | 최진원 [66.7%]; 김대일 [66.7%]; 이병훈 [66.7%] | 48h | 48h | 6 | 6 | 6 | 기본설계 | C02-1 1.3.1 |  |
| 142 | 2.1.6.1.5 | 화면레이아웃수정 | 5d | 2007-09-19 A | 2007-09-28 A | 141 | 100% | 2007-09-19 | 2007-09-28 | 5d | start no earlier than 2007-09-19 | 김대일 [85.7%]; 김철희 [85.7%]; 목진국 [85.7%]; 박제성 [85.7%]; 배민선 [85.7%]; 최덕원 [85.7%]; 최진원 [85.7%] | 240h | 240h | 30 | 30 | 30 | 기본설계 | C02-1 1.3.1 |  |
| 143 | 2.1.6.2 | **보고서 설계** | 8d | 2007-09-14 A | 2007-09-28 A |  | 100% | 2007-09-14 | 2007-09-28 | 8d |  |  | 80h | 80h | 10 | 10 | 10 | 기본설계 | C02-1 1.3.1 |  |
| 144 | 2.1.6.2.1 | 보고서표준정의서 작성 | 1d | 2007-09-14 A | 2007-09-14 A |  | 100% | 2007-09-14 | 2007-09-14 | 1d | start no earlier than 2007-09-14 | 최진원 | 8h | 8h | 1 | 1 | 1 | 기본설계 | C02-1 1.3.1 |  |
| 145 | 2.1.6.2.2 | 보고서목록작성 | 1d | 2007-09-17 A | 2007-09-17 A | 144 | 100% | 2007-09-17 | 2007-09-17 | 1d |  | 최진원 | 8h | 8h | 1 | 1 | 1 | 기본설계 | C02-1 1.3.1 | 보고서목록 |
| 146 | 2.1.6.2.3 | 보고서레이아웃작성 | 4d | 2007-09-17 A | 2007-09-20 A |  | 100% | 2007-09-17 | 2007-09-20 | 4d | start no earlier than 2007-09-17 | 최진원 [50%]; 김대일 [50%] | 32h | 32h | 4 | 4 | 4 | 기본설계 | C02-1 1.3.1 | 보고서레이아웃 |
| 147 | 2.1.6.2.4 | 사용자검토 및 확인 | 2d | 2007-09-20 A | 2007-09-21 A |  | 100% | 2007-09-20 | 2007-09-21 | 2d | start no earlier than 2007-09-20 | 김대일 [50%]; 최진원 [50%] | 16h | 16h | 2 | 2 | 2 | 기본설계 | C02-1 1.3.1 |  |
| 148 | 2.1.6.2.5 | 보고서레이아웃수정 | 2d | 2007-09-27 A | 2007-09-28 A |  | 100% | 2007-09-27 | 2007-09-28 | 2d | start no earlier than 2007-09-27 | 최진원 [50%]; 김대일 [50%] | 16h | 16h | 2 | 2 | 2 | 기본설계 | C02-1 1.3.1 |  |
| 149 | 2.1.7 | 사용자검토 및 확인 | 2d | 2007-09-27 A | 2007-09-28 A |  | 100% | 2007-09-27 | 2007-09-28 | 2d | start no earlier than 2007-09-27 | 최진원 [66.7%]; 김대일 [66.7%]; 이병훈 [66.7%] | 32h | 32h | 4 | 4 | 4 | 기본설계 | C02-1 1.3.1 |  |
| 150 | 2.2 | **상세 설계** | 39d | 2007-10-01 A | 2007-11-23 A |  | 100% | 2007-10-01 | 2007-11-23 | 39d |  |  | 2816h | 2816h | 352 | 352 | 352 | 상세설계 | C02-1 1.3.3 |  |
| 151 | 2.2.1 | **데이터베이스 상세설계** | 17d | 2007-10-01 A | 2007-10-24 A |  | 100% | 2007-10-01 | 2007-10-24 | 17d |  |  | 376h | 376h | 47 | 47 | 47 | 상세설계 | C02-1 1.3.3 |  |
| 152 | 2.2.1.1 | **ERD작성** | 14d | 2007-10-01 A | 2007-10-19 A |  | 100% | 2007-10-01 | 2007-10-19 | 14d |  |  | 248h | 248h | 31 | 31 | 31 | 상세설계 | C02-1 1.3.3 |  |
| 153 | 2.2.1.1.1 | ERD작성 | 9d | 2007-10-01 A | 2007-10-12 A |  | 100% | 2007-10-01 | 2007-10-12 | 9d | start no earlier than 2007-10-01 | 최진원 [66.7%]; 김도현 [66.7%]; 김철희 | 168h | 168h | 21 | 21 | 21 | 상세설계 | C02-1 1.3.3 | ERD(물리) |
| 154 | 2.2.1.1.2 | ERD리뷰 및 수정 | 5d | 2007-10-15 A | 2007-10-19 A |  | 100% | 2007-10-15 | 2007-10-19 | 5d | start no earlier than 2007-10-15 | 김도현 [66.7%]; 김철희 [66.7%]; 최진원 [66.7%] | 80h | 80h | 10 | 10 | 10 | 상세설계 | C02-1 1.3.3 |  |
| 155 | 2.2.1.2 | 테이블목록 및 테이블정의서 작성 | 3d | 2007-10-22 A | 2007-10-24 A |  | 100% | 2007-10-22 | 2007-10-24 | 3d | start no earlier than 2007-10-22 | 최진원 [66.7%]; 김도현 [66.7%]; 김철희 [66.7%] | 48h | 48h | 6 | 6 | 6 | 상세설계 | C02-1 1.3.3 | 테이블정의서,테이블목록 |
| 156 | 2.2.1.3 | **프로그램대 테이블 상관도 작성** | 5d | 2007-10-18 A | 2007-10-24 A |  | 100% | 2007-10-18 | 2007-10-24 | 5d |  |  | 80h | 80h | 10 | 10 | 10 | 상세설계 | C02-1 1.3.3 |  |
| 157 | 2.2.1.3.1 | 프로그램대 테이블 상관도 작성 1차 | 2d | 2007-10-18 A | 2007-10-19 A |  | 100% | 2007-10-18 | 2007-10-19 | 2d | start no earlier than 2007-10-18 | 김철희 [66.7%]; 김도현 [66.7%]; 최진원 [66.7%] | 32h | 32h | 4 | 4 | 4 | 상세설계 | C02-1 1.3.3 | 프로그램대테이블상관도 |
| 158 | 2.2.1.3.2 | 프로그램대 테이블 상관도 작성 2차 | 3d | 2007-10-22 A | 2007-10-24 A |  | 100% | 2007-10-22 | 2007-10-24 | 3d | start no earlier than 2007-10-22 | 최진원 [66.7%]; 김도현 [66.7%]; 김철희 [66.7%] | 48h | 48h | 6 | 6 | 6 | 상세설계 | C02-1 1.3.3 | 프로그램대테이블상관도 |
| 159 | 2.2.2 | **온라인도움말 설계** | 5d | 2007-10-15 A | 2007-10-19 A |  | 100% | 2007-10-15 | 2007-10-19 | 5d |  |  | 40h | 40h | 5 | 5 | 5 | 상세설계 | C02-1 1.3.3 |  |
| 160 | 2.2.2.1 | 온라인도움말 설계서 작성 Draft | 2d | 2007-10-15 A | 2007-10-16 A |  | 100% | 2007-10-15 | 2007-10-16 | 2d | start no earlier than 2007-10-15 | 함미숙 | 16h | 16h | 2 | 2 | 2 | 상세설계 | C02-1 1.3.3 | 온라인도움말설계서 |
| 161 | 2.2.2.2 | 온라인도움말 설계서 작성 상세 | 3d | 2007-10-17 A | 2007-10-19 A |  | 100% | 2007-10-17 | 2007-10-19 | 3d | start no earlier than 2007-10-17 | 함미숙 | 24h | 24h | 3 | 3 | 3 | 상세설계 | C02-1 1.3.3 |  |

| ID | WBS | Task | Duration | Start | Finish | Complete | Baseline start | Baseline finish | Baseline duration | Constraint | Resources | Work | Actual work | Cost | Baseline cost | Actual cost | Text20 | Text26 | Text30 |
| --- | --- | --- | --- | --- | --- | --- | --- | --- | --- | --- | --- | --- | --- | --- | --- | --- | --- | --- | --- |
| 162 | 2.2.3 | **인터페이스설계(상세)** | 10d | 2007-10-01 A | 2007-10-15 A | 100% | 2007-10-01 | 2007-10-15 | 10d |  |  | 80h | 80h | 10 | 10 | 10 | 상세설계 | C02-1 1.3.3 |  |
| 163 | 2.2.3.1 | 인터페이스 설계서 작성 1차 | 5d | 2007-10-01 A | 2007-10-08 A | 100% | 2007-10-01 | 2007-10-08 | 5d | start no earlier than 2007-10-01 | 이병훈 [50%]; 김대일 [50%] | 40h | 40h | 5 | 5 | 5 | 상세설계 | C02-1 1.3.3 | 인터페이스설계서 |
| 164 | 2.2.3.2 | 인터페이스 설계서 작성 2차 | 5d | 2007-10-09 A | 2007-10-15 A | 100% | 2007-10-09 | 2007-10-15 | 5d | start no earlier than 2007-10-09 | 김대일 [50%]; 이병훈 [50%] | 40h | 40h | 5 | 5 | 5 | 상세설계 | C02-1 1.3.3 |  |
| 165 | 2.2.4 | **공통프로그램 설계** | 20d | 2007-10-22 A | 2007-11-16 A | 100% | 2007-10-22 | 2007-11-16 | 20d |  |  | 320h | 320h | 40 | 40 | 40 | 상세설계 | C02-1 1.3.3 |  |
| 166 | 2.2.4.1 | 프로그램사양서작성(공통) 1차 | 5d | 2007-10-22 A | 2007-10-26 A | 100% | 2007-10-22 | 2007-10-26 | 5d | start no earlier than 2007-10-22 | 이병훈 [66.7%]; 김대일 [66.7%]; 최진원 [66.7%] | 80h | 80h | 10 | 10 | 10 | 상세설계 | C02-1 1.3.3 | 프로그램사양서(공통) |
| 167 | 2.2.4.2 | 프로그램사양서작성(공통) 2차 | 5d | 2007-10-29 A | 2007-11-02 A | 100% | 2007-10-29 | 2007-11-02 | 5d | start no earlier than 2007-10-29 | 최진원 [66.7%]; 김대일 [66.7%]; 이병훈 [66.7%] | 80h | 80h | 10 | 10 | 10 | 상세설계 | C02-1 1.3.3 | 프로그램사양서(공통) |
| 168 | 2.2.4.3 | 프로그램사양서작성(공통) 3차 | 10d | 2007-11-05 A | 2007-11-16 A | 100% | 2007-11-05 | 2007-11-16 | 10d | start no earlier than 2007-11-05 | 이병훈 [66.7%]; 김대일 [66.7%]; 최진원 [66.7%] | 160h | 160h | 20 | 20 | 20 | 상세설계 | C02-1 1.3.3 | 프로그램사양서(공통) |
| 169 | 2.2.5 | **서버프로그램설계** | 20d | 2007-10-22 A | 2007-11-16 A | 100% | 2007-10-22 | 2007-11-16 | 20d |  |  | 1440h | 1440h | 180 | 180 | 180 | 상세설계 | C02-1 1.3.3 |  |
| 170 | 2.2.5.1 | 프로그램사양서작성(서버) 1차 | 2d | 2007-10-22 A | 2007-10-23 A | 100% | 2007-10-22 | 2007-10-23 | 2d | start no earlier than 2007-10-22 | 남길원 [90%]; 목진국 [90%]; 박제성 [90%]; 심은경 [90%]; 이기호 [90%]; 이동민 [90%]; 장인기 [90%]; 주은영 [90%]; 차진욱 [90%]; 최덕원 [90%] | 144h | 144h | 18 | 18 | 18 | 상세설계 | C02-1 1.3.3 | 프로그램사양서(서버) |
| 171 | 2.2.5.2 | 프로그램사양서작성(서버) 2차 | 3d | 2007-10-24 A | 2007-10-26 A | 100% | 2007-10-24 | 2007-10-26 | 3d | start no earlier than 2007-10-24 | 남길원 [90%]; 목진국 [90%]; 박제성 [90%]; 심은경 [90%]; 이기호 [90%]; 이동민 [90%]; 장인기 [90%]; 주은영 [90%]; 차진욱 [90%]; 최덕원 [90%] | 216h | 216h | 27 | 27 | 27 | 상세설계 | C02-1 1.3.3 | 프로그램사양서(서버) |
| 172 | 2.2.5.3 | 프로그램사양서작성(서버) 3차 | 5d | 2007-10-29 A | 2007-11-02 A | 100% | 2007-10-29 | 2007-11-02 | 5d | start no earlier than 2007-10-29 | 남길원 [90%]; 목진국 [90%]; 박제성 [90%]; 심은경 [90%]; 이기호 [90%]; 이동민 [90%]; 장인기 [90%]; 주은영 [90%]; 차진욱 [90%]; 최덕원 [90%] | 360h | 360h | 45 | 45 | 45 | 상세설계 | C02-1 1.3.3 | 프로그램사양서(서버) |
| 173 | 2.2.5.4 | 프로그램사양서작성(서버) 4차 | 10d | 2007-11-05 A | 2007-11-16 A | 100% | 2007-11-05 | 2007-11-16 | 10d | start no earlier than 2007-11-05 | 남길원 [90%]; 목진국 [90%]; 박제성 [90%]; 심은경 [90%]; 이기호 [90%]; 이동민 [90%]; 장인기 [90%]; 주은영 [90%]; 차진욱 [90%]; 최덕원 [90%] | 720h | 720h | 90 | 90 | 90 | 상세설계 | C02-1 1.3.3 | 프로그램사양서(서버) |
| 174 | 2.2.6 | **클라이언트프로그램설계** | 15d | 2007-10-29 A | 2007-11-16 A | 100% | 2007-10-29 | 2007-11-16 | 15d |  |  | 480h | 480h | 60 | 60 | 60 | 상세설계 | C02-1 1.3.3 |  |
| 175 | 2.2.6.1 | 프로그램사양서작성(클라이언트) 1차 | 5d | 2007-10-29 A | 2007-11-02 A | 100% | 2007-10-29 | 2007-11-02 | 5d | start no earlier than 2007-10-29 | 김대일; 김철희; 배민선; 최덕원 | 160h | 160h | 20 | 20 | 20 | 상세설계 | C02-1 1.3.3 | 프로그램사양서(클라이언트) |
| 176 | 2.2.6.2 | 프로그램사양서작성(클라이언트) 2차 | 10d | 2007-11-05 A | 2007-11-16 A | 100% | 2007-11-05 | 2007-11-16 | 10d | start no earlier than 2007-11-05 | 김대일; 김철희; 배민선; 최덕원 | 320h | 320h | 40 | 40 | 40 | 상세설계 | C02-1 1.3.3 | 프로그램사양서(클라이언트) |
| 177 | 2.2.7 | 사용자검토 및 확인 | 5d | 2007-11-19 A | 2007-11-23 A | 100% | 2007-11-19 | 2007-11-23 | 5d | start no earlier than 2007-11-19 | 최진원 [66.7%]; 김대일 [66.7%]; 이병훈 [66.7%] | 80h | 80h | 10 | 10 | 10 | 상세설계 | C02-1 1.3.3 |  |
| 178 | 2.3 | **컨버젼 설계** | 37d | 2007-11-01 A | 2007-12-21 A | 100% | 2007-11-01 | 2007-12-21 | 37d |  |  | 1168h | 1168h | 146 | 146 | 146 | 컨버전 설계 | C02-1 1.3.5 |  |
| 179 | 2.3.1 | **컨버젼계획 수립** | 2d | 2007-11-01 A | 2007-11-02 A | 100% | 2007-11-01 | 2007-11-02 | 2d |  |  | 48h | 48h | 6 | 6 | 6 | 컨버전 설계 | C02-1 1.3.5 |  |
| 180 | 2.3.1.1 | 컨버전계획서 작성 | 2d | 2007-11-01 A | 2007-11-02 A | 100% | 2007-11-01 | 2007-11-02 | 2d | start no earlier than 2007-11-01 | 이병훈 [50%]; 김대일 [50%]; 최진원 [50%]; 김도현 [75%]; 김철희 [75%] | 48h | 48h | 6 | 6 | 6 | 컨버전 설계 | C02-1 1.3.5 | 컨버전계획서 |
| 181 | 2.3.2 | **데이터매핑설계** | 35d | 2007-11-05 A | 2007-12-21 A | 100% | 2007-11-05 | 2007-12-21 | 35d |  |  | 1120h | 1120h | 140 | 140 | 140 | 컨버전 설계 | C02-1 1.3.5 |  |
| 182 | 2.3.2.1 | 매핑정의서 작성 1차 | 10d | 2007-11-05 A | 2007-11-16 A | 100% | 2007-11-05 | 2007-11-16 | 10d | start no earlier than 2007-11-05 | 김대일 [80%]; 김도현 [80%]; 김철희 [80%]; 이병훈 [80%]; 최진원 [80%] | 320h | 320h | 40 | 40 | 40 | 컨버전 설계 | C02-1 1.3.5 | 매핑정의서 |
| 183 | 2.3.2.2 | 매핑정의서 작성 2차 | 25d | 2007-11-19 A | 2007-12-21 A | 100% | 2007-11-19 | 2007-12-21 | 25d | start no earlier than 2007-11-19 | 김대일 [80%]; 김도현 [80%]; 김철희 [80%]; 이병훈 [80%]; 최진원 [80%] | 800h | 800h | 100 | 100 | 100 | 컨버전 설계 | C02-1 1.3.5 | 매핑정의서 |
| 184 | 2.3.3 | 사용자검토 및 확인 | 15d | 2007-12-03 A | 2007-12-21 A | 100% | 2007-12-03 | 2007-12-21 | 15d | start no earlier than 2007-11-29 |  |  |  |  |  |  | 컨버전 설계 | C02-1 1.3.5 |  |
| 185 | 2.4 | **단계말 정리** | 17d | 2007-12-03 A | 2007-12-26 A | 100% | 2007-12-03 | 2007-12-26 | 17d |  |  | 272.96h | 272.96h | 34.12 | 34.12 | 34.12 | 단계완료 | C02-1 1.6.8 |  |
| 186 | 2.4.1 | 요구사항추적표 검토 | 5d | 2007-12-03 A | 2007-12-07 A | 100% | 2007-12-03 | 2007-12-07 | 5d | start no earlier than 2007-12-03 | 최진원 [66.7%]; 김대일 [66.7%]; 이병훈 [66.7%] | 80h | 80h | 10 | 10 | 10 | 단계완료 | C02-1 1.6.8 |  |
| 187 | 2.4.2 | 프로젝트 제출물 검토 | 10d | 2007-12-10 A | 2007-12-21 A | 100% | 2007-12-10 | 2007-12-21 | 10d | start no earlier than 2007-12-10 | 최진원 [67%]; 김대일 [67%]; 이병훈 [67%] | 160.8h | 160.8h | 20.1 | 20.1 | 20.1 | 단계완료 | C02-1 1.6.8 |  |
| 188 | 2.4.3 | 다음단계 일정 계획 수립 | 2d | 2007-12-24 A | 2007-12-26 A | 100% | 2007-12-24 | 2007-12-26 | 2d | start no earlier than 2007-12-24 | 최진원 [50.2%]; 김대일 [50.2%]; 이병훈 [50.2%]; 함미숙 [50.2%] | 32.16h | 32.16h | 4.02 | 4.02 | 4.02 | 단계완료 | C02-1 1.6.8 |  |

| ID | WBS | Task | Duration | Start | Finish | Predecessors | Complete | Baseline start | Baseline finish | Baseline duration | Constraint | Resources | Work | Actual work | Cost | Baseline cost | Actual cost | Text20 | Text26 | Text30 |
| --- | --- | --- | --- | --- | --- | --- | --- | --- | --- | --- | --- | --- | --- | --- | --- | --- | --- | --- | --- | --- |
| 189 | 2.5 | **설계단계관리활동** | 104d | 2007-07-09 A | 2007-12-07 A |  | 100% | 2007-07-09 | 2007-12-07 | 104d |  |  | 1008h | 1008h | 126 | 126 | 126 | 품질활동수행 | C02-1 1.6.2 |  |
| 190 | 2.5.1 | 설계 SPM검토및 수정 | 5d | 2007-07-09 A | 2007-07-13 A |  | 100% | 2007-07-09 | 2007-07-13 | 5d | start no earlier than 2007-07-09 | 함미숙 | 40h | 40h | 5 | 5 | 5 | 품질활동수행 | C02-1 1.6.2 |  |
| 191 | 2.5.2 | 분석감리조치 | 5d | 2007-07-23 A | 2007-07-27 A |  | 100% | 2007-07-23 | 2007-07-27 | 5d | start no earlier than 2007-07-23 | 함미숙 | 40h | 40h | 5 | 5 | 5 | 품질활동수행 | C02-1 1.6.2 |  |
| 192 | 2.5.3 | 오리엔테이션(2차)실시 | 5d | 2007-07-23 A | 2007-07-27 A |  | 100% | 2007-07-23 | 2007-07-27 | 5d | start no earlier than 2007-07-23 | 함미숙 | 40h | 40h | 5 | 5 | 5 | 품질활동수행 | C02-1 1.6.2 |  |
| 193 | 2.5.4 | QAO심사(2차)조치 | 17d | 2007-09-03 A | 2007-09-28 A |  | 100% | 2007-09-03 | 2007-09-28 | 17d | start no earlier than 2007-09-03 | 함미숙; 김대일; 이병훈 | 408h | 408h | 51 | 51 | 51 | 품질활동수행 | C02-1 1.6.2 |  |
| 194 | 2.5.5 | Inspection(2차) 실시 및 조치 | 10d | 2007-11-19 A | 2007-11-30 A |  | 100% | 2007-11-19 | 2007-11-30 | 10d | start no earlier than 2007-11-19 | 최진원 [75%]; 김대일 [75%]; 이병훈 [75%]; 함미숙 [75%] | 240h | 240h | 30 | 30 | 30 | 품질활동수행 | C02-1 1.6.2 |  |
| 195 | 2.5.6 | 설계요구사항추적표매핑 | 5d | 2007-11-26 A | 2007-11-30 A |  | 100% | 2007-11-26 | 2007-11-30 | 5d | start no earlier than 2007-11-26 | 함미숙 [75%]; 김대일 [75%]; 이병훈 [75%]; 최진원 [75%] | 120h | 120h | 15 | 15 | 15 | 품질활동수행 | C02-1 1.6.2 |  |
| 196 | 2.5.7 | 고객검토(2차)실시 및 검토 | 5d | 2007-12-03 A | 2007-12-07 A |  | 100% | 2007-12-03 | 2007-12-07 | 5d | start no earlier than 2007-12-03 | 이병훈; 함미숙; 최진원 | 120h | 120h | 15 | 15 | 15 | 품질활동수행 | C02-1 1.6.2 |  |
| 197 | 3 | **개발** | 117d | 2007-12-17 A | 2008-06-05 A |  | 100% | 2007-12-17 | 2008-06-05 | 117d |  |  |  |  |  |  |  | 개발 | C02-1 1.4 |  |
| 198 | 3.1 | **코딩 및 단위테스트 실시** | 102d | 2008-01-02 A | 2008-05-29 A |  | 100% | 2008-01-02 | 2008-05-29 | 102d |  |  |  |  |  |  |  | 코딩 및 단위테스트 실시 | C02-1 1.4.1 |  |
| 199 | 3.1.1 | 단위테스트체크리스트작성(1주) | 5d | 2008-01-02 A | 2008-01-08 A |  | 100% | 2008-01-02 | 2008-01-08 | 5d | start no earlier than 2008-01-02 |  |  |  |  |  |  | 코딩 및 단위테스트 실시 | C02-1 1.4.1 |  |
| 200 | 3.1.2 | 단위테스트체크리스트작성(2주) | 5d | 2008-01-09 A | 2008-01-15 A | 199 | 100% | 2008-01-09 | 2008-01-15 | 5d |  |  |  |  |  |  |  | 코딩 및 단위테스트 실시 | C02-1 1.4.1 |  |
| 201 | 3.1.3 | 단위테스트체크리스트작성(3주) | 5d | 2008-01-16 A | 2008-01-22 A | 200 | 100% | 2008-01-16 | 2008-01-22 | 5d |  |  |  |  |  |  |  | 코딩 및 단위테스트 실시 | C02-1 1.4.1 |  |
| 202 | 3.1.4 | 단위테스트체크리스트작성(4주) | 5d | 2008-01-23 A | 2008-01-29 A | 201 | 100% | 2008-01-23 | 2008-01-29 | 5d |  |  |  |  |  |  |  | 코딩 및 단위테스트 실시 | C02-1 1.4.1 |  |
| 203 | 3.1.5 | 프로그램모델 및 공통프로그램 개발 | 20d | 2008-01-11 A | 2008-02-12 A |  | 100% | 2008-01-11 | 2008-02-12 | 20d | start no earlier than 2008-02-01 |  |  |  |  |  |  | 코딩 및 단위테스트 실시 | C02-1 1.4.1 | 소스코드 |
| 204 | 3.1.6 | 프로그램 코딩 | 5d | 2008-01-14 A | 2008-01-18 A |  | 100% | 2008-01-14 | 2008-01-18 | 5d | finish no earlier than 2008-05-30 |  |  |  |  |  |  | 코딩 및 단위테스트 실시 | C02-1 1.4.1 | 소스코드 |
| 205 | 3.1.7 | 단위테스트 실시 | 72d | 2008-02-18 A | 2008-05-29 A |  | 100% | 2008-02-18 | 2008-05-29 | 72d | start no earlier than 2008-02-18 |  |  |  |  |  |  | 코딩 및 단위테스트 실시 | C02-1 1.4.1 | 단위테스트결과서 |
| 206 | 3.2 | **개발단계 관리 활동** | 117d | 2007-12-17 A | 2008-06-05 A |  | 100% | 2007-12-17 | 2008-06-05 | 117d |  |  |  |  |  |  |  | 품질활동수행 | C02-1 1.6.2 |  |
| 207 | 3.2.1 | 개발 SPM검토및 수정 | 1d | 2007-12-31 A | 2007-12-31 A |  | 100% | 2007-12-31 | 2007-12-31 | 1d | start no earlier than 2007-12-10 |  |  |  |  |  |  | 품질활동수행 | C02-1 1.6.2 |  |
| 208 | 3.2.2 | 설계감리조치 | 5d | 2007-12-17 A | 2007-12-21 A |  | 100% | 2007-12-17 | 2007-12-21 | 5d | start no earlier than 2007-12-03 |  |  |  |  |  |  | 품질활동수행 | C02-1 1.6.2 |  |
| 209 | 3.2.3 | 오리엔테이션(3차)실시 | 1d | 2007-12-21 A | 2007-12-21 A |  | 100% | 2007-12-21 | 2007-12-21 | 1d | start no earlier than 2007-12-17 |  |  |  |  |  |  | 품질활동수행 | C02-1 1.6.2 |  |
| 210 | 3.2.4 | QAO심사(3차)조치 | 71d | 2008-02-04 A | 2008-05-19 A |  | 100% | 2008-02-04 | 2008-05-19 | 71d | start no earlier than 2008-02-04 |  |  |  |  |  |  | 품질활동수행 | C02-1 1.6.2 |  |
| 211 | 3.2.5 | Inspection(3차) 실시 및 조치 | 64d | 2008-03-03 A | 2008-06-02 A |  | 100% | 2008-03-03 | 2008-06-02 | 64d | start no earlier than 2008-03-03 |  |  |  |  |  |  | 품질활동수행 | C02-1 1.6.2 |  |
| 212 | 3.2.6 | 개발요구사항추적표매핑 | 4d | 2008-06-02 A | 2008-06-05 A |  | 100% | 2008-06-02 | 2008-06-05 | 4d | start no earlier than 2008-06-02 |  |  |  |  |  |  | 품질활동수행 | C02-1 1.6.2 |  |

| ID | WBS | Task | Duration | Start | Finish | Predecessors | Complete | Remaining | Baseline start | Baseline finish | Baseline duration | Total slack | Constraint | Text20 | Text26 | Text30 |
| --- | --- | --- | --- | --- | --- | --- | --- | --- | --- | --- | --- | --- | --- | --- | --- | --- |
| 213 | 4 | **통합테스트** | 217d | 2008-04-22 A | 2009-02-20 |  | 96% | 8.61d | 2008-04-22 | 2009-02-20 | 217d | 22d |  | 개발 | C02-1 1.4 |  |
| 214 | 4.1 | **통합테스트** | 70d | 2008-04-22 A | 2008-08-01 A |  | 100% |  | 2008-04-22 | 2008-08-01 | 70d |  |  | 테스트 실시 | C02-1 1.4.2 |  |
| 215 | 4.1.1 | **통합테스트계획 수립** | 22d | 2008-04-29 A | 2008-05-30 A |  | 100% |  | 2008-04-29 | 2008-05-30 | 22d |  |  | 테스트 실시 | C02-1 1.4.2 | 통합테스트계획서 |
| 216 | 4.1.1.1 | 통합테스트계획서 작성 | 12d | 2008-04-29 A | 2008-05-16 A |  | 100% |  | 2008-04-29 | 2008-05-16 | 12d |  | finish no earlier than 2008-05-16 | 테스트 실시 | C02-1 1.4.2 |  |
| 217 | 4.1.1.2 | 통합테스트계획서 보완 | 5d | 2008-05-26 A | 2008-05-30 A |  | 100% |  | 2008-05-26 | 2008-05-30 | 5d |  | finish no earlier than 2008-05-30 | 테스트 실시 | C02-1 1.4.2 |  |
| 218 | 4.1.2 | **통합테스트 시나리오 작성** | 27d | 2008-04-22 A | 2008-05-30 A |  | 100% |  | 2008-04-22 | 2008-05-30 | 27d |  |  | 테스트 실시 | C02-1 1.4.2 | 통합테스트시나리오 |
| 219 | 4.1.2.1 | 통합테스트시나리오목록 작성 | 7d | 2008-04-22 A | 2008-04-30 A |  | 100% |  | 2008-04-22 | 2008-04-30 | 7d |  | finish no earlier than 2008-04-30 | 테스트 실시 | C02-1 1.4.2 |  |
| 220 | 4.1.2.2 | 통합테스트시나리오목록 보완 | 4d | 2008-05-13 A | 2008-05-16 A |  | 100% |  | 2008-05-13 | 2008-05-16 | 4d |  | finish no earlier than 2008-05-16 | 테스트 실시 | C02-1 1.4.2 |  |
| 221 | 4.1.2.3 | 통합테스트시나리오 작성(1차) | 10d | 2008-05-01 A | 2008-05-16 A | 219 | 100% |  | 2008-05-01 | 2008-05-16 | 10d |  | start no earlier than 2008-05-01 | 테스트 실시 | C02-1 1.4.2 |  |
| 222 | 4.1.2.4 | 통합테스트시나리오 작성(2차) | 5d | 2008-05-19 A | 2008-05-23 A |  | 100% |  | 2008-05-19 | 2008-05-23 | 5d |  | finish no earlier than 2008-05-23 | 테스트 실시 | C02-1 1.4.2 |  |
| 223 | 4.1.2.5 | 통합테스트시나리오 보완 | 5d | 2008-05-26 A | 2008-05-30 A |  | 100% |  | 2008-05-26 | 2008-05-30 | 5d |  | finish no earlier than 2008-05-30 | 테스트 실시 | C02-1 1.4.2 |  |
| 224 | 4.1.3 | 1차 통합테스트 실시 | 5d | 2008-06-09 A | 2008-06-13 A |  | 100% |  | 2008-06-09 | 2008-06-13 | 5d |  | start no earlier than 2008-06-09 | 테스트 실시 | C02-1 1.4.2 | 통합테스트시나리오(결과) |
| 225 | 4.1.4 | 1차 통합테스트 보완 | 5d | 2008-06-16 A | 2008-06-20 A | 224 | 100% |  | 2008-06-16 | 2008-06-20 | 5d |  |  | 테스트 실시 | C02-1 1.4.2 |  |
| 226 | 4.1.5 | 2차 통합테스트 실시 | 5d | 2008-06-23 A | 2008-06-27 A |  | 100% |  | 2008-06-23 | 2008-06-27 | 5d |  | start no earlier than 2008-06-23 | 테스트 실시 | C02-1 1.4.2 | 통합테스트시나리오(결과) |
| 227 | 4.1.6 | 2차 통합테스트 보완 | 5d | 2008-06-30 A | 2008-07-04 A | 226 | 100% |  | 2008-06-30 | 2008-07-04 | 5d |  |  | 테스트 실시 | C02-1 1.4.2 |  |
| 228 | 4.1.7 | 3차 통합테스트 실시 | 5d | 2008-07-07 A | 2008-07-11 A |  | 100% |  | 2008-07-07 | 2008-07-11 | 5d |  | start no earlier than 2008-07-07 | 테스트 실시 | C02-1 1.4.2 | 통합테스트시나리오(결과) |
| 229 | 4.1.8 | 3차 통합테스트 보완 | 5d | 2008-07-14 A | 2008-07-21 A | 228 | 100% |  | 2008-07-14 | 2008-07-21 | 5d |  | finish no earlier than 2008-07-18 | 테스트 실시 | C02-1 1.4.2 |  |
| 230 | 4.1.9 | 4차 통합테스트 실시 | 5d | 2008-07-21 A | 2008-07-25 A |  | 100% |  | 2008-07-21 | 2008-07-25 | 5d |  | start no earlier than 2008-07-21 | 테스트 실시 | C02-1 1.4.2 | 통합테스트시나리오(결과) |
| 231 | 4.1.10 | 4차 통합테스트 보완 | 5d | 2008-07-28 A | 2008-08-01 A | 230 | 100% |  | 2008-07-28 | 2008-08-01 | 5d |  |  | 테스트 실시 | C02-1 1.4.2 |  |
| 232 | 4.2 | **통합테스트 단계 관리 활동** | 200d | 2008-05-19 A | 2009-02-20 |  | 87% | 26.32d | 2008-05-19 | 2009-02-20 | 200d | 22d |  | 품질활동수행 | C02-1 1.6.2 |  |
| 233 | 4.2.1 | 통합테스트 단계 계획 검토 및 수정 | 5d | 2008-05-19 A | 2008-05-23 A |  | 100% |  | 2008-05-19 | 2008-05-23 | 5d |  | start no earlier than 2008-05-19 | 품질활동수행 | C02-1 1.6.2 |  |
| 234 | 4.2.2 | 통합테스트 SPM 검토 및 수정 | 5d | 2008-05-19 A | 2008-05-23 A |  | 100% |  | 2008-05-19 | 2008-05-23 | 5d |  | start no earlier than 2008-05-19 | 품질활동수행 | C02-1 1.6.2 |  |
| 235 | 4.2.3 | 오리엔테이션(4차) 실시 | 5d | 2008-05-29 A | 2008-06-04 A |  | 100% |  | 2008-05-29 | 2008-06-04 | 5d |  | start no earlier than 2008-05-29 | 품질활동수행 | C02-1 1.6.2 |  |
| 236 | 4.2.4 | QAO심사(4차) 조치 | 5d | 2008-06-16 A | 2008-06-20 A |  | 100% |  | 2008-06-16 | 2008-06-20 | 5d |  | finish no earlier than 2008-06-20 | 품질활동수행 | C02-1 1.6.2 |  |
| 237 | 4.2.5 | Inspection(4차) 실시 및 조치 | 4d | 2008-07-14 A | 2008-07-18 A |  | 100% |  | 2008-07-14 | 2008-07-18 | 4d |  | finish no earlier than 2008-07-18 | 품질활동수행 | C02-1 1.6.2 |  |
| 238 | 4.2.6 | 통합테스트 요구사항추적표 맵핑 | 9d | 2008-09-08 A | 2008-09-19 A |  | 100% |  | 2008-09-08 | 2008-09-19 | 9d |  | finish no earlier than 2008-09-19 | 품질활동수행 | C02-1 1.6.2 |  |
| 239 | 4.2.7 | 실적규모측정방법 교육 및 측정 | 5d | 2009-02-16 | 2009-02-20 |  |  |  | 2009-02-16 | 2009-02-20 | 5d | 22d | finish no earlier than 2009-02-20 | 품질활동수행 | C02-1 1.6.2 |  |

| ID | WBS | Task | Duration | Start | Finish | Predecessors | Complete | Remaining | Baseline start | Baseline finish | Baseline duration | Total slack | Constraint | Text20 | Text26 | Text30 |
| --- | --- | --- | --- | --- | --- | --- | --- | --- | --- | --- | --- | --- | --- | --- | --- | --- |
| 240 | 5 | **영업점테스트** | 181d | 2008-07-07 A | 2009-03-13 |  | 64% | 65.07d | 2008-07-07 | 2009-03-13 | 181d | 7d |  | 개발 | C02-1 1.4 |  |
| 241 | 5.1 | **시스템사용교육** | 122d | 2008-07-07 A | 2008-12-18 |  | 72% | 34.53d | 2008-07-07 | 2008-12-18 | 122d | 66d |  | 시스템 사용교육 | C02-1 1.5.3 |  |
| 242 | 5.1.1 | 교육훈련계획수립 | 5d | 2008-07-07 A | 2008-07-11 A |  | 100% |  | 2008-07-07 | 2008-07-11 | 5d |  | start no earlier than 2008-07-07 | 시스템 사용교육 | C02-1 1.5.3 | 교육계획서 |
| 243 | 5.1.2 | 화면오퍼레이션 매뉴얼 작성 | 19d | 2008-07-28 A | 2008-08-21 A |  | 100% |  | 2008-07-28 | 2008-08-21 | 19d |  | start no earlier than 2008-07-28 | 테스트 실시 | C02-1 1.4.2 |  |
| 244 | 5.1.3 | 운영매뉴얼작성 | 15d | 2008-11-10 | 2008-11-27 |  |  |  | 2008-11-10 | 2008-11-27 | 15d | 82d | start no earlier than 2008-11-10 | 시스템 사용교육 | C02-1 1.5.3 | 운영자매뉴얼 |
| 245 | 5.1.4 | **사용자교육실시** | 57d | 2008-07-07 A | 2008-09-23 A |  | 100% |  | 2008-07-07 | 2008-09-23 | 57d |  |  | 시스템 사용교육 | C02-1 1.5.3 | 교육결과서 |
| 246 | 5.1.4.1 | 동영상교재 작성 | 9d | 2008-07-07 A | 2008-07-18 A |  | 100% |  | 2008-07-07 | 2008-07-18 | 9d |  | start no earlier than 2008-07-07 | 시스템 사용교육 | C02-1 1.5.3 |  |
| 247 | 5.1.4.2 | 집합교육 교재 작성 | 9d | 2008-07-21 A | 2008-07-31 A |  | 100% |  | 2008-07-21 | 2008-07-31 | 9d |  | start no earlier than 2008-07-21 | 시스템 사용교육 | C02-1 1.5.3 |  |
| 248 | 5.1.4.3 | 시범점 사용자 교육 | 6d | 2008-08-05 A | 2008-08-11 A |  | 100% |  | 2008-08-05 | 2008-08-11 | 6d |  | start no earlier than 2008-08-05 | 시스템 사용교육 | C02-1 1.5.3 |  |
| 249 | 5.1.4.4 | 영업점 사용자 교육 | 28d | 2008-08-18 A | 2008-09-23 A |  | 100% |  | 2008-08-18 | 2008-09-23 | 28d |  | start no earlier than 2008-08-18 | 시스템 사용교육 | C02-1 1.5.3 |  |
| 250 | 5.1.5 | 운영자교육실시 | 15d | 2008-12-01 | 2008-12-18 |  |  |  | 2008-12-01 | 2008-12-18 | 15d | 66d | start no earlier than 2008-12-01 | 시스템 사용교육 | C02-1 1.5.3 | 교육결과서 |
| 251 | 5.2 | **영업점테스트** | 104d | 2008-07-21 A | 2008-12-07 |  | 95% | 4.73d | 2008-07-21 | 2008-12-07 | 104d | 75d |  | 테스트 실시 | C02-1 1.4.2 |  |
| 252 | 5.2.1 | 영업점테스트계획 수립 | 9d | 2008-07-21 A | 2008-07-31 A |  | 100% |  | 2008-07-21 | 2008-07-31 | 9d |  | finish no earlier than 2008-07-31 | 테스트 실시 | C02-1 1.4.2 | 영업점테스트계획서 |
| 253 | 5.2.2 | 영업점테스트 시나리오 작성 | 6d | 2008-07-24 A | 2008-07-31 A |  | 100% |  | 2008-07-24 | 2008-07-31 | 6d |  | finish no earlier than 2008-07-31 | 테스트 실시 | C02-1 1.4.2 |  |
| 254 | 5.2.3 | 1차 시범점테스트 실시 및 보완 | 1d | 2008-08-09 A | 2008-08-09 A | 252 | 100% |  | 2008-08-09 | 2008-08-09 | 1d |  | start no earlier than 2008-08-09 | 테스트 실시 | C02-1 1.4.2 | 영업점테스트 시나리오(결과) |
| 255 | 5.2.4 | 2차 시범점테스트 실시 및 보완 | 1d | 2008-08-31 A | 2008-08-31 A | 254 | 100% |  | 2008-08-31 | 2008-08-31 | 1d |  | start no earlier than 2008-08-31 | 테스트 실시 | C02-1 1.4.2 | 영업점테스트 시나리오(결과) |
| 256 | 5.2.5 | 1차 영업점테스트 실시 및 보완 | 1d | 2008-09-21 A | 2008-09-21 A | 255 | 100% |  | 2008-09-21 | 2008-09-21 | 1d |  | start no earlier than 2008-09-21 | 테스트 실시 | C02-1 1.4.2 | 영업점테스트 시나리오(결과) |
| 257 | 5.2.6 | 2차 영업점테스트 실시 및 보완 | 1d | 2008-10-12 A | 2008-10-12 A |  | 100% |  | 2008-10-12 | 2008-10-12 | 1d |  | start no earlier than 2008-10-12 | 테스트 실시 | C02-1 1.4.2 | 영업점테스트 시나리오(결과) |
| 258 | 5.2.7 | 3차 영업점테스트 실시 및 보완 | 1d | 2008-11-02 A | 2008-11-02 A |  | 100% |  | 2008-11-02 | 2008-11-02 | 1d |  | start no earlier than 2008-11-02 | 테스트 실시 | C02-1 1.4.2 | 영업점테스트 시나리오(결과) |
| 259 | 5.2.8 | 4차 영업점테스트 실시 및 보완 | 1d | 2008-11-15 A | 2008-11-15 A |  | 100% |  | 2008-11-15 | 2008-11-15 | 1d |  | start no earlier than 2008-11-15 | 테스트 실시 | C02-1 1.4.2 | 영업점테스트 시나리오(결과) |
| 260 | 5.2.9 | 5차 영업점테스트 실시 및 보완 | 1d | 2008-12-07 | 2008-12-07 |  |  |  | 2008-12-07 | 2008-12-07 | 1d | 75d | start no earlier than 2008-12-07 | 테스트 실시 | C02-1 1.4.2 | 영업점테스트 시나리오(결과) |
| 261 | 5.3 | **인수테스트실시** | 13d | 2008-12-22 | 2009-01-09 |  |  |  | 2008-12-22 | 2009-01-09 | 13d | 52d |  | 테스트 실시 | C02-1 1.4.2 |  |
| 262 | 5.3.1 | 인수테스트실시 | 13d | 2008-12-22 | 2009-01-09 |  |  |  | 2008-12-22 | 2009-01-09 | 13d | 52d | start no earlier than 2008-12-22 | 테스트 실시 | C02-1 1.4.2 | 인수테스트기준서(결과),결함보고서(인수) |
| 263 | 5.4 | **이행** | 17d | 2009-01-05 A | 2009-01-27 |  | 60% | 6.8d | 2009-01-05 | 2009-01-27 | 17d | 40d |  | 컨버전 및 릴리이즈 | C02-1 1.5.2 |  |
| 264 | 5.4.1 | 이행계획 수립 | 5d | 2009-01-05 A | 2009-01-09 A |  | 100% |  | 2009-01-05 | 2009-01-09 | 5d |  | start no earlier than 2009-01-05 | 컨버전 및 릴리이즈 | C02-1 1.5.2 | 이행계획서 |
| 265 | 5.4.2 | 이행시나리오작성 | 5d | 2009-01-12 A | 2009-01-16 |  | 80% | 1d | 2009-01-12 | 2009-01-16 | 5d | 47d | start no earlier than 2009-01-12 | 컨버전 및 릴리이즈 | C02-1 1.5.2 | 이행시나리오 |
| 266 | 5.4.3 | 이행실시 | 5d | 2009-01-21 | 2009-01-27 |  |  |  | 2009-01-21 | 2009-01-27 | 5d | 40d | start no earlier than 2009-01-21 | 컨버전 및 릴리이즈 | C02-1 1.5.2 | 운영시스템 |

| ID | WBS | Task | Duration | Start | Finish | Complete | Remaining | Baseline start | Baseline finish | Baseline duration | Total slack | Constraint | Text20 | Text26 | Text30 |
| --- | --- | --- | --- | --- | --- | --- | --- | --- | --- | --- | --- | --- | --- | --- | --- |
| 267 | 5.5 | **영업점테스트 단계 관리 활동** | 181d | 2008-07-07 A | 2009-03-13 | 59% | 73.67d | 2008-07-07 | 2009-03-13 | 181d | 7d |  | 품질활동수행 | C02-1 1.6.2 |  |
| 268 | 5.5.1 | 영업점테스트 단계 계획 검토 및 수정 | 5d | 2008-07-07 A | 2008-07-11 A | 100% |  | 2008-07-07 | 2008-07-11 | 5d |  | start no earlier than 2008-07-07 | 품질활동수행 | C02-1 1.6.2 |  |
| 269 | 5.5.2 | 영업점테스트 SPM 검토 및 수정 | 4d | 2008-07-14 A | 2008-07-18 A | 100% |  | 2008-07-14 | 2008-07-18 | 4d |  | start no earlier than 2008-07-14 | 품질활동수행 | C02-1 1.6.2 |  |
| 270 | 5.5.3 | 오리엔테이션(5차)실시 | 6d | 2008-08-01 A | 2008-08-08 A | 100% |  | 2008-08-01 | 2008-08-08 | 6d |  | start no earlier than 2008-08-01 | 품질활동수행 | C02-1 1.6.2 |  |
| 271 | 5.5.4 | QAO심사(5차) 조치 | 51d | 2008-09-08 A | 2008-11-14 A | 100% |  | 2008-09-08 | 2008-11-14 | 51d |  | start no earlier than 2008-09-08 | 품질활동수행 | C02-1 1.6.2 |  |
| 272 | 5.5.5 | Inspection(5차) 실시 및 조치 | 11d | 2008-12-01 A | 2008-12-12 | 90% | 1.1d | 2008-12-01 | 2008-12-12 | 11d | 70d | start no earlier than 2008-12-01 | 품질활동수행 | C02-1 1.6.2 |  |
| 273 | 5.5.6 | 제품검사 조치 | 28d | 2008-12-15 | 2009-01-23 |  |  | 2008-12-15 | 2009-01-23 | 28d | 42d | start no earlier than 2008-12-15 | 품질활동수행 | C02-1 1.6.2 |  |
| 274 | 5.5.7 | 영업점테스트 요구사항추적표 매핑 | 10d | 2009-01-05 | 2009-01-16 |  |  | 2009-01-05 | 2009-01-16 | 10d | 47d | start no earlier than 2009-01-05 | 품질활동수행 | C02-1 1.6.2 |  |
| 275 | 5.5.8 | 고객검토(3차) 실시 및 조치 | 8d | 2008-12-22 | 2009-01-02 |  |  | 2008-12-22 | 2009-01-02 | 8d | 57d | start no earlier than 2008-12-22 | 품질활동수행 | C02-1 1.6.2 |  |
| 276 | 5.5.9 | 과업대비표 매핑 | 5d | 2009-03-09 | 2009-03-13 |  |  | 2009-03-09 | 2009-03-13 | 5d | 7d | start no earlier than 2009-03-09 | 품질활동수행 | C02-1 1.6.2 |  |
| 277 | 6 | **시스템안정화** | 40d | 2009-01-28 | 2009-03-24 |  |  | 2009-01-28 | 2009-03-24 | 40d | 0d |  | 구현 | C02-1 1.5 |  |
| 278 | 6.1 | **시스템운영** | 40d | 2009-01-28 | 2009-03-24 |  |  | 2009-01-28 | 2009-03-24 | 40d | 0d |  | 시범운영 | C02-1 1.5.4 |  |
| 279 | 6.1.1 | 시스템운영실시 | 40d | 2009-01-28 | 2009-03-24 |  |  | 2009-01-28 | 2009-03-24 | 40d | 0d | start no earlier than 2009-01-28 | 시범운영 | C02-1 1.5.4 | 시스템운영일지 |
