# 데이터모델링

Schedule from MS Project, 2007-05-08 to 2009-01-30, costs in ₩, A marks actual dates.
HSIC-0600001
�궪�꽦SDS

## Calendars

- 농협신용신시스템: Mon-Fri 08:00-12:00, 13:00-17:00; Sat-Sun off. Exceptions (off unless hours are given): 2007-05-24, 2007-06-06, 2007-07-17, 2007-08-15, 2007-09-24 to 2007-09-26, 2007-10-03, 2007-12-25, 2008-01-01, 2008-02-06 to 2008-02-08, 2008-05-01, 2008-05-05, 2008-05-12, 2008-06-06, 2008-07-17, 2008-08-15, 2008-09-15, 2008-10-03, 2008-12-25, 2009-01-01.

## Resources

| Resource | Rate |
| --- | --- |
| 강영욱 | 0.12 |
| 김욱진 | 0.12 |
| 최상운 | 0.12 |
| 신정아 | 0.12 |
| 지용식 | 0.12 |

## Schedule

| ID | WBS | Task | Duration | Start | Finish | Predecessors | Complete | Baseline start | Baseline finish | Baseline duration | Constraint | Resources | Work | Actual work | Cost | Baseline cost | Actual cost | Text20 | Text26 | Text30 |
| --- | --- | --- | --- | --- | --- | --- | --- | --- | --- | --- | --- | --- | --- | --- | --- | --- | --- | --- | --- | --- |
| 1 | 1 | **분석** | 48d? | 2007-05-08 A | 2007-07-16 A |  | 100% | 2007-05-08 | 2007-07-16 | 48d? | start no earlier than 2007-04-25 |  | 3208h | 3208h | 401 | 401 | 401 | 분석 | C02-1 1.2 |  |
| 2 | 1.1 | **현황분석** | 21d | 2007-05-08 A | 2007-06-07 A |  | 100% | 2007-05-08 | 2007-06-07 | 21d |  |  | 832h | 832h | 104 | 104 | 104 | 현황 평가 | C02-1 1.2.1 |  |
| 3 | 1.1.1 | 현행 데이터 아키텍쳐 분석 | 8d | 2007-05-11 A | 2007-05-22 A |  | 100% | 2007-05-11 | 2007-05-22 | 8d | start no earlier than 2007-05-02 | 강영욱; 김욱진; 최상운; 지용식 | 256h | 256h | 32 | 32 | 32 | 현황 평가 | C02-1 1.2.1 |  |
| 4 | 1.1.2 | **현행 물리 DB 분석** | 21d | 2007-05-08 A | 2007-06-07 A |  | 100% | 2007-05-08 | 2007-06-07 | 21d |  |  | 576h | 576h | 72 | 72 | 72 | 현황 평가 | C02-1 1.2.1 |  |
| 5 | 1.1.2.1 | 수신 | 17d | 2007-05-08 A | 2007-05-31 A |  | 100% | 2007-05-08 | 2007-05-31 | 17d | finish no earlier than 2007-05-31 | 지용식 | 136h | 136h | 17 | 17 | 17 | 현황 평가 | C02-1 1.2.1 |  |
| 6 | 1.1.2.2 | 여신/외국환 | 17d | 2007-05-08 A | 2007-05-31 A |  | 100% | 2007-05-08 | 2007-05-31 | 17d | finish no earlier than 2007-05-31 | 최상운 | 136h | 136h | 17 | 17 | 17 | 현황 평가 | C02-1 1.2.1 |  |
| 7 | 1.1.2.3 | 공통(고객/상품/공통정보) | 17d | 2007-05-08 A | 2007-05-31 A |  | 100% | 2007-05-08 | 2007-05-31 | 17d | finish no earlier than 2007-05-31 | 신정아 | 136h | 136h | 17 | 17 | 17 | 현황 평가 | C02-1 1.2.1 |  |
| 8 | 1.1.2.4 | 대외통합 | 21d | 2007-05-08 A | 2007-06-07 A |  | 100% | 2007-05-08 | 2007-06-07 | 21d | finish no earlier than 2007-05-31 | 김욱진 | 168h | 168h | 21 | 21 | 21 | 현황 평가 | C02-1 1.2.1 |  |
| 9 | 1.2 | **요구사항정의** | 31d | 2007-05-16 A | 2007-06-29 A |  | 100% | 2007-05-16 | 2007-06-29 | 31d |  |  | 496h | 496h | 62 | 62 | 62 | 요구사항 정의 | C02-1 1.2.2 |  |
| 10 | 1.2.1 | 데이터 요구사항 정의 | 31d | 2007-05-16 A | 2007-06-29 A |  | 100% | 2007-05-16 | 2007-06-29 | 31d | finish no earlier than 2007-06-15 | 강영욱; 최상운 | 496h | 496h | 62 | 62 | 62 | 요구사항 정의 | C02-1 1.2.2 | 데이터 요구사항 정의서 |
| 11 | 1.3 | **모델링표준정의** | 9d | 2007-05-15 A | 2007-05-28 A |  | 100% | 2007-05-15 | 2007-05-28 | 9d |  |  | 128h | 128h | 16 | 16 | 16 | 신논리모델 구축 | C02-1 1.2.3 |  |
| 12 | 1.3.1 | 모델링 환경 정의 | 2d | 2007-05-15 A | 2007-05-16 A |  | 100% | 2007-05-15 | 2007-05-16 | 2d | start no earlier than 2007-05-15 | 강영욱; 지용식 | 32h | 32h | 4 | 4 | 4 | 신논리모델 구축 | C02-1 1.2.3 |  |
| 13 | 1.3.2 | 용어 표준화 정책 검토 및 협의 | 2d | 2007-05-17 A | 2007-05-18 A | 12 | 100% | 2007-05-17 | 2007-05-18 | 2d | start no earlier than 2007-05-17 | 강영욱; 지용식 | 32h | 32h | 4 | 4 | 4 | 신논리모델 구축 | C02-1 1.2.3 |  |
| 14 | 1.3.3 | 도메인 정책 검토 및 협의 | 2d | 2007-05-21 A | 2007-05-22 A | 13 | 100% | 2007-05-21 | 2007-05-22 | 2d |  | 강영욱; 지용식 | 32h | 32h | 4 | 4 | 4 | 신논리모델 구축 | C02-1 1.2.3 |  |
| 15 | 1.3.4 | 모델링 표기법 정책 정의 | 1d | 2007-05-23 A | 2007-05-23 A |  | 100% | 2007-05-23 | 2007-05-23 | 1d | finish no earlier than 2007-05-23 | 강영욱; 지용식 | 16h | 16h | 2 | 2 | 2 | 신논리모델 구축 | C02-1 1.2.3 | 모델링 표준안 |
| 16 | 1.3.5 | 모델링 표준안 리뷰 및 공유 | 2d | 2007-05-25 A | 2007-05-28 A | 15 | 100% | 2007-05-25 | 2007-05-28 | 2d | start no earlier than 2007-05-25 | 강영욱 | 16h | 16h | 2 | 2 | 2 | 신논리모델 구축 | C02-1 1.2.3 |  |
| 17 | 1.4 | **개념모델링** | 19d? | 2007-05-28 A | 2007-06-22 A |  | 100% | 2007-05-28 | 2007-06-22 | 19d? |  |  | 680h | 680h | 85 | 85 | 85 | 신논리모델 구축 | C02-1 1.2.3 |  |
| 18 | 1.4.1 | 모델링 표준안 교육 | 1d? | 2007-05-30 A | 2007-05-30 A |  | 100% | 2007-05-30 | 2007-05-30 | 1d? | start no earlier than 2007-05-30 | 강영욱 | 8h | 8h | 1 | 1 | 1 | 신논리모델 구축 | C02-1 1.2.3 |  |
| 19 | 1.4.2 | **개념모델 작성 및 지원** | 19d? | 2007-05-28 A | 2007-06-22 A |  | 100% | 2007-05-28 | 2007-06-22 | 19d? |  |  | 672h | 672h | 84 | 84 | 84 | 신논리모델 구축 | C02-1 1.2.3 |  |
| 20 | 1.4.2.1 | 수신(요구불) 개념모델 작성 | 16d? | 2007-05-31 A | 2007-06-22 A |  | 100% | 2007-05-31 | 2007-06-22 | 16d? | finish no earlier than 2007-06-22 | 지용식 | 128h | 128h | 16 | 16 | 16 | 신논리모델 구축 | C02-1 1.2.3 |  |
| 21 | 1.4.2.2 | 수신(기타) 개념모델 작성 지원 | 16d? | 2007-05-31 A | 2007-06-22 A |  | 100% | 2007-05-31 | 2007-06-22 | 16d? | finish no earlier than 2007-06-22 | 지용식 | 128h | 128h | 16 | 16 | 16 | 신논리모델 구축 | C02-1 1.2.3 |  |
| 22 | 1.4.2.3 | 여신/외국환 개념모델 작성 지원 | 16d? | 2007-05-31 A | 2007-06-22 A |  | 100% | 2007-05-31 | 2007-06-22 | 16d? | finish no earlier than 2007-06-22 | 최상운 | 128h | 128h | 16 | 16 | 16 | 신논리모델 구축 | C02-1 1.2.3 |  |
| 23 | 1.4.2.4 | 공통(상품) 개념모델 작성 | 11d? | 2007-05-28 A | 2007-06-15 A |  | 100% | 2007-05-28 | 2007-06-15 | 11d? | finish no earlier than 2007-06-15 | 신정아 | 88h | 88h | 11 | 11 | 11 | 신논리모델 구축 | C02-1 1.2.3 |  |
| 24 | 1.4.2.5 | 공통(고객/공통정보) 개념모델 작성 지원 | 11d? | 2007-05-31 A | 2007-06-15 A |  | 100% | 2007-05-31 | 2007-06-15 | 11d? | finish no earlier than 2007-06-15 | 신정아 | 88h | 88h | 11 | 11 | 11 | 신논리모델 구축 | C02-1 1.2.3 |  |
| 25 | 1.4.2.6 | 대외통합 개념모델 작성 및 지원 | 14d? | 2007-06-04 A | 2007-06-22 A |  | 100% | 2007-06-04 | 2007-06-22 | 14d? | finish no earlier than 2007-06-22 | 김욱진 | 112h | 112h | 14 | 14 | 14 | 신논리모델 구축 | C02-1 1.2.3 |  |

| ID | WBS | Task | Duration | Start | Finish | Complete | Baseline start | Baseline finish | Baseline duration | Constraint | Resources | Work | Actual work | Cost | Baseline cost | Actual cost | Text20 | Text26 |
| --- | --- | --- | --- | --- | --- | --- | --- | --- | --- | --- | --- | --- | --- | --- | --- | --- | --- | --- |
| 26 | 1.5 | **논리모델링** | 30d? | 2007-06-04 A | 2007-07-16 A | 100% | 2007-06-04 | 2007-07-16 | 30d? |  |  | 1072h | 1072h | 134 | 134 | 134 | 신논리모델 구축 | C02-1 1.2.3 |
| 27 | 1.5.1 | **논리 모델 구축 및 지원** | 30d? | 2007-06-04 A | 2007-07-16 A | 100% | 2007-06-04 | 2007-07-16 | 30d? |  |  | 760h | 760h | 95 | 95 | 95 | 신논리모델 구축 | C02-1 1.2.3 |
| 28 | 1.5.1.1 | 수신(요구불) 논리 모델 구축 | 16d | 2007-06-25 A | 2007-07-16 A | 100% | 2007-06-25 | 2007-07-16 | 16d | start no earlier than 2007-06-25 | 지용식 | 128h | 128h | 16 | 16 | 16 | 신논리모델 구축 | C02-1 1.2.3 |
| 29 | 1.5.1.2 | 수신(기타) 논리모델 구축 지원 | 16d? | 2007-06-25 A | 2007-07-16 A | 100% | 2007-06-25 | 2007-07-16 | 16d? | start no earlier than 2007-06-25 | 지용식 | 128h | 128h | 16 | 16 | 16 | 신논리모델 구축 | C02-1 1.2.3 |
| 30 | 1.5.1.3 | 여신/외국환 논리모델 구축 지원 | 16d | 2007-06-25 A | 2007-07-16 A | 100% | 2007-06-25 | 2007-07-16 | 16d | start no earlier than 2007-06-25 | 최상운 | 128h | 128h | 16 | 16 | 16 | 신논리모델 구축 | C02-1 1.2.3 |
| 31 | 1.5.1.4 | 공통(상품) 논리모델 구축 | 20d | 2007-06-04 A | 2007-07-02 A | 100% | 2007-06-04 | 2007-07-02 | 20d | finish no earlier than 2007-07-02 | 신정아 | 160h | 160h | 20 | 20 | 20 | 신논리모델 구축 | C02-1 1.2.3 |
| 32 | 1.5.1.5 | 공통(고객/공통정보) 논리모델 구축 지원 | 11d? | 2007-06-18 A | 2007-07-02 A | 100% | 2007-06-18 | 2007-07-02 | 11d? | start no earlier than 2007-06-18 | 신정아 | 88h | 88h | 11 | 11 | 11 | 신논리모델 구축 | C02-1 1.2.3 |
| 33 | 1.5.1.6 | 대외통합 논리모델 구축 및 지원 | 16d | 2007-06-25 A | 2007-07-16 A | 100% | 2007-06-25 | 2007-07-16 | 16d | start no earlier than 2007-06-25 | 김욱진 | 128h | 128h | 16 | 16 | 16 | 신논리모델 구축 | C02-1 1.2.3 |
| 34 | 1.5.2 | **논리 모델 검토 및 검증** | 16d | 2007-06-25 A | 2007-07-16 A | 100% | 2007-06-25 | 2007-07-16 | 16d |  |  | 312h | 312h | 39 | 39 | 39 | 신논리모델 구축 | C02-1 1.2.3 |
| 35 | 1.5.2.1 | 수신 | 11d | 2007-07-02 A | 2007-07-16 A | 100% | 2007-07-02 | 2007-07-16 | 11d | start no earlier than 2007-07-02 | 지용식 | 88h | 88h | 11 | 11 | 11 | 신논리모델 구축 | C02-1 1.2.3 |
| 36 | 1.5.2.2 | 여신/외국환 | 11d | 2007-07-02 A | 2007-07-16 A | 100% | 2007-07-02 | 2007-07-16 | 11d | start no earlier than 2007-07-02 | 최상운 | 88h | 88h | 11 | 11 | 11 | 신논리모델 구축 | C02-1 1.2.3 |
| 37 | 1.5.2.3 | 공통(고객/상품/공통정보) | 6d | 2007-06-25 A | 2007-07-02 A | 100% | 2007-06-25 | 2007-07-02 | 6d | start no earlier than 2007-06-25 | 신정아 | 48h | 48h | 6 | 6 | 6 | 신논리모델 구축 | C02-1 1.2.3 |
| 38 | 1.5.2.4 | 대외통합 | 11d | 2007-07-02 A | 2007-07-16 A | 100% | 2007-07-02 | 2007-07-16 | 11d | start no earlier than 2007-07-02 | 김욱진 | 88h | 88h | 11 | 11 | 11 | 신논리모델 구축 | C02-1 1.2.3 |
| 39 | 2 | **설계** | 104d? | 2007-07-09 A | 2007-12-07 A | 100% | 2007-07-09 | 2007-12-07 | 104d? |  |  | 7992h | 7992h | 999 | 999 | 999 | 설계 | C02-1 1.3 |
| 40 | 2.1 | **단계착수** | 14d? | 2007-07-09 A | 2007-07-27 A | 100% | 2007-07-09 | 2007-07-27 | 14d? |  |  | 120h | 120h | 15 | 15 | 15 | 단계착수 | C02-1 1.6.1 |
| 41 | 2.1.1 | 설계SPM 검토 및 수정 | 5d? | 2007-07-09 A | 2007-07-13 A | 100% | 2007-07-09 | 2007-07-13 | 5d? | finish no earlier than 2007-07-13 | 강영욱 | 40h | 40h | 5 | 5 | 5 | 단계착수 | C02-1 1.6.1 |
| 42 | 2.1.2 | 오리엔테이션(2차) 실시 | 5d? | 2007-07-23 A | 2007-07-27 A | 100% | 2007-07-23 | 2007-07-27 | 5d? | finish no earlier than 2007-07-27 | 강영욱 | 40h | 40h | 5 | 5 | 5 | 단계착수 | C02-1 1.6.1 |
| 43 | 2.1.3 | 분석 감리 조치 | 5d? | 2007-07-23 A | 2007-07-27 A | 100% | 2007-07-23 | 2007-07-27 | 5d? | finish no earlier than 2007-07-27 | 강영욱 | 40h | 40h | 5 | 5 | 5 | 단계착수 | C02-1 1.6.1 |
| 44 | 2.2 | **상세논리모델링** | 43d? | 2007-07-26 A | 2007-09-28 A | 100% | 2007-07-26 | 2007-09-28 | 43d? |  |  | 2704h | 2704h | 338 | 338 | 338 | 상세설계 | C02-1 1.3.3 |
| 45 | 2.2.1 | **논리 모델 상세화 및 지원** | 43d? | 2007-07-26 A | 2007-09-28 A | 100% | 2007-07-26 | 2007-09-28 | 43d? |  |  | 2064h | 2064h | 258 | 258 | 258 | 상세설계 | C02-1 1.3.3 |
| 46 | 2.2.1.1 | 수신(요구불) 논리모델 상세화 | 43d | 2007-07-26 A | 2007-09-28 A | 100% | 2007-07-26 | 2007-09-28 | 43d | finish no earlier than 2007-09-28 | 지용식 | 344h | 344h | 43 | 43 | 43 | 상세설계 | C02-1 1.3.3 |
| 47 | 2.2.1.2 | 수신(기타) 논리모델 상세화 지원 | 43d? | 2007-07-26 A | 2007-09-28 A | 100% | 2007-07-26 | 2007-09-28 | 43d? | finish no earlier than 2007-09-28 | 지용식 | 344h | 344h | 43 | 43 | 43 | 상세설계 | C02-1 1.3.3 |
| 48 | 2.2.1.3 | 여신/외국환 논리모델 상세화 지원 | 43d | 2007-07-26 A | 2007-09-28 A | 100% | 2007-07-26 | 2007-09-28 | 43d | finish no earlier than 2007-09-28 | 최상운 | 344h | 344h | 43 | 43 | 43 | 상세설계 | C02-1 1.3.3 |
| 49 | 2.2.1.4 | 공통(상품) 논리모델 상세화 | 43d | 2007-07-26 A | 2007-09-28 A | 100% | 2007-07-26 | 2007-09-28 | 43d | finish no earlier than 2007-09-28 | 신정아 | 344h | 344h | 43 | 43 | 43 | 상세설계 | C02-1 1.3.3 |
| 50 | 2.2.1.5 | 공통(고객/공통정보) 논리모델 상세화 지원 | 43d? | 2007-07-26 A | 2007-09-28 A | 100% | 2007-07-26 | 2007-09-28 | 43d? | finish no earlier than 2007-09-28 | 신정아 | 344h | 344h | 43 | 43 | 43 | 상세설계 | C02-1 1.3.3 |
| 51 | 2.2.1.6 | 대외통합 | 43d | 2007-07-26 A | 2007-09-28 A | 100% | 2007-07-26 | 2007-09-28 | 43d | finish no earlier than 2007-09-28 | 김욱진 | 344h | 344h | 43 | 43 | 43 | 상세설계 | C02-1 1.3.3 |

| ID | WBS | Task | Duration | Start | Finish | Complete | Baseline start | Baseline finish | Baseline duration | Constraint | Resources | Work | Actual work | Cost | Baseline cost | Actual cost | Text20 | Text26 |
| --- | --- | --- | --- | --- | --- | --- | --- | --- | --- | --- | --- | --- | --- | --- | --- | --- | --- | --- |
| 52 | 2.2.2 | **상세 논리 모델 검토 및 검증** | 20d | 2007-08-29 A | 2007-09-28 A | 100% | 2007-08-29 | 2007-09-28 | 20d |  |  | 640h | 640h | 80 | 80 | 80 | 상세설계 | C02-1 1.3.3 |
| 53 | 2.2.2.1 | 수신 | 20d | 2007-08-29 A | 2007-09-28 A | 100% | 2007-08-29 | 2007-09-28 | 20d | finish no earlier than 2007-09-28 | 지용식 | 160h | 160h | 20 | 20 | 20 | 상세설계 | C02-1 1.3.3 |
| 54 | 2.2.2.2 | 여신/외국환 | 20d | 2007-08-29 A | 2007-09-28 A | 100% | 2007-08-29 | 2007-09-28 | 20d | finish no earlier than 2007-09-28 | 최상운 | 160h | 160h | 20 | 20 | 20 | 상세설계 | C02-1 1.3.3 |
| 55 | 2.2.2.3 | 공통(고객/상품/공통정보) | 20d | 2007-08-29 A | 2007-09-28 A | 100% | 2007-08-29 | 2007-09-28 | 20d | finish no earlier than 2007-09-28 | 신정아 | 160h | 160h | 20 | 20 | 20 | 상세설계 | C02-1 1.3.3 |
| 56 | 2.2.2.4 | 대외통합 | 20d | 2007-08-29 A | 2007-09-28 A | 100% | 2007-08-29 | 2007-09-28 | 20d | finish no earlier than 2007-09-28 | 김욱진 | 160h | 160h | 20 | 20 | 20 | 상세설계 | C02-1 1.3.3 |
| 57 | 2.3 | **물리모델링** | 50d? | 2007-09-03 A | 2007-11-15 A | 100% | 2007-09-03 | 2007-11-15 | 50d? |  |  | 3360h | 3360h | 420 | 420 | 420 | 상세설계 | C02-1 1.3.3 |
| 58 | 2.3.1 | **물리 모델 구축 및 지원** | 50d? | 2007-09-03 A | 2007-11-15 A | 100% | 2007-09-03 | 2007-11-15 | 50d? |  |  | 2400h | 2400h | 300 | 300 | 300 | 상세설계 | C02-1 1.3.3 |
| 59 | 2.3.1.1 | 수신(요구불) 물리모델 구축 | 50d | 2007-09-03 A | 2007-11-15 A | 100% | 2007-09-03 | 2007-11-15 | 50d | start no earlier than 2007-09-03 | 지용식 | 400h | 400h | 50 | 50 | 50 | 상세설계 | C02-1 1.3.3 |
| 60 | 2.3.1.2 | 수신(기타) 물리모델 구축 지원 | 50d? | 2007-09-03 A | 2007-11-15 A | 100% | 2007-09-03 | 2007-11-15 | 50d? | finish no earlier than 2007-11-15 | 지용식 | 400h | 400h | 50 | 50 | 50 | 상세설계 | C02-1 1.3.3 |
| 61 | 2.3.1.3 | 여신/외국환 물리모델 구축 지원 | 50d | 2007-09-03 A | 2007-11-15 A | 100% | 2007-09-03 | 2007-11-15 | 50d | start no earlier than 2007-09-03 | 최상운 | 400h | 400h | 50 | 50 | 50 | 상세설계 | C02-1 1.3.3 |
| 62 | 2.3.1.4 | 공통(상품) 물리모델 구축 | 50d | 2007-09-03 A | 2007-11-15 A | 100% | 2007-09-03 | 2007-11-15 | 50d | start no earlier than 2007-09-03 | 신정아 | 400h | 400h | 50 | 50 | 50 | 상세설계 | C02-1 1.3.3 |
| 63 | 2.3.1.5 | 공통(고객/공통정보) 물리모델 구축 지원 | 50d? | 2007-09-03 A | 2007-11-15 A | 100% | 2007-09-03 | 2007-11-15 | 50d? | finish no earlier than 2007-11-15 | 신정아 | 400h | 400h | 50 | 50 | 50 | 상세설계 | C02-1 1.3.3 |
| 64 | 2.3.1.6 | 대외통합 물리모델 구축 및 지원 | 50d | 2007-09-03 A | 2007-11-15 A | 100% | 2007-09-03 | 2007-11-15 | 50d | start no earlier than 2007-09-03 | 김욱진 | 400h | 400h | 50 | 50 | 50 | 상세설계 | C02-1 1.3.3 |
| 65 | 2.3.2 | **물리 모델 검토 및 검증** | 30d | 2007-09-28 A | 2007-11-09 A | 100% | 2007-09-28 | 2007-11-09 | 30d |  |  | 960h | 960h | 120 | 120 | 120 | 상세설계 | C02-1 1.3.3 |
| 66 | 2.3.2.1 | 수신 | 30d | 2007-09-28 A | 2007-11-09 A | 100% | 2007-09-28 | 2007-11-09 | 30d | finish no earlier than 2007-11-09 | 지용식 | 240h | 240h | 30 | 30 | 30 | 상세설계 | C02-1 1.3.3 |
| 67 | 2.3.2.2 | 여신/외국환 | 30d | 2007-09-28 A | 2007-11-09 A | 100% | 2007-09-28 | 2007-11-09 | 30d | finish no earlier than 2007-11-09 | 최상운 | 240h | 240h | 30 | 30 | 30 | 상세설계 | C02-1 1.3.3 |
| 68 | 2.3.2.3 | 공통(고객/상품/공통정보) | 30d | 2007-09-28 A | 2007-11-09 A | 100% | 2007-09-28 | 2007-11-09 | 30d | finish no earlier than 2007-11-09 | 신정아 | 240h | 240h | 30 | 30 | 30 | 상세설계 | C02-1 1.3.3 |
| 69 | 2.3.2.4 | 대외통합 | 30d | 2007-09-28 A | 2007-11-09 A | 100% | 2007-09-28 | 2007-11-09 | 30d | finish no earlier than 2007-11-09 | 김욱진 | 240h | 240h | 30 | 30 | 30 | 상세설계 | C02-1 1.3.3 |
| 70 | 2.4 | **모델 추상화** | 30d | 2007-10-22 A | 2007-11-30 A | 100% | 2007-10-22 | 2007-11-30 | 30d |  |  | 1240h | 1240h | 155 | 155 | 155 | 상세설계 | C02-1 1.3.3 |
| 71 | 2.4.1 | **주요 실체 정의** | 20d | 2007-10-22 A | 2007-11-16 A | 100% | 2007-10-22 | 2007-11-16 | 20d |  |  | 640h | 640h | 80 | 80 | 80 | 상세설계 | C02-1 1.3.3 |
| 72 | 2.4.1.1 | 수신 | 20d | 2007-10-22 A | 2007-11-16 A | 100% | 2007-10-22 | 2007-11-16 | 20d | finish no earlier than 2007-11-16 | 지용식 | 160h | 160h | 20 | 20 | 20 | 상세설계 | C02-1 1.3.3 |
| 73 | 2.4.1.2 | 여신/외국환 | 20d | 2007-10-22 A | 2007-11-16 A | 100% | 2007-10-22 | 2007-11-16 | 20d | finish no earlier than 2007-11-16 | 최상운 | 160h | 160h | 20 | 20 | 20 | 상세설계 | C02-1 1.3.3 |
| 74 | 2.4.1.3 | 공통(고객/상품/공통정보) | 20d | 2007-10-22 A | 2007-11-16 A | 100% | 2007-10-22 | 2007-11-16 | 20d | finish no earlier than 2007-11-16 | 신정아 | 160h | 160h | 20 | 20 | 20 | 상세설계 | C02-1 1.3.3 |
| 75 | 2.4.1.4 | 대외통합 | 20d | 2007-10-22 A | 2007-11-16 A | 100% | 2007-10-22 | 2007-11-16 | 20d | finish no earlier than 2007-11-16 | 김욱진 | 160h | 160h | 20 | 20 | 20 | 상세설계 | C02-1 1.3.3 |

| ID | WBS | Task | Duration | Start | Finish | Complete | Remaining | Baseline start | Baseline finish | Baseline duration | Total slack | Constraint | Resources | Work | Actual work | Cost | Baseline cost | Actual cost | Text20 | Text26 | Text30 |
| --- | --- | --- | --- | --- | --- | --- | --- | --- | --- | --- | --- | --- | --- | --- | --- | --- | --- | --- | --- | --- | --- |
| 76 | 2.4.2 | **주요 실체간 비즈니스 룰 정의** | 15d | 2007-11-12 A | 2007-11-30 A | 100% |  | 2007-11-12 | 2007-11-30 | 15d |  |  |  | 480h | 480h | 60 | 60 | 60 | 상세설계 | C02-1 1.3.3 |  |
| 77 | 2.4.2.1 | 수신 | 15d | 2007-11-12 A | 2007-11-30 A | 100% |  | 2007-11-12 | 2007-11-30 | 15d |  | start no earlier than 2007-11-12 | 지용식 | 120h | 120h | 15 | 15 | 15 | 상세설계 | C02-1 1.3.3 |  |
| 78 | 2.4.2.2 | 여신/외국환 | 15d | 2007-11-12 A | 2007-11-30 A | 100% |  | 2007-11-12 | 2007-11-30 | 15d |  | start no earlier than 2007-11-12 | 최상운 | 120h | 120h | 15 | 15 | 15 | 상세설계 | C02-1 1.3.3 |  |
| 79 | 2.4.2.3 | 공통(고객/상품/공통정보) | 15d | 2007-11-12 A | 2007-11-30 A | 100% |  | 2007-11-12 | 2007-11-30 | 15d |  | start no earlier than 2007-11-12 | 신정아 | 120h | 120h | 15 | 15 | 15 | 상세설계 | C02-1 1.3.3 |  |
| 80 | 2.4.2.4 | 대외통합 | 15d | 2007-11-12 A | 2007-11-30 A | 100% |  | 2007-11-12 | 2007-11-30 | 15d |  | start no earlier than 2007-11-12 | 김욱진 | 120h | 120h | 15 | 15 | 15 | 상세설계 | C02-1 1.3.3 |  |
| 81 | 2.4.3 | 개념모델 통합 및 리뷰 | 5d | 2007-11-26 A | 2007-11-30 A | 100% |  | 2007-11-26 | 2007-11-30 | 5d |  | finish no earlier than 2007-11-30 | 강영욱; 최상운; 지용식 | 120h | 120h | 15 | 15 | 15 | 상세설계 | C02-1 1.3.3 | 통합 개념 모델 |
| 82 | 2.5 | **단계완료 품질검토** | 66d? | 2007-09-03 A | 2007-12-07 A | 100% |  | 2007-09-03 | 2007-12-07 | 66d? |  |  |  | 568h | 568h | 71 | 71 | 71 | 단계완료 | C02-1 1.6.8 |  |
| 83 | 2.5.1 | QAO심사(2차) 조치 | 51d? | 2007-09-03 A | 2007-11-16 A | 100% |  | 2007-09-03 | 2007-11-16 | 51d? |  | finish no earlier than 2007-11-16 | 강영욱 | 408h | 408h | 51 | 51 | 51 | 단계완료 | C02-1 1.6.8 |  |
| 84 | 2.5.2 | Inspection(2차) 실시 및 조치 | 10d? | 2007-11-19 A | 2007-11-30 A | 100% |  | 2007-11-19 | 2007-11-30 | 10d? |  | finish no earlier than 2007-11-30 | 강영욱 | 80h | 80h | 10 | 10 | 10 | 단계완료 | C02-1 1.6.8 |  |
| 85 | 2.5.3 | 설계 요구사항 추적표 매핑 | 5d? | 2007-11-26 A | 2007-11-30 A | 100% |  | 2007-11-26 | 2007-11-30 | 5d? |  | finish no earlier than 2007-11-30 | 강영욱 | 40h | 40h | 5 | 5 | 5 | 단계완료 | C02-1 1.6.8 |  |
| 86 | 2.5.4 | 고객검토(2차) 실시 및 조치 | 5d? | 2007-12-03 A | 2007-12-07 A | 100% |  | 2007-12-03 | 2007-12-07 | 5d? |  | finish no earlier than 2007-12-07 | 강영욱 | 40h | 40h | 5 | 5 | 5 | 단계완료 | C02-1 1.6.8 |  |
| 87 | 3 | **변경관리** | 270d? | 2008-01-02 A | 2009-01-30 | 91% | 25.08d? | 2008-01-02 | 2009-01-30 | 270d? | 0d |  |  | 3488h | 3164h | 436 | 436 | 395.5 | 개발 | C02-1 1.4 |  |
| 88 | 3.1 | **모델변경관리** | 270d? | 2008-01-02 A | 2009-01-30 | 91% | 25.08d? | 2008-01-02 | 2009-01-30 | 270d? | 0d |  |  | 3488h | 3164h | 436 | 436 | 395.5 | 코딩 및 단위테스트 실시 | C02-1 1.4.1 |  |
| 89 | 3.1.1 | 추가 및 변경 요건 모델 반영 | 270d? | 2008-01-02 A | 2009-01-30 | 85% | 40.5d? | 2008-01-02 | 2009-01-30 | 270d? | 0d | start no earlier than 2008-01-02 | 강영욱 | 2160h | 1836h | 270 | 270 | 229.5 | 코딩 및 단위테스트 실시 | C02-1 1.4.1 |  |
| 90 | 3.1.2 | 목적성 테이블 추가 설계 | 166d? | 2008-01-02 A | 2008-09-02 A | 100% |  | 2008-01-02 | 2008-09-02 | 166d? |  | start no earlier than 2008-01-02 | 강영욱 | 1328h | 1328h | 166 | 166 | 166 | 코딩 및 단위테스트 실시 | C02-1 1.4.1 |  |
