# 데이터전환

Schedule from MS Project, 2007-04-25 to 2009-02-11, costs in ₩, A marks actual dates.
HSIC-0600001
�궪�꽦SDS

## Calendars

- 농협신용신시스템: Mon-Fri 08:00-12:00, 13:00-17:00; Sat-Sun off. Exceptions (off unless hours are given): 2007-04-29 08:00-12:00, 13:00-17:00, 2007-05-01 08:00-12:00, 13:00-17:00, 2007-05-24 08:00-12:00, 13:00-17:00, 2007-06-06, 2007-07-17, 2007-08-15, 2007-09-24 to 2007-09-26, 2007-10-03, 2007-10-27, 2007-11-10, 2007-12-25, 2008-01-01, 2008-01-27, 2008-02-06 to 2008-02-08, 2008-03-01, 2008-05-01, 2008-05-05, 2008-05-12 08:00-12:00, 13:00-17:00, 2008-06-06, 2008-07-17, 2008-08-03 08:00-12:00, 13:00-17:00, 2008-08-15, 2008-09-14 08:00-12:00, 13:00-17:00, 2008-09-15, 2008-10-03, 2008-12-25, 2009-01-01, 2009-01-24.

## Resources

| Resource | Group | Rate |
| --- | --- | --- |
| 김문수 | 분석설계 | 0.12 |
| 백병호 | 분석설계 | 0.12 |
| 성병근 | 분석설계 | 0.12 |
| 박세호 | 분석설계 | 0.12 |
| PL |  | 0.12 |
| 수신 |  | 0.12 |
| 공통1 |  | 0.12 |
| 공통2 |  | 0.12 |
| 개발1 |  | 0.12 |
| 개발2 |  | 0.12 |
| 개발3 |  | 0.12 |
| 개발4 |  | 0.12 |
| 개발5 |  | 0.12 |
| 개발6 |  | 0.12 |
| 개발7 |  | 0.12 |
| 개발8 |  | 0.12 |
| 개발9 |  | 0.12 |
| 개발10 |  | 0.12 |
| 개발11 |  | 0.12 |
| 개발12 |  | 0.12 |
| 개발13 |  | 0.12 |
| 개발14 |  | 0.12 |

## Schedule

| ID | WBS | Task | Duration | Start | Finish | Predecessors | Complete | Baseline start | Baseline finish | Baseline duration | Constraint | Resources | Work | Actual work | Cost | Baseline cost | Actual cost | Text20 | Text26 | Text30 |
| --- | --- | --- | --- | --- | --- | --- | --- | --- | --- | --- | --- | --- | --- | --- | --- | --- | --- | --- | --- | --- |
| 1 | 1 | **전환 분석** | 86d? | 2007-04-25 A | 2007-08-24 A |  | 100% | 2007-04-25 | 2007-08-24 | 86d? |  |  | 10688h | 10688h | 1,336 | 1,336 | 1,336 | 분석 | C02-1 1.2 |  |
| 2 | 1.1 | **전환 요건 정의** | 17d? | 2007-04-27 A | 2007-05-18 A |  | 100% | 2007-04-27 | 2007-05-18 | 17d? |  |  | 1088h | 1088h | 136 | 136 | 136 | 요구사항 정의 | C02-1 1.2.2 | 전환 요건정의서 |
| 3 | 1.1.1 | 데이터 전환 요건 정의 | 15d? | 2007-04-27 A | 2007-05-16 A |  | 100% | 2007-04-27 | 2007-05-16 | 15d? | finish no earlier than 2007-05-16 | PL; 수신; 공통1; 공통2; 김문수; 백병호; 성병근; 박세호 | 960h | 960h | 120 | 120 | 120 | 요구사항 정의 | C02-1 1.2.2 | 전환 요건정의서 |
| 4 | 1.1.2 | 데이터 전환 요건 업무팀 리뷰 | 2d? | 2007-05-17 A | 2007-05-18 A | 3 | 100% | 2007-05-17 | 2007-05-18 | 2d? | finish no earlier than 2007-05-11 | PL; 수신; 공통1; 공통2; 김문수; 백병호; 성병근; 박세호 | 128h | 128h | 16 | 16 | 16 | 요구사항 정의 | C02-1 1.2.2 | 전환 요건정의 리뷰 결과서 |
| 5 | 1.2 | **데이터 전환 계획 수립** | 5d? | 2007-05-21 A | 2007-05-25 A |  | 100% | 2007-05-21 | 2007-05-25 | 5d? |  |  | 960h | 960h | 120 | 120 | 120 | 요구사항 정의 | C02-1 1.2.2 | 데이터 전환계획서 |
| 6 | 1.2.1 | 데이터 전환 범위 확정 | 5d? | 2007-05-21 A | 2007-05-25 A |  | 100% | 2007-05-21 | 2007-05-25 | 5d? | start no earlier than 2007-05-21 | PL; 수신; 공통1; 공통2; 김문수; 백병호; 성병근; 박세호 | 320h | 320h | 40 | 40 | 40 | 요구사항 정의 | C02-1 1.2.2 |  |
| 7 | 1.2.2 | 전환 상세계획 수립 | 5d? | 2007-05-21 A | 2007-05-25 A |  | 100% | 2007-05-21 | 2007-05-25 | 5d? | start no earlier than 2007-05-21 | PL; 수신; 공통1; 공통2; 김문수; 백병호; 성병근; 박세호 | 320h | 320h | 40 | 40 | 40 | 요구사항 정의 | C02-1 1.2.2 | 데이터 전환계획서 |
| 8 | 1.2.3 | 전환계획서 검토 | 5d? | 2007-05-21 A | 2007-05-25 A |  | 100% | 2007-05-21 | 2007-05-25 | 5d? | start no earlier than 2007-05-21 | PL; 수신; 공통1; 공통2; 김문수; 백병호; 성병근; 박세호 | 320h | 320h | 40 | 40 | 40 | 요구사항 정의 | C02-1 1.2.2 |  |
| 9 | 1.3 | **AS-IS 데이터 분석** | 55d? | 2007-05-14 A | 2007-07-31 A |  | 100% | 2007-05-14 | 2007-07-31 | 55d? |  |  | 6656h | 6656h | 832 | 832 | 832 | 현황 평가 | C02-1 1.2.1 |  |
| 10 | 1.3.1 | **현행 데이터 분석 계획** | 12d? | 2007-05-14 A | 2007-05-29 A |  | 100% | 2007-05-14 | 2007-05-29 | 12d? |  |  | 640h | 640h | 80 | 80 | 80 | 현황 평가 | C02-1 1.2.1 |  |
| 11 | 1.3.1.1 | 데이터 분석 환경 정의 | 4d? | 2007-05-14 A | 2007-05-17 A |  | 100% | 2007-05-14 | 2007-05-17 | 4d? | start no earlier than 2007-05-14 | PL; 수신; 공통1; 공통2; 김문수; 백병호; 성병근; 박세호 | 256h | 256h | 32 | 32 | 32 | 현황 평가 | C02-1 1.2.1 |  |
| 12 | 1.3.1.2 | 분석 환경 구축 요청 | 8d? | 2007-05-18 A | 2007-05-29 A |  | 100% | 2007-05-18 | 2007-05-29 | 8d? | start no earlier than 2007-05-18 | PL | 64h | 64h | 8 | 8 | 8 | 현황 평가 | C02-1 1.2.1 |  |
| 13 | 1.3.1.3 | 분석 대상 및 범위 정의 | 3d? | 2007-05-21 A | 2007-05-23 A |  | 100% | 2007-05-21 | 2007-05-23 | 3d? | finish no earlier than 2007-05-23 | PL; 수신; 공통1; 공통2; 김문수; 백병호; 성병근; 박세호 | 192h | 192h | 24 | 24 | 24 | 현황 평가 | C02-1 1.2.1 |  |
| 14 | 1.3.1.4 | 분석 일정 상세 수립 | 2d? | 2007-05-24 A | 2007-05-25 A | 13 | 100% | 2007-05-24 | 2007-05-25 | 2d? | finish no earlier than 2007-05-25 | PL; 수신; 공통1; 공통2; 김문수; 백병호; 성병근; 박세호 | 128h | 128h | 16 | 16 | 16 | 현황 평가 | C02-1 1.2.1 |  |
| 15 | 1.3.2 | **전환 대상 파악** | 8d? | 2007-05-28 A | 2007-06-07 A |  | 100% | 2007-05-28 | 2007-06-07 | 8d? |  |  | 1024h | 1024h | 128 | 128 | 128 | 현황 평가 | C02-1 1.2.1 | 전환 대상업무 및 범위 정의서 |
| 16 | 1.3.2.1 | 전환대상 데이터량 조사 | 4d? | 2007-05-28 A | 2007-05-31 A |  | 100% | 2007-05-28 | 2007-05-31 | 4d? | start no earlier than 2007-05-28 | PL; 수신; 공통1; 공통2; 김문수; 백병호; 성병근; 박세호 | 256h | 256h | 32 | 32 | 32 | 현황 평가 | C02-1 1.2.1 | 현행 데이터 분석서 |
| 17 | 1.3.2.2 | 현행시스템 환경 파악 | 4d? | 2007-05-28 A | 2007-05-31 A |  | 100% | 2007-05-28 | 2007-05-31 | 4d? | start no earlier than 2007-05-28 | PL; 수신; 공통1; 공통2; 김문수; 백병호; 성병근; 박세호 | 256h | 256h | 32 | 32 | 32 | 현황 평가 | C02-1 1.2.1 |  |
| 18 | 1.3.2.3 | 현행 데이터 구조 및 상호관계 분석 | 2d? | 2007-06-01 A | 2007-06-04 A |  | 100% | 2007-06-01 | 2007-06-04 | 2d? | finish no earlier than 2007-06-04 | PL; 수신; 공통1; 공통2; 김문수; 백병호; 성병근; 박세호 | 128h | 128h | 16 | 16 | 16 | 현황 평가 | C02-1 1.2.1 | 현행 데이터 구조 및 상호관계 |
| 19 | 1.3.2.4 | 전환대상 데이터 항목 검토 확인 | 2d? | 2007-06-01 A | 2007-06-04 A |  | 100% | 2007-06-01 | 2007-06-04 | 2d? | finish no earlier than 2007-06-04 | PL; 수신; 공통1; 공통2; 김문수; 백병호; 성병근; 박세호 | 128h | 128h | 16 | 16 | 16 | 현황 평가 | C02-1 1.2.1 | 전환 대상업무 정의서 |
| 20 | 1.3.2.5 | 외부 제공 데이터 조사 | 2d? | 2007-06-05 A | 2007-06-07 A |  | 100% | 2007-06-05 | 2007-06-07 | 2d? | finish no earlier than 2007-06-07 | PL; 수신; 공통1; 공통2; 김문수; 백병호; 성병근; 박세호 | 128h | 128h | 16 | 16 | 16 | 현황 평가 | C02-1 1.2.1 |  |
| 21 | 1.3.2.6 | 외부 제공 데이터 분석 | 2d? | 2007-06-05 A | 2007-06-07 A |  | 100% | 2007-06-05 | 2007-06-07 | 2d? | finish no earlier than 2007-06-07 | PL; 수신; 공통1; 공통2; 김문수; 백병호; 성병근; 박세호 | 128h | 128h | 16 | 16 | 16 | 현황 평가 | C02-1 1.2.1 |  |
| 22 | 1.3.3 | **As-is 코드값 정의** | 6d? | 2007-06-08 A | 2007-06-15 A |  | 100% | 2007-06-08 | 2007-06-15 | 6d? |  |  | 640h | 640h | 80 | 80 | 80 | 현황 평가 | C02-1 1.2.1 | 현행 코드정의서 |
| 23 | 1.3.3.1 | 현행 코드항목 식별 | 4d? | 2007-06-08 A | 2007-06-13 A |  | 100% | 2007-06-08 | 2007-06-13 | 4d? | finish no earlier than 2007-06-13 | PL; 수신; 공통1; 공통2; 김문수; 백병호; 성병근; 박세호 | 256h | 256h | 32 | 32 | 32 | 현황 평가 | C02-1 1.2.1 |  |
| 24 | 1.3.3.2 | 현행 코드정의서 작성 | 6d? | 2007-06-08 A | 2007-06-15 A |  | 100% | 2007-06-08 | 2007-06-15 | 6d? | finish no earlier than 2007-06-15 | PL; 수신; 공통1; 공통2; 김문수; 백병호; 성병근; 박세호 | 384h | 384h | 48 | 48 | 48 | 현황 평가 | C02-1 1.2.1 | 현행 코드정의서 |

| ID | WBS | Task | Duration | Start | Finish | Complete | Baseline start | Baseline finish | Baseline duration | Constraint | Resources | Work | Actual work | Cost | Baseline cost | Actual cost | Text20 | Text26 | Text30 |
| --- | --- | --- | --- | --- | --- | --- | --- | --- | --- | --- | --- | --- | --- | --- | --- | --- | --- | --- | --- |
| 25 | 1.3.4 | **현행 데이터 분석 준비** | 6d? | 2007-06-08 A | 2007-06-15 A | 100% | 2007-06-08 | 2007-06-15 | 6d? |  |  | 576h | 576h | 72 | 72 | 72 | 현황 평가 | C02-1 1.2.1 |  |
| 26 | 1.3.4.1 | 분석 환경 준비 | 5d? | 2007-06-11 A | 2007-06-15 A | 100% | 2007-06-11 | 2007-06-15 | 5d? | finish no earlier than 2007-06-15 | PL; 수신; 공통1; 공통2; 김문수; 백병호; 성병근; 박세호 | 320h | 320h | 40 | 40 | 40 | 현황 평가 | C02-1 1.2.1 |  |
| 27 | 1.3.4.2 | 분석 대상 확정 | 4d? | 2007-06-08 A | 2007-06-13 A | 100% | 2007-06-08 | 2007-06-13 | 4d? | finish no earlier than 2007-06-13 | PL; 수신; 공통1; 공통2; 김문수; 백병호; 성병근; 박세호 | 256h | 256h | 32 | 32 | 32 | 현황 평가 | C02-1 1.2.1 |  |
| 28 | 1.3.5 | **현행 데이터 분석 수행 1차** | 20d? | 2007-06-18 A | 2007-07-13 A | 100% | 2007-06-18 | 2007-07-13 | 20d? |  |  | 1984h | 1984h | 248 | 248 | 248 | 현황 평가 | C02-1 1.2.1 | 현행 DB 분석서(1차) |
| 29 | 1.3.5.1 | 현행 데이터 추출 | 5d? | 2007-06-18 A | 2007-06-22 A | 100% | 2007-06-18 | 2007-06-22 | 5d? | finish no earlier than 2007-06-22 | PL; 수신; 공통1; 공통2; 김문수; 백병호; 성병근; 박세호 | 320h | 320h | 40 | 40 | 40 | 현황 평가 | C02-1 1.2.1 |  |
| 30 | 1.3.5.2 | 현행 데이터 적재 | 5d? | 2007-06-18 A | 2007-06-22 A | 100% | 2007-06-18 | 2007-06-22 | 5d? | finish no earlier than 2007-06-22 | PL; 수신; 공통1; 공통2; 김문수; 백병호; 성병근; 박세호 | 320h | 320h | 40 | 40 | 40 | 현황 평가 | C02-1 1.2.1 |  |
| 31 | 1.3.5.3 | 현행 데이터 분석 | 5d? | 2007-06-25 A | 2007-06-29 A | 100% | 2007-06-25 | 2007-06-29 | 5d? | finish no earlier than 2007-06-29 | PL; 수신; 공통1; 공통2; 김문수; 백병호; 성병근; 박세호 | 320h | 320h | 40 | 40 | 40 | 현황 평가 | C02-1 1.2.1 |  |
| 32 | 1.3.5.4 | **업무적 데이터 평가** | 8d? | 2007-07-02 A | 2007-07-11 A | 100% | 2007-07-02 | 2007-07-11 | 8d? |  |  | 768h | 768h | 96 | 96 | 96 | 현황 평가 | C02-1 1.2.1 |  |
| 33 | 1.3.5.4.1 | 업무 요건 정의 | 2d? | 2007-07-02 A | 2007-07-03 A | 100% | 2007-07-02 | 2007-07-03 | 2d? | finish no earlier than 2007-07-03 | PL; 수신; 공통1; 공통2; 김문수; 백병호; 성병근; 박세호 | 128h | 128h | 16 | 16 | 16 | 현황 평가 | C02-1 1.2.1 |  |
| 34 | 1.3.5.4.2 | 업무 요건 리뷰 및 구체화 | 2d? | 2007-07-04 A | 2007-07-05 A | 100% | 2007-07-04 | 2007-07-05 | 2d? | finish no earlier than 2007-07-05 | PL; 수신; 공통1; 공통2; 김문수; 백병호; 성병근; 박세호 | 128h | 128h | 16 | 16 | 16 | 현황 평가 | C02-1 1.2.1 |  |
| 35 | 1.3.5.4.3 | Data Filter 구현 및 실행 | 4d? | 2007-07-06 A | 2007-07-11 A | 100% | 2007-07-06 | 2007-07-11 | 4d? | finish no earlier than 2007-07-11 | PL; 수신; 공통1; 공통2; 김문수; 백병호; 성병근; 박세호 | 256h | 256h | 32 | 32 | 32 | 현황 평가 | C02-1 1.2.1 |  |
| 36 | 1.3.5.4.4 | Data Filter 실행 결과 리뷰 | 4d? | 2007-07-06 A | 2007-07-11 A | 100% | 2007-07-06 | 2007-07-11 | 4d? | finish no earlier than 2007-07-11 | PL; 수신; 공통1; 공통2; 김문수; 백병호; 성병근; 박세호 | 256h | 256h | 32 | 32 | 32 | 현황 평가 | C02-1 1.2.1 |  |
| 37 | 1.3.5.5 | **데이터 평가 이슈 정의** | 2d? | 2007-07-12 A | 2007-07-13 A | 100% | 2007-07-12 | 2007-07-13 | 2d? |  |  | 256h | 256h | 32 | 32 | 32 | 현황 평가 | C02-1 1.2.1 |  |
| 38 | 1.3.5.5.1 | 데이터 이슈사항 도출 | 2d? | 2007-07-12 A | 2007-07-13 A | 100% | 2007-07-12 | 2007-07-13 | 2d? | finish no earlier than 2007-07-13 | PL; 수신; 공통1; 공통2; 김문수; 백병호; 성병근; 박세호 | 128h | 128h | 16 | 16 | 16 | 현황 평가 | C02-1 1.2.1 |  |
| 39 | 1.3.5.5.2 | 데이터 이슈사항 해결방안 정의 | 2d? | 2007-07-12 A | 2007-07-13 A | 100% | 2007-07-12 | 2007-07-13 | 2d? | finish no earlier than 2007-07-13 | PL; 수신; 공통1; 공통2; 김문수; 백병호; 성병근; 박세호 | 128h | 128h | 16 | 16 | 16 | 현황 평가 | C02-1 1.2.1 |  |
| 40 | 1.3.6 | **현행 데이터 분석 수행 2차** | 16d? | 2007-07-09 A | 2007-07-31 A | 100% | 2007-07-09 | 2007-07-31 | 16d? |  |  | 1792h | 1792h | 224 | 224 | 224 | 현황 평가 | C02-1 1.2.1 | 현행 DB 분석서(2차) |
| 41 | 1.3.6.1 | 현행 데이터 추출 | 4d? | 2007-07-09 A | 2007-07-12 A | 100% | 2007-07-09 | 2007-07-12 | 4d? | finish no earlier than 2007-07-12 | PL; 수신; 공통1; 공통2; 김문수; 백병호; 성병근; 박세호 | 256h | 256h | 32 | 32 | 32 | 현황 평가 | C02-1 1.2.1 |  |
| 42 | 1.3.6.2 | 현행 데이터 적재 | 4d? | 2007-07-09 A | 2007-07-12 A | 100% | 2007-07-09 | 2007-07-12 | 4d? | finish no earlier than 2007-07-12 | PL; 수신; 공통1; 공통2; 김문수; 백병호; 성병근; 박세호 | 256h | 256h | 32 | 32 | 32 | 현황 평가 | C02-1 1.2.1 |  |
| 43 | 1.3.6.3 | 현행 데이터 분석 | 3d? | 2007-07-16 A | 2007-07-19 A | 100% | 2007-07-16 | 2007-07-19 | 3d? | finish no earlier than 2007-07-19 | PL [133.3%]; 수신 [133.3%]; 공통1 [133.3%]; 공통2 [133.3%]; 김문수 [133.3%]; 백병호 [133.3%]; 성병근 [133.3%]; 박세호 [133.3%] | 256h | 256h | 32 | 32 | 32 | 현황 평가 | C02-1 1.2.1 |  |
| 44 | 1.3.6.4 | **업무적 데이터 평가** | 6d? | 2007-07-20 A | 2007-07-27 A | 100% | 2007-07-20 | 2007-07-27 | 6d? |  |  | 768h | 768h | 96 | 96 | 96 | 현황 평가 | C02-1 1.2.1 |  |
| 45 | 1.3.6.4.1 | 업무 요건 정의 | 2d? | 2007-07-20 A | 2007-07-23 A | 100% | 2007-07-20 | 2007-07-23 | 2d? | finish no earlier than 2007-07-23 | PL; 수신; 공통1; 공통2; 김문수; 백병호; 성병근; 박세호 | 128h | 128h | 16 | 16 | 16 | 현황 평가 | C02-1 1.2.1 |  |
| 46 | 1.3.6.4.2 | 업무 요건 리뷰 및 구체화 | 2d? | 2007-07-20 A | 2007-07-23 A | 100% | 2007-07-20 | 2007-07-23 | 2d? | finish no earlier than 2007-07-23 | PL; 수신; 공통1; 공통2; 김문수; 백병호; 성병근; 박세호 | 128h | 128h | 16 | 16 | 16 | 현황 평가 | C02-1 1.2.1 |  |
| 47 | 1.3.6.4.3 | Data Filter 구현 및 실행 | 4d? | 2007-07-24 A | 2007-07-27 A | 100% | 2007-07-24 | 2007-07-27 | 4d? | finish no earlier than 2007-07-27 | PL; 수신; 공통1; 공통2; 김문수; 백병호; 성병근; 박세호 | 256h | 256h | 32 | 32 | 32 | 현황 평가 | C02-1 1.2.1 |  |
| 48 | 1.3.6.4.4 | Data Filter 실행 결과 리뷰 | 4d? | 2007-07-24 A | 2007-07-27 A | 100% | 2007-07-24 | 2007-07-27 | 4d? | finish no earlier than 2007-07-27 | PL; 수신; 공통1; 공통2; 김문수; 백병호; 성병근; 박세호 | 256h | 256h | 32 | 32 | 32 | 현황 평가 | C02-1 1.2.1 |  |

| ID | WBS | Task | Type | Duration | Start | Finish | Predecessors | Complete | Baseline start | Baseline finish | Baseline duration | Constraint | Resources | Work | Actual work | Cost | Baseline cost | Actual cost | Text20 | Text26 | Text30 |
| --- | --- | --- | --- | --- | --- | --- | --- | --- | --- | --- | --- | --- | --- | --- | --- | --- | --- | --- | --- | --- | --- |
| 49 | 1.3.6.5 | **데이터 평가 이슈 정의** |  | 2d? | 2007-07-30 A | 2007-07-31 A |  | 100% | 2007-07-30 | 2007-07-31 | 2d? |  |  | 256h | 256h | 32 | 32 | 32 | 현황 평가 | C02-1 1.2.1 |  |
| 50 | 1.3.6.5.1 | 데이터 이슈사항 도출 |  | 2d? | 2007-07-30 A | 2007-07-31 A |  | 100% | 2007-07-30 | 2007-07-31 | 2d? | finish no earlier than 2007-07-31 | PL; 수신; 공통1; 공통2; 김문수; 백병호; 성병근; 박세호 | 128h | 128h | 16 | 16 | 16 | 현황 평가 | C02-1 1.2.1 |  |
| 51 | 1.3.6.5.2 | 데이터 이슈사항 해결방안 정의 |  | 2d? | 2007-07-30 A | 2007-07-31 A |  | 100% | 2007-07-30 | 2007-07-31 | 2d? | finish no earlier than 2007-07-31 | PL; 수신; 공통1; 공통2; 김문수; 백병호; 성병근; 박세호 | 128h | 128h | 16 | 16 | 16 | 현황 평가 | C02-1 1.2.1 |  |
| 52 | 1.4 | **To-Be 데이터 분석** |  | 12d? | 2007-08-01 A | 2007-08-17 A |  | 100% | 2007-08-01 | 2007-08-17 | 12d? |  |  | 768h | 768h | 96 | 96 | 96 | 현황 평가 | C02-1 1.2.1 | 데이터 모델 분석서 |
| 53 | 1.4.1 | To-Be 데이터 논리모델 분석 |  | 5d? | 2007-08-01 A | 2007-08-07 A |  | 100% | 2007-08-01 | 2007-08-07 | 5d? | finish no earlier than 2007-08-07 | PL; 수신; 공통1; 공통2; 김문수; 백병호; 성병근; 박세호 | 320h | 320h | 40 | 40 | 40 | 현황 평가 | C02-1 1.2.1 | 데이터 모델분석서 |
| 54 | 1.4.2 | To-Be 데이터 분석 |  | 5d? | 2007-08-08 A | 2007-08-14 A | 53 | 100% | 2007-08-08 | 2007-08-14 | 5d? | start no earlier than 2007-08-08 | PL; 수신; 공통1; 공통2; 김문수; 백병호; 성병근; 박세호 | 320h | 320h | 40 | 40 | 40 | 현황 평가 | C02-1 1.2.1 | 데이터 모델분석서 |
| 55 | 1.4.3 | To-Be 데이터 전환시고려사항 |  | 2d? | 2007-08-16 A | 2007-08-17 A | 54 | 100% | 2007-08-16 | 2007-08-17 | 2d? | start no earlier than 2007-08-16 | PL; 수신; 공통1; 공통2; 김문수; 백병호; 성병근; 박세호 | 128h | 128h | 16 | 16 | 16 | 현황 평가 | C02-1 1.2.1 | 데이터 모델분석서 |
| 56 | 1.5 | **관리활동** |  | 86d? | 2007-04-25 A | 2007-08-24 A |  | 100% | 2007-04-25 | 2007-08-24 | 86d? |  |  | 1216h | 1216h | 152 | 152 | 152 | 단계완료 | C02-1 1.6.8 |  |
| 57 | 1.5.1 | 오리엔테이션 1차 |  | 3d? | 2007-05-07 A | 2007-05-09 A |  | 100% | 2007-05-07 | 2007-05-09 | 3d? | finish no earlier than 2007-05-09 | PL; 수신; 공통1; 공통2; 김문수; 백병호; 성병근; 박세호 | 192h | 192h | 24 | 24 | 24 | 단계완료 | C02-1 1.6.8 |  |
| 58 | 1.5.2 | 과업대비표 매핑 |  | 4d | 2007-04-25 A | 2007-04-29 A |  | 100% | 2007-04-25 | 2007-04-29 | 4d |  | PL; 수신; 공통1; 공통2; 김문수; 백병호; 성병근; 박세호 | 256h | 256h | 32 | 32 | 32 | 단계완료 | C02-1 1.6.8 |  |
| 59 | 1.5.3 | 형상관리툴 교육 | milestone | 0d | 2007-05-22 A | 2007-05-22 A |  | 100% | 2007-05-22 | 2007-05-22 | 0d | finish no earlier than 2007-05-22 | PL; 수신; 공통1; 공통2; 김문수; 백병호; 성병근; 박세호 |  |  |  |  |  | 단계완료 | C02-1 1.6.8 |  |
| 60 | 1.5.4 | 인스펙션 실시 및 조치 (1차) |  | 3d | 2007-07-04 A | 2007-07-06 A |  | 100% | 2007-07-04 | 2007-07-06 | 3d | finish no earlier than 2007-07-06 | PL; 수신; 공통1; 공통2; 김문수; 백병호; 성병근; 박세호 | 192h | 192h | 24 | 24 | 24 | 단계완료 | C02-1 1.6.8 |  |
| 61 | 1.5.5 | 요구사항 추적표 매핑 |  | 2d | 2007-07-09 A | 2007-07-10 A |  | 100% | 2007-07-09 | 2007-07-10 | 2d | finish no earlier than 2007-07-10 | PL; 수신; 공통1; 공통2; 김문수; 백병호; 성병근; 박세호 | 128h | 128h | 16 | 16 | 16 | 단계완료 | C02-1 1.6.8 |  |
| 62 | 1.5.6 | 요구사항규모측정방법 교육 및 측정 |  | 2d? | 2007-07-12 A | 2007-07-13 A |  | 100% | 2007-07-12 | 2007-07-13 | 2d? | finish no earlier than 2007-07-13 | PL; 수신; 공통1; 공통2; 김문수; 백병호; 성병근; 박세호 | 128h | 128h | 16 | 16 | 16 | 단계완료 | C02-1 1.6.8 |  |
| 63 | 1.5.7 | 고객검토 1차 실시 및 조치 |  | 5d? | 2007-08-20 A | 2007-08-24 A |  | 100% | 2007-08-20 | 2007-08-24 | 5d? | finish no earlier than 2007-08-24 | PL; 수신; 공통1; 공통2; 김문수; 백병호; 성병근; 박세호 | 320h | 320h | 40 | 40 | 40 | 단계완료 | C02-1 1.6.8 |  |
| 64 | 2 | **전환 설계** |  | 226d? | 2007-07-09 A | 2008-06-05 A |  | 100% | 2007-07-09 | 2008-06-06 | 226d? |  |  | 122865h | 122865h | 15,358.08 | 15,358.08 | 15,358.08 | 설계 | C02-1 1.3 |  |
| 65 | 2.1 | **전환 Flow 설계** |  | 33d? | 2007-09-04 A | 2007-10-24 A |  | 100% | 2007-09-04 | 2007-10-24 | 33d? |  |  | 2112h | 2112h | 264 | 264 | 264 | 기본설계 | C02-1 1.3.1 |  |
| 66 | 2.1.1 | 데이터 추출방식설계 |  | 6d? | 2007-10-01 A | 2007-10-09 A | 68 | 100% | 2007-10-01 | 2007-10-09 | 6d? | start no earlier than 2007-10-01 | PL; 수신; 공통1; 공통2; 김문수; 백병호; 성병근; 박세호 | 384h | 384h | 48 | 48 | 48 | 기본설계 | C02-1 1.3.1 |  |
| 67 | 2.1.2 | 전환 표준 Flow설계 |  | 11d? | 2007-10-10 A | 2007-10-24 A | 66 | 100% | 2007-10-10 | 2007-10-24 | 11d? | finish no earlier than 2007-10-05 | PL; 수신; 공통1; 공통2; 김문수; 백병호; 성병근; 박세호 | 704h | 704h | 88 | 88 | 88 | 기본설계 | C02-1 1.3.1 | 데이터 전환 Flow설계서 |
| 68 | 2.1.3 | 전환 공통모듈 설계 |  | 16d | 2007-09-04 A | 2007-09-28 A |  | 100% | 2007-09-04 | 2007-09-28 | 16d | finish no earlier than 2007-09-28 | PL; 수신; 공통1; 공통2; 김문수; 백병호; 성병근; 박세호 | 1024h | 1024h | 128 | 128 | 128 | 기본설계 | C02-1 1.3.1 | 데이터전환 공통모듈 사용자 지침 |
| 69 | 2.2 | **테스트 계획수립** |  | 20d? | 2008-01-07 A | 2008-02-01 A |  | 100% | 2008-01-07 | 2008-02-01 | 20d? |  |  | 2064.63h | 2064.63h | 258.08 | 258.08 | 258.08 | 테스트 설계 | C02-1 1.3.6 |  |
| 70 | 2.2.1 | 단위 테스트 계획수립 |  | 7d? | 2008-01-07 A | 2008-01-15 A |  | 100% | 2008-01-07 | 2008-01-15 | 7d? | start no earlier than 2008-01-07 | PL; 수신; 공통1; 공통2; 김문수; 백병호; 성병근; 박세호; 개발1; 개발2; 개발3; 개발4; 개발5; 개발6; 개발7; 개발8; 개발9; 개발10; 개발11; 개발12; 개발13; 개발14 | 864.31h | 864.31h | 108.04 | 108.04 | 108.04 | 테스트 설계 | C02-1 1.3.6 | 단위테스트 계획서 |
| 71 | 2.2.2 | 통합 테스트 계획수립 |  | 10d | 2008-01-21 A | 2008-02-01 A |  | 100% | 2008-01-21 | 2008-02-01 | 10d | start no earlier than 2008-01-21 | PL; 수신; 공통1; 공통2; 김문수; 백병호; 성병근; 박세호; 개발1; 개발2; 개발3; 개발4; 개발5; 개발6; 개발7; 개발8; 개발9; 개발10; 개발11; 개발12; 개발13; 개발14 | 1200.31h | 1200.31h | 150.04 | 150.04 | 150.04 | 테스트 설계 | C02-1 1.3.6 | 통합 테스트 계획서 |
| 72 | 2.3 | **데이터 정비방안 수립** |  | 147d? | 2007-11-05 A | 2008-06-05 A |  | 100% | 2007-11-05 | 2008-06-06 | 147d? |  |  | 16320h | 16320h | 2,040 | 2,040 | 2,040 | 컨버전 설계 | C02-1 1.3.5 |  |
| 73 | 2.3.1 | 정비절차 정의 |  | 16d | 2007-11-05 A | 2007-11-26 A |  | 100% | 2007-11-05 | 2007-11-26 | 16d | start no earlier than 2007-11-05 | PL; 수신; 공통1; 공통2; 김문수; 백병호; 성병근; 박세호 | 1024h | 1024h | 128 | 128 | 128 | 컨버전 설계 | C02-1 1.3.5 | 데이터 정비방안 |
| 74 | 2.3.2 | 오류대상 케이스별 정비대상정의 |  | 125d? | 2007-11-29 A | 2008-05-30 A |  | 100% | 2007-11-29 | 2008-05-30 | 125d? | finish no earlier than 2008-01-31 | PL; 수신; 공통1; 공통2; 김문수; 백병호; 성병근; 박세호 | 8000h | 8000h | 1,000 | 1,000 | 1,000 | 컨버전 설계 | C02-1 1.3.5 | 데이터 정비방안 |
| 75 | 2.3.3 | 정비방안 검토 |  | 114d? | 2007-12-20 A | 2008-06-05 A |  | 100% | 2007-12-20 | 2008-06-06 | 114d? | finish no earlier than 2008-01-31 | PL; 수신; 공통1; 공통2; 김문수; 백병호; 성병근; 박세호 | 7296h | 7296h | 912 | 912 | 912 | 컨버전 설계 | C02-1 1.3.5 | 데이터 정비방안 |

| ID | WBS | Task | Duration | Start | Finish | Complete | Baseline start | Baseline finish | Baseline duration | Constraint | Resources | Work | Actual work | Cost | Baseline cost | Actual cost | Text20 | Text26 | Text30 |
| --- | --- | --- | --- | --- | --- | --- | --- | --- | --- | --- | --- | --- | --- | --- | --- | --- | --- | --- | --- |
| 76 | 2.4 | **AS-IS 데이터 적재** | 25d? | 2007-10-22 A | 2007-11-23 A | 100% | 2007-10-22 | 2007-11-23 | 25d? |  |  | 16816h | 16816h | 2,102 | 2,102 | 2,102 | 컨버전 설계 | C02-1 1.3.5 |  |
| 77 | 2.4.1 | AS-IS 데이터 적재 사전준비 | 5d? | 2007-10-22 A | 2007-10-26 A | 100% | 2007-10-22 | 2007-10-26 | 5d? | finish no earlier than 2007-10-26 | PL; 수신; 공통1; 공통2; 김문수; 백병호; 성병근; 박세호; 개발1; 개발2; 개발3; 개발4; 개발5; 개발6; 개발7; 개발8; 개발9; 개발10; 개발11; 개발12 | 800h | 800h | 100 | 100 | 100 | 컨버전 설계 | C02-1 1.3.5 |  |
| 78 | 2.4.2 | **AS-IS 데이터 추출** | 10d? | 2007-10-29 A | 2007-11-09 A | 100% | 2007-10-29 | 2007-11-09 | 10d? |  |  | 3520h | 3520h | 440 | 440 | 440 | 컨버전 설계 | C02-1 1.3.5 |  |
| 79 | 2.4.2.1 | M/F NDB,TIP File Binary 형태로 추출 및 전송 | 10d? | 2007-10-29 A | 2007-11-09 A | 100% | 2007-10-29 | 2007-11-09 | 10d? | finish no earlier than 2007-11-09 | PL; 수신; 공통1; 공통2; 김문수; 백병호; 성병근; 박세호; 개발1; 개발2; 개발3; 개발4; 개발5; 개발6; 개발7; 개발8; 개발9; 개발10; 개발11; 개발12; 개발13; 개발14 | 1760h | 1760h | 220 | 220 | 220 | 컨버전 설계 | C02-1 1.3.5 |  |
| 80 | 2.4.2.2 | UNIX RDB 추출 및 전송 | 10d? | 2007-10-29 A | 2007-11-09 A | 100% | 2007-10-29 | 2007-11-09 | 10d? | finish no earlier than 2007-11-09 | PL; 수신; 공통1; 공통2; 김문수; 백병호; 성병근; 박세호; 개발1; 개발2; 개발3; 개발4; 개발5; 개발6; 개발7; 개발8; 개발9; 개발10; 개발11; 개발12; 개발13; 개발14 | 1760h | 1760h | 220 | 220 | 220 | 컨버전 설계 | C02-1 1.3.5 |  |
| 81 | 2.4.3 | **AS-IS 데이터 컨버젼 및 적재** | 25d | 2007-10-22 A | 2007-11-23 A | 100% | 2007-10-22 | 2007-11-23 | 25d |  | PL; 수신; 공통1; 공통2; 김문수; 백병호; 성병근; 박세호; 개발1; 개발2; 개발3; 개발4; 개발5; 개발6; 개발7; 개발8; 개발9; 개발10; 개발11; 개발12; 개발13; 개발14 | 12496h | 12496h | 1,562 | 1,562 | 1,562 | 컨버전 설계 | C02-1 1.3.5 |  |
| 82 | 2.4.3.1 | M/F NDB,TIP File BIT 컨버젼 및 적재 | 25d | 2007-10-22 A | 2007-11-23 A | 100% | 2007-10-22 | 2007-11-23 | 25d | finish no earlier than 2007-11-23 | PL; 수신; 공통1; 공통2; 김문수; 백병호; 성병근; 박세호; 개발1; 개발2; 개발3; 개발4; 개발5; 개발6; 개발7; 개발8; 개발9; 개발10; 개발11; 개발12; 개발13; 개발14 | 4400h | 4400h | 550 | 550 | 550 | 컨버전 설계 | C02-1 1.3.5 |  |
| 83 | 2.4.3.2 | UNIX RDB 적재 | 21d | 2007-10-26 A | 2007-11-23 A | 100% | 2007-10-26 | 2007-11-23 | 21d | finish no earlier than 2007-11-23 | PL; 수신; 공통1; 공통2; 김문수; 백병호; 성병근; 박세호; 개발1; 개발2; 개발3; 개발4; 개발5; 개발6; 개발7; 개발8; 개발9; 개발10; 개발11; 개발12; 개발13; 개발14 | 3696h | 3696h | 462 | 462 | 462 | 컨버전 설계 | C02-1 1.3.5 |  |
| 84 | 2.5 | **매핑설계** | 80d? | 2007-10-29 A | 2008-02-22 A | 100% | 2007-10-29 | 2008-02-22 | 80d? |  |  | 40496h | 40496h | 5,062 | 5,062 | 5,062 | 컨버전 설계 | C02-1 1.3.5 |  |
| 85 | 2.5.1 | 매핑설계사전준비 | 1.2d? | 2007-10-29 A | 2007-10-30 A | 100% | 2007-10-29 | 2007-10-30 | 1.2d? | start no earlier than 2007-10-29 | PL; 수신; 공통1; 공통2; 김문수; 백병호; 성병근; 박세호; 개발1; 개발2; 개발3; 개발4; 개발5; 개발6; 개발7; 개발8; 개발9; 개발10; 개발11; 개발12 | 192h | 192h | 24 | 24 | 24 | 컨버전 설계 | C02-1 1.3.5 |  |
| 86 | 2.5.2 | **매핑정의서 작성** | 78d? | 2007-10-31 A | 2008-02-22 A | 100% | 2007-10-31 | 2008-02-22 | 78d? |  |  | 33440h | 33440h | 4,180 | 4,180 | 4,180 | 컨버전 설계 | C02-1 1.3.5 |  |
| 87 | 2.5.2.1 | 테이블 매핑정의서 작성 | 56d? | 2007-10-31 A | 2008-01-18 A | 100% | 2007-10-31 | 2008-01-18 | 56d? | finish no earlier than 2007-12-07 | PL; 수신; 공통1; 공통2; 김문수; 백병호; 성병근; 박세호; 개발1; 개발2; 개발3; 개발4; 개발5; 개발6; 개발7; 개발8; 개발9; 개발10; 개발11; 개발12; 개발13; 개발14 | 9856h | 9856h | 1,232 | 1,232 | 1,232 | 컨버전 설계 | C02-1 1.3.5 | 테이블 매핑정의서 |
| 88 | 2.5.2.2 | 컬럼 매핑정의서 작성 | 56d? | 2007-10-31 A | 2008-01-18 A | 100% | 2007-10-31 | 2008-01-18 | 56d? | finish no earlier than 2007-12-07 | PL; 수신; 공통1; 공통2; 김문수; 백병호; 성병근; 박세호; 개발1; 개발2; 개발3; 개발4; 개발5; 개발6; 개발7; 개발8; 개발9; 개발10; 개발11; 개발12; 개발13; 개발14 | 9856h | 9856h | 1,232 | 1,232 | 1,232 | 컨버전 설계 | C02-1 1.3.5 | 컬럼매핑 정의서 |
| 89 | 2.5.2.3 | 유효값 매핑정의서 작성 | 78d? | 2007-10-31 A | 2008-02-22 A | 100% | 2007-10-31 | 2008-02-22 | 78d? | finish no earlier than 2007-12-07 | PL; 수신; 공통1; 공통2; 김문수; 백병호; 성병근; 박세호; 개발1; 개발2; 개발3; 개발4; 개발5; 개발6; 개발7; 개발8; 개발9; 개발10; 개발11; 개발12; 개발13; 개발14 | 13728h | 13728h | 1,716 | 1,716 | 1,716 | 컨버전 설계 | C02-1 1.3.5 | 유효값 매핑 정의서 |
| 90 | 2.5.3 | 사전이행 대상 식별 | 39d? | 2007-12-07 A | 2008-02-01 A | 100% | 2007-12-07 | 2008-02-01 | 39d? | finish no earlier than 2008-01-11 | PL; 수신; 공통1; 공통2; 김문수; 백병호; 성병근; 박세호; 개발1; 개발2; 개발3; 개발4; 개발5; 개발6; 개발7; 개발8; 개발9; 개발10; 개발11; 개발12; 개발13; 개발14 | 6864h | 6864h | 858 | 858 | 858 | 컨버전 설계 | C02-1 1.3.5 |  |
| 91 | 2.6 | **전환 상세설계** | 68d? | 2007-10-15 A | 2008-01-18 A | 100% | 2007-10-15 | 2008-01-18 | 68d? |  |  | 30272h | 30272h | 3,784 | 3,784 | 3,784 | 컨버전 설계 | C02-1 1.3.5 |  |
| 92 | 2.6.1 | 데이터 추출방식 확정 | 10d? | 2007-10-15 A | 2007-10-26 A | 100% | 2007-10-15 | 2007-10-26 | 10d? | finish no earlier than 2007-10-26 | PL; 수신; 공통1; 공통2; 김문수; 백병호; 성병근; 박세호; 개발1; 개발2; 개발3; 개발4; 개발5; 개발6; 개발7; 개발8; 개발9; 개발10; 개발11; 개발12; 개발13; 개발14 | 1760h | 1760h | 220 | 220 | 220 | 컨버전 설계 | C02-1 1.3.5 | 테이블 목록 |
| 93 | 2.6.2 | 전환 대상 조건조사 | 20d? | 2007-11-19 A | 2007-12-14 A | 100% | 2007-11-19 | 2007-12-14 | 20d? | start no earlier than 2007-11-19 | PL; 수신; 공통1; 공통2; 김문수; 백병호; 성병근; 박세호; 개발1; 개발2; 개발3; 개발4; 개발5; 개발6; 개발7; 개발8; 개발9; 개발10; 개발11; 개발12; 개발13; 개발14 | 3520h | 3520h | 440 | 440 | 440 | 컨버전 설계 | C02-1 1.3.5 | 테이블 목록 |
| 94 | 2.6.3 | **전환 프로그램 설계** | 49d? | 2007-11-09 A | 2008-01-18 A | 100% | 2007-11-09 | 2008-01-18 | 49d? |  |  | 13904h | 13904h | 1,738 | 1,738 | 1,738 | 컨버전 설계 | C02-1 1.3.5 |  |
| 95 | 2.6.3.1 | 데이터 전환 설계서 | 15d? | 2007-11-12 A | 2007-11-30 A | 100% | 2007-11-12 | 2007-11-30 | 15d? | start no earlier than 2007-11-12 | PL; 수신; 공통1; 공통2; 김문수; 백병호; 성병근; 박세호; 개발1; 개발2; 개발3; 개발4; 개발5; 개발6; 개발7; 개발8; 개발9; 개발10; 개발11; 개발12; 개발13; 개발14 | 2640h | 2640h | 330 | 330 | 330 | 컨버전 설계 | C02-1 1.3.5 | 데이터 전환 설계서(FLOW설계) |
| 96 | 2.6.3.2 | 전환 프로그램 목록 작성 | 49d? | 2007-11-09 A | 2008-01-18 A | 100% | 2007-11-09 | 2008-01-18 | 49d? | finish no earlier than 2008-01-18 | PL; 수신; 공통1; 공통2; 김문수; 백병호; 성병근; 박세호; 개발1; 개발2; 개발3; 개발4; 개발5; 개발6; 개발7; 개발8; 개발9; 개발10; 개발11; 개발12; 개발13; 개발14 | 8624h | 8624h | 1,078 | 1,078 | 1,078 | 컨버전 설계 | C02-1 1.3.5 | 전환 프로그램 목록 |
| 97 | 2.6.3.3 | 추출파일 정의서 작성 | 15d? | 2007-11-26 A | 2007-12-14 A | 100% | 2007-11-26 | 2007-12-14 | 15d? | finish no earlier than 2007-12-14 | PL; 수신; 공통1; 공통2; 김문수; 백병호; 성병근; 박세호; 개발1; 개발2; 개발3; 개발4; 개발5; 개발6; 개발7; 개발8; 개발9; 개발10; 개발11; 개발12; 개발13; 개발14 | 2640h | 2640h | 330 | 330 | 330 | 컨버전 설계 | C02-1 1.3.5 | 추출파일 정의서 |
| 98 | 2.6.4 | **검증 프로그램 설계** | 34d? | 2007-11-30 A | 2008-01-18 A | 100% | 2007-11-30 | 2008-01-18 | 34d? |  |  | 11088h | 11088h | 1,386 | 1,386 | 1,386 | 컨버전 설계 | C02-1 1.3.5 |  |
| 99 | 2.6.4.1 | 데이터 검증 설계 | 34d? | 2007-11-30 A | 2008-01-18 A | 100% | 2007-11-30 | 2008-01-18 | 34d? | finish no earlier than 2008-01-18 | PL; 수신; 공통1; 공통2; 김문수; 백병호; 성병근; 박세호; 개발1; 개발2; 개발3; 개발4; 개발5; 개발6; 개발7; 개발8; 개발9; 개발10; 개발11; 개발12; 개발13; 개발14 | 5984h | 5984h | 748 | 748 | 748 | 컨버전 설계 | C02-1 1.3.5 | 데이터 검증 요건정의서 |
| 100 | 2.6.4.2 | 검증 프로그램 목록 작성 | 29d? | 2007-12-07 A | 2008-01-18 A | 100% | 2007-12-07 | 2008-01-18 | 29d? | finish no earlier than 2008-01-18 | PL; 수신; 공통1; 공통2; 김문수; 백병호; 성병근; 박세호; 개발1; 개발2; 개발3; 개발4; 개발5; 개발6; 개발7; 개발8; 개발9; 개발10; 개발11; 개발12; 개발13; 개발14 | 5104h | 5104h | 638 | 638 | 638 | 컨버전 설계 | C02-1 1.3.5 | 검증 프로그램 목록 |

| ID | WBS | Task | Duration | Start | Finish | Predecessors | Complete | Baseline start | Baseline finish | Baseline duration | Constraint | Resources | Work | Actual work | Cost | Baseline cost | Actual cost | Text20 | Text26 | Text30 |
| --- | --- | --- | --- | --- | --- | --- | --- | --- | --- | --- | --- | --- | --- | --- | --- | --- | --- | --- | --- | --- |
| 101 | 2.7 | **관리활동** | 142d? | 2007-07-09 A | 2008-02-01 A |  | 100% | 2007-07-09 | 2008-02-01 | 142d? |  |  | 14784h | 14784h | 1,848 | 1,848 | 1,848 | 단계완료 | C02-1 1.6.8 |  |
| 102 | 2.7.1 | 설계SPM검토및수정 | 5d? | 2007-07-09 A | 2007-07-13 A |  | 100% | 2007-07-09 | 2007-07-13 | 5d? | finish no earlier than 2007-07-13 | PL; 수신; 공통1; 공통2; 김문수; 백병호; 성병근; 박세호; 개발1; 개발2; 개발3; 개발4; 개발5; 개발6; 개발7; 개발8; 개발9; 개발10; 개발11; 개발12; 개발13; 개발14 | 880h | 880h | 110 | 110 | 110 | 단계완료 | C02-1 1.6.8 |  |
| 103 | 2.7.2 | 분석감리조치 | 5d? | 2007-07-23 A | 2007-07-27 A |  | 100% | 2007-07-23 | 2007-07-27 | 5d? | finish no earlier than 2007-07-27 | PL; 수신; 공통1; 공통2; 김문수; 백병호; 성병근; 박세호; 개발1; 개발2; 개발3; 개발4; 개발5; 개발6; 개발7; 개발8; 개발9; 개발10; 개발11; 개발12; 개발13; 개발14 | 880h | 880h | 110 | 110 | 110 | 단계완료 | C02-1 1.6.8 |  |
| 104 | 2.7.3 | 오리엔테이션(2차)실시 | 5d? | 2007-07-23 A | 2007-07-27 A |  | 100% | 2007-07-23 | 2007-07-27 | 5d? | finish no earlier than 2007-07-27 | PL; 수신; 공통1; 공통2; 김문수; 백병호; 성병근; 박세호; 개발1; 개발2; 개발3; 개발4; 개발5; 개발6; 개발7; 개발8; 개발9; 개발10; 개발11; 개발12; 개발13; 개발14 | 880h | 880h | 110 | 110 | 110 | 단계완료 | C02-1 1.6.8 |  |
| 105 | 2.7.4 | QAO심사(2차)조치 | 54d? | 2007-08-29 A | 2007-11-16 A |  | 100% | 2007-08-29 | 2007-11-16 | 54d? | finish no earlier than 2007-11-16 | PL; 수신; 공통1; 공통2; 김문수; 백병호; 성병근; 박세호; 개발1; 개발2; 개발3; 개발4; 개발5; 개발6; 개발7; 개발8; 개발9; 개발10; 개발11; 개발12; 개발13; 개발14 | 9504h | 9504h | 1,188 | 1,188 | 1,188 | 단계완료 | C02-1 1.6.8 |  |
| 106 | 2.7.5 | Inspection(2차)실시및조치 | 5d | 2007-11-26 A | 2007-11-30 A | 105 | 100% | 2007-11-26 | 2007-11-30 | 5d | finish no earlier than 2007-11-30 | PL; 수신; 공통1; 공통2; 김문수; 백병호; 성병근; 박세호; 개발1; 개발2; 개발3; 개발4; 개발5; 개발6; 개발7; 개발8; 개발9; 개발10; 개발11; 개발12; 개발13; 개발14 | 880h | 880h | 110 | 110 | 110 | 단계완료 | C02-1 1.6.8 |  |
| 107 | 2.7.6 | 설계요구사항추적표매핑 | 5d? | 2007-11-26 A | 2007-11-30 A |  | 100% | 2007-11-26 | 2007-11-30 | 5d? | finish no earlier than 2007-11-30 | PL; 수신; 공통1; 공통2; 김문수; 백병호; 성병근; 박세호; 개발1; 개발2; 개발3; 개발4; 개발5; 개발6; 개발7; 개발8; 개발9; 개발10; 개발11; 개발12; 개발13; 개발14 | 880h | 880h | 110 | 110 | 110 | 단계완료 | C02-1 1.6.8 |  |
| 108 | 2.7.7 | 고객검토(2차)실시및검토 | 5d? | 2008-01-28 A | 2008-02-01 A |  | 100% | 2008-01-28 | 2008-02-01 | 5d? | start no earlier than 2008-01-03 | PL; 수신; 공통1; 공통2; 김문수; 백병호; 성병근; 박세호; 개발1; 개발2; 개발3; 개발4; 개발5; 개발6; 개발7; 개발8; 개발9; 개발10; 개발11; 개발12; 개발13; 개발14 | 880h | 880h | 110 | 110 | 110 | 단계완료 | C02-1 1.6.8 |  |
| 109 | 3 | **전환 개발** | 150d? | 2007-10-31 A | 2008-06-05 A |  | 100% | 2007-10-31 | 2008-06-06 | 150d? |  |  | 72160h | 72160h | 9,020 | 9,020 | 9,020 | 개발 | C02-1 1.4 |  |
| 110 | 3.1 | **전환 프로그램 개발 및 테스트** | 141d? | 2007-10-31 A | 2008-05-23 A |  | 100% | 2007-10-31 | 2008-05-23 | 141d? |  |  | 25696h | 25696h | 3,212 | 3,212 | 3,212 | 코딩 및 단위테스트 실시 | C02-1 1.4.1 |  |
| 111 | 3.1.1 | 전환 프로그램 개발 | 108d? | 2007-10-31 A | 2008-04-04 A |  | 100% | 2007-10-31 | 2008-04-04 | 108d? | finish no earlier than 2008-03-28 | PL; 수신; 공통1; 공통2; 김문수; 백병호; 성병근; 박세호; 개발1; 개발2; 개발3; 개발4; 개발5; 개발6; 개발7; 개발8; 개발9; 개발10; 개발11; 개발12; 개발13; 개발14 | 19008h | 19008h | 2,376 | 2,376 | 2,376 | 코딩 및 단위테스트 실시 | C02-1 1.4.1 |  |
| 112 | 3.1.2 | 전환 테스트 실시 | 38d? | 2008-03-31 A | 2008-05-23 A |  | 100% | 2008-03-31 | 2008-05-23 | 38d? | start no earlier than 2008-03-31 | PL; 수신; 공통1; 공통2; 김문수; 백병호; 성병근; 박세호; 개발1; 개발2; 개발3; 개발4; 개발5; 개발6; 개발7; 개발8; 개발9; 개발10; 개발11; 개발12; 개발13; 개발14 | 6688h | 6688h | 836 | 836 | 836 | 코딩 및 단위테스트 실시 | C02-1 1.4.1 | 단위 테스트 결과서 |
| 113 | 3.2 | **전환 시나리오 수립** | 10d? | 2008-03-31 A | 2008-04-11 A |  | 100% | 2008-03-31 | 2008-04-11 | 10d? |  |  | 3520h | 3520h | 440 | 440 | 440 | 구현계획 수립 | C02-1 1.5.1 |  |
| 114 | 3.2.1 | 전환우선순위 및 시나리오 작성 | 10d? | 2008-03-31 A | 2008-04-11 A |  | 100% | 2008-03-31 | 2008-04-11 | 10d? | finish no earlier than 2008-04-11 | PL; 수신; 공통1; 공통2; 김문수; 백병호; 성병근; 박세호; 개발1; 개발2; 개발3; 개발4; 개발5; 개발6; 개발7; 개발8; 개발9; 개발10; 개발11; 개발12; 개발13; 개발14 | 1760h | 1760h | 220 | 220 | 220 | 구현계획 수립 | C02-1 1.5.1 | 전환 시나리오 |
| 115 | 3.2.2 | 데이터 전환절차 작성 | 10d? | 2008-03-31 A | 2008-04-11 A |  | 100% | 2008-03-31 | 2008-04-11 | 10d? | finish no earlier than 2008-04-11 | PL; 수신; 공통1; 공통2; 김문수; 백병호; 성병근; 박세호; 개발1; 개발2; 개발3; 개발4; 개발5; 개발6; 개발7; 개발8; 개발9; 개발10; 개발11; 개발12; 개발13; 개발14 | 1760h | 1760h | 220 | 220 | 220 | 구현계획 수립 | C02-1 1.5.1 | 전환 시나리오 |
| 116 | 3.3 | **전환 프로그램 검증** | 57d? | 2008-03-17 A | 2008-06-05 A |  | 100% | 2008-03-17 | 2008-06-06 | 57d? |  |  | 10560h | 10560h | 1,320 | 1,320 | 1,320 | 품질활동수행 | C02-1 1.6.2 |  |
| 117 | 3.3.1 | 검증 요건 정의서 작성 | 10d? | 2008-03-17 A | 2008-03-28 A |  | 100% | 2008-03-17 | 2008-03-28 | 10d? | start no earlier than 2008-03-17 | PL; 수신; 공통1; 공통2; 김문수; 백병호; 성병근; 박세호; 개발1; 개발2; 개발3; 개발4; 개발5; 개발6; 개발7; 개발8; 개발9; 개발10; 개발11; 개발12; 개발13; 개발14 | 1760h | 1760h | 220 | 220 | 220 | 품질활동수행 | C02-1 1.6.2 | 검증요건 요건 정의서 |
| 118 | 3.3.2 | 검증 프로그램 개발 | 43d? | 2008-03-31 A | 2008-05-30 A |  | 100% | 2008-03-31 | 2008-05-30 | 43d? | finish no earlier than 2008-05-09 | PL; 수신; 공통1; 공통2; 김문수; 백병호; 성병근; 박세호; 개발1; 개발2; 개발3; 개발4; 개발5; 개발6; 개발7; 개발8; 개발9; 개발10; 개발11; 개발12; 개발13; 개발14 | 7568h | 7568h | 946 | 946 | 946 | 품질활동수행 | C02-1 1.6.2 |  |
| 119 | 3.3.3 | 검증결과서 작성 | 7d? | 2008-05-12 A | 2008-06-05 A | 118 | 100% | 2008-05-12 | 2008-06-06 | 7d? | finish no earlier than 2008-05-16 | PL; 수신; 공통1; 공통2; 김문수; 백병호; 성병근; 박세호; 개발1; 개발2; 개발3; 개발4; 개발5; 개발6; 개발7; 개발8; 개발9; 개발10; 개발11; 개발12; 개발13; 개발14 | 1232h | 1232h | 154 | 154 | 154 | 품질활동수행 | C02-1 1.6.2 | 검증결과서 |
| 120 | 3.4 | **관리활동** | 122d? | 2007-12-10 A | 2008-06-05 A |  | 100% | 2007-12-10 | 2008-06-05 | 122d? |  |  | 32384h | 32384h | 4,048 | 4,048 | 4,048 | 단계완료 | C02-1 1.6.8 |  |
| 121 | 3.4.1 | 개발SPM검토및수정 | 5d? | 2007-12-10 A | 2007-12-14 A |  | 100% | 2007-12-10 | 2007-12-14 | 5d? | finish no earlier than 2007-12-14 | PL; 수신; 공통1; 공통2; 김문수; 백병호; 성병근; 박세호; 개발1; 개발2; 개발3; 개발4; 개발5; 개발6; 개발7; 개발8; 개발9; 개발10; 개발11; 개발12; 개발13; 개발14 | 880h | 880h | 110 | 110 | 110 | 단계완료 | C02-1 1.6.8 |  |
| 122 | 3.4.2 | 설계감리조치 | 5d? | 2007-12-17 A | 2007-12-21 A |  | 100% | 2007-12-17 | 2007-12-21 | 5d? | start no earlier than 2007-12-17 | PL; 수신; 공통1; 공통2; 김문수; 백병호; 성병근; 박세호; 개발1; 개발2; 개발3; 개발4; 개발5; 개발6; 개발7; 개발8; 개발9; 개발10; 개발11; 개발12; 개발13; 개발14 | 880h | 880h | 110 | 110 | 110 | 단계완료 | C02-1 1.6.8 |  |
| 123 | 3.4.3 | 오리엔테이션(3차)실시 | 5d? | 2007-12-17 A | 2007-12-21 A |  | 100% | 2007-12-17 | 2007-12-21 | 5d? | finish no earlier than 2007-12-21 | PL; 수신; 공통1; 공통2; 김문수; 백병호; 성병근; 박세호; 개발1; 개발2; 개발3; 개발4; 개발5; 개발6; 개발7; 개발8; 개발9; 개발10; 개발11; 개발12; 개발13; 개발14 | 880h | 880h | 110 | 110 | 110 | 단계완료 | C02-1 1.6.8 |  |
| 124 | 3.4.4 | QAO심사(3차)조치 | 71d? | 2008-02-01 A | 2008-05-16 A |  | 100% | 2008-02-01 | 2008-05-16 | 71d? | finish no earlier than 2008-05-16 | PL; 수신; 공통1; 공통2; 김문수; 백병호; 성병근; 박세호; 개발1; 개발2; 개발3; 개발4; 개발5; 개발6; 개발7; 개발8; 개발9; 개발10; 개발11; 개발12; 개발13; 개발14 | 12496h | 12496h | 1,562 | 1,562 | 1,562 | 단계완료 | C02-1 1.6.8 |  |
| 125 | 3.4.5 | Inspection(3차)실시및조치 | 94d? | 2008-01-15 A | 2008-05-30 A |  | 100% | 2008-01-15 | 2008-05-30 | 94d? | finish no earlier than 2008-05-30 | PL; 수신; 공통1; 공통2; 김문수; 백병호; 성병근; 박세호; 개발1; 개발2; 개발3; 개발4; 개발5; 개발6; 개발7; 개발8; 개발9; 개발10; 개발11; 개발12; 개발13; 개발14 | 16544h | 16544h | 2,068 | 2,068 | 2,068 | 단계완료 | C02-1 1.6.8 |  |
| 126 | 3.4.6 | 개발요구사항추적표매핑 | 4d? | 2008-06-02 A | 2008-06-05 A |  | 100% | 2008-06-02 | 2008-06-05 | 4d? | finish no earlier than 2008-06-05 | PL; 수신; 공통1; 공통2; 김문수; 백병호; 성병근; 박세호; 개발1; 개발2; 개발3; 개발4; 개발5; 개발6; 개발7; 개발8; 개발9; 개발10; 개발11; 개발12; 개발13; 개발14 | 704h | 704h | 88 | 88 | 88 | 단계완료 | C02-1 1.6.8 |  |

| ID | WBS | Task | Duration | Start | Finish | Predecessors | Complete | Remaining | Baseline start | Baseline finish | Baseline duration | Total slack | Constraint | Resources | Work | Actual work | Cost | Baseline cost | Actual cost | Text20 | Text26 | Text30 |
| --- | --- | --- | --- | --- | --- | --- | --- | --- | --- | --- | --- | --- | --- | --- | --- | --- | --- | --- | --- | --- | --- | --- |
| 127 | 4 | **통합 테스트** | 53d? | 2008-05-19 A | 2008-08-01 A |  | 100% |  | 2008-05-19 | 2008-08-01 | 53d? |  |  |  | 29568h | 29568h | 3,696 | 3,696 | 3,696 | 개발 | C02-1 1.4 |  |
| 128 | 4.1 | 통합 전환 수행계획 수립 | 10d | 2008-05-19 A | 2008-05-30 A |  | 100% |  | 2008-05-19 | 2008-05-30 | 10d |  | finish no earlier than 2008-05-30 | PL; 수신; 공통1; 공통2; 김문수; 백병호; 성병근; 박세호; 개발1; 개발2; 개발3; 개발4; 개발5; 개발6; 개발7; 개발8; 개발9; 개발10; 개발11; 개발12; 개발13; 개발14 | 1760h | 1760h | 220 | 220 | 220 | 단계착수 | C02-1 1.6.1 | 통합전환 테스트 계획서 |
| 129 | 4.2 | **통합 전환 테스트** | 38d? | 2008-06-02 A | 2008-07-25 A |  | 100% |  | 2008-06-02 | 2008-07-25 | 38d? |  |  |  | 20064h | 20064h | 2,508 | 2,508 | 2,508 | 테스트 실시 | C02-1 1.4.2 |  |
| 130 | 4.2.1 | 전환시나리오 확정 | 38d? | 2008-06-02 A | 2008-07-25 A |  | 100% |  | 2008-06-02 | 2008-07-25 | 38d? |  | finish no earlier than 2008-07-25 | PL; 수신; 공통1; 공통2; 김문수; 백병호; 성병근; 박세호; 개발1; 개발2; 개발3; 개발4; 개발5; 개발6; 개발7; 개발8; 개발9; 개발10; 개발11; 개발12; 개발13; 개발14 | 6688h | 6688h | 836 | 836 | 836 | 테스트 실시 | C02-1 1.4.2 | 전환 시나리오 |
| 131 | 4.2.2 | 통합전환 수행 | 38d? | 2008-06-02 A | 2008-07-25 A |  | 100% |  | 2008-06-02 | 2008-07-25 | 38d? |  | finish no earlier than 2008-07-25 | PL; 수신; 공통1; 공통2; 김문수; 백병호; 성병근; 박세호; 개발1; 개발2; 개발3; 개발4; 개발5; 개발6; 개발7; 개발8; 개발9; 개발10; 개발11; 개발12; 개발13; 개발14 | 6688h | 6688h | 836 | 836 | 836 | 테스트 실시 | C02-1 1.4.2 | 전환 테스트 결과서 |
| 132 | 4.2.3 | 통합전환 데이터 검증 | 38d? | 2008-06-02 A | 2008-07-25 A |  | 100% |  | 2008-06-02 | 2008-07-25 | 38d? |  | finish no earlier than 2008-07-25 | PL; 수신; 공통1; 공통2; 김문수; 백병호; 성병근; 박세호; 개발1; 개발2; 개발3; 개발4; 개발5; 개발6; 개발7; 개발8; 개발9; 개발10; 개발11; 개발12; 개발13; 개발14 | 6688h | 6688h | 836 | 836 | 836 | 테스트 실시 | C02-1 1.4.2 | 전환 테스트 결과서 |
| 133 | 4.3 | **관리활동** | 53d? | 2008-05-19 A | 2008-08-01 A |  | 100% |  | 2008-05-19 | 2008-08-01 | 53d? |  |  |  | 7744h | 7744h | 968 | 968 | 968 | 품질활동수행 | C02-1 1.6.2 |  |
| 134 | 4.3.1 | 통합테스트 단계 계획 검토 및 수정 | 5d? | 2008-05-19 A | 2008-05-23 A |  | 100% |  | 2008-05-19 | 2008-05-23 | 5d? |  | finish no earlier than 2008-05-23 | PL; 수신; 공통1; 공통2; 김문수; 백병호; 성병근; 박세호; 개발1; 개발2; 개발3; 개발4; 개발5; 개발6; 개발7; 개발8; 개발9; 개발10; 개발11; 개발12; 개발13; 개발14 | 880h | 880h | 110 | 110 | 110 | 품질활동수행 | C02-1 1.6.2 |  |
| 135 | 4.3.2 | 통합테스트 SPM 검토 및 수정 | 5d? | 2008-05-19 A | 2008-05-23 A |  | 100% |  | 2008-05-19 | 2008-05-23 | 5d? |  | start no earlier than 2008-05-19 | PL; 수신; 공통1; 공통2; 김문수; 백병호; 성병근; 박세호; 개발1; 개발2; 개발3; 개발4; 개발5; 개발6; 개발7; 개발8; 개발9; 개발10; 개발11; 개발12; 개발13; 개발14 | 880h | 880h | 110 | 110 | 110 | 품질활동수행 | C02-1 1.6.2 |  |
| 136 | 4.3.3 | 오리엔테이션(4차) 실시 | 5d? | 2008-05-26 A | 2008-05-30 A | 135 | 100% |  | 2008-05-26 | 2008-05-30 | 5d? |  | finish no earlier than 2008-05-30 | PL; 수신; 공통1; 공통2; 김문수; 백병호; 성병근; 박세호; 개발1; 개발2; 개발3; 개발4; 개발5; 개발6; 개발7; 개발8; 개발9; 개발10; 개발11; 개발12; 개발13; 개발14 | 880h | 880h | 110 | 110 | 110 | 품질활동수행 | C02-1 1.6.2 |  |
| 137 | 4.3.4 | QAO심사(4차) 조치 | 10d? | 2008-06-16 A | 2008-06-27 A |  | 100% |  | 2008-06-16 | 2008-06-27 | 10d? |  | finish no earlier than 2008-06-27 | PL; 수신; 공통1; 공통2; 김문수; 백병호; 성병근; 박세호; 개발1; 개발2; 개발3; 개발4; 개발5; 개발6; 개발7; 개발8; 개발9; 개발10; 개발11; 개발12; 개발13; 개발14 | 1760h | 1760h | 220 | 220 | 220 | 품질활동수행 | C02-1 1.6.2 |  |
| 138 | 4.3.5 | Inspection(4차) 실시 및 조치 | 14d? | 2008-07-07 A | 2008-07-25 A |  | 100% |  | 2008-07-07 | 2008-07-25 | 14d? |  | finish no earlier than 2008-07-25 | PL; 수신; 공통1; 공통2; 김문수; 백병호; 성병근; 박세호; 개발1; 개발2; 개발3; 개발4; 개발5; 개발6; 개발7; 개발8; 개발9; 개발10; 개발11; 개발12; 개발13; 개발14 | 2464h | 2464h | 308 | 308 | 308 | 품질활동수행 | C02-1 1.6.2 |  |
| 139 | 4.3.6 | 통합테스트 요구사항추적표 매핑 | 5d? | 2008-07-28 A | 2008-08-01 A |  | 100% |  | 2008-07-28 | 2008-08-01 | 5d? |  | finish no earlier than 2008-08-01 | PL; 수신; 공통1; 공통2; 김문수; 백병호; 성병근; 박세호; 개발1; 개발2; 개발3; 개발4; 개발5; 개발6; 개발7; 개발8; 개발9; 개발10; 개발11; 개발12; 개발13; 개발14 | 880h | 880h | 110 | 110 | 110 | 품질활동수행 | C02-1 1.6.2 |  |
| 140 | 5 | **영업점 테스트** | 143d? | 2008-07-07 A | 2009-01-27 |  | 54% | 66.45d? | 2008-07-07 | 2009-01-27 | 143d? | 10.91d |  |  | 88176h | 47199.7h | 11,022 | 10,868 | 5,899.96 | 개발 | C02-1 1.4 |  |
| 141 | 5.1 | **시범점 테스트 지원** | 40d? | 2008-07-21 A | 2008-09-12 A |  | 100% |  | 2008-07-21 | 2008-09-12 | 40d? |  |  |  | 18656h | 18656h | 2,332 | 2,178 | 2,332 | 테스트 실시 | C02-1 1.4.2 |  |
| 142 | 5.1.1 | 시범점 테스트 지원 전환계획 수립 | 16d? | 2008-07-21 A | 2008-08-08 A |  | 100% |  | 2008-07-21 | 2008-07-31 | 9d? |  | finish no earlier than 2008-07-31 | PL; 수신; 공통1; 공통2; 김문수; 백병호; 성병근; 박세호; 개발1; 개발2; 개발3; 개발4; 개발5; 개발6; 개발7; 개발8; 개발9; 개발10; 개발11; 개발12; 개발13; 개발14 | 2816h | 2816h | 352 | 198 | 352 | 테스트 실시 | C02-1 1.4.2 | 영업점 테스트 계획서 |
| 143 | 5.1.2 | 시범점 테스트용 데이터 전환 | 30d? | 2008-08-03 A | 2008-09-12 A |  | 100% |  | 2008-08-03 | 2008-09-12 | 30d? |  | finish no earlier than 2008-09-12 | PL; 수신; 공통1; 공통2; 김문수; 백병호; 성병근; 박세호; 개발1; 개발2; 개발3; 개발4; 개발5; 개발6; 개발7; 개발8; 개발9; 개발10; 개발11; 개발12; 개발13; 개발14 | 5280h | 5280h | 660 | 660 | 660 | 테스트 실시 | C02-1 1.4.2 | 전환 테스트 결과서 |
| 144 | 5.1.3 | 시범점 테스트용 데이터 검증 | 30d? | 2008-08-03 A | 2008-09-12 A |  | 100% |  | 2008-08-03 | 2008-09-12 | 30d? |  | finish no earlier than 2008-09-12 | PL; 수신; 공통1; 공통2; 김문수; 백병호; 성병근; 박세호; 개발1; 개발2; 개발3; 개발4; 개발5; 개발6; 개발7; 개발8; 개발9; 개발10; 개발11; 개발12; 개발13; 개발14 | 5280h | 5280h | 660 | 660 | 660 | 테스트 실시 | C02-1 1.4.2 | 전환 테스트 결과서 |
| 145 | 5.1.4 | 이행시간 최적화 | 30d? | 2008-08-03 A | 2008-09-12 A |  | 100% |  | 2008-08-03 | 2008-09-12 | 30d? |  | finish no earlier than 2008-09-12 | PL; 수신; 공통1; 공통2; 김문수; 백병호; 성병근; 박세호; 개발1; 개발2; 개발3; 개발4; 개발5; 개발6; 개발7; 개발8; 개발9; 개발10; 개발11; 개발12; 개발13; 개발14 | 5280h | 5280h | 660 | 660 | 660 | 테스트 실시 | C02-1 1.4.2 | 소스 코드 |
| 146 | 5.2 | **영업점 테스트 지원** | 109d? | 2008-07-21 A | 2008-12-20 |  | 75% | 27.16d? | 2008-07-21 | 2008-12-20 | 109d? | 35.91d |  |  | 38016h | 28543.7h | 4,752 | 4,752 | 3,567.96 | 테스트 실시 | C02-1 1.4.2 |  |
| 147 | 5.2.1 | 영업점 테스트 지원 전환계획 수립 | 9d? | 2008-07-21 A | 2008-07-31 A |  | 100% |  | 2008-07-21 | 2008-07-31 | 9d? |  | finish no earlier than 2008-07-31 | PL; 수신; 공통1; 공통2; 김문수; 백병호; 성병근; 박세호; 개발1; 개발2; 개발3; 개발4; 개발5; 개발6; 개발7; 개발8; 개발9; 개발10; 개발11; 개발12; 개발13; 개발14 | 1584h | 1584h | 198 | 198 | 198 | 테스트 실시 | C02-1 1.4.2 | 영업점 테스트 계획서 |
| 148 | 5.2.2 | 영업점 테스트용 데이터 전환 | 69d? | 2008-09-14 A | 2008-12-20 |  | 74% | 17.94d? | 2008-09-14 | 2008-12-20 | 69d? | 35.91d | finish no earlier than 2008-12-20 | PL; 수신; 공통1; 공통2; 김문수; 백병호; 성병근; 박세호; 개발1; 개발2; 개발3; 개발4; 개발5; 개발6; 개발7; 개발8; 개발9; 개발10; 개발11; 개발12; 개발13; 개발14 | 12144h | 8986.56h | 1,518 | 1,518 | 1,123.32 | 테스트 실시 | C02-1 1.4.2 | 전환 테스트 결과서 |
| 149 | 5.2.3 | 영업점 테스트용 데이터 검증 | 69d? | 2008-09-14 A | 2008-12-20 |  | 74% | 17.94d? | 2008-09-14 | 2008-12-20 | 69d? | 35.91d | finish no earlier than 2008-12-20 | PL; 수신; 공통1; 공통2; 김문수; 백병호; 성병근; 박세호; 개발1; 개발2; 개발3; 개발4; 개발5; 개발6; 개발7; 개발8; 개발9; 개발10; 개발11; 개발12; 개발13; 개발14 | 12144h | 8986.56h | 1,518 | 1,518 | 1,123.32 | 테스트 실시 | C02-1 1.4.2 | 전환 테스트 결과서 |
| 150 | 5.2.4 | 이행시간 최적화 | 69d? | 2008-09-14 A | 2008-12-20 |  | 74% | 17.94d? | 2008-09-14 | 2008-12-20 | 69d? | 35.91d | finish no earlier than 2008-12-20 | PL; 수신; 공통1; 공통2; 김문수; 백병호; 성병근; 박세호; 개발1; 개발2; 개발3; 개발4; 개발5; 개발6; 개발7; 개발8; 개발9; 개발10; 개발11; 개발12; 개발13; 개발14 | 12144h | 8986.56h | 1,518 | 1,518 | 1,123.32 | 테스트 실시 | C02-1 1.4.2 | 소스 코드 |

| ID | WBS | Task | Duration | Start | Finish | Predecessors | Baseline start | Baseline finish | Baseline duration | Total slack | Free slack | Constraint | Resources | Work | Cost | Baseline cost | Text20 | Text26 | Text30 |
| --- | --- | --- | --- | --- | --- | --- | --- | --- | --- | --- | --- | --- | --- | --- | --- | --- | --- | --- | --- |
| 151 | 5.3 | **데이터 이행** | 18d? | 2009-01-02 | 2009-01-27 |  | 2009-01-02 | 2009-01-27 | 18d? | 10.91d |  |  |  | 5280h | 660 | 660 | 컨버전 및 릴리이즈 | C02-1 1.5.2 |  |
| 152 | 5.3.1 | **이행계획 확정** | 16d? | 2009-01-02 | 2009-01-23 |  | 2009-01-02 | 2009-01-23 | 16d? | 12.91d |  |  |  | 3696h | 462 | 462 | 컨버전 및 릴리이즈 | C02-1 1.5.2 |  |
| 153 | 5.3.1.1 | 이행계획확정 | 5d? | 2009-01-05 | 2009-01-09 |  | 2009-01-05 | 2009-01-09 | 5d? | 22.91d |  | start no earlier than 2009-01-05 | PL; 수신; 공통1; 공통2; 김문수; 백병호; 성병근; 박세호; 개발1; 개발2; 개발3; 개발4; 개발5; 개발6; 개발7; 개발8; 개발9; 개발10; 개발11; 개발12; 개발13; 개발14 | 880h | 110 | 110 | 컨버전 및 릴리이즈 | C02-1 1.5.2 | 데이터 이행 계획서 |
| 154 | 5.3.1.2 | 이행준비 | 16d? | 2009-01-02 | 2009-01-23 |  | 2009-01-02 | 2009-01-23 | 16d? | 12.91d |  | finish no earlier than 2009-01-23 | PL; 수신; 공통1; 공통2; 김문수; 백병호; 성병근; 박세호; 개발1; 개발2; 개발3; 개발4; 개발5; 개발6; 개발7; 개발8; 개발9; 개발10; 개발11; 개발12; 개발13; 개발14 | 2816h | 352 | 352 | 컨버전 및 릴리이즈 | C02-1 1.5.2 |  |
| 155 | 5.3.2 | **이행 완료** | 3d? | 2009-01-23 | 2009-01-27 |  | 2009-01-23 | 2009-01-27 | 3d? | 10.91d |  |  |  | 1584h | 198 | 198 | 컨버전 및 릴리이즈 | C02-1 1.5.2 |  |
| 156 | 5.3.2.1 | 이행 | 3d? | 2009-01-23 | 2009-01-27 |  | 2009-01-23 | 2009-01-27 | 3d? | 10.91d |  | finish no earlier than 2009-01-27 | PL; 수신; 공통1; 공통2; 김문수; 백병호; 성병근; 박세호; 개발1; 개발2; 개발3; 개발4; 개발5; 개발6; 개발7; 개발8; 개발9; 개발10; 개발11; 개발12; 개발13; 개발14 | 528h | 66 | 66 | 컨버전 및 릴리이즈 | C02-1 1.5.2 |  |
| 157 | 5.3.2.2 | 이행최종검증 | 3d? | 2009-01-23 | 2009-01-27 |  | 2009-01-23 | 2009-01-27 | 3d? | 10.91d |  | finish no earlier than 2009-01-27 | PL; 수신; 공통1; 공통2; 김문수; 백병호; 성병근; 박세호; 개발1; 개발2; 개발3; 개발4; 개발5; 개발6; 개발7; 개발8; 개발9; 개발10; 개발11; 개발12; 개발13; 개발14 | 528h | 66 | 66 | 컨버전 및 릴리이즈 | C02-1 1.5.2 | 검증 결과서 |
| 158 | 5.3.2.3 | 이행완료보고 | 3d? | 2009-01-23 | 2009-01-27 |  | 2009-01-23 | 2009-01-27 | 3d? | 10.91d |  | finish no earlier than 2009-01-27 | PL; 수신; 공통1; 공통2; 김문수; 백병호; 성병근; 박세호; 개발1; 개발2; 개발3; 개발4; 개발5; 개발6; 개발7; 개발8; 개발9; 개발10; 개발11; 개발12; 개발13; 개발14 | 528h | 66 | 66 | 컨버전 및 릴리이즈 | C02-1 1.5.2 | 데이터 전환 보고서 |
| 159 | 5.4 | **관리활동** | 141d? | 2008-07-07 | 2009-01-23 |  | 2008-07-07 | 2009-01-23 | 141d? | 12.91d |  |  |  | 26224h | 3,278 | 3,278 | 품질활동수행 | C02-1 1.6.2 |  |
| 160 | 5.4.1 | 영업점테스트단계계획검토및수정 | 5d? | 2008-07-07 | 2008-07-11 |  | 2008-07-07 | 2008-07-11 | 5d? | 144.91d | 0d | finish no earlier than 2008-07-11 | PL; 수신; 공통1; 공통2; 김문수; 백병호; 성병근; 박세호; 개발1; 개발2; 개발3; 개발4; 개발5; 개발6; 개발7; 개발8; 개발9; 개발10; 개발11; 개발12; 개발13; 개발14 | 880h | 110 | 110 | 품질활동수행 | C02-1 1.6.2 |  |
| 161 | 5.4.2 | 영업점테스트SPM검토및수정 | 4d | 2008-07-14 | 2008-07-18 | 160 | 2008-07-14 | 2008-07-18 | 4d | 144.91d |  | finish no earlier than 2008-07-18 | PL; 수신; 공통1; 공통2; 김문수; 백병호; 성병근; 박세호; 개발1; 개발2; 개발3; 개발4; 개발5; 개발6; 개발7; 개발8; 개발9; 개발10; 개발11; 개발12; 개발13; 개발14 | 704h | 88 | 88 | 품질활동수행 | C02-1 1.6.2 |  |
| 162 | 5.4.3 | 오리엔테이션(5차)실시 | 7d | 2008-08-01 | 2008-08-08 |  | 2008-08-01 | 2008-08-08 | 7d | 128.91d |  | finish no earlier than 2008-08-08 | PL; 수신; 공통1; 공통2; 김문수; 백병호; 성병근; 박세호; 개발1; 개발2; 개발3; 개발4; 개발5; 개발6; 개발7; 개발8; 개발9; 개발10; 개발11; 개발12; 개발13; 개발14 | 1232h | 154 | 154 | 품질활동수행 | C02-1 1.6.2 |  |
| 163 | 5.4.4 | QAO심사(5차)조치 | 49d | 2008-09-08 | 2008-11-14 |  | 2008-09-08 | 2008-11-14 | 49d | 60.91d |  | finish no earlier than 2008-11-14 | PL; 수신; 공통1; 공통2; 김문수; 백병호; 성병근; 박세호; 개발1; 개발2; 개발3; 개발4; 개발5; 개발6; 개발7; 개발8; 개발9; 개발10; 개발11; 개발12; 개발13; 개발14 | 8624h | 1,078 | 1,078 | 품질활동수행 | C02-1 1.6.2 |  |
| 164 | 5.4.5 | Inspection(5차)실시및조치 | 10d | 2008-12-01 | 2008-12-12 |  | 2008-12-01 | 2008-12-12 | 10d | 40.91d |  | finish no earlier than 2008-12-12 | PL; 수신; 공통1; 공통2; 김문수; 백병호; 성병근; 박세호; 개발1; 개발2; 개발3; 개발4; 개발5; 개발6; 개발7; 개발8; 개발9; 개발10; 개발11; 개발12; 개발13; 개발14 | 1760h | 220 | 220 | 품질활동수행 | C02-1 1.6.2 |  |
| 165 | 5.4.6 | 예비제품검사조치 | 28d | 2008-12-15 | 2009-01-23 |  | 2008-12-15 | 2009-01-23 | 28d | 12.91d |  | finish no earlier than 2009-01-23 | PL; 수신; 공통1; 공통2; 김문수; 백병호; 성병근; 박세호; 개발1; 개발2; 개발3; 개발4; 개발5; 개발6; 개발7; 개발8; 개발9; 개발10; 개발11; 개발12; 개발13; 개발14 | 4928h | 616 | 616 | 품질활동수행 | C02-1 1.6.2 |  |
| 166 | 5.4.7 | 제품검사조치 | 28d | 2008-12-15 | 2009-01-23 |  | 2008-12-15 | 2009-01-23 | 28d | 12.91d |  | finish no earlier than 2009-01-23 | PL; 수신; 공통1; 공통2; 김문수; 백병호; 성병근; 박세호; 개발1; 개발2; 개발3; 개발4; 개발5; 개발6; 개발7; 개발8; 개발9; 개발10; 개발11; 개발12; 개발13; 개발14 | 4928h | 616 | 616 | 품질활동수행 | C02-1 1.6.2 |  |
| 167 | 5.4.8 | 최종요구사항추적표매핑 | 10d | 2009-01-05 | 2009-01-16 |  | 2009-01-05 | 2009-01-16 | 10d | 17.91d |  | finish no earlier than 2009-01-16 | PL; 수신; 공통1; 공통2; 김문수; 백병호; 성병근; 박세호; 개발1; 개발2; 개발3; 개발4; 개발5; 개발6; 개발7; 개발8; 개발9; 개발10; 개발11; 개발12; 개발13; 개발14 | 1760h | 220 | 220 | 품질활동수행 | C02-1 1.6.2 |  |
| 168 | 5.4.9 | 고객검토(3차)실시및조치 | 8d | 2008-12-22 | 2009-01-02 |  | 2008-12-22 | 2009-01-02 | 8d | 27.91d |  | finish no earlier than 2009-01-02 | PL; 수신; 공통1; 공통2; 김문수; 백병호; 성병근; 박세호; 개발1; 개발2; 개발3; 개발4; 개발5; 개발6; 개발7; 개발8; 개발9; 개발10; 개발11; 개발12; 개발13; 개발14 | 1408h | 176 | 176 | 품질활동수행 | C02-1 1.6.2 |  |
| 169 | 6 | 안정화 | 10.91d | 2009-01-28 | 2009-02-11 |  | 2009-01-28 | 2009-02-11 | 10.91d | 0d |  | start no earlier than 2009-01-28 | PL; 수신; 김문수; 백병호; 성병근; 박세호; 공통1; 공통2; 개발1; 개발2; 개발3; 개발4; 개발5; 개발6; 개발7; 개발8; 개발9; 개발10; 개발11; 개발12; 개발13; 개발14 | 1920h | 240 | 240 | 구현 | C02-1 1.5 |  |
