# 메타

Schedule from MS Project, 2007-05-02 to 2009-03-24, costs in ₩, A marks actual dates.
HSIC-0600001
�궪�꽦SDS

## Calendars

- 농협신용신시스템: Mon-Fri 08:00-12:00, 13:00-17:00; Sat-Sun off. Exceptions (off unless hours are given): 2007-05-24, 2007-06-06, 2007-07-17, 2007-08-15, 2007-09-24 08:00-12:00, 13:00-17:00, 2007-09-25 to 2007-09-26, 2007-10-03, 2007-12-25, 2008-01-01, 2008-02-06 to 2008-02-08, 2008-05-01, 2008-05-05, 2008-05-12, 2008-06-06, 2008-07-17, 2008-08-15, 2008-09-15, 2008-10-03, 2008-12-25, 2009-01-01.

## Resources

| Resource | Rate |
| --- | --- |
| 이기철 | 0.12 |
| 최형섭 | 0.12 |
| 김석정 | 0.12 |

## Schedule

| ID | WBS | Task | Duration | Start | Finish | Predecessors | Complete | Baseline start | Baseline finish | Baseline duration | Constraint | Resources | Work | Actual work | Cost | Baseline cost | Actual cost | Text20 | Text26 | Text1 | Text30 |
| --- | --- | --- | --- | --- | --- | --- | --- | --- | --- | --- | --- | --- | --- | --- | --- | --- | --- | --- | --- | --- | --- |
| 1 | 1 | **분석** | 62d | 2007-05-02 A | 2007-07-31 A |  | 100% | 2007-05-02 | 2007-07-31 | 62d |  |  | 1928h | 1928h | 241 | 241 | 241 | 분석 | C02-1 1.2 |  |  |
| 2 | 1.1 | **단계착수** | 2d | 2007-05-02 A | 2007-05-03 A |  | 100% | 2007-05-02 | 2007-05-03 | 2d |  |  | 24h | 24h | 3 | 3 | 3 | 단계착수 | C02-1 1.6.1 |  |  |
| 3 | 1.1.1 | 단계 SPM수립 | 1d | 2007-05-02 A | 2007-05-02 A |  | 100% | 2007-05-02 | 2007-05-02 | 1d | start no earlier than 2007-05-02 |  |  |  |  |  |  | 단계착수 | C02-1 1.6.1 |  |  |
| 4 | 1.1.2 | 단계 SPM교육 | 1d | 2007-05-03 A | 2007-05-03 A | 3 | 100% | 2007-05-03 | 2007-05-03 | 1d |  |  |  |  |  |  |  | 단계착수 | C02-1 1.6.1 |  |  |
| 5 | 1.1.3 | 단계착수 오리엔테이션 | 1d | 2007-05-03 A | 2007-05-03 A |  | 100% | 2007-05-03 | 2007-05-03 | 1d | start no earlier than 2007-05-03 | 이기철; 최형섭; 김석정 | 24h | 24h | 3 | 3 | 3 | 단계착수 | C02-1 1.6.1 |  |  |
| 6 | 1.2 | **요구사항정의** | 30d | 2007-05-07 A | 2007-06-19 A |  | 100% | 2007-05-07 | 2007-06-19 | 30d |  |  | 232h | 232h | 29 | 29 | 29 | 요구사항 정의 | C02-1 1.2.2 | 요구사항정의서 | 현업요구사항정의서 |
| 7 | 1.2.1 | **요구사항분석** | 13d | 2007-05-07 A | 2007-05-23 A |  | 100% | 2007-05-07 | 2007-05-23 | 13d |  |  | 104h | 104h | 13 | 13 | 13 | 요구사항 정의 | C02-1 1.2.2 |  |  |
| 8 | 1.2.1.1 | 메타데이터정보요구사항분석 | 10d | 2007-05-07 A | 2007-05-18 A |  | 100% | 2007-05-07 | 2007-05-18 | 10d | start no earlier than 2007-05-07 | 이기철 | 80h | 80h | 10 | 10 | 10 | 요구사항 정의 | C02-1 1.2.2 |  |  |
| 9 | 1.2.1.2 | 메타관리절차요구사항분석 | 3d | 2007-05-21 A | 2007-05-23 A |  | 100% | 2007-05-21 | 2007-05-23 | 3d | start no earlier than 2007-05-21 | 이기철 | 24h | 24h | 3 | 3 | 3 | 요구사항 정의 | C02-1 1.2.2 |  |  |
| 10 | 1.2.2 | **메타데이터관리방안수립** | 16d | 2007-05-28 A | 2007-06-19 A | 7 | 100% | 2007-05-28 | 2007-06-19 | 16d |  |  | 128h | 128h | 16 | 16 | 16 | 요구사항 정의 | C02-1 1.2.2 | 메타관리방안 | 메타데이터관리절차서 |
| 11 | 1.2.2.1 | 아키텍처정의 | 6d | 2007-05-28 A | 2007-06-04 A | 9 | 100% | 2007-05-28 | 2007-06-04 | 6d | start no earlier than 2007-05-28 | 이기철 | 48h | 48h | 6 | 6 | 6 | 요구사항 정의 | C02-1 1.2.2 |  |  |
| 12 | 1.2.2.2 | 메타데이터정의 | 5d | 2007-06-05 A | 2007-06-12 A | 11 | 100% | 2007-06-05 | 2007-06-12 | 5d | start no earlier than 2007-06-04 | 이기철 | 40h | 40h | 5 | 5 | 5 | 요구사항 정의 | C02-1 1.2.2 |  |  |
| 13 | 1.2.2.3 | 메타관리기능정의 | 5d | 2007-06-13 A | 2007-06-19 A | 12 | 100% | 2007-06-13 | 2007-06-19 | 5d | start no earlier than 2007-06-11 | 이기철 | 40h | 40h | 5 | 5 | 5 | 요구사항 정의 | C02-1 1.2.2 |  |  |
| 14 | 1.3 | **데이터표준화 지원** | 54d | 2007-05-14 A | 2007-07-31 A | 2 | 100% | 2007-05-14 | 2007-07-31 | 54d |  |  | 1128h | 1128h | 141 | 141 | 141 | 신논리모델 구축 | C02-1 1.2.3 |  | 표준화지침서 |
| 15 | 1.3.1 | **UI변경** | 20d | 2007-05-14 A | 2007-06-12 A |  | 100% | 2007-05-14 | 2007-06-12 | 20d |  |  | 160h | 160h | 20 | 20 | 20 | 신논리모델 구축 | C02-1 1.2.3 |  |  |
| 16 | 1.3.1.1 | 표준화대상,범위선정지원 | 5d | 2007-05-14 A | 2007-05-18 A |  | 100% | 2007-05-14 | 2007-05-18 | 5d | start no earlier than 2007-05-14 | 김석정 | 40h | 40h | 5 | 5 | 5 | 신논리모델 구축 | C02-1 1.2.3 |  |  |
| 17 | 1.3.1.2 | 표준화사례분석지원 | 5d | 2007-05-21 A | 2007-05-28 A | 16 | 100% | 2007-05-21 | 2007-05-28 | 5d | start no earlier than 2007-05-21 | 김석정 | 40h | 40h | 5 | 5 | 5 | 신논리모델 구축 | C02-1 1.2.3 |  |  |
| 18 | 1.3.1.3 | 데이터표준지침작성지원 | 5d | 2007-05-29 A | 2007-06-04 A | 17 | 100% | 2007-05-29 | 2007-06-04 | 5d | start no earlier than 2007-05-28 | 김석정 | 40h | 40h | 5 | 5 | 5 | 신논리모델 구축 | C02-1 1.2.3 |  |  |
| 19 | 1.3.1.4 | 데이터표준화절차수립지원 | 5d | 2007-06-05 A | 2007-06-12 A | 18 | 100% | 2007-06-05 | 2007-06-12 | 5d | start no earlier than 2007-06-04 | 김석정 | 40h | 40h | 5 | 5 | 5 | 신논리모델 구축 | C02-1 1.2.3 |  |  |
| 20 | 1.3.2 | **데이터표준관리절차수립지원** | 10d | 2007-06-13 A | 2007-06-26 A | 15 | 100% | 2007-06-13 | 2007-06-26 | 10d |  |  | 80h | 80h | 10 | 10 | 10 | 신논리모델 구축 | C02-1 1.2.3 |  |  |
| 21 | 1.3.2.1 | 프로젝트기간중관리절차수립 | 5d | 2007-06-13 A | 2007-06-19 A | 19 | 100% | 2007-06-13 | 2007-06-19 | 5d | start no earlier than 2007-06-11 | 김석정 | 40h | 40h | 5 | 5 | 5 | 신논리모델 구축 | C02-1 1.2.3 |  |  |
| 22 | 1.3.2.2 | 운영기간중관리절차수립 | 5d | 2007-06-20 A | 2007-06-26 A | 21 | 100% | 2007-06-20 | 2007-06-26 | 5d | start no earlier than 2007-06-18 | 김석정 | 40h | 40h | 5 | 5 | 5 | 신논리모델 구축 | C02-1 1.2.3 |  |  |
| 23 | 1.3.3 | **데이터표준화지원** | 34d | 2007-06-13 A | 2007-07-31 A | 15 | 100% | 2007-06-13 | 2007-07-31 | 34d |  |  | 756h | 756h | 94.5 | 94.5 | 94.5 | 신논리모델 구축 | C02-1 1.2.3 |  |  |
| 24 | 1.3.3.1 | 기본단어사전개발지원 | 21d | 2007-06-13 A | 2007-07-11 A | 19 | 100% | 2007-06-13 | 2007-07-11 | 21d | start no earlier than 2007-06-11 | 김석정; 이기철 [50%] | 252h | 252h | 31.5 | 31.5 | 31.5 | 신논리모델 구축 | C02-1 1.2.3 |  |  |
| 25 | 1.3.3.2 | 도메인사전개발지원 | 10d | 2007-06-13 A | 2007-06-26 A | 19 | 100% | 2007-06-13 | 2007-06-26 | 10d | start no earlier than 2007-06-11 | 김석정; 이기철 [50%] | 120h | 120h | 15 | 15 | 15 | 신논리모델 구축 | C02-1 1.2.3 |  |  |
| 26 | 1.3.3.3 | 용어사전개발지원 | 24d | 2007-06-27 A | 2007-07-31 A | 25 | 100% | 2007-06-27 | 2007-07-31 | 24d | start no earlier than 2007-06-25 | 김석정; 이기철 | 384h | 384h | 48 | 48 | 48 | 신논리모델 구축 | C02-1 1.2.3 |  |  |

| ID | WBS | Task | Duration | Start | Finish | Predecessors | Complete | Baseline start | Baseline finish | Baseline duration | Constraint | Resources | Work | Actual work | Cost | Baseline cost | Actual cost | Text20 | Text26 | Text30 |
| --- | --- | --- | --- | --- | --- | --- | --- | --- | --- | --- | --- | --- | --- | --- | --- | --- | --- | --- | --- | --- |
| 27 | 1.3.4 | **표준관리시스템구축** | 11d | 2007-07-16 A | 2007-07-31 A |  | 100% | 2007-07-16 | 2007-07-31 | 11d |  |  | 132h | 132h | 16.5 | 16.5 | 16.5 | 신논리모델 구축 | C02-1 1.2.3 | 메타시스템 |
| 28 | 1.3.4.1 | 메타관리적용(표준관리) | 11d | 2007-07-16 A | 2007-07-31 A |  | 100% | 2007-07-16 | 2007-07-31 | 11d | start no earlier than 2007-07-16 | 김석정; 이기철 [50%] | 132h | 132h | 16.5 | 16.5 | 16.5 | 신논리모델 구축 | C02-1 1.2.3 |  |
| 29 | 1.4 | **현행시스템** | 20d | 2007-05-07 A | 2007-06-04 A | 2 | 100% | 2007-05-07 | 2007-06-04 | 20d |  |  | 200h | 200h | 25 | 25 | 25 | 현황 평가 | C02-1 1.2.1 |  |
| 30 | 1.4.1 | **현행DB카달로그적재** | 10d | 2007-05-07 A | 2007-05-18 A |  | 100% | 2007-05-07 | 2007-05-18 | 10d |  |  | 120h | 120h | 15 | 15 | 15 | 현황 평가 | C02-1 1.2.1 | 파일정의서 |
| 31 | 1.4.1.1 | 현시스템모델데이터수집 | 5d | 2007-05-07 A | 2007-05-11 A |  | 100% | 2007-05-07 | 2007-05-11 | 5d | finish no earlier than 2007-05-11 | 최형섭 | 40h | 40h | 5 | 5 | 5 | 현황 평가 | C02-1 1.2.1 |  |
| 32 | 1.4.1.2 | 현시스템DB데이터수집 | 5d | 2007-05-07 A | 2007-05-11 A |  | 100% | 2007-05-07 | 2007-05-11 | 5d | start no earlier than 2007-05-07 | 최형섭 | 40h | 40h | 5 | 5 | 5 | 현황 평가 | C02-1 1.2.1 |  |
| 33 | 1.4.1.3 | 현시스템데이터명세정련 | 5d | 2007-05-14 A | 2007-05-18 A | 31, 32 | 100% | 2007-05-14 | 2007-05-18 | 5d | start no earlier than 2007-05-14 | 최형섭 | 40h | 40h | 5 | 5 | 5 | 현황 평가 | C02-1 1.2.1 |  |
| 34 | 1.4.2 | **현행시스템구축** | 10d | 2007-05-21 A | 2007-06-04 A |  | 100% | 2007-05-21 | 2007-06-04 | 10d |  |  | 80h | 80h | 10 | 10 | 10 | 현황 평가 | C02-1 1.2.1 | 메타시스템 |
| 35 | 1.4.2.1 | 메타관리적용(모델정보,DB정보) | 10d | 2007-05-21 A | 2007-06-04 A |  | 100% | 2007-05-21 | 2007-06-04 | 10d | start no earlier than 2007-05-21 | 최형섭 | 80h | 80h | 10 | 10 | 10 | 현황 평가 | C02-1 1.2.1 |  |
| 36 | 1.5 | **분석 단계 관리 활동** | 48d | 2007-05-07 A | 2007-07-13 A | 14, 29 | 100% | 2007-05-07 | 2007-07-13 | 48d |  |  | 280h | 280h | 35 | 35 | 35 | 단계완료 | C02-1 1.6.8 |  |
| 37 | 1.5.1 | 과업대비표매핑 | 3d | 2007-05-07 A | 2007-05-09 A |  | 100% | 2007-05-07 | 2007-05-09 | 3d | must start on 2007-05-07 | 이기철 | 24h | 24h | 3 | 3 | 3 | 단계완료 | C02-1 1.6.8 |  |
| 38 | 1.5.2 | 형상관리 Tool 교육 | 2d | 2007-05-17 A | 2007-05-18 A |  | 100% | 2007-05-17 | 2007-05-18 | 2d | must start on 2007-05-17 | 이기철; 최형섭; 김석정 | 48h | 48h | 6 | 6 | 6 | 단계완료 | C02-1 1.6.8 |  |
| 39 | 1.5.3 | Inspection(1차) 실시 및 조치 | 3d | 2007-07-02 A | 2007-07-04 A |  | 100% | 2007-07-02 | 2007-07-04 | 3d | must start on 2007-07-02 | 이기철; 최형섭; 김석정 | 72h | 72h | 9 | 9 | 9 | 단계완료 | C02-1 1.6.8 |  |
| 40 | 1.5.4 | 요구사항추적표 매핑 | 2d | 2007-07-09 A | 2007-07-10 A |  | 100% | 2007-07-09 | 2007-07-10 | 2d | must start on 2007-07-09 | 이기철 | 16h | 16h | 2 | 2 | 2 | 단계완료 | C02-1 1.6.8 |  |
| 41 | 1.5.5 | 요구사항규모측정방법 교육 및 측정 | 5d | 2007-07-09 A | 2007-07-13 A |  | 100% | 2007-07-09 | 2007-07-13 | 5d | must start on 2007-07-09 | 이기철; 김석정; 최형섭 | 120h | 120h | 15 | 15 | 15 | 단계완료 | C02-1 1.6.8 |  |
| 42 | 1.6 | **고객검토** | 8d | 2007-07-16 A | 2007-07-26 A |  | 100% | 2007-07-16 | 2007-07-26 | 8d |  |  | 64h | 64h | 8 | 8 | 8 | 단계완료 | C02-1 1.6.8 |  |
| 43 | 1.6.1 | 고객검토(1차) 실시 및 조치 | 8d | 2007-07-16 A | 2007-07-26 A |  | 100% | 2007-07-16 | 2007-07-26 | 8d | must start on 2007-07-16 | 이기철 | 64h | 64h | 8 | 8 | 8 | 단계완료 | C02-1 1.6.8 |  |
| 44 | 2 | **설계** | 105d | 2007-07-09 A | 2007-12-07 A | 1 | 100% | 2007-07-09 | 2007-12-07 | 105d |  |  | 2156h | 2156h | 269.5 | 269.5 | 269.5 | 설계 | C02-1 1.3 |  |
| 45 | 2.1 | **단계착수** | 14d | 2007-07-09 A | 2007-07-27 A |  | 100% | 2007-07-09 | 2007-07-27 | 14d |  |  | 216h | 216h | 27 | 27 | 27 | 단계착수 | C02-1 1.6.1 |  |
| 46 | 2.1.1 | 단계 SPM검토 | 3d | 2007-07-09 A | 2007-07-11 A |  | 100% | 2007-07-09 | 2007-07-11 | 3d | must start on 2007-07-09 | 이기철; 최형섭; 김석정 | 72h | 72h | 9 | 9 | 9 | 단계착수 | C02-1 1.6.1 |  |
| 47 | 2.1.2 | 단계 SPM교육 | 2d | 2007-07-12 A | 2007-07-13 A |  | 100% | 2007-07-12 | 2007-07-13 | 2d | must start on 2007-07-12 | 이기철 [50%]; 최형섭 [50%]; 김석정 [50%] | 24h | 24h | 3 | 3 | 3 | 단계착수 | C02-1 1.6.1 |  |
| 48 | 2.1.3 | 단계착수 오리엔테이션 | 5d | 2007-07-23 A | 2007-07-27 A |  | 100% | 2007-07-23 | 2007-07-27 | 5d | must start on 2007-07-23 | 이기철; 최형섭; 김석정 | 120h | 120h | 15 | 15 | 15 | 단계착수 | C02-1 1.6.1 |  |
| 49 | 2.2 | **표준화구축** | 62d | 2007-08-01 A | 2007-10-31 A |  | 100% | 2007-08-01 | 2007-10-31 | 62d |  |  | 860h | 860h | 107.5 | 107.5 | 107.5 | 기본설계 | C02-1 1.3.1 | 표준화지침서 |
| 50 | 2.2.1 | **데이터사전구축** | 17d | 2007-08-01 A | 2007-08-24 A | 45 | 100% | 2007-08-01 | 2007-08-24 | 17d |  |  | 260h | 260h | 32.5 | 32.5 | 32.5 | 기본설계 | C02-1 1.3.1 |  |
| 51 | 2.2.1.1 | 용어/단어사전개발 지원 | 12d | 2007-08-01 A | 2007-08-17 A |  | 100% | 2007-08-01 | 2007-08-17 | 12d | start no earlier than 2007-08-01 | 김석정 [50%]; 이기철; 최형섭 | 240h | 240h | 30 | 30 | 30 | 기본설계 | C02-1 1.3.1 |  |
| 52 | 2.2.1.2 | 도메인사전개발 지원 | 5d | 2007-08-20 A | 2007-08-24 A |  | 100% | 2007-08-20 | 2007-08-24 | 5d | start no earlier than 2007-08-20 | 김석정 [50%] | 20h | 20h | 2.5 | 2.5 | 2.5 | 기본설계 | C02-1 1.3.1 |  |

| ID | WBS | Task | Duration | Start | Finish | Complete | Baseline start | Baseline finish | Baseline duration | Constraint | Resources | Work | Actual work | Cost | Baseline cost | Actual cost | Text20 | Text26 | Text1 | Text30 |
| --- | --- | --- | --- | --- | --- | --- | --- | --- | --- | --- | --- | --- | --- | --- | --- | --- | --- | --- | --- | --- |
| 53 | 2.2.2 | **코드통합** | 5d | 2007-08-27 A | 2007-08-31 A | 100% | 2007-08-27 | 2007-08-31 | 5d |  |  | 120h | 120h | 15 | 15 | 15 | 기본설계 | C02-1 1.3.1 |  |  |
| 54 | 2.2.2.1 | 유효값 표준화 작업 지원 | 5d | 2007-08-27 A | 2007-08-31 A | 100% | 2007-08-27 | 2007-08-31 | 5d | start no earlier than 2007-08-27 | 김석정; 이기철; 최형섭 | 120h | 120h | 15 | 15 | 15 | 기본설계 | C02-1 1.3.1 | 코드명세/매핑명세(시스템내) |  |
| 55 | 2.2.3 | **표준메타데이터구축** | 40d | 2007-09-03 A | 2007-10-31 A | 100% | 2007-09-03 | 2007-10-31 | 40d |  |  | 480h | 480h | 60 | 60 | 60 | 기본설계 | C02-1 1.3.1 |  | 메타시스템 |
| 56 | 2.2.3.1 | 표준용어/도메인 메타반영 | 5d | 2007-09-03 A | 2007-09-07 A | 100% | 2007-09-03 | 2007-09-07 | 5d | start no earlier than 2007-09-03 | 김석정; 이기철 [50%] | 60h | 60h | 7.5 | 7.5 | 7.5 | 기본설계 | C02-1 1.3.1 |  |  |
| 57 | 2.2.3.2 | 논리모델 메타반영 | 13d | 2007-09-10 A | 2007-09-28 A | 100% | 2007-09-10 | 2007-09-28 | 13d | start no earlier than 2007-09-10 | 김석정; 이기철 [50%] | 156h | 156h | 19.5 | 19.5 | 19.5 | 기본설계 | C02-1 1.3.1 |  |  |
| 58 | 2.2.3.3 | 물리모델 메타반영 | 22d | 2007-10-01 A | 2007-10-31 A | 100% | 2007-10-01 | 2007-10-31 | 22d | finish no earlier than 2007-10-31 | 김석정; 이기철 [50%] | 264h | 264h | 33 | 33 | 33 | 기본설계 | C02-1 1.3.1 |  |  |
| 59 | 2.3 | **커스터마이징 1단계** | 62d | 2007-08-01 A | 2007-10-31 A | 100% | 2007-08-01 | 2007-10-31 | 62d |  |  | 520h | 520h | 65 | 65 | 65 | 상세설계 | C02-1 1.3.3 |  | 메타시스템 |
| 60 | 2.3.1 | **UI변경** | 22d | 2007-08-01 A | 2007-08-31 A | 100% | 2007-08-01 | 2007-08-31 | 22d |  |  | 176h | 176h | 22 | 22 | 22 | 상세설계 | C02-1 1.3.3 | 메타시스템 |  |
| 61 | 2.3.1.1 | 메뉴변경 | 22d | 2007-08-01 A | 2007-08-31 A | 100% | 2007-08-01 | 2007-08-31 | 22d | start no earlier than 2007-08-01 | 최형섭 | 176h | 176h | 22 | 22 | 22 | 상세설계 | C02-1 1.3.3 |  |  |
| 62 | 2.3.2 | **데이터모델** | 15d | 2007-09-03 A | 2007-09-21 A | 100% | 2007-09-03 | 2007-09-21 | 15d |  |  | 120h | 120h | 15 | 15 | 15 | 상세설계 | C02-1 1.3.3 | 메타시스템 |  |
| 63 | 2.3.2.1 | 논리엔티티 | 5d | 2007-09-03 A | 2007-09-07 A | 100% | 2007-09-03 | 2007-09-07 | 5d | start no earlier than 2007-09-03 | 최형섭 | 40h | 40h | 5 | 5 | 5 | 상세설계 | C02-1 1.3.3 |  |  |
| 64 | 2.3.2.2 | 개념엔티티 | 5d | 2007-09-10 A | 2007-09-14 A | 100% | 2007-09-10 | 2007-09-14 | 5d | start no earlier than 2007-09-10 | 최형섭 | 40h | 40h | 5 | 5 | 5 | 상세설계 | C02-1 1.3.3 |  |  |
| 65 | 2.3.2.3 | 물리엔티티 | 5d | 2007-09-17 A | 2007-09-21 A | 100% | 2007-09-17 | 2007-09-21 | 5d | start no earlier than 2007-09-17 | 이기철 | 40h | 40h | 5 | 5 | 5 | 상세설계 | C02-1 1.3.3 |  |  |
| 66 | 2.3.3 | **AS-IS 매핑정의서** | 24d | 2007-09-27 A | 2007-10-31 A | 100% | 2007-09-27 | 2007-10-31 | 24d |  |  | 224h | 224h | 28 | 28 | 28 | 상세설계 | C02-1 1.3.3 | 메타시스템 |  |
| 67 | 2.3.3.1 | 컬럼매핑정의서 | 11d | 2007-09-27 A | 2007-10-12 A | 100% | 2007-09-27 | 2007-10-12 | 11d | start no earlier than 2007-09-27 | 최형섭 | 88h | 88h | 11 | 11 | 11 | 상세설계 | C02-1 1.3.3 |  |  |
| 68 | 2.3.3.2 | 테이블매핑정의서 | 5d | 2007-10-15 A | 2007-10-19 A | 100% | 2007-10-15 | 2007-10-19 | 5d | start no earlier than 2007-10-15 | 최형섭 | 40h | 40h | 5 | 5 | 5 | 상세설계 | C02-1 1.3.3 |  |  |
| 69 | 2.3.3.3 | 코드매핑정의서 | 8d | 2007-10-22 A | 2007-10-31 A | 100% | 2007-10-22 | 2007-10-31 | 8d | start no earlier than 2007-10-22 | 김석정 [50%]; 최형섭 | 96h | 96h | 12 | 12 | 12 | 상세설계 | C02-1 1.3.3 |  |  |
| 70 | 2.4 | **운영** | 5d | 2007-11-01 A | 2007-11-07 A | 100% | 2007-11-01 | 2007-11-07 | 5d |  |  | 80h | 80h | 10 | 10 | 10 | 상세설계 | C02-1 1.3.3 |  |  |
| 71 | 2.4.1 | 표준,데이터모델,AS-IS 매핑정의서 | 5d | 2007-11-01 A | 2007-11-07 A | 100% | 2007-11-01 | 2007-11-07 | 5d | start no earlier than 2007-11-01 | 김석정; 최형섭 | 80h | 80h | 10 | 10 | 10 | 상세설계 | C02-1 1.3.3 |  |  |
| 72 | 2.5 | **설계단계관리활동** | 96d | 2007-07-23 A | 2007-12-07 A | 100% | 2007-07-23 | 2007-12-07 | 96d |  |  | 480h | 480h | 60 | 60 | 60 | 단계완료 | C02-1 1.6.8 |  |  |
| 73 | 2.5.1 | 분석감리조치 | 5d | 2007-07-23 A | 2007-07-27 A | 100% | 2007-07-23 | 2007-07-27 | 5d | must start on 2007-07-23 | 이기철 | 40h | 40h | 5 | 5 | 5 | 단계완료 | C02-1 1.6.8 |  |  |
| 74 | 2.5.2 | QAO심사(2차) 조치 | 10d | 2007-09-03 A | 2007-11-16 A | 100% | 2007-09-03 | 2007-11-16 | 10d | finish no earlier than 2007-11-16 | 이기철 | 80h | 80h | 10 | 10 | 10 | 단계완료 | C02-1 1.6.8 |  |  |
| 75 | 2.5.3 | Inspection(2차)실시 및 조치 | 10d | 2007-11-19 A | 2007-11-30 A | 100% | 2007-11-19 | 2007-11-30 | 10d | finish no earlier than 2007-11-30 | 이기철; 최형섭; 김석정 | 240h | 240h | 30 | 30 | 30 | 단계완료 | C02-1 1.6.8 |  |  |
| 76 | 2.5.4 | 설계요구사항 추적표매핑 | 5d | 2007-11-26 A | 2007-11-30 A | 100% | 2007-11-26 | 2007-11-30 | 5d | finish no earlier than 2007-11-30 | 이기철; 최형섭; 김석정 | 120h | 120h | 15 | 15 | 15 | 단계완료 | C02-1 1.6.8 |  |  |
| 77 | 2.5.5 | 고객검토(2차)실시 및 조치 | 5d | 2007-12-03 A | 2007-12-07 A | 100% | 2007-12-03 | 2007-12-07 | 5d | finish no earlier than 2007-12-07 |  |  |  |  |  |  | 단계완료 | C02-1 1.6.8 |  |  |

| ID | WBS | Task | Duration | Start | Finish | Predecessors | Complete | Baseline start | Baseline finish | Baseline duration | Constraint | Resources | Work | Actual work | Cost | Baseline cost | Actual cost | Text20 | Text26 | Text30 | Text1 |
| --- | --- | --- | --- | --- | --- | --- | --- | --- | --- | --- | --- | --- | --- | --- | --- | --- | --- | --- | --- | --- | --- |
| 78 | 3 | **개발** | 198d | 2007-12-10 A | 2008-09-26 A | 44 | 100% | 2007-12-10 | 2008-09-26 | 198d |  |  | 4472h | 4472h | 559 | 559 | 559 | 개발 | C02-1 1.4 |  |  |
| 79 | 3.1 | **단계착수** | 10d | 2007-12-10 A | 2007-12-21 A |  | 100% | 2007-12-10 | 2007-12-21 | 10d |  |  | 240h | 240h | 30 | 30 | 30 | 단계착수 | C02-1 1.6.1 |  |  |
| 80 | 3.1.1 | 단계 SPM검토 | 3d | 2007-12-10 A | 2007-12-12 A |  | 100% | 2007-12-10 | 2007-12-12 | 3d | must start on 2007-12-10 | 이기철; 최형섭; 김석정 | 72h | 72h | 9 | 9 | 9 | 단계착수 | C02-1 1.6.1 |  |  |
| 81 | 3.1.2 | 단계 SPM교육 | 2d | 2007-12-13 A | 2007-12-14 A |  | 100% | 2007-12-13 | 2007-12-14 | 2d | must start on 2007-12-13 | 이기철; 최형섭; 김석정 | 48h | 48h | 6 | 6 | 6 | 단계착수 | C02-1 1.6.1 |  |  |
| 82 | 3.1.3 | 단계착수 오리엔테이션 | 5d | 2007-12-17 A | 2007-12-21 A |  | 100% | 2007-12-17 | 2007-12-21 | 5d | must start on 2007-12-17 | 이기철; 최형섭; 김석정 | 120h | 120h | 15 | 15 | 15 | 단계착수 | C02-1 1.6.1 |  |  |
| 83 | 3.2 | **커스터마이징 2단계** | 121d | 2007-12-10 A | 2008-06-05 A |  | 100% | 2007-12-10 | 2008-06-05 | 121d |  |  | 968h | 968h | 121 | 121 | 121 | 신논리모델 구축 | C02-1 1.2.3 | 메타시스템 |  |
| 84 | 3.2.1 | **데이터베이스** | 45d | 2007-12-10 A | 2008-02-15 A |  | 100% | 2007-12-10 | 2008-02-15 | 45d |  |  | 360h | 360h | 45 | 45 | 45 | 신논리모델 구축 | C02-1 1.2.3 |  |  |
| 85 | 3.2.1.1 | 데이터베이스 적재 | 18d | 2007-12-10 A | 2008-01-04 A |  | 100% | 2007-12-10 | 2008-01-04 | 18d | start no earlier than 2007-10-01 | 최형섭 | 144h | 144h | 18 | 18 | 18 | 신논리모델 구축 | C02-1 1.2.3 |  |  |
| 86 | 3.2.1.2 | DB대사 | 27d | 2008-01-07 A | 2008-02-15 A |  | 100% | 2008-01-07 | 2008-02-15 | 27d | start no earlier than 2008-01-28 | 최형섭 | 216h | 216h | 27 | 27 | 27 | 신논리모델 구축 | C02-1 1.2.3 |  |  |
| 87 | 3.2.2 | **작업관리** | 20d | 2008-02-18 A | 2008-03-14 A |  | 100% | 2008-02-18 | 2008-03-14 | 20d |  |  | 160h | 160h | 20 | 20 | 20 | 신논리모델 구축 | C02-1 1.2.3 |  |  |
| 88 | 3.2.2.1 | 작업등록 | 10d | 2008-02-18 A | 2008-02-29 A |  | 100% | 2008-02-18 | 2008-02-29 | 10d | start no earlier than 2008-02-18 | 최형섭 | 80h | 80h | 10 | 10 | 10 | 신논리모델 구축 | C02-1 1.2.3 |  |  |
| 89 | 3.2.2.2 | 배치등록 | 10d | 2008-03-03 A | 2008-03-14 A |  | 100% | 2008-03-03 | 2008-03-14 | 10d | start no earlier than 2008-03-03 | 최형섭 | 80h | 80h | 10 | 10 | 10 | 신논리모델 구축 | C02-1 1.2.3 |  |  |
| 90 | 3.2.3 | **통게현황** | 20d | 2008-03-17 A | 2008-04-11 A |  | 100% | 2008-03-17 | 2008-04-11 | 20d |  |  | 160h | 160h | 20 | 20 | 20 | 신논리모델 구축 | C02-1 1.2.3 |  |  |
| 91 | 3.2.3.1 | 활용빈도 | 10d | 2008-03-17 A | 2008-03-28 A |  | 100% | 2008-03-17 | 2008-03-28 | 10d | start no earlier than 2008-03-17 | 최형섭 | 80h | 80h | 10 | 10 | 10 | 신논리모델 구축 | C02-1 1.2.3 |  |  |
| 92 | 3.2.3.2 | 미사용현황 | 10d | 2008-03-31 A | 2008-04-11 A |  | 100% | 2008-03-31 | 2008-04-11 | 10d | start no earlier than 2008-03-31 | 최형섭 | 80h | 80h | 10 | 10 | 10 | 신논리모델 구축 | C02-1 1.2.3 |  |  |
| 93 | 3.2.4 | **프로그램** | 22d | 2008-04-14 A | 2008-05-16 A |  | 100% | 2008-04-14 | 2008-05-16 | 22d |  |  | 176h | 176h | 22 | 22 | 22 | 신논리모델 구축 | C02-1 1.2.3 |  | 메타시스템 |
| 94 | 3.2.4.1 | 프로그램 현황 | 22d | 2008-04-14 A | 2008-05-16 A |  | 100% | 2008-04-14 | 2008-05-16 | 22d | start no earlier than 2008-04-14 | 김석정 | 176h | 176h | 22 | 22 | 22 | 신논리모델 구축 | C02-1 1.2.3 |  |  |
| 95 | 3.2.5 | **영향도분석** | 14d | 2008-05-19 A | 2008-06-05 A |  | 100% | 2008-05-19 | 2008-06-05 | 14d |  |  | 112h | 112h | 14 | 14 | 14 | 신논리모델 구축 | C02-1 1.2.3 |  | 메타시스템 |
| 96 | 3.2.5.1 | Where Used | 5d | 2008-05-19 A | 2008-05-23 A |  | 100% | 2008-05-19 | 2008-05-23 | 5d | start no earlier than 2008-05-19 | 김석정 | 40h | 40h | 5 | 5 | 5 | 신논리모델 구축 | C02-1 1.2.3 |  |  |
| 97 | 3.2.5.2 | Depends On | 5d | 2008-05-26 A | 2008-05-30 A |  | 100% | 2008-05-26 | 2008-05-30 | 5d | start no earlier than 2008-05-26 | 김석정 | 40h | 40h | 5 | 5 | 5 | 신논리모델 구축 | C02-1 1.2.3 |  |  |
| 98 | 3.2.5.3 | Source From | 4d | 2008-06-02 A | 2008-06-05 A |  | 100% | 2008-06-02 | 2008-06-05 | 4d | start no earlier than 2008-06-02 | 김석정 | 32h | 32h | 4 | 4 | 4 | 신논리모델 구축 | C02-1 1.2.3 |  |  |
| 99 | 3.3 | **운영** | 16d | 2008-06-09 A | 2008-06-30 A |  | 100% | 2008-06-09 | 2008-06-30 | 16d |  |  | 384h | 384h | 48 | 48 | 48 | 신논리모델 구축 | C02-1 1.2.3 |  |  |
| 100 | 3.3.1 | 데이터베이스,DB대사,프로그램 | 16d | 2008-06-09 A | 2008-06-30 A |  | 100% | 2008-06-09 | 2008-06-30 | 16d | start no earlier than 2008-06-09 | 이기철; 최형섭; 김석정 | 384h | 384h | 48 | 48 | 48 | 신논리모델 구축 | C02-1 1.2.3 |  |  |
| 101 | 3.4 | **개발단계관리활동** | 193d | 2007-12-17 A | 2008-09-26 A |  | 100% | 2007-12-17 | 2008-09-26 | 193d |  |  | 2880h | 2880h | 360 | 360 | 360 | 단계완료 | C02-1 1.6.8 |  |  |
| 102 | 3.4.1 | 설계감리조치 | 5d | 2007-12-17 A | 2007-12-21 A |  | 100% | 2007-12-17 | 2007-12-21 | 5d | must start on 2007-12-17 | 이기철 | 40h | 40h | 5 | 5 | 5 | 단계완료 | C02-1 1.6.8 |  |  |
| 103 | 3.4.2 | QAO심사(3차) 조치 | 69d | 2008-02-04 A | 2008-05-16 A |  | 100% | 2008-02-04 | 2008-05-16 | 69d | start no earlier than 2008-02-04 | 이기철 | 552h | 552h | 69 | 69 | 69 | 단계완료 | C02-1 1.6.8 |  |  |
| 104 | 3.4.3 | Inspection(3차)실시 및 조치 | 94d | 2008-05-14 A | 2008-09-26 A |  | 100% | 2008-05-14 | 2008-09-26 | 94d | start no earlier than 2008-01-14 | 이기철; 최형섭; 김석정 | 2256h | 2256h | 282 | 282 | 282 | 단계완료 | C02-1 1.6.8 |  |  |
| 105 | 3.4.4 | 개발요구사항 추적표매핑 | 4d | 2008-06-02 A | 2008-06-05 A |  | 100% | 2008-06-02 | 2008-06-05 | 4d | start no earlier than 2008-06-02 | 이기철 | 32h | 32h | 4 | 4 | 4 | 단계완료 | C02-1 1.6.8 |  |  |

| ID | WBS | Task | Duration | Start | Finish | Complete | Remaining | Baseline start | Baseline finish | Baseline duration | Total slack | Constraint | Resources | Work | Actual work | Cost | Baseline cost | Actual cost | Text20 | Text26 | Text1 | Text30 |
| --- | --- | --- | --- | --- | --- | --- | --- | --- | --- | --- | --- | --- | --- | --- | --- | --- | --- | --- | --- | --- | --- | --- |
| 106 | 4 | **통합/영업점테스트** | 201d | 2008-06-09 A | 2009-03-24 | 68% | 65.11d | 2008-06-09 | 2009-03-24 | 201d | 0d |  |  | 5764h | 3850.2h | 720.5 | 720.5 | 481.27 | 개발 | C02-1 1.4 |  |  |
| 107 | 4.1 | **단계착수** | 10d | 2008-06-09 A | 2008-06-20 A | 100% |  | 2008-06-09 | 2008-06-20 | 10d |  |  |  | 192h | 192h | 24 | 24 | 24 | 단계착수 | C02-1 1.6.1 |  |  |
| 108 | 4.1.1 | 단계 SPM검토 | 3d | 2008-06-09 A | 2008-06-11 A | 100% |  | 2008-06-09 | 2008-06-11 | 3d |  | start no earlier than 2008-06-09 | 이기철 | 24h | 24h | 3 | 3 | 3 | 단계착수 | C02-1 1.6.1 |  |  |
| 109 | 4.1.2 | 단계 SPM교육 | 2d | 2008-06-12 A | 2008-06-13 A | 100% |  | 2008-06-12 | 2008-06-13 | 2d |  | start no earlier than 2008-06-12 | 이기철; 최형섭; 김석정 | 48h | 48h | 6 | 6 | 6 | 단계착수 | C02-1 1.6.1 |  |  |
| 110 | 4.1.3 | 단계착수 오리엔테이션 | 5d | 2008-06-16 A | 2008-06-20 A | 100% |  | 2008-06-16 | 2008-06-20 | 5d |  | start no earlier than 2008-06-16 | 이기철; 최형섭; 김석정 | 120h | 120h | 15 | 15 | 15 | 단계착수 | C02-1 1.6.1 |  |  |
| 111 | 4.2 | **시스템 사용교육** | 38d | 2008-08-04 A | 2008-09-26 A | 100% |  | 2008-08-04 | 2008-09-26 | 38d |  |  |  | 912h | 912h | 114 | 114 | 114 | 시스템 사용교육 | C02-1 1.5.3 |  |  |
| 112 | 4.2.1 | 사용자매뉴얼 작성 | 19d | 2008-08-04 A | 2008-08-29 A | 100% |  | 2008-08-04 | 2008-08-29 | 19d |  | start no earlier than 2008-08-04 | 이기철; 최형섭; 김석정 | 456h | 456h | 57 | 57 | 57 | 시스템 사용교육 | C02-1 1.5.3 | 사용자메뉴얼 | 사용자매뉴얼 |
| 113 | 4.2.2 | 운영자매뉴얼 작성 | 19d | 2008-09-01 A | 2008-09-26 A | 100% |  | 2008-09-01 | 2008-09-26 | 19d |  | start no earlier than 2008-09-01 | 이기철; 최형섭; 김석정 | 456h | 456h | 57 | 57 | 57 | 시스템 사용교육 | C02-1 1.5.3 | 운영자메뉴얼 | 운영자매뉴얼 |
| 114 | 4.3 | **운영 및 안정화** | 185d | 2008-07-01 A | 2009-03-24 | 55% | 83.25d | 2008-07-01 | 2009-03-24 | 185d | 0d |  |  | 3700h | 2035h | 462.5 | 462.5 | 254.38 | 시범운영 | C02-1 1.5.4 |  |  |
| 115 | 4.3.1 | 가동 및 안정화 | 185d | 2008-07-01 A | 2009-03-24 | 55% | 83.25d | 2008-07-01 | 2009-03-24 | 185d | 0d | start no earlier than 2008-07-01 | 최형섭; 김석정; 이기철 [50%] | 3700h | 2035h | 462.5 | 462.5 | 254.38 | 시범운영 | C02-1 1.5.4 |  |  |
| 116 | 4.4 | **통합/영업점테스트단계관리활동** | 169d | 2008-07-14 A | 2009-03-13 | 74% | 43.8d | 2008-07-14 | 2009-03-13 | 169d | 7d |  |  | 960h | 711.2h | 120 | 120 | 88.9 | 품질활동수행 | C02-1 1.6.2 |  |  |
| 117 | 4.4.1 | QAO심사(4차) 조치 | 23d | 2008-07-14 A | 2008-08-14 A | 100% |  | 2008-07-14 | 2008-08-14 | 23d |  | start no earlier than 2008-07-14 | 이기철 | 184h | 184h | 23 | 23 | 23 | 품질활동수행 | C02-1 1.6.2 |  |  |
| 118 | 4.4.2 | Inspection(4차)실시 및 조치 | 10d | 2008-09-01 A | 2008-09-12 A | 100% |  | 2008-09-01 | 2008-09-12 | 10d |  | finish no earlier than 2008-09-12 | 이기철 | 80h | 80h | 10 | 10 | 10 | 품질활동수행 | C02-1 1.6.2 |  |  |
| 119 | 4.4.3 | 요구사항추적표매핑 | 5d | 2008-08-25 A | 2008-08-29 A | 100% |  | 2008-08-25 | 2008-08-29 | 5d |  | start no earlier than 2008-08-25 | 이기철 | 40h | 40h | 5 | 5 | 5 | 품질활동수행 | C02-1 1.6.2 |  |  |
| 120 | 4.4.4 | 실적규모측정방법 교육 및 측정 | 5d | 2008-09-08 A | 2008-09-12 A | 100% |  | 2008-09-08 | 2008-09-12 | 5d |  | start no earlier than 2008-09-08 | 이기철 | 40h | 40h | 5 | 5 | 5 | 품질활동수행 | C02-1 1.6.2 |  |  |
| 121 | 4.4.5 | 영업점테스트 SPM검토 및 수정 | 4d | 2008-09-16 A | 2008-09-19 A | 100% |  | 2008-09-16 | 2008-09-19 | 4d |  | start no earlier than 2008-09-16 | 이기철 | 32h | 32h | 4 | 4 | 4 | 품질활동수행 | C02-1 1.6.2 |  |  |
| 122 | 4.4.6 | 오리엔테이션(5차)실시 | 5d | 2008-09-22 A | 2008-09-26 A | 100% |  | 2008-09-22 | 2008-09-26 | 5d |  | start no earlier than 2008-09-22 | 이기철 | 40h | 40h | 5 | 5 | 5 | 품질활동수행 | C02-1 1.6.2 |  |  |
| 123 | 4.4.7 | QAO심사(5차) 조치 | 45d | 2008-10-13 A | 2008-12-12 | 82% | 8.1d | 2008-10-13 | 2008-12-12 | 45d | 70d | start no earlier than 2008-10-13 | 이기철 | 360h | 295.2h | 45 | 45 | 36.9 | 품질활동수행 | C02-1 1.6.2 |  |  |
| 124 | 4.4.8 | Inspection(5차)실시 및 조치 | 9d | 2008-12-15 | 2008-12-26 |  |  | 2008-12-15 | 2008-12-26 | 9d | 61d | start no earlier than 2008-12-15 | 이기철 | 72h |  | 9 | 9 |  | 품질활동수행 | C02-1 1.6.2 |  |  |
| 125 | 4.4.9 | 최종요구사항추적표매핑 | 4d | 2008-12-29 | 2009-01-02 |  |  | 2008-12-29 | 2009-01-02 | 4d | 57d | start no earlier than 2008-12-29 | 최형섭 | 32h |  | 4 | 4 |  | 품질활동수행 | C02-1 1.6.2 |  |  |
| 126 | 4.4.10 | 고객검토(5차)실시 및 조치 | 5d | 2009-01-05 | 2009-01-09 |  |  | 2009-01-05 | 2009-01-09 | 5d | 52d | start no earlier than 2009-01-05 | 최형섭 | 40h |  | 5 | 5 |  | 품질활동수행 | C02-1 1.6.2 |  |  |
| 127 | 4.4.11 | 과업대비표매핑 | 5d | 2009-03-09 | 2009-03-13 |  |  | 2009-03-09 | 2009-03-13 | 5d | 7d | start no earlier than 2009-03-09 | 최형섭 | 40h |  | 5 | 5 |  | 품질활동수행 | C02-1 1.6.2 |  |  |
