# 사업관리

Schedule from MS Project, 2007-04-25 to 2009-03-24, costs in ₩, A marks actual dates.
HSIC-0600001
�궪�꽦SDS

## Calendars

- 농협신용신시스템: Mon-Fri 08:00-12:00, 13:00-17:00; Sat-Sun off. Exceptions (off unless hours are given): 2007-05-24, 2007-06-06, 2007-07-17, 2007-08-15, 2007-09-25 to 2007-09-26, 2007-10-03, 2007-12-25, 2008-01-01, 2008-02-06 to 2008-02-08, 2008-05-05, 2008-05-12, 2008-06-06, 2008-07-17, 2008-08-15, 2008-09-15, 2008-10-03, 2008-12-25, 2009-01-01, 2009-01-26, 2009-01-27 08:00-12:00, 13:00-17:00.

## Resources

| Resource | Rate |
| --- | --- |
| 정제봉 | 0.12 |
| 박성락 | 0.12 |
| 문승연 |  |
| 이세원 |  |
| 정연욱 |  |

## Schedule

| ID | WBS | Task | Duration | Start | Finish | Complete | Baseline start | Baseline finish | Baseline duration | Constraint | Resources | Work | Actual work | Cost | Baseline cost | Actual cost | Text20 | Text26 | Text30 |
| --- | --- | --- | --- | --- | --- | --- | --- | --- | --- | --- | --- | --- | --- | --- | --- | --- | --- | --- | --- |
| 1 | 1 | **프로젝트 착수** | 33d? | 2007-04-25 A | 2007-06-12 A | 100% | 2007-04-25 | 2007-06-12 | 33d? |  |  | 2944h | 2944h | 368 | 368 | 368 | 프로젝트 착수 | M02-1 1.1 |  |
| 2 | 1.1 | **착수 준비** | 7d | 2007-04-25 A | 2007-05-03 A | 100% | 2007-04-25 | 2007-05-03 | 7d |  |  | 368h | 368h | 46 | 46 | 46 | 착수준비 | M02-1 1.1.1 |  |
| 3 | 1.1.1 | 업체별 견적 검토 | 7d | 2007-04-25 A | 2007-05-03 A | 100% | 2007-04-25 | 2007-05-03 | 7d |  | 정제봉; 박성락 | 112h | 112h | 14 | 14 | 14 | 착수준비 | M02-1 1.1.1 | 업체별 견적서 |
| 4 | 1.1.2 | 초기 투입 협력업체 계약 | 6d | 2007-04-25 A | 2007-05-02 A | 100% | 2007-04-25 | 2007-05-02 | 6d | start no earlier than 2007-04-25 | 정제봉; 박성락 | 96h | 96h | 12 | 12 | 12 | 착수준비 | M02-1 1.1.1 | 위탁업무내역서 |
| 5 | 1.1.3 | 초기 투입인력 투입준비 | 4d | 2007-04-25 A | 2007-04-30 A | 100% | 2007-04-25 | 2007-04-30 | 4d |  | 정제봉; 박성락 | 64h | 64h | 8 | 8 | 8 | 착수준비 | M02-1 1.1.1 | 출입신청서 |
| 6 | 1.1.4 | 수행 환경구축 | 6d | 2007-04-25 A | 2007-05-02 A | 100% | 2007-04-25 | 2007-05-02 | 6d |  | 정제봉; 박성락 | 96h | 96h | 12 | 12 | 12 | 착수준비 | M02-1 1.1.1 | 수행환경 |
| 7 | 1.2 | **착수 오리엔테이션** | 1d? | 2007-05-03 A | 2007-05-03 A | 100% | 2007-05-03 | 2007-05-03 | 1d? |  |  | 16h | 16h | 2 | 2 | 2 | 착수준비 | M02-1 1.1.1 |  |
| 8 | 1.2.1 | 착수오리엔테이션 실시 | 1d? | 2007-05-03 A | 2007-05-03 A | 100% | 2007-05-03 | 2007-05-03 | 1d? | start no earlier than 2007-05-03 | 정제봉; 박성락 | 16h | 16h | 2 | 2 | 2 | 착수준비 | M02-1 1.1.1 | 보안서약서,복무규정준수서약 |
| 9 | 1.3 | **프로젝트 계획수립** | 10d | 2007-04-25 A | 2007-05-08 A | 100% | 2007-04-25 | 2007-05-08 | 10d |  |  | 1872h | 1872h | 234 | 234 | 234 | 프로젝트 계획수립 | M02-1 1.1.2 |  |
| 10 | 1.3.1 | 실행품의 | 3d | 2007-04-25 A | 2007-04-27 A | 100% | 2007-04-25 | 2007-04-27 | 3d |  | 정제봉; 박성락 | 48h | 48h | 6 | 6 | 6 | 프로젝트 계획수립 | M02-1 1.1.2 | 실행품의,경비계획 |
| 11 | 1.3.2 | 일정계획 수립 | 4d | 2007-04-25 A | 2007-04-30 A | 100% | 2007-04-25 | 2007-04-30 | 4d |  | 정제봉; 박성락 | 64h | 64h | 8 | 8 | 8 | 프로젝트 계획수립 | M02-1 1.1.2 | 일정관리계획,WBS |
| 12 | 1.3.3 | 인력계획 수립 | 10d | 2007-04-25 A | 2007-05-08 A | 100% | 2007-04-25 | 2007-05-08 | 10d |  | 정제봉; 박성락 | 160h | 160h | 20 | 20 | 20 | 프로젝트 계획수립 | M02-1 1.1.2 | 인력계획,조직도 |
| 13 | 1.3.4 | 교육계획수립 | 10d | 2007-04-25 A | 2007-05-08 A | 100% | 2007-04-25 | 2007-05-08 | 10d |  | 정제봉; 박성락 | 160h | 160h | 20 | 20 | 20 | 프로젝트 계획수립 | M02-1 1.1.2 | 교육계획수립 |
| 14 | 1.3.5 | 의사소통관리계획 수립 | 10d | 2007-04-25 A | 2007-05-08 A | 100% | 2007-04-25 | 2007-05-08 | 10d |  | 정제봉; 박성락 | 160h | 160h | 20 | 20 | 20 | 프로젝트 계획수립 | M02-1 1.1.2 | 의사소통관리계획 |
| 15 | 1.3.6 | 성과측정계획수립 | 10d | 2007-04-25 A | 2007-05-08 A | 100% | 2007-04-25 | 2007-05-08 | 10d |  | 정제봉; 박성락 | 160h | 160h | 20 | 20 | 20 | 프로젝트 계획수립 | M02-1 1.1.2 | 지표정의서 |
| 16 | 1.3.7 | 품질활동계획수립 | 10d | 2007-04-25 A | 2007-05-08 A | 100% | 2007-04-25 | 2007-05-08 | 10d |  | 정제봉; 박성락 | 160h | 160h | 20 | 20 | 20 | 프로젝트 계획수립 | M02-1 1.1.2 | 품질관리계획서 |
| 17 | 1.3.8 | 형상관리계획수립 | 10d | 2007-04-25 A | 2007-05-08 A | 100% | 2007-04-25 | 2007-05-08 | 10d |  | 정제봉; 박성락 | 160h | 160h | 20 | 20 | 20 | 프로젝트 계획수립 | M02-1 1.1.2 | 형상관리계획서 |
| 18 | 1.3.9 | 협력업체협업계획수립 | 10d | 2007-04-25 A | 2007-05-08 A | 100% | 2007-04-25 | 2007-05-08 | 10d |  | 정제봉; 박성락 | 160h | 160h | 20 | 20 | 20 | 프로젝트 계획수립 | M02-1 1.1.2 | 위탁업무내역서 |
| 19 | 1.3.10 | 원가관리계획수립 | 10d | 2007-04-25 A | 2007-05-08 A | 100% | 2007-04-25 | 2007-05-08 | 10d |  | 정제봉; 박성락 | 160h | 160h | 20 | 20 | 20 | 프로젝트 계획수립 | M02-1 1.1.2 | 원가계획산정서 |
| 20 | 1.3.11 | 변경관리계획수립 | 10d | 2007-04-25 A | 2007-05-08 A | 100% | 2007-04-25 | 2007-05-08 | 10d |  | 정제봉; 박성락 | 160h | 160h | 20 | 20 | 20 | 프로젝트 계획수립 | M02-1 1.1.2 | 변경관리계획 |
| 21 | 1.3.12 | 이슈 및 위험관리계획수립 | 10d | 2007-04-25 A | 2007-05-08 A | 100% | 2007-04-25 | 2007-05-08 | 10d |  | 정제봉; 박성락 | 160h | 160h | 20 | 20 | 20 | 프로젝트 계획수립 | M02-1 1.1.2 | 위험관리계획 |
| 22 | 1.3.13 | 프로젝트계획통합 및 검토 | 10d | 2007-04-25 A | 2007-05-08 A | 100% | 2007-04-25 | 2007-05-08 | 10d |  | 정제봉; 박성락 | 160h | 160h | 20 | 20 | 20 | 프로젝트 계획수립 | M02-1 1.1.2 | 프로젝트계획서 |
| 23 | 1.4 | **프로젝트 계획확정** | 30d? | 2007-04-30 A | 2007-06-12 A | 100% | 2007-04-30 | 2007-06-12 | 30d? |  |  | 688h | 688h | 86 | 86 | 86 | 프로젝트 계획확정 | M02-1 1.1.3 |  |
| 24 | 1.4.1 | 프로젝트계획승인획득 | 24d | 2007-05-08 A | 2007-06-12 A | 100% | 2007-05-08 | 2007-06-12 | 24d | start no earlier than 2007-05-08 | 정제봉; 박성락 | 384h | 384h | 48 | 48 | 48 | 프로젝트 계획확정 | M02-1 1.1.3 | 프로젝트계획서(승인) |
| 25 | 1.4.2 | 착수보고회 준비 | 9d | 2007-04-30 A | 2007-05-10 A | 100% | 2007-04-30 | 2007-05-10 | 9d | start no earlier than 2007-04-30 | 정제봉; 박성락 | 144h | 144h | 18 | 18 | 18 | 프로젝트 계획확정 | M02-1 1.1.3 |  |
| 26 | 1.4.3 | 착수보고회 | 1d? | 2007-05-10 A | 2007-05-10 A | 100% | 2007-05-10 | 2007-05-10 | 1d? | start no earlier than 2007-05-10 | 정제봉; 박성락 | 16h | 16h | 2 | 2 | 2 | 프로젝트 계획확정 | M02-1 1.1.3 | 착수보고서 |
| 27 | 1.4.4 | 프로젝트 착수점검 | 1d? | 2007-05-17 A | 2007-05-17 A | 100% | 2007-05-17 | 2007-05-17 | 1d? | start no earlier than 2007-05-17 | 정제봉; 박성락 | 16h | 16h | 2 | 2 | 2 | 프로젝트 계획확정 | M02-1 1.1.3 | 착수점검표(결과) |
| 28 | 1.4.5 | 프로젝트 착수점검 시정조치 | 8d? | 2007-05-17 A | 2007-05-29 A | 100% | 2007-05-17 | 2007-05-29 | 8d? | finish no earlier than 2007-05-18 | 정제봉; 박성락 | 128h | 128h | 16 | 16 | 16 | 프로젝트 계획확정 | M02-1 1.1.3 | 시정조치결과 |

| ID | WBS | Task | Duration | Start | Finish | Complete | Baseline start | Baseline finish | Baseline duration | Constraint | Resources | Work | Actual work | Cost | Baseline cost | Actual cost | Text20 | Text26 | Text30 |
| --- | --- | --- | --- | --- | --- | --- | --- | --- | --- | --- | --- | --- | --- | --- | --- | --- | --- | --- | --- |
| 29 | 2 | **분석단계** | 85d? | 2007-04-25 A | 2007-08-27 A | 100% | 2007-04-25 | 2007-08-27 | 85d? |  |  | 3920h | 3920h | 490 | 490 | 490 | 프로젝트수행/통제 | M02-1 1.2 |  |
| 30 | 2.1 | **단계착수** | 1d? | 2007-05-03 A | 2007-05-03 A | 100% | 2007-05-03 | 2007-05-03 | 1d? |  |  | 48h | 48h | 6 | 6 | 6 | 단계착수 | M02-1 1.2.1 |  |
| 31 | 2.1.1 | 프로젝트 계획단계 검토 | 1d? | 2007-05-03 A | 2007-05-03 A | 100% | 2007-05-03 | 2007-05-03 | 1d? | finish no earlier than 2007-05-03 | 정제봉; 박성락 | 16h | 16h | 2 | 2 | 2 | 단계착수 | M02-1 1.2.1 | 프로젝트계획서(변경시) |
| 32 | 2.1.2 | SPM검토 | 1d? | 2007-05-03 A | 2007-05-03 A | 100% | 2007-05-03 | 2007-05-03 | 1d? | start no earlier than 2007-05-03 | 정제봉; 박성락 | 16h | 16h | 2 | 2 | 2 | 단계착수 | M02-1 1.2.1 | 회의록 |
| 33 | 2.1.3 | 단계착수 오리엔테이션 실시 | 1d? | 2007-05-03 A | 2007-05-03 A | 100% | 2007-05-03 | 2007-05-03 | 1d? | start no earlier than 2007-05-03 | 정제봉; 박성락 | 16h | 16h | 2 | 2 | 2 | 단계착수 | M02-1 1.2.1 | 단계착수오리엔테이션결과 |
| 34 | 2.2 | **성과통제** | 67d? | 2007-04-25 A | 2007-07-31 A | 100% | 2007-04-25 | 2007-07-31 | 67d? |  |  | 3216h | 3216h | 402 | 402 | 402 | 성과통제 | M02-1 1.2.7 |  |
| 35 | 2.2.1 | 변경관리 | 67d? | 2007-04-25 A | 2007-07-31 A | 100% | 2007-04-25 | 2007-07-31 | 67d? | start no earlier than 2007-04-25 | 정제봉; 박성락 | 1072h | 1072h | 134 | 134 | 134 | 성과통제 | M02-1 1.2.7 | 변경요청목록,변경요청서,요구사항추적표 |
| 36 | 2.2.2 | 위험관리 | 67d | 2007-04-25 A | 2007-07-31 A | 100% | 2007-04-25 | 2007-07-31 | 67d |  | 정제봉; 박성락 | 1072h | 1072h | 134 | 134 | 134 | 성과통제 | M02-1 1.2.7 | 이슈리스트,위험관리보고서 |
| 37 | 2.2.3 | 성과측정 및 보고 | 67d | 2007-04-25 A | 2007-07-31 A | 100% | 2007-04-25 | 2007-07-31 | 67d |  | 정제봉; 박성락 | 1072h | 1072h | 134 | 134 | 134 | 성과통제 | M02-1 1.2.7 | 주간/월간보고서,비정기보고 |
| 38 | 2.3 | **단계완료** | 29d? | 2007-07-16 A | 2007-08-27 A | 100% | 2007-07-16 | 2007-08-27 | 29d? |  |  | 656h | 656h | 82 | 82 | 82 | 단계완료 | M02-1 1.2.8 |  |
| 39 | 2.3.1 | 단계결과정리 | 11d? | 2007-07-16 A | 2007-07-31 A | 100% | 2007-07-16 | 2007-07-31 | 11d? | finish no earlier than 2007-07-31 | 정제봉; 박성락 | 176h | 176h | 22 | 22 | 22 | 단계완료 | M02-1 1.2.8 | 요구사항추적표,단계별 점검결과서 |
| 40 | 2.3.2 | 고객검토실시 | 5d? | 2007-07-16 A | 2007-07-23 A | 100% | 2007-07-16 | 2007-07-23 | 5d? | finish no earlier than 2007-07-23 | 정제봉; 박성락 | 80h | 80h | 10 | 10 | 10 | 단계완료 | M02-1 1.2.8 | 시정조치결과서 |
| 41 | 2.3.3 | 검수기준 검토 및 고객승인획득 | 25d? | 2007-07-23 A | 2007-08-27 A | 100% | 2007-07-23 | 2007-08-27 | 25d? | finish no earlier than 2007-08-27 | 정제봉; 박성락 | 400h | 400h | 50 | 50 | 50 | 단계완료 | M02-1 1.2.8 | 고객인수확인서(PAD) |
| 42 | 3 | **설계단계** | 120d? | 2007-07-09 A | 2007-12-31 A | 100% | 2007-07-09 | 2007-12-31 | 120d? |  |  | 6240h | 6240h | 780 | 780 | 780 | 프로젝트수행/통제 | M02-1 1.2 |  |
| 43 | 3.1 | **분석감리실시** | 25d? | 2007-07-09 A | 2007-08-13 A | 100% | 2007-07-09 | 2007-08-13 | 25d? |  |  | 352h | 352h | 44 | 44 | 44 | 품질활동수행 | M02-1 1.2.2 |  |
| 44 | 3.1.1 | 분석감리 계획 공지 | 6d? | 2007-07-09 A | 2007-07-16 A | 100% | 2007-07-09 | 2007-07-16 | 6d? | start no earlier than 2007-07-30 | 정제봉; 박성락 | 96h | 96h | 12 | 12 | 12 | 품질활동수행 | M02-1 1.2.2 | 감리계획서 |
| 45 | 3.1.2 | 분석감리 대응 | 5d? | 2007-07-23 A | 2007-07-27 A | 100% | 2007-07-23 | 2007-07-27 | 5d? | start no earlier than 2007-08-06 | 정제봉; 박성락 | 80h | 80h | 10 | 10 | 10 | 품질활동수행 | M02-1 1.2.2 | 감리보고서 |
| 46 | 3.1.3 | 분석감리 조치 계획 수립 및 수행 | 4d? | 2007-07-30 A | 2007-08-02 A | 100% | 2007-07-30 | 2007-08-02 | 4d? | start no earlier than 2007-07-30 | 정제봉; 박성락 | 64h | 64h | 8 | 8 | 8 | 품질활동수행 | M02-1 1.2.2 | 감리조치계획/결과서 |
| 47 | 3.1.4 | 분석감리 조치 결과 확인 및 보고 | 7d? | 2007-08-03 A | 2007-08-13 A | 100% | 2007-08-03 | 2007-08-13 | 7d? | finish no earlier than 2007-08-09 | 정제봉; 박성락 | 112h | 112h | 14 | 14 | 14 | 품질활동수행 | M02-1 1.2.2 | 감리조치계획/결과서 |
| 48 | 3.2 | **단계착수** | 14d? | 2007-07-09 A | 2007-07-27 A | 100% | 2007-07-09 | 2007-07-27 | 14d? |  |  | 192h | 192h | 24 | 24 | 24 | 단계착수 | M02-1 1.2.1 |  |
| 49 | 3.2.1 | 설계단계 계획검토 및 수정 | 2d? | 2007-07-16 A | 2007-07-18 A | 100% | 2007-07-16 | 2007-07-18 | 2d? | finish no earlier than 2007-07-18 | 정제봉; 박성락 | 32h | 32h | 4 | 4 | 4 | 단계착수 | M02-1 1.2.1 | 프로젝트계획서(변경시) |
| 50 | 3.2.2 | 설계단계 SPM검토 및 수정 | 5d? | 2007-07-09 A | 2007-07-13 A | 100% | 2007-07-09 | 2007-07-13 | 5d? | finish no earlier than 2007-07-13 | 정제봉; 박성락 | 80h | 80h | 10 | 10 | 10 | 단계착수 | M02-1 1.2.1 | 회의록 |
| 51 | 3.2.3 | 설계단계 착수 오리엔테이션(2차) 실시 | 5d? | 2007-07-23 A | 2007-07-27 A | 100% | 2007-07-23 | 2007-07-27 | 5d? | finish no earlier than 2007-07-27 | 정제봉; 박성락 | 80h | 80h | 10 | 10 | 10 | 단계착수 | M02-1 1.2.1 | 단계착수오리엔테이션결과 |
| 52 | 3.3 | **성과통제** | 104d? | 2007-08-01 A | 2007-12-31 A | 100% | 2007-08-01 | 2007-12-31 | 104d? |  |  | 4992h | 4992h | 624 | 624 | 624 | 성과통제 | M02-1 1.2.7 |  |
| 53 | 3.3.1 | QAO 심사(2차) 조치 | 57d? | 2007-09-03 A | 2007-11-23 A | 100% | 2007-09-03 | 2007-11-23 | 57d? | finish no earlier than 2007-11-23 |  |  |  |  |  |  | 성과통제 | M02-1 1.2.7 |  |
| 54 | 3.3.2 | 변경관리 | 104d? | 2007-08-01 A | 2007-12-31 A | 100% | 2007-08-01 | 2007-12-31 | 104d? | finish no earlier than 2007-12-31 | 정제봉; 박성락 | 1664h | 1664h | 208 | 208 | 208 | 성과통제 | M02-1 1.2.7 | 변경요청목록,변경요청서,요구사항추적표 |
| 55 | 3.3.3 | 위험관리 | 104d? | 2007-08-01 A | 2007-12-31 A | 100% | 2007-08-01 | 2007-12-31 | 104d? | finish no earlier than 2007-12-31 | 정제봉; 박성락 | 1664h | 1664h | 208 | 208 | 208 | 성과통제 | M02-1 1.2.7 | 이슈리스트,위험관리보고서 |
| 56 | 3.3.4 | 성과측정 및 보고 | 104d? | 2007-08-01 A | 2007-12-31 A | 100% | 2007-08-01 | 2007-12-31 | 104d? | finish no earlier than 2007-12-31 | 정제봉; 박성락 | 1664h | 1664h | 208 | 208 | 208 | 성과통제 | M02-1 1.2.7 | 주간/월간보고서,비정기보고 |
| 57 | 3.3.5 | Inspection(2차) 실시 및 조치 | 11d? | 2007-11-16 A | 2007-11-30 A | 100% | 2007-11-16 | 2007-11-30 | 11d? | start no earlier than 2007-11-16 |  |  |  |  |  |  | 성과통제 | M02-1 1.2.7 |  |

| ID | WBS | Task | Duration | Start | Finish | Complete | Baseline start | Baseline finish | Baseline duration | Constraint | Resources | Work | Actual work | Cost | Baseline cost | Actual cost | Text20 | Text26 | Text30 |
| --- | --- | --- | --- | --- | --- | --- | --- | --- | --- | --- | --- | --- | --- | --- | --- | --- | --- | --- | --- |
| 58 | 3.4 | **단계완료** | 25d? | 2007-11-26 A | 2007-12-31 A | 100% | 2007-11-26 | 2007-12-31 | 25d? |  |  | 704h | 704h | 88 | 88 | 88 | 단계완료 | M02-1 1.2.8 |  |
| 59 | 3.4.1 | 단계결과정리 | 15d? | 2007-12-10 A | 2007-12-31 A | 100% | 2007-12-10 | 2007-12-31 | 15d? | start no earlier than 2007-12-10 | 정제봉; 박성락 | 240h | 240h | 30 | 30 | 30 | 단계완료 | M02-1 1.2.8 | 요구사항추적표,단계별 점검결과서 |
| 60 | 3.4.2 | 고객검토(2차) 실시 및 조치 | 15d? | 2007-11-26 A | 2007-12-14 A | 100% | 2007-11-26 | 2007-12-14 | 15d? | start no earlier than 2007-11-26 | 정제봉; 박성락 | 240h | 240h | 30 | 30 | 30 | 단계완료 | M02-1 1.2.8 | 시정조치결과서 |
| 61 | 3.4.3 | 검수기준 검토 및 고객승인획득 | 14d? | 2007-12-10 A | 2007-12-28 A | 100% | 2007-12-10 | 2007-12-28 | 14d? | finish no earlier than 2007-12-28 | 정제봉; 박성락 | 224h | 224h | 28 | 28 | 28 | 단계완료 | M02-1 1.2.8 | 고객인수확인서(PAD) |
| 62 | 4 | **개발단계** | 152d? | 2007-11-20 A | 2008-06-30 A | 100% | 2007-11-20 | 2008-06-30 | 152d? |  |  | 6713.84h | 6713.84h | 828 | 828.38 | 828 | 프로젝트수행/통제 | C02-1 1.6 |  |
| 63 | 4.1 | **설계감리실시** | 29d? | 2007-11-20 A | 2007-12-31 A | 100% | 2007-11-20 | 2007-12-31 | 29d? |  |  | 256h | 256h | 32 | 32 | 32 | 품질활동수행 | C02-1 1.6.2 |  |
| 64 | 4.1.1 | 설계감리 계획 공지 | 1d? | 2007-11-20 A | 2007-11-20 A | 100% | 2007-11-20 | 2007-11-20 | 1d? | finish no earlier than 2007-11-20 | 정제봉; 박성락 | 16h | 16h | 2 | 2 | 2 | 품질활동수행 | C02-1 1.6.2 |  |
| 65 | 4.1.2 | 설계감리 대응 | 5d? | 2007-12-10 A | 2007-12-14 A | 100% | 2007-12-10 | 2007-12-14 | 5d? | start no earlier than 2007-12-10 | 정제봉; 박성락 | 80h | 80h | 10 | 10 | 10 | 품질활동수행 | C02-1 1.6.2 |  |
| 66 | 4.1.3 | 설계감리 조치 계획 수립 및 수행 | 5d? | 2007-12-17 A | 2007-12-21 A | 100% | 2007-12-17 | 2007-12-21 | 5d? | start no earlier than 2007-12-17 | 정제봉; 박성락 | 80h | 80h | 10 | 10 | 10 | 품질활동수행 | C02-1 1.6.2 |  |
| 67 | 4.1.4 | 설계감리 조치 결과 확인 및 보고 | 5d? | 2007-12-24 A | 2007-12-31 A | 100% | 2007-12-24 | 2007-12-31 | 5d? | start no earlier than 2007-12-24 | 정제봉; 박성락 | 80h | 80h | 10 | 10 | 10 | 품질활동수행 | C02-1 1.6.2 |  |
| 68 | 4.2 | **단계착수** | 13d? | 2007-12-05 A | 2007-12-21 A | 100% | 2007-12-05 | 2007-12-21 | 13d? |  |  | 192h | 192h | 24 | 24 | 24 | 단계착수 | C02-1 1.6.1 |  |
| 69 | 4.2.1 | 프로젝트 계획단계 검토 | 4d? | 2007-12-05 A | 2007-12-10 A | 100% | 2007-12-05 | 2007-12-10 | 4d? | start no earlier than 2007-12-05 | 정제봉; 박성락 | 64h | 64h | 8 | 8 | 8 | 단계착수 | C02-1 1.6.1 | 프로젝트계획서(변경시) |
| 70 | 4.2.2 | 개발단계 SPM검토 및 수정 | 3d? | 2007-12-10 A | 2007-12-12 A | 100% | 2007-12-10 | 2007-12-12 | 3d? | finish no earlier than 2007-12-12 | 정제봉; 박성락 | 48h | 48h | 6 | 6 | 6 | 단계착수 | C02-1 1.6.1 | 회의록 |
| 71 | 4.2.3 | 단계착수 오리엔테이션(3차) 실시 | 5d? | 2007-12-17 A | 2007-12-21 A | 100% | 2007-12-17 | 2007-12-21 | 5d? | finish no earlier than 2007-12-21 | 정제봉; 박성락 | 80h | 80h | 10 | 10 | 10 | 단계착수 | C02-1 1.6.1 | 단계착수오리엔테이션결과 |
| 72 | 4.3 | **성과통제** | 123d? | 2008-01-02 A | 2008-06-30 A | 100% | 2008-01-02 | 2008-06-30 | 123d? |  |  | 5904h | 5904h | 738 | 738 | 738 | 성과통제 | C02-1 1.6.7 |  |
| 73 | 4.3.1 | 변경관리 | 123d? | 2008-01-02 A | 2008-06-30 A | 100% | 2008-01-02 | 2008-06-30 | 123d? | finish no earlier than 2008-06-30 | 정제봉; 박성락 | 1968h | 1968h | 246 | 246 | 246 | 성과통제 | C02-1 1.6.7 | 변경요청목록,변경요청서,요구사항추적표 |
| 74 | 4.3.2 | 위험관리 | 123d? | 2008-01-02 A | 2008-06-30 A | 100% | 2008-01-02 | 2008-06-30 | 123d? | finish no earlier than 2008-06-30 | 정제봉; 박성락 | 1968h | 1968h | 246 | 246 | 246 | 성과통제 | C02-1 1.6.7 | 이슈리스트,위험관리보고서 |
| 75 | 4.3.3 | 성과측정 및 보고 | 123d? | 2008-01-02 A | 2008-06-30 A | 100% | 2008-01-02 | 2008-06-30 | 123d? | finish no earlier than 2008-06-30 | 정제봉; 박성락 | 1968h | 1968h | 246 | 246 | 246 | 성과통제 | C02-1 1.6.7 | 주간/월간보고서,비정기보고 |
| 76 | 4.3.4 | QAO 심사(3차) 실시 및 조치 | 59d? | 2008-02-18 A | 2008-05-09 A | 100% | 2008-02-18 | 2008-05-09 | 59d? | start no earlier than 2008-02-18 |  |  |  |  |  |  | 성과통제 | C02-1 1.6.7 |  |
| 77 | 4.3.5 | Inspection(3차) 실시 및 조치 | 103d? | 2008-01-02 A | 2008-05-30 A | 100% | 2008-01-02 | 2008-05-30 | 103d? | start no earlier than 2008-01-02 |  |  |  |  |  |  | 성과통제 | C02-1 1.6.7 |  |
| 78 | 4.4 | **단계완료** | 14d? | 2008-06-02 A | 2008-06-21 A | 100% | 2008-06-02 | 2008-06-23 | 14.46d? |  |  | 361.84h | 361.84h | 34 | 34.38 | 34 | 단계완료 | C02-1 1.6.8 |  |
| 79 | 4.4.1 | 단계결과정리 | 14d? | 2008-06-02 A | 2008-06-21 A | 100% | 2008-06-02 | 2008-06-20 | 13.46d? | finish no earlier than 2008-06-13 | 정제봉; 정연욱 | 152.72h | 152.72h | 14 | 13.46 | 14 | 단계완료 | C02-1 1.6.8 | 요구사항추적표,단계별 점검결과서 |
| 80 | 4.4.2 | 고객검토실시 | 10d? | 2008-06-09 A | 2008-06-21 A | 100% | 2008-06-09 | 2008-06-23 | 10.46d? | finish no earlier than 2008-06-17 | 정제봉; 정연욱 | 104.56h | 104.56h | 10 | 10.46 | 10 | 단계완료 | C02-1 1.6.8 | 시정조치결과서 |
| 81 | 4.4.3 | 검수기준 검토 및 고객승인획득 | 10d? | 2008-06-09 A | 2008-06-21 A | 100% | 2008-06-09 | 2008-06-23 | 10.46d? | finish no earlier than 2008-06-17 | 정제봉; 정연욱 | 104.56h | 104.56h | 10 | 10.46 | 10 | 단계완료 | C02-1 1.6.8 | 고객인수확인서(PAD) |

| ID | WBS | Task | Duration | Start | Finish | Complete | Remaining | Baseline start | Baseline finish | Baseline duration | Total slack | Constraint | Resources | Work | Actual work | Cost | Baseline cost | Actual cost | Text20 | Text26 | Text30 |
| --- | --- | --- | --- | --- | --- | --- | --- | --- | --- | --- | --- | --- | --- | --- | --- | --- | --- | --- | --- | --- | --- |
| 82 | 5 | **통합테스트단계** | 62d? | 2008-05-19 A | 2008-08-15 A | 100% |  | 2008-05-19 | 2008-08-15 | 62d? |  |  |  | 792h | 792h | 51 | 125.88 | 51 | 개발 | C02-1 1.4 |  |
| 83 | 5.1 | **단계착수** | 13d? | 2008-05-19 A | 2008-06-04 A | 100% |  | 2008-05-19 | 2008-06-04 | 13d? |  |  |  | 288h | 288h | 18 | 18 | 18 | 단계착수 | C02-1 1.6.1 |  |
| 84 | 5.1.1 | 프로젝트 계획단계 검토 | 5d? | 2008-05-19 A | 2008-05-23 A | 100% |  | 2008-05-19 | 2008-05-23 | 5d? |  | start no earlier than 2008-05-19 | 정제봉; 정연욱 | 80h | 80h | 5 | 5 | 5 | 단계착수 | C02-1 1.6.1 | 프로젝트계획서(변경시) |
| 85 | 5.1.2 | 통합테스트 SPM검토 및 수정 | 5d? | 2008-05-19 A | 2008-05-23 A | 100% |  | 2008-05-19 | 2008-05-23 | 5d? |  | finish no earlier than 2008-05-23 | 정제봉; 정연욱 | 80h | 80h | 5 | 5 | 5 | 단계착수 | C02-1 1.6.1 | 회의록 |
| 86 | 5.1.3 | 단계착수 오리엔테이션(4차) 실시 | 8d? | 2008-05-26 A | 2008-06-04 A | 100% |  | 2008-05-26 | 2008-06-04 | 8d? |  | finish no earlier than 2008-06-04 | 정제봉; 정연욱 | 128h | 128h | 8 | 8 | 8 | 단계착수 | C02-1 1.6.1 | 단계착수오리엔테이션결과 |
| 87 | 5.2 | **성과통제** | 52d? | 2008-06-02 A | 2008-08-14 A | 100% |  | 2008-06-02 | 2008-08-14 | 52d? |  |  |  | 24h | 24h | 3 | 77.88 | 3 | 성과통제 | C02-1 1.6.7 |  |
| 88 | 5.2.1 | 변경관리 | 1d? | 2008-07-01 A | 2008-07-01 A | 100% |  | 2008-07-01 | 2008-08-06 | 26.96d? |  | finish no earlier than 2008-07-31 | 정제봉; 정연욱 | 8h | 8h | 1 | 25.96 | 1 | 성과통제 | C02-1 1.6.7 | 변경요청목록,변경요청서,요구사항추적표 |
| 89 | 5.2.2 | 위험관리 | 1d? | 2008-07-01 A | 2008-07-01 A | 100% |  | 2008-07-01 | 2008-08-06 | 26.96d? |  | finish no earlier than 2008-07-31 | 정제봉; 정연욱 | 8h | 8h | 1 | 25.96 | 1 | 성과통제 | C02-1 1.6.7 | 이슈리스트,위험관리보고서 |
| 90 | 5.2.3 | 성과측정 및 보고 | 1d? | 2008-07-01 A | 2008-07-01 A | 100% |  | 2008-07-01 | 2008-08-06 | 26.96d? |  | finish no earlier than 2008-07-31 | 정제봉; 정연욱 | 8h | 8h | 1 | 25.96 | 1 | 성과통제 | C02-1 1.6.7 | 주간/월간보고서,비정기보고 |
| 91 | 5.2.4 | QAO 심사(4차) 조치 | 19d? | 2008-06-02 A | 2008-06-27 A | 100% |  | 2008-06-02 | 2008-06-27 | 19d? |  | start no earlier than 2008-06-02 |  |  |  |  |  |  | 성과통제 | C02-1 1.6.7 |  |
| 92 | 5.2.5 | Inspection(4차) 실시 및 조치 | 19d? | 2008-06-30 A | 2008-07-25 A | 100% |  | 2008-06-30 | 2008-07-25 | 19d? |  | start no earlier than 2008-06-30 |  |  |  |  |  |  | 성과통제 | C02-1 1.6.7 |  |
| 93 | 5.2.6 | 프로세스심사(4차)실시 | 9d | 2008-08-04 A | 2008-08-14 A | 100% |  | 2008-08-04 | 2008-08-14 | 9d |  | start no earlier than 2008-08-04 |  |  |  |  |  |  | 성과통제 | C02-1 1.6.7 |  |
| 94 | 5.3 | **단계완료** | 14d? | 2008-07-28 A | 2008-08-15 A | 100% |  | 2008-07-28 | 2008-08-15 | 14d? |  |  |  | 480h | 480h | 30 | 30 | 30 | 단계완료 | C02-1 1.6.8 |  |
| 95 | 5.3.1 | 실적규모측정방법 교육 지원 | 5d? | 2008-07-28 A | 2008-08-01 A | 100% |  | 2008-07-28 | 2008-08-01 | 5d? |  | finish no earlier than 2008-08-01 |  |  |  |  |  |  | 단계완료 | C02-1 1.6.8 |  |
| 96 | 5.3.2 | 단계결과정리 | 10d? | 2008-08-01 A | 2008-08-15 A | 100% |  | 2008-08-01 | 2008-08-15 | 10d? |  | finish no earlier than 2008-08-15 | 정제봉; 정연욱 | 160h | 160h | 10 | 10 | 10 | 단계완료 | C02-1 1.6.8 | 요구사항추적표,단계별 점검결과서 |
| 97 | 5.3.3 | 고객검토실시 | 10d? | 2008-08-01 A | 2008-08-15 A | 100% |  | 2008-08-01 | 2008-08-15 | 10d? |  | finish no earlier than 2008-08-15 | 정제봉; 정연욱 | 160h | 160h | 10 | 10 | 10 | 단계완료 | C02-1 1.6.8 | 시정조치결과서 |
| 98 | 5.3.4 | 검수기준 검토 및 고객승인획득 | 10d? | 2008-08-01 A | 2008-08-15 A | 100% |  | 2008-08-01 | 2008-08-15 | 10d? |  | finish no earlier than 2008-08-15 | 정제봉; 정연욱 | 160h | 160h | 10 | 10 | 10 | 단계완료 | C02-1 1.6.8 | 고객인수확인서(PAD) |
| 99 | 6 | **영업점테스트단계** | 134d? | 2008-07-21 A | 2009-01-30 | 54% | 62.26d? | 2008-07-21 | 2009-01-30 | 134d? | 37d |  |  | 6382.4h | 3746.56h | 400 | 319.1 | 231.76 | 개발 | C02-1 1.4 |  |
| 100 | 6.1 | **영업점테스트** | 134d? | 2008-07-21 A | 2009-01-30 | 62% | 51.11d? | 2008-07-21 | 2009-01-30 | 134d? | 37d |  |  | 5486.4h | 3746.56h | 344 | 263.1 | 231.76 | 단계착수 | C02-1 1.6.1 |  |
| 101 | 6.1.1 | **단계착수** | 10d? | 2008-07-21 A | 2008-08-01 A | 100% |  | 2008-07-21 | 2008-08-01 | 10d? |  |  |  | 222.4h | 222.4h | 15 | 16.1 | 15 | 단계착수 | C02-1 1.6.1 |  |
| 102 | 6.1.1.1 | 프로젝트 계획단계 검토 | 5d? | 2008-07-21 A | 2008-07-25 A | 100% |  | 2008-07-21 | 2008-07-25 | 5d? |  | finish no earlier than 2008-07-25 | 정제봉; 정연욱 | 80h | 80h | 5 | 5 | 5 | 단계착수 | C02-1 1.6.1 | 프로젝트계획서(변경시) |
| 103 | 6.1.1.2 | 영업점테스트 SPM검토 및 수정 | 5d? | 2008-07-21 A | 2008-07-25 A | 100% |  | 2008-07-21 | 2008-07-29 | 6.1d? |  | start no earlier than 2008-07-21 | 정제봉; 정연욱 | 62.4h | 62.4h | 5 | 6.1 | 5 | 단계착수 | C02-1 1.6.1 | 회의록 |
| 104 | 6.1.1.3 | 영업점테스트 단계착수 오리엔테이션(5차) 실시 | 5d? | 2008-07-28 A | 2008-08-01 A | 100% |  | 2008-07-28 | 2008-08-01 | 5d? |  | finish no earlier than 2008-08-01 | 정제봉; 정연욱 | 80h | 80h | 5 | 5 | 5 | 단계착수 | C02-1 1.6.1 | 단계착수오리엔테이션결과 |
| 105 | 6.1.2 | **성과통제** | 115d? | 2008-08-04 A | 2009-01-16 | 65% | 39.98d? | 2008-08-04 | 2009-01-16 | 115d? | 46d |  |  | 4848h | 3524.16h | 303 | 221 | 216.76 | 성과통제 | C02-1 1.6.7 |  |
| 106 | 6.1.2.1 | 변경관리 | 98d? | 2008-08-18 A | 2008-12-31 | 72% | 27.44d? | 2008-08-18 | 2008-12-31 | 98d? | 57d | finish no earlier than 2008-12-31 | 정제봉; 정연욱 | 1520h | 1112.96h | 95 | 95 | 68.56 | 성과통제 | C02-1 1.6.7 | 변경요청목록,변경요청서,요구사항추적표 |
| 107 | 6.1.2.2 | 위험관리 | 65d? | 2008-10-02 A | 2008-12-31 | 59% | 26.65d? | 2008-10-02 | 2008-12-31 | 65d? | 57d | finish no earlier than 2008-12-31 | 정제봉; 정연욱 | 1008h | 605.6h | 63 | 63 | 37.35 | 성과통제 | C02-1 1.6.7 | 이슈리스트,위험관리보고서 |
| 108 | 6.1.2.3 | 성과측정 및 보고 | 65d? | 2008-10-02 A | 2008-12-31 | 59% | 26.65d? | 2008-10-02 | 2008-12-31 | 65d? | 57d | finish no earlier than 2008-12-31 | 정제봉; 정연욱 | 1008h | 605.6h | 63 | 63 | 37.35 | 성과통제 | C02-1 1.6.7 | 주간/월간보고서,비정기보고 |
| 110 | 6.1.2.4 | Inspection(5차) 실시 및 조치 | 19d? | 2008-12-01 | 2008-12-26 |  |  | 2008-12-01 | 2008-12-26 | 19d? | 60d | start no earlier than 2008-12-01 |  |  |  |  |  |  | 성과통제 | C02-1 1.6.7 |  |
| 111 | 6.1.2.5 | 프로세스심사(5차)실시 | 11d | 2009-01-02 | 2009-01-16 |  |  | 2009-01-02 | 2009-01-16 | 11d | 46d | start no earlier than 2009-01-02 |  |  |  |  |  |  | 성과통제 | C02-1 1.6.7 |  |

| ID | WBS | Task | Duration | Start | Finish | Predecessors | Baseline start | Baseline finish | Baseline duration | Total slack | Free slack | Constraint | Resources | Work | Cost | Baseline cost | Text20 | Text26 | Text30 |
| --- | --- | --- | --- | --- | --- | --- | --- | --- | --- | --- | --- | --- | --- | --- | --- | --- | --- | --- | --- |
| 112 | 6.1.3 | **단계완료** | 10d? | 2009-01-16 | 2009-01-30 |  | 2009-01-16 | 2009-01-30 | 10d? | 37d |  |  |  | 416h | 26 | 26 | 단계완료 | C02-1 1.6.8 |  |
| 113 | 6.1.3.1 | 단계결과정리 | 11d? | 2009-01-16 | 2009-01-30 |  | 2009-01-16 | 2009-01-30 | 11d? | 37d |  | finish no earlier than 2009-01-30 | 정제봉; 정연욱 | 160h | 10 | 10 | 단계완료 | C02-1 1.6.8 | 요구사항추적표,단계별 점검결과서 |
| 114 | 6.1.3.2 | 고객검토실시 | 6d? | 2009-01-16 | 2009-01-23 |  | 2009-01-16 | 2009-01-23 | 6d? | 41d |  | finish no earlier than 2009-01-23 | 정제봉; 정연욱 | 96h | 6 | 6 | 단계완료 | C02-1 1.6.8 | 시정조치결과서 |
| 115 | 6.1.3.3 | 검수기준 검토 및 고객승인획득 | 11d? | 2009-01-16 | 2009-01-30 |  | 2009-01-16 | 2009-01-30 | 11d? | 37d |  | finish no earlier than 2009-01-30 | 정제봉; 정연욱 | 160h | 10 | 10 | 단계완료 | C02-1 1.6.8 | 고객인수확인서(PAD) |
| 116 | 6.2 | **제품검사실시** | 37d? | 2008-12-08 | 2009-01-30 |  | 2008-12-08 | 2009-01-30 | 37d? | 37d |  |  |  | 576h | 36 | 36 | 품질활동수행 | C02-1 1.6.2 |  |
| 117 | 6.2.1 | 예비제품검사 | 18d? | 2008-12-08 | 2008-12-31 |  | 2008-12-08 | 2008-12-31 | 18d? | 57d |  | start no earlier than 2008-12-08 | 정제봉; 정연욱 | 272h | 17 | 17 | 품질활동수행 | C02-1 1.6.2 | 예비제품검사계획서/보고서/결과서 |
| 118 | 6.2.2 | 제품검사 | 20d? | 2009-01-05 | 2009-01-30 |  | 2009-01-05 | 2009-01-30 | 20d? | 37d |  | start no earlier than 2009-01-05 | 정제봉; 정연욱 | 304h | 19 | 19 | 품질활동수행 | C02-1 1.6.2 | 제품검사계획서/보고서/결과서 |
| 119 | 6.3 | **이행** | 17d? | 2009-01-02 | 2009-01-27 |  | 2009-01-02 | 2009-01-27 | 17d? | 40d |  |  |  | 320h | 20 | 20 | 컨버전 및 릴리이즈 | C02-1 1.5.2 |  |
| 120 | 6.3.1 | 이행준비 | 16d? | 2009-01-02 | 2009-01-23 |  | 2009-01-02 | 2009-01-23 | 16d? | 41d |  | finish no earlier than 2009-01-23 | 정제봉; 정연욱 | 256h | 16 | 16 | 컨버전 및 릴리이즈 | C02-1 1.5.2 | 이행계획서 |
| 121 | 6.3.2 | 이행실시 | 3d? | 2009-01-23 | 2009-01-27 |  | 2009-01-23 | 2009-01-27 | 3d? | 40d |  | start no earlier than 2009-01-23 | 정제봉; 정연욱 | 32h | 2 | 2 | 컨버전 및 릴리이즈 | C02-1 1.5.2 |  |
| 122 | 6.3.3 | 이행 검증 및 결과 보고 | 3d? | 2009-01-23 | 2009-01-27 |  | 2009-01-23 | 2009-01-27 | 3d? | 40d |  | start no earlier than 2009-01-23 | 정제봉; 정연욱 | 32h | 2 | 2 | 컨버전 및 릴리이즈 | C02-1 1.5.2 | 이행결과보고서 |
| 123 | 7 | **프로젝트 종료** | 46d? | 2009-01-19 | 2009-03-24 |  | 2009-01-19 | 2009-03-24 | 46d? | 0d |  |  |  | 1328h | 83 | 83 | 구현 | C02-1 1.5 |  |
| 124 | 7.1 | **최종고객검사관리** | 29d? | 2009-01-19 | 2009-02-27 |  | 2009-01-19 | 2009-02-27 | 29d? | 17d |  |  |  | 640h | 40 | 40 | 최종고객 검수 | C02-1 1.7.3 |  |
| 125 | 7.1.1 | 최종 검사 준비 | 10d? | 2009-02-02 | 2009-02-13 |  | 2009-02-02 | 2009-02-13 | 10d? | 17d | 0d | finish no earlier than 2009-02-13 | 정제봉; 정연욱 | 160h | 10 | 10 | 최종고객 검수 | C02-1 1.7.3 |  |
| 126 | 7.1.2 | 최종 검사 확인 | 10d? | 2009-02-16 | 2009-02-27 | 125 | 2009-02-16 | 2009-02-27 | 10d? | 17d |  | start no earlier than 2009-02-16 | 정제봉; 정연욱 | 160h | 10 | 10 | 최종고객 검수 | C02-1 1.7.3 |  |
| 127 | 7.1.3 | 최종 산출물 제출 | 20d? | 2009-02-02 | 2009-02-27 |  | 2009-02-02 | 2009-02-27 | 20d? | 17d |  | start no earlier than 2009-02-02 | 정제봉; 정연욱 | 320h | 20 | 20 | 최종고객 검수 | C02-1 1.7.3 |  |
| 128 | 7.1.4 | 과업대비표 매핑 | 5d? | 2009-01-19 | 2009-01-23 |  | 2009-01-19 | 2009-01-23 | 5d? | 41d |  | finish no earlier than 2009-01-23 |  |  |  |  | 최종고객 검수 | C02-1 1.7.3 |  |
| 129 | 7.2 | **종료보고** | 25d? | 2009-02-02 | 2009-03-06 |  | 2009-02-02 | 2009-03-06 | 25d? | 12d |  |  |  | 496h | 31 | 31 | 종료계획 수립 | C02-1 1.7.1 |  |
| 130 | 7.2.1 | 행사준비 | 10d? | 2009-02-02 | 2009-02-13 |  | 2009-02-02 | 2009-02-13 | 10d? | 27d |  | finish no earlier than 2009-02-13 | 정제봉; 정연욱 | 160h | 10 | 10 | 종료계획 수립 | C02-1 1.7.1 |  |
| 131 | 7.2.2 | 행정처리 | 10d? | 2009-02-02 | 2009-02-13 |  | 2009-02-02 | 2009-02-13 | 10d? | 27d |  | start no earlier than 2009-02-02 | 정제봉; 정연욱 | 160h | 10 | 10 | 종료계획 수립 | C02-1 1.7.1 |  |
| 132 | 7.2.3 | 발표자료 준비 | 8d? | 2009-02-16 | 2009-02-25 |  | 2009-02-16 | 2009-02-25 | 8d? | 19d |  | finish no earlier than 2009-02-25 | 정제봉; 정연욱 | 128h | 8 | 8 | 종료계획 수립 | C02-1 1.7.1 |  |
| 133 | 7.2.4 | 행사실시 | 1d? | 2009-02-27 | 2009-02-27 |  | 2009-02-27 | 2009-02-27 | 1d? | 15d | 0d | start no earlier than 2009-02-27 | 정제봉; 정연욱 | 16h | 1 | 1 | 종료계획 수립 | C02-1 1.7.1 |  |
| 134 | 7.2.5 | 행사결과 정리 | 1d? | 2009-03-02 | 2009-03-02 | 133 | 2009-03-02 | 2009-03-02 | 1d? | 15d | 3d |  | 정제봉; 정연욱 | 16h | 1 | 1 | 종료계획 수립 | C02-1 1.7.1 |  |
| 135 | 7.2.6 | 종료보고서 제출 | 1d? | 2009-03-06 | 2009-03-06 | 134 | 2009-03-06 | 2009-03-06 | 1d? | 12d |  | finish no earlier than 2009-03-06 | 정제봉; 정연욱 | 16h | 1 | 1 | 종료계획 수립 | C02-1 1.7.1 |  |

| ID | WBS | Task | Duration | Start | Finish | Baseline start | Baseline finish | Baseline duration | Total slack | Constraint | Resources | Work | Cost | Baseline cost | Text20 | Text26 | Text30 |
| --- | --- | --- | --- | --- | --- | --- | --- | --- | --- | --- | --- | --- | --- | --- | --- | --- | --- |
| 136 | 7.3 | **프로젝트 정리** | 7d? | 2009-03-16 | 2009-03-24 | 2009-03-16 | 2009-03-24 | 7d? | 0d |  |  | 192h | 12 | 12 | 프로젝트 정보보고 | C02-1 1.7.4 |  |
| 137 | 7.3.1 | 산출물 입고 | 7d? | 2009-03-16 | 2009-03-24 | 2009-03-16 | 2009-03-24 | 7d? | 0d | start no earlier than 2009-03-16 | 정제봉; 정연욱 | 112h | 7 | 7 | 프로젝트 정보보고 | C02-1 1.7.4 | 최종 납품 산출물 |
| 138 | 7.3.2 | 프로젝트 완료보고 | 5d? | 2009-03-18 | 2009-03-24 | 2009-03-18 | 2009-03-24 | 5d? | 0d | start no earlier than 2009-03-18 | 정제봉; 정연욱 | 80h | 5 | 5 | 프로젝트 정보보고 | C02-1 1.7.4 |  |
