# 여신

Schedule from MS Project, 2007-04-25 to 2009-03-24, costs in ₩, A marks actual dates.
HSIC-0600001
�궪�꽦SDS

## Calendars

- 농협신용신시스템: Mon-Fri 08:00-12:00, 13:00-17:00; Sat-Sun off. Exceptions (off unless hours are given): 2007-05-01, 2007-05-24, 2007-06-06, 2007-07-17, 2007-08-15, 2007-09-24 to 2007-09-26, 2007-10-03, 2007-12-25, 2008-01-01, 2008-02-06 to 2008-02-08, 2008-05-01, 2008-05-05, 2008-05-12, 2008-06-06, 2008-07-17, 2008-08-10 08:00-12:00, 13:00-17:00, 2008-08-15, 2008-08-17 08:00-12:00, 13:00-17:00, 2008-09-15, 2008-09-21 08:00-12:00, 13:00-17:00, 2008-10-03, 2008-10-12 08:00-12:00, 13:00-17:00, 2008-11-02 08:00-12:00, 13:00-17:00, 2008-11-15 08:00-12:00, 13:00-17:00, 2008-12-07 08:00-12:00, 13:00-17:00, 2008-12-25, 2009-01-01, 2009-01-25 08:00-12:00, 13:00-17:00.

## Resources

| Resource | Group | Rate |
| --- | --- | --- |
| 서종민 | 000PL | 0.12 |
| 이창수 | 100TL | 0.12 |
| 김백기 | 110여신실행 | 0.12 |
| 김영보 | 110여신실행 | 0.12 |
| 양혜란 | 120여신상환 | 0.12 |
| 서정호 | 120여신상환 | 0.12 |
| 송진현 | 120여신상환 | 0.12 |
| 윤승종 | 130여신관리 | 0.12 |
| 차호병 | 130여신관리 | 0.12 |
| 김경희 | 140차입금 | 0.12 |
| 김정석 | 140차입금 | 0.12 |
| 송재규 | 150보증서/전자결재 | 0.12 |
| 표기웅 | 150보증서/전자결재 | 0.12 |
| 김영석 | 210기업심사 | 0.12 |
| 전형남 | 230개인심사 | 0.12 |
| TBD2 | 240농업종합자금/국민주택기금 | 0.12 |
| 정재순 | 240감정담보 | 0.12 |
| 지용근 | 200TL | 0.12 |
| 김형근 | 220한도/금리 | 0.12 |
| TBD1 | 230개인심사 | 0.12 |
| 정이훈 |  |  |
| 이해미 |  |  |
| 윤승준 |  |  |
| 이천송 |  |  |
| 박소연 |  |  |
| 김영석B |  |  |
| 선민국 |  |  |
| 염정호 |  |  |

## Schedule

| ID | WBS | Task | Duration | Start | Finish | Complete | Baseline start | Baseline finish | Baseline duration | Constraint | Resources | Work | Actual work | Cost | Baseline cost | Actual cost | Text20 | Text26 | Text30 |
| --- | --- | --- | --- | --- | --- | --- | --- | --- | --- | --- | --- | --- | --- | --- | --- | --- | --- | --- | --- |
| 1 | 1 | **분석** | 67d | 2007-04-25 A | 2007-08-01 A | 100% | 2007-04-25 | 2007-08-01 | 67d |  |  | 31120h | 31120h | 3,890 | 3,890 | 3,890 | 분석 | C02-1 1.2 |  |
| 2 | 1.1 | **현황평가** | 34d | 2007-04-25 A | 2007-06-14 A | 100% | 2007-04-25 | 2007-06-14 | 34d |  |  | 14168h | 14168h | 1,771 | 1,771 | 1,771 | 현황 평가 | C02-1 1.2.1 |  |
| 3 | 1.1.1 | **현행업무 분석** | 30d | 2007-04-25 A | 2007-06-08 A | 100% | 2007-04-25 | 2007-06-08 | 30d |  |  | 6320h | 6320h | 790 | 790 | 790 | 현황 평가 | C02-1 1.2.1 |  |
| 4 | 1.1.1 | **현행업무 분석1** | 7d | 2007-04-25 A | 2007-05-04 A | 100% | 2007-04-25 | 2007-05-04 | 7d | start no earlier than 2007-04-25 |  | 1456h | 1456h | 182 | 182 | 182 | 현황 평가 | C02-1 1.2.1 |  |
| 5 | 1.1.1.1 | 실행(외대포함) 현행업무분석 | 7d | 2007-04-25 A | 2007-05-04 A | 100% | 2007-04-25 | 2007-05-04 | 7d | start no earlier than 2007-04-25 | 김백기; 김영보; 이창수 | 168h | 168h | 21 | 21 | 21 | 현황 평가 | C02-1 1.2.1 | 현행업무흐름도, 현행업무분장표 |
| 6 | 1.1.1.2 | 상환/매각(외대포함) 현행업무 분석 | 7d | 2007-04-25 A | 2007-05-04 A | 100% | 2007-04-25 | 2007-05-04 | 7d | start no earlier than 2007-04-25 | 양혜란; 서정호; 송진현 | 168h | 168h | 21 | 21 | 21 | 현황 평가 | C02-1 1.2.1 | 현행업무흐름도, 현행업무분장표 |
| 7 | 1.1.1.3 | 여신등록 현행업무 분석 | 7d | 2007-04-25 A | 2007-05-04 A | 100% | 2007-04-25 | 2007-05-04 | 7d | start no earlier than 2007-04-25 | 윤승종; 차호병 | 112h | 112h | 14 | 14 | 14 | 현황 평가 | C02-1 1.2.1 | 현행업무흐름도, 현행업무분장표 |
| 8 | 1.1.1.4 | 차입금 현행업무 분석 | 7d | 2007-04-25 A | 2007-05-04 A | 100% | 2007-04-25 | 2007-05-04 | 7d | start no earlier than 2007-04-25 | 김경희 | 56h | 56h | 7 | 7 | 7 | 현황 평가 | C02-1 1.2.1 | 현행업무흐름도, 현행업무분장표 |
| 9 | 1.1.1.5 | 보증서현행업무 분석 | 7d | 2007-04-25 A | 2007-05-04 A | 100% | 2007-04-25 | 2007-05-04 | 7d | start no earlier than 2007-04-25 | 송재규; 표기웅 | 112h | 112h | 14 | 14 | 14 | 현황 평가 | C02-1 1.2.1 | 현행업무흐름도, 현행업무분장표 |
| 10 | 1.1.1.6 | 전자결재 현행업무 분석 | 7d | 2007-04-25 A | 2007-05-04 A | 100% | 2007-04-25 | 2007-05-04 | 7d | start no earlier than 2007-04-25 | 송재규; 표기웅 | 112h | 112h | 14 | 14 | 14 | 현황 평가 | C02-1 1.2.1 | 현행업무흐름도, 현행업무분장표 |
| 11 | 1.1.1.7 | 통계정보 현행업무 분석 | 7d | 2007-04-25 A | 2007-05-04 A | 100% | 2007-04-25 | 2007-05-04 | 7d | start no earlier than 2007-04-25 | 윤승종; 차호병 | 112h | 112h | 14 | 14 | 14 | 현황 평가 | C02-1 1.2.1 | 현행업무흐름도, 현행업무분장표 |
| 12 | 1.1.1.8 | 개인심사 현행업무 분석 | 7d | 2007-04-25 A | 2007-05-04 A | 100% | 2007-04-25 | 2007-05-04 | 7d | start no earlier than 2007-04-25 | 전형남; TBD1 | 112h | 112h | 14 | 14 | 14 | 현황 평가 | C02-1 1.2.1 | 현행업무흐름도, 현행업무분장표 |
| 13 | 1.1.1.9 | 기업심사 현행업무 분석 | 7d | 2007-04-25 A | 2007-05-04 A | 100% | 2007-04-25 | 2007-05-04 | 7d | start no earlier than 2007-04-25 | 김영석 | 56h | 56h | 7 | 7 | 7 | 현황 평가 | C02-1 1.2.1 | 현행업무흐름도, 현행업무분장표 |
| 14 | 1.1.1.10 | 신용조사 현행업무 분석 | 7d | 2007-04-25 A | 2007-05-04 A | 100% | 2007-04-25 | 2007-05-04 | 7d | start no earlier than 2007-04-25 | 김형근 | 56h | 56h | 7 | 7 | 7 | 현황 평가 | C02-1 1.2.1 | 현행업무흐름도, 현행업무분장표 |
| 15 | 1.1.1.11 | 한도관리 현행업무 분석 | 7d | 2007-04-25 A | 2007-05-04 A | 100% | 2007-04-25 | 2007-05-04 | 7d | start no earlier than 2007-04-25 | 차호병; 전형남 | 112h | 112h | 14 | 14 | 14 | 현황 평가 | C02-1 1.2.1 | 현행업무흐름도, 현행업무분장표 |
| 16 | 1.1.1.12 | 금리관리 현행업무 분석 | 7d | 2007-04-25 A | 2007-05-04 A | 100% | 2007-04-25 | 2007-05-04 | 7d | start no earlier than 2007-04-25 | 윤승종; 전형남 | 112h | 112h | 14 | 14 | 14 | 현황 평가 | C02-1 1.2.1 | 현행업무흐름도, 현행업무분장표 |
| 17 | 1.1.1.14 | 농업종합자금 현행업무 분석 | 7d | 2007-04-25 A | 2007-05-04 A | 100% | 2007-04-25 | 2007-05-04 | 7d | start no earlier than 2007-04-25 | 지용근; 김정석 | 112h | 112h | 14 | 14 | 14 | 현황 평가 | C02-1 1.2.1 | 현행업무흐름도, 현행업무분장표 |
| 18 | 1.1.1.15 | 감정담보현행업무 분석 | 7d | 2007-04-25 A | 2007-05-04 A | 100% | 2007-04-25 | 2007-05-04 | 7d | start no earlier than 2007-04-25 | 정재순 | 56h | 56h | 7 | 7 | 7 | 현황 평가 | C02-1 1.2.1 | 현행업무흐름도, 현행업무분장표 |
| 19 | 1.1.1.2 | **현행업무 분석2** | 10d | 2007-05-07 A | 2007-05-18 A | 100% | 2007-05-07 | 2007-05-18 | 10d |  |  | 2160h | 2160h | 270 | 270 | 270 | 현황 평가 | C02-1 1.2.1 |  |
| 20 | 1.1.1.2.1 | 실행(외대포함) 현행업무분석 | 10d | 2007-05-07 A | 2007-05-18 A | 100% | 2007-05-07 | 2007-05-18 | 10d | start no earlier than 2007-05-07 | 김백기; 김영보; 이창수 | 240h | 240h | 30 | 30 | 30 | 현황 평가 | C02-1 1.2.1 | 현행업무흐름도, 현행업무분장표 |
| 21 | 1.1.1.2.2 | 상환/매각(외대포함) 현행업무 분석 | 10d | 2007-05-07 A | 2007-05-18 A | 100% | 2007-05-07 | 2007-05-18 | 10d | start no earlier than 2007-05-07 | 양혜란; 서정호; 송진현 | 240h | 240h | 30 | 30 | 30 | 현황 평가 | C02-1 1.2.1 | 현행업무흐름도, 현행업무분장표 |
| 22 | 1.1.1.2.3 | 여신등록 현행업무 분석 | 10d | 2007-05-07 A | 2007-05-18 A | 100% | 2007-05-07 | 2007-05-18 | 10d | start no earlier than 2007-05-07 | 윤승종; 차호병 | 160h | 160h | 20 | 20 | 20 | 현황 평가 | C02-1 1.2.1 | 현행업무흐름도, 현행업무분장표 |
| 23 | 1.1.1.2.4 | 차입금 현행업무 분석 | 10d | 2007-05-07 A | 2007-05-18 A | 100% | 2007-05-07 | 2007-05-18 | 10d | start no earlier than 2007-05-07 | 김경희 | 80h | 80h | 10 | 10 | 10 | 현황 평가 | C02-1 1.2.1 | 현행업무흐름도, 현행업무분장표 |
| 24 | 1.1.1.2.5 | 보증서현행업무 분석 | 10d | 2007-05-07 A | 2007-05-18 A | 100% | 2007-05-07 | 2007-05-18 | 10d | start no earlier than 2007-05-07 | 송재규; 표기웅 | 160h | 160h | 20 | 20 | 20 | 현황 평가 | C02-1 1.2.1 | 현행업무흐름도, 현행업무분장표 |
| 25 | 1.1.1.2.6 | 전자결재 현행업무 분석 | 10d | 2007-05-07 A | 2007-05-18 A | 100% | 2007-05-07 | 2007-05-18 | 10d | start no earlier than 2007-05-07 | 송재규; 표기웅 | 160h | 160h | 20 | 20 | 20 | 현황 평가 | C02-1 1.2.1 | 현행업무흐름도, 현행업무분장표 |
| 26 | 1.1.1.2.7 | 통계정보 현행업무 분석 | 10d | 2007-05-07 A | 2007-05-18 A | 100% | 2007-05-07 | 2007-05-18 | 10d | start no earlier than 2007-05-07 | 윤승종; 차호병 | 160h | 160h | 20 | 20 | 20 | 현황 평가 | C02-1 1.2.1 | 현행업무흐름도, 현행업무분장표 |
| 27 | 1.1.1.2.8 | 개인심사 현행업무 분석 | 10d | 2007-05-07 A | 2007-05-18 A | 100% | 2007-05-07 | 2007-05-18 | 10d | start no earlier than 2007-05-07 | 전형남; TBD1 | 160h | 160h | 20 | 20 | 20 | 현황 평가 | C02-1 1.2.1 | 현행업무흐름도, 현행업무분장표 |
| 28 | 1.1.1.2.9 | 기업심사 현행업무 분석 | 10d | 2007-05-07 A | 2007-05-18 A | 100% | 2007-05-07 | 2007-05-18 | 10d | start no earlier than 2007-05-07 | 김영석 | 80h | 80h | 10 | 10 | 10 | 현황 평가 | C02-1 1.2.1 | 현행업무흐름도, 현행업무분장표 |
| 29 | 1.1.1.2.10 | 신용조사 현행업무 분석 | 10d | 2007-05-07 A | 2007-05-18 A | 100% | 2007-05-07 | 2007-05-18 | 10d | start no earlier than 2007-05-07 | 김형근 | 80h | 80h | 10 | 10 | 10 | 현황 평가 | C02-1 1.2.1 | 현행업무흐름도, 현행업무분장표 |
| 30 | 1.1.1.2.11 | 한도관리 현행업무 분석 | 10d | 2007-05-07 A | 2007-05-18 A | 100% | 2007-05-07 | 2007-05-18 | 10d | start no earlier than 2007-05-07 | 차호병; 전형남 | 160h | 160h | 20 | 20 | 20 | 현황 평가 | C02-1 1.2.1 | 현행업무흐름도, 현행업무분장표 |
| 31 | 1.1.1.2.12 | 금리관리 현행업무 분석 | 10d | 2007-05-07 A | 2007-05-18 A | 100% | 2007-05-07 | 2007-05-18 | 10d | start no earlier than 2007-05-07 | 윤승종; 전형남 | 160h | 160h | 20 | 20 | 20 | 현황 평가 | C02-1 1.2.1 | 현행업무흐름도, 현행업무분장표 |
| 32 | 1.1.1.2.13 | 국민주택기금 현행업무 분석 | 5d | 2007-05-14 A | 2007-05-18 A | 100% | 2007-05-14 | 2007-05-18 | 5d | start no earlier than 2007-05-14 | 지용근; TBD2 | 80h | 80h | 10 | 10 | 10 | 현황 평가 | C02-1 1.2.1 | 현행업무흐름도, 현행업무분장표 |
| 33 | 1.1.1.2.14 | 농업종합자금 현행업무 분석 | 10d | 2007-05-07 A | 2007-05-18 A | 100% | 2007-05-07 | 2007-05-18 | 10d | start no earlier than 2007-05-07 | 지용근; 김정석 | 160h | 160h | 20 | 20 | 20 | 현황 평가 | C02-1 1.2.1 | 현행업무흐름도, 현행업무분장표 |
| 34 | 1.1.1.2.15 | 감정담보현행업무 분석 | 10d | 2007-05-07 A | 2007-05-18 A | 100% | 2007-05-07 | 2007-05-18 | 10d | start no earlier than 2007-05-07 | 정재순 | 80h | 80h | 10 | 10 | 10 | 현황 평가 | C02-1 1.2.1 | 현행업무흐름도, 현행업무분장표 |

| ID | WBS | Task | Duration | Start | Finish | Complete | Baseline start | Baseline finish | Baseline duration | Constraint | Resources | Work | Actual work | Cost | Baseline cost | Actual cost | Text20 | Text26 | Text30 |
| --- | --- | --- | --- | --- | --- | --- | --- | --- | --- | --- | --- | --- | --- | --- | --- | --- | --- | --- | --- |
| 35 | 1.1.1.3 | **현행업무 분석3** | 9d | 2007-05-21 A | 2007-06-01 A | 100% | 2007-05-21 | 2007-06-01 | 9d |  |  | 2000h | 2000h | 250 | 250 | 250 | 현황 평가 | C02-1 1.2.1 |  |
| 36 | 1.1.1.3.1 | 실행(외대포함) 현행업무분석 | 9d | 2007-05-21 A | 2007-06-01 A | 100% | 2007-05-21 | 2007-06-01 | 9d | start no earlier than 2007-05-21 | 김백기; 김영보; 이창수 | 216h | 216h | 27 | 27 | 27 | 현황 평가 | C02-1 1.2.1 | 현행업무흐름도, 현행업무분장표 |
| 37 | 1.1.1.3.2 | 상환/매각(외대포함) 현행업무 분석 | 9d | 2007-05-21 A | 2007-06-01 A | 100% | 2007-05-21 | 2007-06-01 | 9d | start no earlier than 2007-05-21 | 양혜란; 서정호; 송진현 | 216h | 216h | 27 | 27 | 27 | 현황 평가 | C02-1 1.2.1 | 현행업무흐름도, 현행업무분장표 |
| 38 | 1.1.1.3.3 | 여신등록 현행업무 분석 | 9d | 2007-05-21 A | 2007-06-01 A | 100% | 2007-05-21 | 2007-06-01 | 9d | start no earlier than 2007-05-21 | 윤승종; 차호병 | 144h | 144h | 18 | 18 | 18 | 현황 평가 | C02-1 1.2.1 | 현행업무흐름도, 현행업무분장표 |
| 39 | 1.1.1.3.4 | 차입금 현행업무 분석 | 9d | 2007-05-21 A | 2007-06-01 A | 100% | 2007-05-21 | 2007-06-01 | 9d | start no earlier than 2007-05-21 | 김경희 | 72h | 72h | 9 | 9 | 9 | 현황 평가 | C02-1 1.2.1 | 현행업무흐름도, 현행업무분장표 |
| 40 | 1.1.1.3.5 | 보증서현행업무 분석 | 9d | 2007-05-21 A | 2007-06-01 A | 100% | 2007-05-21 | 2007-06-01 | 9d | start no earlier than 2007-05-21 | 송재규; 표기웅 | 144h | 144h | 18 | 18 | 18 | 현황 평가 | C02-1 1.2.1 | 현행업무흐름도, 현행업무분장표 |
| 41 | 1.1.1.3.6 | 전자결재 현행업무 분석 | 9d | 2007-05-21 A | 2007-06-01 A | 100% | 2007-05-21 | 2007-06-01 | 9d | start no earlier than 2007-05-21 | 송재규; 표기웅 | 144h | 144h | 18 | 18 | 18 | 현황 평가 | C02-1 1.2.1 | 현행업무흐름도, 현행업무분장표 |
| 42 | 1.1.1.3.7 | 통계정보 현행업무 분석 | 8d | 2007-05-21 A | 2007-05-31 A | 100% | 2007-05-21 | 2007-05-31 | 8d | start no earlier than 2007-05-21 | 윤승종; 차호병 | 128h | 128h | 16 | 16 | 16 | 현황 평가 | C02-1 1.2.1 | 현행업무흐름도, 현행업무분장표 |
| 43 | 1.1.1.3.8 | 개인심사 현행업무 분석 | 9d | 2007-05-21 A | 2007-06-01 A | 100% | 2007-05-21 | 2007-06-01 | 9d | start no earlier than 2007-05-21 | 전형남; TBD1 | 144h | 144h | 18 | 18 | 18 | 현황 평가 | C02-1 1.2.1 | 현행업무흐름도, 현행업무분장표 |
| 44 | 1.1.1.3.9 | 기업심사 현행업무 분석 | 9d | 2007-05-21 A | 2007-06-01 A | 100% | 2007-05-21 | 2007-06-01 | 9d | start no earlier than 2007-05-21 | 김영석 | 72h | 72h | 9 | 9 | 9 | 현황 평가 | C02-1 1.2.1 | 현행업무흐름도, 현행업무분장표 |
| 45 | 1.1.1.3.10 | 신용조사 현행업무 분석 | 9d | 2007-05-21 A | 2007-06-01 A | 100% | 2007-05-21 | 2007-06-01 | 9d | start no earlier than 2007-05-21 | 김형근 | 72h | 72h | 9 | 9 | 9 | 현황 평가 | C02-1 1.2.1 | 현행업무흐름도, 현행업무분장표 |
| 46 | 1.1.1.3.11 | 한도관리 현행업무 분석 | 9d | 2007-05-21 A | 2007-06-01 A | 100% | 2007-05-21 | 2007-06-01 | 9d | start no earlier than 2007-05-21 | 차호병; 전형남 | 144h | 144h | 18 | 18 | 18 | 현황 평가 | C02-1 1.2.1 | 현행업무흐름도, 현행업무분장표 |
| 47 | 1.1.1.3.12 | 금리관리 현행업무 분석 | 9d | 2007-05-21 A | 2007-06-01 A | 100% | 2007-05-21 | 2007-06-01 | 9d | start no earlier than 2007-05-21 | 윤승종; 전형남 | 144h | 144h | 18 | 18 | 18 | 현황 평가 | C02-1 1.2.1 | 현행업무흐름도, 현행업무분장표 |
| 48 | 1.1.1.3.13 | 국민주택기금 현행업무 분석 | 9d | 2007-05-21 A | 2007-06-01 A | 100% | 2007-05-21 | 2007-06-01 | 9d | start no earlier than 2007-05-21 | 지용근; TBD2 | 144h | 144h | 18 | 18 | 18 | 현황 평가 | C02-1 1.2.1 | 현행업무흐름도, 현행업무분장표 |
| 49 | 1.1.1.3.14 | 농업종합자금 현행업무 분석 | 9d | 2007-05-21 A | 2007-06-01 A | 100% | 2007-05-21 | 2007-06-01 | 9d | start no earlier than 2007-05-21 | 지용근; 김정석 | 144h | 144h | 18 | 18 | 18 | 현황 평가 | C02-1 1.2.1 | 현행업무흐름도, 현행업무분장표 |
| 50 | 1.1.1.3.15 | 감정담보현행업무 분석 | 9d | 2007-05-21 A | 2007-06-01 A | 100% | 2007-05-21 | 2007-06-01 | 9d | start no earlier than 2007-05-21 | 정재순 | 72h | 72h | 9 | 9 | 9 | 현황 평가 | C02-1 1.2.1 | 현행업무흐름도, 현행업무분장표 |
| 51 | 1.1.1.4 | **현행업무 분석4** | 4d | 2007-06-04 A | 2007-06-08 A | 100% | 2007-06-04 | 2007-06-08 | 4d |  |  | 704h | 704h | 88 | 88 | 88 | 현황 평가 | C02-1 1.2.1 |  |
| 52 | 1.1.1.4.1 | 실행(외대포함) 현행업무분석 | 4d | 2007-06-04 A | 2007-06-08 A | 100% | 2007-06-04 | 2007-06-08 | 4d | start no earlier than 2007-06-04 | 김백기; 김영보; 이창수 | 96h | 96h | 12 | 12 | 12 | 현황 평가 | C02-1 1.2.1 | 현행업무흐름도, 현행업무분장표 |
| 53 | 1.1.1.4.2 | 상환/매각(외대포함) 현행업무 분석 | 4d | 2007-06-04 A | 2007-06-08 A | 100% | 2007-06-04 | 2007-06-08 | 4d | start no earlier than 2007-06-04 | 양혜란; 서정호; 송진현 | 96h | 96h | 12 | 12 | 12 | 현황 평가 | C02-1 1.2.1 | 현행업무흐름도, 현행업무분장표 |
| 54 | 1.1.1.4.3 | 여신등록 현행업무 분석 | 4d | 2007-06-04 A | 2007-06-08 A | 100% | 2007-06-04 | 2007-06-08 | 4d | start no earlier than 2007-06-04 | 윤승종; 차호병 | 64h | 64h | 8 | 8 | 8 | 현황 평가 | C02-1 1.2.1 | 현행업무흐름도, 현행업무분장표 |
| 55 | 1.1.1.4.4 | 차입금현행업무분석 | 2d | 2007-06-04 A | 2007-06-05 A | 100% | 2007-06-04 | 2007-06-05 | 2d | start no earlier than 2007-06-04 | 윤승종; 차호병 | 32h | 32h | 4 | 4 | 4 | 현황 평가 | C02-1 1.2.1 | 현행업무흐름도, 현행업무분장표 |
| 56 | 1.1.1.4.5 | 개인심사 현행업무 분석 | 4d | 2007-06-04 A | 2007-06-08 A | 100% | 2007-06-04 | 2007-06-08 | 4d | start no earlier than 2007-06-04 | 전형남; TBD1 | 64h | 64h | 8 | 8 | 8 | 현황 평가 | C02-1 1.2.1 | 현행업무흐름도, 현행업무분장표 |
| 57 | 1.1.1.4.6 | 기업심사 현행업무 분석 | 4d | 2007-06-04 A | 2007-06-08 A | 100% | 2007-06-04 | 2007-06-08 | 4d | start no earlier than 2007-06-04 | 김영석 | 32h | 32h | 4 | 4 | 4 | 현황 평가 | C02-1 1.2.1 | 현행업무흐름도, 현행업무분장표 |
| 58 | 1.1.1.4.7 | 신용조사 현행업무 분석 | 4d | 2007-06-04 A | 2007-06-08 A | 100% | 2007-06-04 | 2007-06-08 | 4d | start no earlier than 2007-06-04 | 김형근 | 32h | 32h | 4 | 4 | 4 | 현황 평가 | C02-1 1.2.1 | 현행업무흐름도, 현행업무분장표 |
| 59 | 1.1.1.4.8 | 한도관리 현행업무 분석 | 4d | 2007-06-04 A | 2007-06-08 A | 100% | 2007-06-04 | 2007-06-08 | 4d | start no earlier than 2007-06-04 | 차호병; 전형남 | 64h | 64h | 8 | 8 | 8 | 현황 평가 | C02-1 1.2.1 | 현행업무흐름도, 현행업무분장표 |
| 60 | 1.1.1.4.9 | 금리관리 현행업무 분석 | 4d | 2007-06-04 A | 2007-06-08 A | 100% | 2007-06-04 | 2007-06-08 | 4d | start no earlier than 2007-06-04 | 윤승종; 전형남 | 64h | 64h | 8 | 8 | 8 | 현황 평가 | C02-1 1.2.1 | 현행업무흐름도, 현행업무분장표 |
| 61 | 1.1.1.4.10 | 국민주택기금 현행업무 분석 | 4d | 2007-06-04 A | 2007-06-08 A | 100% | 2007-06-04 | 2007-06-08 | 4d | start no earlier than 2007-06-04 | 지용근; TBD2 | 64h | 64h | 8 | 8 | 8 | 현황 평가 | C02-1 1.2.1 | 현행업무흐름도, 현행업무분장표 |
| 62 | 1.1.1.4.11 | 농업종합자금 현행업무 분석 | 4d | 2007-06-04 A | 2007-06-08 A | 100% | 2007-06-04 | 2007-06-08 | 4d | start no earlier than 2007-06-04 | 지용근; 김정석 | 64h | 64h | 8 | 8 | 8 | 현황 평가 | C02-1 1.2.1 | 현행업무흐름도, 현행업무분장표 |
| 63 | 1.1.1.4.12 | 감정담보현행업무 분석 | 4d | 2007-06-04 A | 2007-06-08 A | 100% | 2007-06-04 | 2007-06-08 | 4d | start no earlier than 2007-06-04 | 정재순 | 32h | 32h | 4 | 4 | 4 | 현황 평가 | C02-1 1.2.1 | 현행업무흐름도, 현행업무분장표 |

| ID | WBS | Task | Duration | Start | Finish | Complete | Baseline start | Baseline finish | Baseline duration | Constraint | Resources | Work | Actual work | Cost | Baseline cost | Actual cost | Text20 | Text26 | Text30 |
| --- | --- | --- | --- | --- | --- | --- | --- | --- | --- | --- | --- | --- | --- | --- | --- | --- | --- | --- | --- |
| 64 | 1.1.2 | **현행시스템 분석** | 30d | 2007-04-25 A | 2007-06-08 A | 100% | 2007-04-25 | 2007-06-08 | 30d |  |  | 6504h | 6504h | 813 | 813 | 813 | 현황 평가 | C02-1 1.2.1 |  |
| 65 | 1.1.2 | **현행시스템 분석1** | 7d | 2007-04-25 A | 2007-05-04 A | 100% | 2007-04-25 | 2007-05-04 | 7d | start no earlier than 2007-04-25 |  | 1512h | 1512h | 189 | 189 | 189 | 현황 평가 | C02-1 1.2.1 |  |
| 66 | 1.1.2.1 | 여신공통 현행시스템분석 | 7d | 2007-04-25 A | 2007-05-04 A | 100% | 2007-04-25 | 2007-05-04 | 7d | start no earlier than 2007-04-25 | 이창수 | 56h | 56h | 7 | 7 | 7 | 현황 평가 | C02-1 1.2.1 | 현행시스템분석서 |
| 67 | 1.1.2.2 | 실행(외대포함) 현행시스템 분석 | 7d | 2007-04-25 A | 2007-05-04 A | 100% | 2007-04-25 | 2007-05-04 | 7d | start no earlier than 2007-04-25 | 김백기; 김영보; 이창수 | 168h | 168h | 21 | 21 | 21 | 현황 평가 | C02-1 1.2.1 | 현행시스템분석서 |
| 68 | 1.1.2.3 | 상환/매각(외대포함) 현행시스템 분석 | 7d | 2007-04-25 A | 2007-05-04 A | 100% | 2007-04-25 | 2007-05-04 | 7d | start no earlier than 2007-04-25 | 양혜란; 서정호; 송진현 | 168h | 168h | 21 | 21 | 21 | 현황 평가 | C02-1 1.2.1 | 현행시스템분석서 |
| 69 | 1.1.2.4 | 여신등록 현행시스템 분석 | 7d | 2007-04-25 A | 2007-05-04 A | 100% | 2007-04-25 | 2007-05-04 | 7d | start no earlier than 2007-04-25 | 윤승종; 차호병 | 112h | 112h | 14 | 14 | 14 | 현황 평가 | C02-1 1.2.1 | 현행시스템분석서 |
| 70 | 1.1.2.5 | 차입금 현행시스템 분석 | 7d | 2007-04-25 A | 2007-05-04 A | 100% | 2007-04-25 | 2007-05-04 | 7d | start no earlier than 2007-04-25 | 김경희 | 56h | 56h | 7 | 7 | 7 | 현황 평가 | C02-1 1.2.1 | 현행시스템분석서 |
| 71 | 1.1.2.6 | 보증서현행시스템 분석 | 7d | 2007-04-25 A | 2007-05-04 A | 100% | 2007-04-25 | 2007-05-04 | 7d | start no earlier than 2007-04-25 | 송재규; 표기웅 | 112h | 112h | 14 | 14 | 14 | 현황 평가 | C02-1 1.2.1 | 현행시스템분석서 |
| 72 | 1.1.2.7 | 전자결재 현행시스템 분석 | 7d | 2007-04-25 A | 2007-05-04 A | 100% | 2007-04-25 | 2007-05-04 | 7d | start no earlier than 2007-04-25 | 송재규; 표기웅 | 112h | 112h | 14 | 14 | 14 | 현황 평가 | C02-1 1.2.1 | 현행시스템분석서 |
| 73 | 1.1.2.8 | 통계정보 현행시스템 분석 | 7d | 2007-04-25 A | 2007-05-04 A | 100% | 2007-04-25 | 2007-05-04 | 7d | start no earlier than 2007-04-25 | 윤승종; 차호병 | 112h | 112h | 14 | 14 | 14 | 현황 평가 | C02-1 1.2.1 | 현행시스템분석서 |
| 74 | 1.1.2.9 | 개인심사 현행시스템 분석 | 7d | 2007-04-25 A | 2007-05-04 A | 100% | 2007-04-25 | 2007-05-04 | 7d | start no earlier than 2007-04-25 | 전형남; TBD1 | 112h | 112h | 14 | 14 | 14 | 현황 평가 | C02-1 1.2.1 | 현행시스템분석서 |
| 75 | 1.1.2.10 | 기업심사 현행시스템 분석 | 7d | 2007-04-25 A | 2007-05-04 A | 100% | 2007-04-25 | 2007-05-04 | 7d | start no earlier than 2007-04-25 | 김영석 | 56h | 56h | 7 | 7 | 7 | 현황 평가 | C02-1 1.2.1 | 현행시스템분석서 |
| 76 | 1.1.2.11 | 신용조사 현행시스템 분석 | 7d | 2007-04-25 A | 2007-05-04 A | 100% | 2007-04-25 | 2007-05-04 | 7d | start no earlier than 2007-04-25 | 김형근 | 56h | 56h | 7 | 7 | 7 | 현황 평가 | C02-1 1.2.1 | 현행시스템분석서 |
| 77 | 1.1.2.12 | 한도관리 현행시스템 분석 | 7d | 2007-04-25 A | 2007-05-04 A | 100% | 2007-04-25 | 2007-05-04 | 7d | start no earlier than 2007-04-25 | 차호병; 전형남 | 112h | 112h | 14 | 14 | 14 | 현황 평가 | C02-1 1.2.1 | 현행시스템분석서 |
| 78 | 1.1.2.13 | 금리관리 현행시스템 분석 | 7d | 2007-04-25 A | 2007-05-04 A | 100% | 2007-04-25 | 2007-05-04 | 7d | start no earlier than 2007-04-25 | 윤승종; 전형남 | 112h | 112h | 14 | 14 | 14 | 현황 평가 | C02-1 1.2.1 | 현행시스템분석서 |
| 79 | 1.1.2.15 | 농업종합자금 현행시스템 분석 | 7d | 2007-04-25 A | 2007-05-04 A | 100% | 2007-04-25 | 2007-05-04 | 7d | start no earlier than 2007-04-25 | 지용근; 김정석 | 112h | 112h | 14 | 14 | 14 | 현황 평가 | C02-1 1.2.1 | 현행시스템분석서 |
| 80 | 1.1.2.16 | 감정담보현행시스템 분석 | 7d | 2007-04-25 A | 2007-05-04 A | 100% | 2007-04-25 | 2007-05-04 | 7d | start no earlier than 2007-04-25 | 정재순 | 56h | 56h | 7 | 7 | 7 | 현황 평가 | C02-1 1.2.1 | 현행시스템분석서 |
| 81 | 1.1.2 | **현행시스템 분석2** | 10d | 2007-05-07 A | 2007-05-18 A | 100% | 2007-05-07 | 2007-05-18 | 10d |  |  | 2240h | 2240h | 280 | 280 | 280 | 현황 평가 | C02-1 1.2.1 |  |
| 82 | 1.1.2.1 | 여신공통 현행시스템분석 | 10d | 2007-05-07 A | 2007-05-18 A | 100% | 2007-05-07 | 2007-05-18 | 10d | start no earlier than 2007-05-07 | 이창수 | 80h | 80h | 10 | 10 | 10 | 현황 평가 | C02-1 1.2.1 | 현행시스템분석서 |
| 83 | 1.1.2.2 | 실행(외대포함) 현행시스템 분석 | 10d | 2007-05-07 A | 2007-05-18 A | 100% | 2007-05-07 | 2007-05-18 | 10d | start no earlier than 2007-05-07 | 김백기; 김영보; 이창수 | 240h | 240h | 30 | 30 | 30 | 현황 평가 | C02-1 1.2.1 | 현행시스템분석서 |
| 84 | 1.1.2.3 | 상환/매각(외대포함) 현행시스템 분석 | 10d | 2007-05-07 A | 2007-05-18 A | 100% | 2007-05-07 | 2007-05-18 | 10d | start no earlier than 2007-05-07 | 양혜란; 서정호; 송진현 | 240h | 240h | 30 | 30 | 30 | 현황 평가 | C02-1 1.2.1 | 현행시스템분석서 |
| 85 | 1.1.2.4 | 여신등록 현행시스템 분석 | 10d | 2007-05-07 A | 2007-05-18 A | 100% | 2007-05-07 | 2007-05-18 | 10d | start no earlier than 2007-05-07 | 윤승종; 차호병 | 160h | 160h | 20 | 20 | 20 | 현황 평가 | C02-1 1.2.1 | 현행시스템분석서 |
| 86 | 1.1.2.5 | 차입금 현행시스템 분석 | 10d | 2007-05-07 A | 2007-05-18 A | 100% | 2007-05-07 | 2007-05-18 | 10d | start no earlier than 2007-05-07 | 김경희 | 80h | 80h | 10 | 10 | 10 | 현황 평가 | C02-1 1.2.1 | 현행시스템분석서 |
| 87 | 1.1.2.6 | 보증서현행시스템 분석 | 10d | 2007-05-07 A | 2007-05-18 A | 100% | 2007-05-07 | 2007-05-18 | 10d | start no earlier than 2007-05-07 | 송재규; 표기웅 | 160h | 160h | 20 | 20 | 20 | 현황 평가 | C02-1 1.2.1 | 현행시스템분석서 |
| 88 | 1.1.2.7 | 전자결재 현행시스템 분석 | 10d | 2007-05-07 A | 2007-05-18 A | 100% | 2007-05-07 | 2007-05-18 | 10d | start no earlier than 2007-05-07 | 송재규; 표기웅 | 160h | 160h | 20 | 20 | 20 | 현황 평가 | C02-1 1.2.1 | 현행시스템분석서 |
| 89 | 1.1.2.8 | 통계정보 현행시스템 분석 | 10d | 2007-05-07 A | 2007-05-18 A | 100% | 2007-05-07 | 2007-05-18 | 10d | start no earlier than 2007-05-07 | 윤승종; 차호병 | 160h | 160h | 20 | 20 | 20 | 현황 평가 | C02-1 1.2.1 | 현행시스템분석서 |
| 90 | 1.1.2.9 | 개인심사 현행시스템 분석 | 10d | 2007-05-07 A | 2007-05-18 A | 100% | 2007-05-07 | 2007-05-18 | 10d | start no earlier than 2007-05-07 | 전형남; TBD1 | 160h | 160h | 20 | 20 | 20 | 현황 평가 | C02-1 1.2.1 | 현행시스템분석서 |
| 91 | 1.1.2.10 | 기업심사 현행시스템 분석 | 10d | 2007-05-07 A | 2007-05-18 A | 100% | 2007-05-07 | 2007-05-18 | 10d | start no earlier than 2007-05-07 | 김영석 | 80h | 80h | 10 | 10 | 10 | 현황 평가 | C02-1 1.2.1 | 현행시스템분석서 |
| 92 | 1.1.2.11 | 신용조사 현행시스템 분석 | 10d | 2007-05-07 A | 2007-05-18 A | 100% | 2007-05-07 | 2007-05-18 | 10d | start no earlier than 2007-05-07 | 김형근 | 80h | 80h | 10 | 10 | 10 | 현황 평가 | C02-1 1.2.1 | 현행시스템분석서 |
| 93 | 1.1.2.12 | 한도관리 현행시스템 분석 | 10d | 2007-05-07 A | 2007-05-18 A | 100% | 2007-05-07 | 2007-05-18 | 10d | start no earlier than 2007-05-07 | 차호병; 전형남 | 160h | 160h | 20 | 20 | 20 | 현황 평가 | C02-1 1.2.1 | 현행시스템분석서 |
| 94 | 1.1.2.13 | 금리관리 현행시스템 분석 | 10d | 2007-05-07 A | 2007-05-18 A | 100% | 2007-05-07 | 2007-05-18 | 10d | start no earlier than 2007-05-07 | 윤승종; 전형남 | 160h | 160h | 20 | 20 | 20 | 현황 평가 | C02-1 1.2.1 | 현행시스템분석서 |
| 95 | 1.1.2.14 | 국민주택기금 현행시스템 분석 | 5d | 2007-05-14 A | 2007-05-18 A | 100% | 2007-05-14 | 2007-05-18 | 5d | start no earlier than 2007-05-14 | 지용근; TBD2 | 80h | 80h | 10 | 10 | 10 | 현황 평가 | C02-1 1.2.1 | 현행시스템분석서 |
| 96 | 1.1.2.15 | 농업종합자금 현행시스템 분석 | 10d | 2007-05-07 A | 2007-05-18 A | 100% | 2007-05-07 | 2007-05-18 | 10d | start no earlier than 2007-05-07 | 지용근; 김정석 | 160h | 160h | 20 | 20 | 20 | 현황 평가 | C02-1 1.2.1 | 현행시스템분석서 |
| 97 | 1.1.2.16 | 감정담보현행시스템 분석 | 10d | 2007-05-07 A | 2007-05-18 A | 100% | 2007-05-07 | 2007-05-18 | 10d | start no earlier than 2007-05-07 | 정재순 | 80h | 80h | 10 | 10 | 10 | 현황 평가 | C02-1 1.2.1 | 현행시스템분석서 |

| ID | WBS | Task | Duration | Start | Finish | Complete | Baseline start | Baseline finish | Baseline duration | Constraint | Resources | Work | Actual work | Cost | Baseline cost | Actual cost | Text20 | Text26 | Text30 |
| --- | --- | --- | --- | --- | --- | --- | --- | --- | --- | --- | --- | --- | --- | --- | --- | --- | --- | --- | --- |
| 98 | 1.1.2 | **현행시스템 분석3** | 9d | 2007-05-21 A | 2007-06-01 A | 100% | 2007-05-21 | 2007-06-01 | 9d |  |  | 2064h | 2064h | 258 | 258 | 258 | 현황 평가 | C02-1 1.2.1 |  |
| 99 | 1.1.2.1 | 여신공통 현행시스템분석 | 8d | 2007-05-21 A | 2007-05-31 A | 100% | 2007-05-21 | 2007-05-31 | 8d | start no earlier than 2007-05-21 | 이창수 | 64h | 64h | 8 | 8 | 8 | 현황 평가 | C02-1 1.2.1 | 현행시스템분석서 |
| 100 | 1.1.2.2 | 실행(외대포함) 현행시스템 분석 | 9d | 2007-05-21 A | 2007-06-01 A | 100% | 2007-05-21 | 2007-06-01 | 9d | start no earlier than 2007-05-21 | 김백기; 김영보; 이창수 | 216h | 216h | 27 | 27 | 27 | 현황 평가 | C02-1 1.2.1 | 현행시스템분석서 |
| 101 | 1.1.2.3 | 상환/매각(외대포함) 현행시스템 분석 | 9d | 2007-05-21 A | 2007-06-01 A | 100% | 2007-05-21 | 2007-06-01 | 9d | start no earlier than 2007-05-21 | 양혜란; 서정호; 송진현 | 216h | 216h | 27 | 27 | 27 | 현황 평가 | C02-1 1.2.1 | 현행시스템분석서 |
| 102 | 1.1.2.4 | 여신등록 현행시스템 분석 | 9d | 2007-05-21 A | 2007-06-01 A | 100% | 2007-05-21 | 2007-06-01 | 9d | start no earlier than 2007-05-21 | 윤승종; 차호병 | 144h | 144h | 18 | 18 | 18 | 현황 평가 | C02-1 1.2.1 | 현행시스템분석서 |
| 103 | 1.1.2.5 | 차입금 현행시스템 분석 | 9d | 2007-05-21 A | 2007-06-01 A | 100% | 2007-05-21 | 2007-06-01 | 9d | start no earlier than 2007-05-21 | 김경희 | 72h | 72h | 9 | 9 | 9 | 현황 평가 | C02-1 1.2.1 | 현행시스템분석서 |
| 104 | 1.1.2.6 | 보증서현행시스템 분석 | 9d | 2007-05-21 A | 2007-06-01 A | 100% | 2007-05-21 | 2007-06-01 | 9d | start no earlier than 2007-05-21 | 송재규; 표기웅 | 144h | 144h | 18 | 18 | 18 | 현황 평가 | C02-1 1.2.1 | 현행시스템분석서 |
| 105 | 1.1.2.7 | 전자결재 현행시스템 분석 | 9d | 2007-05-21 A | 2007-06-01 A | 100% | 2007-05-21 | 2007-06-01 | 9d | start no earlier than 2007-05-21 | 송재규; 표기웅 | 144h | 144h | 18 | 18 | 18 | 현황 평가 | C02-1 1.2.1 | 현행시스템분석서 |
| 106 | 1.1.2.8 | 통계정보 현행시스템 분석 | 8d | 2007-05-21 A | 2007-05-31 A | 100% | 2007-05-21 | 2007-05-31 | 8d | start no earlier than 2007-05-21 | 윤승종; 차호병 | 128h | 128h | 16 | 16 | 16 | 현황 평가 | C02-1 1.2.1 | 현행시스템분석서 |
| 107 | 1.1.2.9 | 개인심사 현행시스템 분석 | 9d | 2007-05-21 A | 2007-06-01 A | 100% | 2007-05-21 | 2007-06-01 | 9d | start no earlier than 2007-05-21 | 전형남; TBD1 | 144h | 144h | 18 | 18 | 18 | 현황 평가 | C02-1 1.2.1 | 현행시스템분석서 |
| 108 | 1.1.2.10 | 기업심사 현행시스템 분석 | 9d | 2007-05-21 A | 2007-06-01 A | 100% | 2007-05-21 | 2007-06-01 | 9d | start no earlier than 2007-05-21 | 김영석 | 72h | 72h | 9 | 9 | 9 | 현황 평가 | C02-1 1.2.1 | 현행시스템분석서 |
| 109 | 1.1.2.11 | 신용조사 현행시스템 분석 | 9d | 2007-05-21 A | 2007-06-01 A | 100% | 2007-05-21 | 2007-06-01 | 9d | start no earlier than 2007-05-21 | 김형근 | 72h | 72h | 9 | 9 | 9 | 현황 평가 | C02-1 1.2.1 | 현행시스템분석서 |
| 110 | 1.1.2.12 | 한도관리 현행시스템 분석 | 9d | 2007-05-21 A | 2007-06-01 A | 100% | 2007-05-21 | 2007-06-01 | 9d | start no earlier than 2007-05-21 | 차호병; 전형남 | 144h | 144h | 18 | 18 | 18 | 현황 평가 | C02-1 1.2.1 | 현행시스템분석서 |
| 111 | 1.1.2.13 | 금리관리 현행시스템 분석 | 9d | 2007-05-21 A | 2007-06-01 A | 100% | 2007-05-21 | 2007-06-01 | 9d | start no earlier than 2007-05-21 | 윤승종; 전형남 | 144h | 144h | 18 | 18 | 18 | 현황 평가 | C02-1 1.2.1 | 현행시스템분석서 |
| 112 | 1.1.2.14 | 국민주택기금 현행시스템 분석 | 9d | 2007-05-21 A | 2007-06-01 A | 100% | 2007-05-21 | 2007-06-01 | 9d | start no earlier than 2007-05-21 | 지용근; TBD2 | 144h | 144h | 18 | 18 | 18 | 현황 평가 | C02-1 1.2.1 | 현행시스템분석서 |
| 113 | 1.1.2.15 | 농업종합자금 현행시스템 분석 | 9d | 2007-05-21 A | 2007-06-01 A | 100% | 2007-05-21 | 2007-06-01 | 9d | start no earlier than 2007-05-21 | 지용근; 김정석 | 144h | 144h | 18 | 18 | 18 | 현황 평가 | C02-1 1.2.1 | 현행시스템분석서 |
| 114 | 1.1.2.16 | 감정담보현행시스템 분석 | 9d | 2007-05-21 A | 2007-06-01 A | 100% | 2007-05-21 | 2007-06-01 | 9d | start no earlier than 2007-05-21 | 정재순 | 72h | 72h | 9 | 9 | 9 | 현황 평가 | C02-1 1.2.1 | 현행시스템분석서 |
| 115 | 1.1.2 | **현행시스템 분석4** | 4d | 2007-06-04 A | 2007-06-08 A | 100% | 2007-06-04 | 2007-06-08 | 4d |  |  | 688h | 688h | 86 | 86 | 86 | 현황 평가 | C02-1 1.2.1 |  |
| 116 | 1.1.2.2 | 실행(외대포함) 현행시스템 분석 | 4d | 2007-06-04 A | 2007-06-08 A | 100% | 2007-06-04 | 2007-06-08 | 4d | start no earlier than 2007-06-04 | 김백기; 김영보; 이창수 | 96h | 96h | 12 | 12 | 12 | 현황 평가 | C02-1 1.2.1 | 현행시스템분석서 |
| 117 | 1.1.2.3 | 상환/매각(외대포함) 현행시스템 분석 | 4d | 2007-06-04 A | 2007-06-08 A | 100% | 2007-06-04 | 2007-06-08 | 4d | start no earlier than 2007-06-04 | 양혜란; 서정호; 송진현 | 96h | 96h | 12 | 12 | 12 | 현황 평가 | C02-1 1.2.1 | 현행시스템분석서 |
| 118 | 1.1.2.4 | 여신등록 현행시스템 분석 | 4d | 2007-06-04 A | 2007-06-08 A | 100% | 2007-06-04 | 2007-06-08 | 4d | start no earlier than 2007-06-04 | 윤승종; 차호병 | 64h | 64h | 8 | 8 | 8 | 현황 평가 | C02-1 1.2.1 | 현행시스템분석서 |
| 119 | 1.1.2.5 | 차입금 현행시스템 분석 | 2d | 2007-06-04 A | 2007-06-05 A | 100% | 2007-06-04 | 2007-06-05 | 2d | start no earlier than 2007-06-04 | 김경희 | 16h | 16h | 2 | 2 | 2 | 현황 평가 | C02-1 1.2.1 | 현행시스템분석서 |
| 120 | 1.1.2.9 | 개인심사 현행시스템 분석 | 4d | 2007-06-04 A | 2007-06-08 A | 100% | 2007-06-04 | 2007-06-08 | 4d | start no earlier than 2007-06-04 | 전형남; TBD1 | 64h | 64h | 8 | 8 | 8 | 현황 평가 | C02-1 1.2.1 | 현행시스템분석서 |
| 121 | 1.1.2.10 | 기업심사 현행시스템 분석 | 4d | 2007-06-04 A | 2007-06-08 A | 100% | 2007-06-04 | 2007-06-08 | 4d | start no earlier than 2007-06-04 | 김영석 | 32h | 32h | 4 | 4 | 4 | 현황 평가 | C02-1 1.2.1 | 현행시스템분석서 |
| 122 | 1.1.2.11 | 신용조사 현행시스템 분석 | 4d | 2007-06-04 A | 2007-06-08 A | 100% | 2007-06-04 | 2007-06-08 | 4d | start no earlier than 2007-06-04 | 김형근 | 32h | 32h | 4 | 4 | 4 | 현황 평가 | C02-1 1.2.1 | 현행시스템분석서 |
| 123 | 1.1.2.12 | 한도관리 현행시스템 분석 | 4d | 2007-06-04 A | 2007-06-08 A | 100% | 2007-06-04 | 2007-06-08 | 4d | start no earlier than 2007-06-04 | 차호병; 전형남 | 64h | 64h | 8 | 8 | 8 | 현황 평가 | C02-1 1.2.1 | 현행시스템분석서 |
| 124 | 1.1.2.13 | 금리관리 현행시스템 분석 | 4d | 2007-06-04 A | 2007-06-08 A | 100% | 2007-06-04 | 2007-06-08 | 4d | start no earlier than 2007-06-04 | 윤승종; 전형남 | 64h | 64h | 8 | 8 | 8 | 현황 평가 | C02-1 1.2.1 | 현행시스템분석서 |
| 125 | 1.1.2.14 | 국민주택기금 현행시스템 분석 | 4d | 2007-06-04 A | 2007-06-08 A | 100% | 2007-06-04 | 2007-06-08 | 4d | start no earlier than 2007-06-04 | 지용근; TBD2 | 64h | 64h | 8 | 8 | 8 | 현황 평가 | C02-1 1.2.1 | 현행시스템분석서 |
| 126 | 1.1.2.15 | 농업종합자금 현행시스템 분석 | 4d | 2007-06-04 A | 2007-06-08 A | 100% | 2007-06-04 | 2007-06-08 | 4d | start no earlier than 2007-06-04 | 지용근; 김정석 | 64h | 64h | 8 | 8 | 8 | 현황 평가 | C02-1 1.2.1 | 현행시스템분석서 |
| 127 | 1.1.2.16 | 감정담보현행시스템 분석 | 4d | 2007-06-04 A | 2007-06-08 A | 100% | 2007-06-04 | 2007-06-08 | 4d | start no earlier than 2007-06-04 | 정재순 | 32h | 32h | 4 | 4 | 4 | 현황 평가 | C02-1 1.2.1 | 현행시스템분석서 |

| ID | WBS | Task | Duration | Start | Finish | Complete | Baseline start | Baseline finish | Baseline duration | Constraint | Resources | Work | Actual work | Cost | Baseline cost | Actual cost | Text20 | Text26 | Text30 |
| --- | --- | --- | --- | --- | --- | --- | --- | --- | --- | --- | --- | --- | --- | --- | --- | --- | --- | --- | --- |
| 128 | 1.1.4 | **인터뷰 실시** | 17d | 2007-05-21 A | 2007-06-14 A | 100% | 2007-05-21 | 2007-06-14 | 17d | start no earlier than 2007-04-25 |  | 1344h | 1344h | 168 | 168 | 168 | 현황 평가 | C02-1 1.2.1 |  |
| 129 | 1.1.4.1 | 인터뷰 계획 | 4d | 2007-05-21 A | 2007-05-25 A | 100% | 2007-05-21 | 2007-05-25 | 4d | start no earlier than 2007-05-21 | 서종민; 이창수; 지용근 | 96h | 96h | 12 | 12 | 12 | 현황 평가 | C02-1 1.2.1 | *인터뷰일정 |
| 130 | 1.1.4.2 | 인터뷰 실시 | 13d | 2007-05-28 A | 2007-06-14 A | 100% | 2007-05-28 | 2007-06-14 | 13d | start no earlier than 2007-05-28 | 서종민; 이창수; 지용근; 김백기; 양혜란; 차호병; 김경희; 송재규; 김영석; 전형남; TBD2; 정재순 | 1248h | 1248h | 156 | 156 | 156 | 현황 평가 | C02-1 1.2.1 | (인터뷰결과)회의록 |
| 131 | 1.2 | **요구사항정의** | 9d | 2007-06-04 A | 2007-06-15 A | 100% | 2007-06-04 | 2007-06-15 | 9d | start no earlier than 2007-04-25 |  | 4304h | 4304h | 538 | 538 | 538 | 요구사항 정의 | C02-1 1.2.2 |  |
| 132 | 1.2.1 | **기능요구사항 정의** | 9d | 2007-06-04 A | 2007-06-15 A | 100% | 2007-06-04 | 2007-06-15 | 9d | start no earlier than 2007-04-25 |  | 2088h | 2088h | 261 | 261 | 261 | 요구사항 정의 | C02-1 1.2.2 |  |
| 133 | 1.2.1.1 | 여신공통 기능요구사항 정의 | 9d | 2007-06-04 A | 2007-06-15 A | 100% | 2007-06-04 | 2007-06-15 | 9d | start no earlier than 2007-06-04 | 이창수 | 72h | 72h | 9 | 9 | 9 | 요구사항 정의 | C02-1 1.2.2 | 현업요구사항정의서 |
| 134 | 1.2.1.2 | 실행(외대포함) 기능요구사항 정의 | 9d | 2007-06-04 A | 2007-06-15 A | 100% | 2007-06-04 | 2007-06-15 | 9d | start no earlier than 2007-06-04 | 김백기; 김영보; 이창수 | 216h | 216h | 27 | 27 | 27 | 요구사항 정의 | C02-1 1.2.2 | 현업요구사항정의서 |
| 135 | 1.2.1.3 | 상환/매각(외대포함) 기능요구사항 정의 | 9d | 2007-06-04 A | 2007-06-15 A | 100% | 2007-06-04 | 2007-06-15 | 9d | start no earlier than 2007-06-04 | 양혜란; 서정호; 송진현 | 216h | 216h | 27 | 27 | 27 | 요구사항 정의 | C02-1 1.2.2 | 현업요구사항정의서 |
| 136 | 1.2.1.4 | 여신등록 기능요구사항 정의 | 9d | 2007-06-04 A | 2007-06-15 A | 100% | 2007-06-04 | 2007-06-15 | 9d | start no earlier than 2007-06-04 | 윤승종; 차호병 | 144h | 144h | 18 | 18 | 18 | 요구사항 정의 | C02-1 1.2.2 | 현업요구사항정의서 |
| 137 | 1.2.1.5 | 차입금 기능요구사항 정의 | 9d | 2007-06-04 A | 2007-06-15 A | 100% | 2007-06-04 | 2007-06-15 | 9d | start no earlier than 2007-06-04 | 김경희 | 72h | 72h | 9 | 9 | 9 | 요구사항 정의 | C02-1 1.2.2 | 현업요구사항정의서 |
| 138 | 1.2.1.6 | 보증서 기능요구사항 정의 | 9d | 2007-06-04 A | 2007-06-15 A | 100% | 2007-06-04 | 2007-06-15 | 9d | start no earlier than 2007-06-04 | 송재규; 표기웅 | 144h | 144h | 18 | 18 | 18 | 요구사항 정의 | C02-1 1.2.2 | 현업요구사항정의서 |
| 139 | 1.2.1.7 | 전자결재 기능요구사항 정의 | 9d | 2007-06-04 A | 2007-06-15 A | 100% | 2007-06-04 | 2007-06-15 | 9d | start no earlier than 2007-06-04 | 송재규; 표기웅 | 144h | 144h | 18 | 18 | 18 | 요구사항 정의 | C02-1 1.2.2 | 현업요구사항정의서 |
| 140 | 1.2.1.8 | 통계정보 기능요구사항 정의 | 9d | 2007-06-04 A | 2007-06-15 A | 100% | 2007-06-04 | 2007-06-15 | 9d | start no earlier than 2007-06-04 | 차호병; 윤승종 | 144h | 144h | 18 | 18 | 18 | 요구사항 정의 | C02-1 1.2.2 | 현업요구사항정의서 |
| 141 | 1.2.1.9 | 개인심사 기능요구사항 정의 | 9d | 2007-06-04 A | 2007-06-15 A | 100% | 2007-06-04 | 2007-06-15 | 9d | start no earlier than 2007-06-04 | 전형남; TBD1 | 144h | 144h | 18 | 18 | 18 | 요구사항 정의 | C02-1 1.2.2 | 현업요구사항정의서 |
| 142 | 1.2.1.10 | 기업심사 기능요구사항 정의 | 9d | 2007-06-04 A | 2007-06-15 A | 100% | 2007-06-04 | 2007-06-15 | 9d | start no earlier than 2007-06-04 | 김영석 | 72h | 72h | 9 | 9 | 9 | 요구사항 정의 | C02-1 1.2.2 | 현업요구사항정의서 |
| 143 | 1.2.1.11 | 신용조사 기능요구사항 정의 | 9d | 2007-06-04 A | 2007-06-15 A | 100% | 2007-06-04 | 2007-06-15 | 9d | start no earlier than 2007-06-04 | 김형근 | 72h | 72h | 9 | 9 | 9 | 요구사항 정의 | C02-1 1.2.2 | 현업요구사항정의서 |
| 144 | 1.2.1.12 | 한도관리 기능요구사항 정의 | 9d | 2007-06-04 A | 2007-06-15 A | 100% | 2007-06-04 | 2007-06-15 | 9d | start no earlier than 2007-06-04 | 전형남; 차호병 | 144h | 144h | 18 | 18 | 18 | 요구사항 정의 | C02-1 1.2.2 | 현업요구사항정의서 |
| 145 | 1.2.1.13 | 금리관리 기능요구사항 정의 | 9d | 2007-06-04 A | 2007-06-15 A | 100% | 2007-06-04 | 2007-06-15 | 9d | start no earlier than 2007-06-04 | 전형남; 윤승종 | 144h | 144h | 18 | 18 | 18 | 요구사항 정의 | C02-1 1.2.2 | 현업요구사항정의서 |
| 146 | 1.2.1.14 | 국민주택기금 기능요구사항 정의 | 9d | 2007-06-04 A | 2007-06-15 A | 100% | 2007-06-04 | 2007-06-15 | 9d | start no earlier than 2007-06-04 | TBD2; 지용근 | 144h | 144h | 18 | 18 | 18 | 요구사항 정의 | C02-1 1.2.2 | 현업요구사항정의서 |
| 147 | 1.2.1.15 | 농업종합자금 기능요구사항 정의 | 9d | 2007-06-04 A | 2007-06-15 A | 100% | 2007-06-04 | 2007-06-15 | 9d | start no earlier than 2007-06-04 | 지용근; 김정석 | 144h | 144h | 18 | 18 | 18 | 요구사항 정의 | C02-1 1.2.2 | 현업요구사항정의서 |
| 148 | 1.2.1.16 | 감정담보 기능요구사항 정의 | 9d | 2007-06-04 A | 2007-06-15 A | 100% | 2007-06-04 | 2007-06-15 | 9d | start no earlier than 2007-06-04 | 정재순 | 72h | 72h | 9 | 9 | 9 | 요구사항 정의 | C02-1 1.2.2 | 현업요구사항정의서 |
| 149 | 1.2.2 | **인터페이스요구사항 정의** | 9d | 2007-06-04 A | 2007-06-15 A | 100% | 2007-06-04 | 2007-06-15 | 9d | start no earlier than 2007-04-25 |  | 1976h | 1976h | 247 | 247 | 247 | 요구사항 정의 | C02-1 1.2.2 |  |
| 150 | 1.2.2.1 | 여신공통 인터페이스요구사항 정의 | 9d | 2007-06-04 A | 2007-06-15 A | 100% | 2007-06-04 | 2007-06-15 | 9d | start no earlier than 2007-06-04 | 이창수 | 72h | 72h | 9 | 9 | 9 | 요구사항 정의 | C02-1 1.2.2 | 현업요구사항정의서 |
| 151 | 1.2.2.2 | 실행(외대포함) 인터페이스요구사항 정의 | 9d | 2007-06-04 A | 2007-06-15 A | 100% | 2007-06-04 | 2007-06-15 | 9d | start no earlier than 2007-06-04 | 김백기; 김영보; 이창수 | 216h | 216h | 27 | 27 | 27 | 요구사항 정의 | C02-1 1.2.2 | 현업요구사항정의서 |
| 152 | 1.2.2.3 | 상환/매각(외대포함) 인터페이스요구사항 정의 | 9d | 2007-06-04 A | 2007-06-15 A | 100% | 2007-06-04 | 2007-06-15 | 9d | start no earlier than 2007-06-04 | 양혜란; 서정호; 송진현 | 216h | 216h | 27 | 27 | 27 | 요구사항 정의 | C02-1 1.2.2 | 현업요구사항정의서 |
| 153 | 1.2.2.4 | 여신등록 인터페이스요구사항 정의 | 9d | 2007-06-04 A | 2007-06-15 A | 100% | 2007-06-04 | 2007-06-15 | 9d | start no earlier than 2007-06-04 | 윤승종; 차호병 | 144h | 144h | 18 | 18 | 18 | 요구사항 정의 | C02-1 1.2.2 | 현업요구사항정의서 |
| 154 | 1.2.2.5 | 차입금 인터페이스요구사항 정의 | 7d | 2007-06-04 A | 2007-06-13 A | 100% | 2007-06-04 | 2007-06-13 | 7d | start no earlier than 2007-06-04 | 김경희 | 56h | 56h | 7 | 7 | 7 | 요구사항 정의 | C02-1 1.2.2 | 현업요구사항정의서 |
| 155 | 1.2.2.6 | 보증서 인터페이스요구사항 정의 | 7d | 2007-06-04 A | 2007-06-13 A | 100% | 2007-06-04 | 2007-06-13 | 7d | start no earlier than 2007-06-04 | 송재규; 표기웅 | 112h | 112h | 14 | 14 | 14 | 요구사항 정의 | C02-1 1.2.2 | 현업요구사항정의서 |
| 156 | 1.2.2.7 | 전자결재 인터페이스요구사항 정의 | 7d | 2007-06-04 A | 2007-06-13 A | 100% | 2007-06-04 | 2007-06-13 | 7d | start no earlier than 2007-06-04 | 송재규; 표기웅 | 112h | 112h | 14 | 14 | 14 | 요구사항 정의 | C02-1 1.2.2 | 현업요구사항정의서 |
| 157 | 1.2.2.8 | 통계정보 인터페이스요구사항 정의 | 7d | 2007-06-04 A | 2007-06-13 A | 100% | 2007-06-04 | 2007-06-13 | 7d | start no earlier than 2007-06-04 | 차호병; 윤승종 | 112h | 112h | 14 | 14 | 14 | 요구사항 정의 | C02-1 1.2.2 | 현업요구사항정의서 |
| 158 | 1.2.2.9 | 개인심사 인터페이스요구사항 정의 | 9d | 2007-06-04 A | 2007-06-15 A | 100% | 2007-06-04 | 2007-06-15 | 9d | start no earlier than 2007-06-04 | 전형남; TBD1 | 144h | 144h | 18 | 18 | 18 | 요구사항 정의 | C02-1 1.2.2 | 현업요구사항정의서 |
| 159 | 1.2.2.10 | 기업심사 인터페이스요구사항 정의 | 9d | 2007-06-04 A | 2007-06-15 A | 100% | 2007-06-04 | 2007-06-15 | 9d | start no earlier than 2007-06-04 | 김영석 | 72h | 72h | 9 | 9 | 9 | 요구사항 정의 | C02-1 1.2.2 | 현업요구사항정의서 |
| 160 | 1.2.2.11 | 신용조사 인터페이스요구사항 정의 | 9d | 2007-06-04 A | 2007-06-15 A | 100% | 2007-06-04 | 2007-06-15 | 9d | start no earlier than 2007-06-04 | 김형근 | 72h | 72h | 9 | 9 | 9 | 요구사항 정의 | C02-1 1.2.2 | 현업요구사항정의서 |
| 161 | 1.2.2.12 | 한도관리 인터페이스요구사항 정의 | 9d | 2007-06-04 A | 2007-06-15 A | 100% | 2007-06-04 | 2007-06-15 | 9d | start no earlier than 2007-06-04 | 전형남; 차호병 | 144h | 144h | 18 | 18 | 18 | 요구사항 정의 | C02-1 1.2.2 | 현업요구사항정의서 |
| 162 | 1.2.2.13 | 금리관리 인터페이스요구사항 정의 | 9d | 2007-06-04 A | 2007-06-15 A | 100% | 2007-06-04 | 2007-06-15 | 9d | start no earlier than 2007-06-04 | 전형남; 윤승종 | 144h | 144h | 18 | 18 | 18 | 요구사항 정의 | C02-1 1.2.2 | 현업요구사항정의서 |
| 163 | 1.2.2.14 | 국민주택기금 인터페이스요구사항 정의 | 9d | 2007-06-04 A | 2007-06-15 A | 100% | 2007-06-04 | 2007-06-15 | 9d | start no earlier than 2007-06-04 | TBD2; 지용근 | 144h | 144h | 18 | 18 | 18 | 요구사항 정의 | C02-1 1.2.2 | 현업요구사항정의서 |
| 164 | 1.2.2.15 | 농업종합자금 인터페이스요구사항 정의 | 9d | 2007-06-04 A | 2007-06-15 A | 100% | 2007-06-04 | 2007-06-15 | 9d | start no earlier than 2007-06-04 | 지용근; 김정석 | 144h | 144h | 18 | 18 | 18 | 요구사항 정의 | C02-1 1.2.2 | 현업요구사항정의서 |
| 165 | 1.2.2.16 | 감정담보 인터페이스요구사항 정의 | 9d | 2007-06-04 A | 2007-06-15 A | 100% | 2007-06-04 | 2007-06-15 | 9d | start no earlier than 2007-06-04 | 정재순 | 72h | 72h | 9 | 9 | 9 | 요구사항 정의 | C02-1 1.2.2 | 현업요구사항정의서 |

| ID | WBS | Task | Duration | Start | Finish | Complete | Baseline start | Baseline finish | Baseline duration | Constraint | Resources | Work | Actual work | Cost | Baseline cost | Actual cost | Text20 | Text26 | Text30 |
| --- | --- | --- | --- | --- | --- | --- | --- | --- | --- | --- | --- | --- | --- | --- | --- | --- | --- | --- | --- |
| 166 | 1.2.3 | **시스템화범위 결정** | 5d | 2007-06-11 A | 2007-06-15 A | 100% | 2007-06-11 | 2007-06-15 | 5d | start no earlier than 2007-04-25 |  | 240h | 240h | 30 | 30 | 30 | 요구사항 정의 | C02-1 1.2.2 |  |
| 167 | 1.2.3.1 | 여신계정 시스템화 범위 결정 | 5d | 2007-06-11 A | 2007-06-15 A | 100% | 2007-06-11 | 2007-06-15 | 5d | start no earlier than 2007-06-11 | 김백기; 김영보; 이창수 | 120h | 120h | 15 | 15 | 15 | 요구사항 정의 | C02-1 1.2.2 | 현업요구사항정의서 |
| 168 | 1.2.3.2 | 여신심사 시스템화 범위 결정 | 5d | 2007-06-11 A | 2007-06-15 A | 100% | 2007-06-11 | 2007-06-15 | 5d | start no earlier than 2007-06-11 | 양혜란; 서정호; 송진현 | 120h | 120h | 15 | 15 | 15 | 요구사항 정의 | C02-1 1.2.2 | 현업요구사항정의서 |
| 169 | 1.3 | **신논리모델구축** | 21d | 2007-06-18 A | 2007-07-16 A | 100% | 2007-06-18 | 2007-07-16 | 21d |  |  | 11688h | 11688h | 1,461 | 1,461 | 1,461 | 신논리모델 구축 | C02-1 1.2.3 |  |
| 170 | 1.3.1 | **프로세스 모델링** | 20d | 2007-06-18 A | 2007-07-13 A | 100% | 2007-06-18 | 2007-07-13 | 20d | start no earlier than 2007-04-25 |  | 5664h | 5664h | 708 | 708 | 708 | 신논리모델 구축 | C02-1 1.2.3 |  |
| 171 | 1.3.1.1 | **프로세스 도출 및 정의** | 20d | 2007-06-18 A | 2007-07-13 A | 100% | 2007-06-18 | 2007-07-13 | 20d |  |  | 4560h | 4560h | 570 | 570 | 570 | 신논리모델 구축 | C02-1 1.2.3 |  |
| 172 | 1.3.1.1 | **프로세스 도출 및 정의1** | 10d | 2007-06-18 A | 2007-06-29 A | 100% | 2007-06-18 | 2007-06-29 | 10d | start no earlier than 2007-04-25 |  | 2320h | 2320h | 290 | 290 | 290 | 신논리모델 구축 | C02-1 1.2.3 |  |
| 173 | 1.3.1.1.1 | 여신공통 프로세스 도출 및 정의 | 10d | 2007-06-18 A | 2007-06-29 A | 100% | 2007-06-18 | 2007-06-29 | 10d | start no earlier than 2007-06-18 | 이창수 | 80h | 80h | 10 | 10 | 10 | 신논리모델 구축 | C02-1 1.2.3 | 기능차트, 프로세스정의서 |
| 174 | 1.3.1.1.2 | 실행(외대포함) 프로세스 도출 및 정의 | 10d | 2007-06-18 A | 2007-06-29 A | 100% | 2007-06-18 | 2007-06-29 | 10d | start no earlier than 2007-06-18 | 김백기; 김영보; 이창수 | 240h | 240h | 30 | 30 | 30 | 신논리모델 구축 | C02-1 1.2.3 | 기능차트, 프로세스정의서 |
| 175 | 1.3.1.1.3 | 상환/매각(외대포함) 프로세스 도출 및 정의 | 10d | 2007-06-18 A | 2007-06-29 A | 100% | 2007-06-18 | 2007-06-29 | 10d | start no earlier than 2007-06-18 | 양혜란; 서정호; 송진현 | 240h | 240h | 30 | 30 | 30 | 신논리모델 구축 | C02-1 1.2.3 | 기능차트, 프로세스정의서 |
| 176 | 1.3.1.1.4 | 여신등록 프로세스 도출 및 정의 | 10d | 2007-06-18 A | 2007-06-29 A | 100% | 2007-06-18 | 2007-06-29 | 10d | start no earlier than 2007-06-18 | 윤승종; 차호병 | 160h | 160h | 20 | 20 | 20 | 신논리모델 구축 | C02-1 1.2.3 | 기능차트, 프로세스정의서 |
| 177 | 1.3.1.1.5 | 차입금 프로세스 도출 및 정의 | 10d | 2007-06-18 A | 2007-06-29 A | 100% | 2007-06-18 | 2007-06-29 | 10d | start no earlier than 2007-06-18 | 김경희 | 80h | 80h | 10 | 10 | 10 | 신논리모델 구축 | C02-1 1.2.3 | 기능차트, 프로세스정의서 |
| 178 | 1.3.1.1.6 | 보증서 프로세스 도출 및 정의 | 10d | 2007-06-18 A | 2007-06-29 A | 100% | 2007-06-18 | 2007-06-29 | 10d | start no earlier than 2007-06-18 | 송재규; 표기웅 | 160h | 160h | 20 | 20 | 20 | 신논리모델 구축 | C02-1 1.2.3 | 기능차트, 프로세스정의서 |
| 179 | 1.3.1.1.7 | 전자결재 프로세스 도출 및 정의 | 10d | 2007-06-18 A | 2007-06-29 A | 100% | 2007-06-18 | 2007-06-29 | 10d | start no earlier than 2007-06-18 | 송재규; 표기웅 | 160h | 160h | 20 | 20 | 20 | 신논리모델 구축 | C02-1 1.2.3 | 기능차트, 프로세스정의서 |
| 180 | 1.3.1.1.8 | 통계정보 프로세스 도출 및 정의 | 10d | 2007-06-18 A | 2007-06-29 A | 100% | 2007-06-18 | 2007-06-29 | 10d | start no earlier than 2007-06-18 | 차호병; 윤승종 | 160h | 160h | 20 | 20 | 20 | 신논리모델 구축 | C02-1 1.2.3 | 기능차트, 프로세스정의서 |
| 181 | 1.3.1.1.9 | 개인심사 프로세스 도출 및 정의 | 10d | 2007-06-18 A | 2007-06-29 A | 100% | 2007-06-18 | 2007-06-29 | 10d | start no earlier than 2007-06-18 | 전형남; TBD1 | 160h | 160h | 20 | 20 | 20 | 신논리모델 구축 | C02-1 1.2.3 | 기능차트, 프로세스정의서 |
| 182 | 1.3.1.1.10 | 기업심사 프로세스 도출 및 정의 | 10d | 2007-06-18 A | 2007-06-29 A | 100% | 2007-06-18 | 2007-06-29 | 10d | start no earlier than 2007-06-18 | 김영석 | 80h | 80h | 10 | 10 | 10 | 신논리모델 구축 | C02-1 1.2.3 | 기능차트, 프로세스정의서 |
| 183 | 1.3.1.1.11 | 신용조사 프로세스 도출 및 정의 | 10d | 2007-06-18 A | 2007-06-29 A | 100% | 2007-06-18 | 2007-06-29 | 10d | start no earlier than 2007-06-18 | 김형근 | 80h | 80h | 10 | 10 | 10 | 신논리모델 구축 | C02-1 1.2.3 | 기능차트, 프로세스정의서 |
| 184 | 1.3.1.1.12 | 한도관리 프로세스 도출 및 정의 | 10d | 2007-06-18 A | 2007-06-29 A | 100% | 2007-06-18 | 2007-06-29 | 10d | start no earlier than 2007-06-18 | 차호병; 전형남 | 160h | 160h | 20 | 20 | 20 | 신논리모델 구축 | C02-1 1.2.3 | 기능차트, 프로세스정의서 |
| 185 | 1.3.1.1.13 | 금리관리 프로세스 도출 및 정의 | 10d | 2007-06-18 A | 2007-06-29 A | 100% | 2007-06-18 | 2007-06-29 | 10d | start no earlier than 2007-06-18 | 윤승종; 전형남 | 160h | 160h | 20 | 20 | 20 | 신논리모델 구축 | C02-1 1.2.3 | 기능차트, 프로세스정의서 |
| 186 | 1.3.1.1.14 | 국민주택기금 프로세스 도출 및 정의 | 10d | 2007-06-18 A | 2007-06-29 A | 100% | 2007-06-18 | 2007-06-29 | 10d | start no earlier than 2007-06-18 | TBD2; 지용근 | 160h | 160h | 20 | 20 | 20 | 신논리모델 구축 | C02-1 1.2.3 | 기능차트, 프로세스정의서 |
| 187 | 1.3.1.1.15 | 농업종합자금 프로세스 도출 및 정의 | 10d | 2007-06-18 A | 2007-06-29 A | 100% | 2007-06-18 | 2007-06-29 | 10d | start no earlier than 2007-06-18 | 지용근; 김정석 | 160h | 160h | 20 | 20 | 20 | 신논리모델 구축 | C02-1 1.2.3 | 기능차트, 프로세스정의서 |
| 188 | 1.3.1.1.16 | 감정담보 프로세스 도출 및 정의 | 10d | 2007-06-18 A | 2007-06-29 A | 100% | 2007-06-18 | 2007-06-29 | 10d | start no earlier than 2007-06-18 | 정재순 | 80h | 80h | 10 | 10 | 10 | 신논리모델 구축 | C02-1 1.2.3 | 기능차트, 프로세스정의서 |
| 189 | 1.3.1.1.2 | **프로세스 도출 및 정의2** | 10d | 2007-07-02 A | 2007-07-13 A | 100% | 2007-07-02 | 2007-07-13 | 10d |  |  | 2240h | 2240h | 280 | 280 | 280 | 신논리모델 구축 | C02-1 1.2.3 |  |
| 190 | 1.3.1.1.2.1 | 여신공통 프로세스 도출 및 정의 | 10d | 2007-07-02 A | 2007-07-13 A | 100% | 2007-07-02 | 2007-07-13 | 10d | start no earlier than 2007-07-02 | 이창수 | 80h | 80h | 10 | 10 | 10 | 신논리모델 구축 | C02-1 1.2.3 | 기능차트, 프로세스정의서 |
| 191 | 1.3.1.1.2.2 | 실행(외대포함) 프로세스 도출 및 정의 | 10d | 2007-07-02 A | 2007-07-13 A | 100% | 2007-07-02 | 2007-07-13 | 10d | start no earlier than 2007-07-02 | 김백기; 김영보; 이창수 | 240h | 240h | 30 | 30 | 30 | 신논리모델 구축 | C02-1 1.2.3 | 기능차트, 프로세스정의서 |
| 192 | 1.3.1.1.2.3 | 상환/매각(외대포함) 프로세스 도출 및 정의 | 10d | 2007-07-02 A | 2007-07-13 A | 100% | 2007-07-02 | 2007-07-13 | 10d | start no earlier than 2007-07-02 | 양혜란; 서정호; 송진현 | 240h | 240h | 30 | 30 | 30 | 신논리모델 구축 | C02-1 1.2.3 | 기능차트, 프로세스정의서 |
| 193 | 1.3.1.1.2.4 | 여신등록 프로세스 도출 및 정의 | 10d | 2007-07-02 A | 2007-07-13 A | 100% | 2007-07-02 | 2007-07-13 | 10d | start no earlier than 2007-07-02 | 윤승종; 차호병 | 160h | 160h | 20 | 20 | 20 | 신논리모델 구축 | C02-1 1.2.3 | 기능차트, 프로세스정의서 |
| 194 | 1.3.1.1.2.5 | 차입금 프로세스 도출 및 정의 | 8d | 2007-07-02 A | 2007-07-11 A | 100% | 2007-07-02 | 2007-07-11 | 8d | start no earlier than 2007-07-02 | 김경희 | 64h | 64h | 8 | 8 | 8 | 신논리모델 구축 | C02-1 1.2.3 | 기능차트, 프로세스정의서 |
| 195 | 1.3.1.1.2.6 | 보증서 프로세스 도출 및 정의 | 8d | 2007-07-02 A | 2007-07-11 A | 100% | 2007-07-02 | 2007-07-11 | 8d | start no earlier than 2007-07-02 | 송재규; 표기웅 | 128h | 128h | 16 | 16 | 16 | 신논리모델 구축 | C02-1 1.2.3 | 기능차트, 프로세스정의서 |
| 196 | 1.3.1.1.2.7 | 전자결재 프로세스 도출 및 정의 | 8d | 2007-07-02 A | 2007-07-11 A | 100% | 2007-07-02 | 2007-07-11 | 8d | start no earlier than 2007-07-02 | 송재규; 표기웅 | 128h | 128h | 16 | 16 | 16 | 신논리모델 구축 | C02-1 1.2.3 | 기능차트, 프로세스정의서 |
| 197 | 1.3.1.1.2.8 | 통계정보 프로세스 도출 및 정의 | 10d | 2007-07-02 A | 2007-07-13 A | 100% | 2007-07-02 | 2007-07-13 | 10d | finish no earlier than 2007-07-13 | 차호병; 윤승종 | 160h | 160h | 20 | 20 | 20 | 신논리모델 구축 | C02-1 1.2.3 | 기능차트, 프로세스정의서 |
| 198 | 1.3.1.1.2.9 | 개인심사 프로세스 도출 및 정의 | 10d | 2007-07-02 A | 2007-07-13 A | 100% | 2007-07-02 | 2007-07-13 | 10d | start no earlier than 2007-07-02 | 전형남; TBD1 | 160h | 160h | 20 | 20 | 20 | 신논리모델 구축 | C02-1 1.2.3 | 기능차트, 프로세스정의서 |
| 199 | 1.3.1.1.2.10 | 기업심사 프로세스 도출 및 정의 | 10d | 2007-07-02 A | 2007-07-13 A | 100% | 2007-07-02 | 2007-07-13 | 10d | start no earlier than 2007-07-02 | 김영석 | 80h | 80h | 10 | 10 | 10 | 신논리모델 구축 | C02-1 1.2.3 | 기능차트, 프로세스정의서 |
| 200 | 1.3.1.1.2.11 | 신용조사 프로세스 도출 및 정의 | 10d | 2007-07-02 A | 2007-07-13 A | 100% | 2007-07-02 | 2007-07-13 | 10d | start no earlier than 2007-07-02 | 김형근 | 80h | 80h | 10 | 10 | 10 | 신논리모델 구축 | C02-1 1.2.3 | 기능차트, 프로세스정의서 |
| 201 | 1.3.1.1.2.12 | 한도관리 프로세스 도출 및 정의 | 10d | 2007-07-02 A | 2007-07-13 A | 100% | 2007-07-02 | 2007-07-13 | 10d | start no earlier than 2007-07-02 | 차호병; 전형남 | 160h | 160h | 20 | 20 | 20 | 신논리모델 구축 | C02-1 1.2.3 | 기능차트, 프로세스정의서 |
| 202 | 1.3.1.1.2.13 | 금리관리 프로세스 도출 및 정의 | 10d | 2007-07-02 A | 2007-07-13 A | 100% | 2007-07-02 | 2007-07-13 | 10d | start no earlier than 2007-07-02 | 윤승종; 전형남 | 160h | 160h | 20 | 20 | 20 | 신논리모델 구축 | C02-1 1.2.3 | 기능차트, 프로세스정의서 |
| 203 | 1.3.1.1.2.14 | 국민주택기금 프로세스 도출 및 정의 | 10d | 2007-07-02 A | 2007-07-13 A | 100% | 2007-07-02 | 2007-07-13 | 10d | start no earlier than 2007-07-02 | TBD2; 지용근 | 160h | 160h | 20 | 20 | 20 | 신논리모델 구축 | C02-1 1.2.3 | 기능차트, 프로세스정의서 |
| 204 | 1.3.1.1.2.15 | 농업종합자금 프로세스 도출 및 정의 | 10d | 2007-07-02 A | 2007-07-13 A | 100% | 2007-07-02 | 2007-07-13 | 10d | start no earlier than 2007-07-02 | 지용근; 김정석 | 160h | 160h | 20 | 20 | 20 | 신논리모델 구축 | C02-1 1.2.3 | 기능차트, 프로세스정의서 |
| 205 | 1.3.1.1.2.16 | 감정담보 프로세스 도출 및 정의 | 10d | 2007-07-02 A | 2007-07-13 A | 100% | 2007-07-02 | 2007-07-13 | 10d | start no earlier than 2007-07-02 | 정재순 | 80h | 80h | 10 | 10 | 10 | 신논리모델 구축 | C02-1 1.2.3 | 기능차트, 프로세스정의서 |

| ID | WBS | Task | Duration | Start | Finish | Complete | Baseline start | Baseline finish | Baseline duration | Constraint | Resources | Work | Actual work | Cost | Baseline cost | Actual cost | Text20 | Text26 | Text30 |
| --- | --- | --- | --- | --- | --- | --- | --- | --- | --- | --- | --- | --- | --- | --- | --- | --- | --- | --- | --- |
| 206 | 1.3.1.2 | **인터페이스 도출 및 정의** | 5d | 2007-07-09 A | 2007-07-13 A | 100% | 2007-07-09 | 2007-07-13 | 5d | start no earlier than 2007-04-25 |  | 1104h | 1104h | 138 | 138 | 138 | 신논리모델 구축 | C02-1 1.2.3 |  |
| 207 | 1.3.1.2.1 | 여신공통 인터페이스 도출 및 정의 | 5d | 2007-07-09 A | 2007-07-13 A | 100% | 2007-07-09 | 2007-07-13 | 5d | start no earlier than 2007-07-09 | 이창수 | 40h | 40h | 5 | 5 | 5 | 신논리모델 구축 | C02-1 1.2.3 | 인터페이스정의서 |
| 208 | 1.3.1.2.2 | 실행(외대포함) 인터페이스 도출 및 정의 | 5d | 2007-07-09 A | 2007-07-13 A | 100% | 2007-07-09 | 2007-07-13 | 5d | start no earlier than 2007-07-09 | 김백기; 김영보; 이창수 | 120h | 120h | 15 | 15 | 15 | 신논리모델 구축 | C02-1 1.2.3 | 인터페이스정의서 |
| 209 | 1.3.1.2.3 | 상환/매각(외대포함) 인터페이스 도출 및 정의 | 5d | 2007-07-09 A | 2007-07-13 A | 100% | 2007-07-09 | 2007-07-13 | 5d | start no earlier than 2007-07-09 | 양혜란; 서정호; 송진현 | 120h | 120h | 15 | 15 | 15 | 신논리모델 구축 | C02-1 1.2.3 | 인터페이스정의서 |
| 210 | 1.3.1.2.4 | 여신등록 인터페이스 도출 및 정의 | 5d | 2007-07-09 A | 2007-07-13 A | 100% | 2007-07-09 | 2007-07-13 | 5d | start no earlier than 2007-07-09 | 윤승종; 차호병 | 80h | 80h | 10 | 10 | 10 | 신논리모델 구축 | C02-1 1.2.3 | 인터페이스정의서 |
| 211 | 1.3.1.2.5 | 차입금 인터페이스 도출 및 정의 | 4d | 2007-07-09 A | 2007-07-12 A | 100% | 2007-07-09 | 2007-07-12 | 4d | start no earlier than 2007-07-09 | 김경희 | 32h | 32h | 4 | 4 | 4 | 신논리모델 구축 | C02-1 1.2.3 | 인터페이스정의서 |
| 212 | 1.3.1.2.6 | 보증서 인터페이스 도출 및 정의 | 4d | 2007-07-09 A | 2007-07-12 A | 100% | 2007-07-09 | 2007-07-12 | 4d | start no earlier than 2007-07-09 | 송재규; 표기웅 | 64h | 64h | 8 | 8 | 8 | 신논리모델 구축 | C02-1 1.2.3 | 인터페이스정의서 |
| 213 | 1.3.1.2.7 | 전자결재 인터페이스 도출 및 정의 | 4d | 2007-07-09 A | 2007-07-12 A | 100% | 2007-07-09 | 2007-07-12 | 4d | start no earlier than 2007-07-09 | 송재규; 표기웅 | 64h | 64h | 8 | 8 | 8 | 신논리모델 구축 | C02-1 1.2.3 | 인터페이스정의서 |
| 214 | 1.3.1.2.8 | 통계정보 인터페이스 도출 및 정의 | 4d | 2007-07-09 A | 2007-07-12 A | 100% | 2007-07-09 | 2007-07-12 | 4d | start no earlier than 2007-07-09 | 차호병; 윤승종 | 64h | 64h | 8 | 8 | 8 | 신논리모델 구축 | C02-1 1.2.3 | 인터페이스정의서 |
| 215 | 1.3.1.2.9 | 개인심사 내부 인터페이스 도출 및 정의 | 5d | 2007-07-09 A | 2007-07-13 A | 100% | 2007-07-09 | 2007-07-13 | 5d | start no earlier than 2007-07-09 | 전형남; TBD1 | 80h | 80h | 10 | 10 | 10 | 신논리모델 구축 | C02-1 1.2.3 | 인터페이스정의서 |
| 216 | 1.3.1.2.10 | 기업심사 내부 인터페이스 도출 및 정의 | 5d | 2007-07-09 A | 2007-07-13 A | 100% | 2007-07-09 | 2007-07-13 | 5d | start no earlier than 2007-07-09 | 김영석 | 40h | 40h | 5 | 5 | 5 | 신논리모델 구축 | C02-1 1.2.3 | 인터페이스정의서 |
| 217 | 1.3.1.2.11 | 신용조사 내부 인터페이스 도출 및 정의 | 5d | 2007-07-09 A | 2007-07-13 A | 100% | 2007-07-09 | 2007-07-13 | 5d | start no earlier than 2007-07-09 | 김형근 | 40h | 40h | 5 | 5 | 5 | 신논리모델 구축 | C02-1 1.2.3 | 인터페이스정의서 |
| 218 | 1.3.1.2.12 | 한도관리 인터페이스 도출 및 정의 | 5d | 2007-07-09 A | 2007-07-13 A | 100% | 2007-07-09 | 2007-07-13 | 5d | start no earlier than 2007-07-09 | 차호병; 전형남 | 80h | 80h | 10 | 10 | 10 | 신논리모델 구축 | C02-1 1.2.3 | 인터페이스정의서 |
| 219 | 1.3.1.2.13 | 금리관리 인터페이스 도출 및 정의 | 5d | 2007-07-09 A | 2007-07-13 A | 100% | 2007-07-09 | 2007-07-13 | 5d | start no earlier than 2007-07-09 | 윤승종; 전형남 | 80h | 80h | 10 | 10 | 10 | 신논리모델 구축 | C02-1 1.2.3 | 인터페이스정의서 |
| 220 | 1.3.1.2.14 | 국민주택기금 인터페이스 도출 및 정의 | 5d | 2007-07-09 A | 2007-07-13 A | 100% | 2007-07-09 | 2007-07-13 | 5d | start no earlier than 2007-07-09 | TBD2; 지용근 | 80h | 80h | 10 | 10 | 10 | 신논리모델 구축 | C02-1 1.2.3 | 인터페이스정의서 |
| 221 | 1.3.1.2.15 | 종합자금 인터페이스 도출 및 정의 | 5d | 2007-07-09 A | 2007-07-13 A | 100% | 2007-07-09 | 2007-07-13 | 5d | start no earlier than 2007-07-09 | 지용근; 김정석 | 80h | 80h | 10 | 10 | 10 | 신논리모델 구축 | C02-1 1.2.3 | 인터페이스정의서 |
| 222 | 1.3.1.2.16 | 감정담보 인터페이스 도출 및 정의 | 5d | 2007-07-09 A | 2007-07-13 A | 100% | 2007-07-09 | 2007-07-13 | 5d | start no earlier than 2007-07-09 | 정재순 | 40h | 40h | 5 | 5 | 5 | 신논리모델 구축 | C02-1 1.2.3 | 인터페이스정의서 |
| 223 | 1.3.2 | **데이터 모델링** | 21d | 2007-06-18 A | 2007-07-16 A | 100% | 2007-06-18 | 2007-07-16 | 21d |  |  | 5896h | 5896h | 737 | 737 | 737 | 신논리모델 구축 | C02-1 1.2.3 |  |
| 224 | 1.3.2.1 | **엔티티 도출 및 논리 모델링** | 20d | 2007-06-18 A | 2007-07-13 A | 100% | 2007-06-18 | 2007-07-13 | 20d | start no earlier than 2007-04-25 |  | 4560h | 4560h | 570 | 570 | 570 | 신논리모델 구축 | C02-1 1.2.3 |  |
| 225 | 1.3.2.1.1 | **엔티티 도출 및 논리 모델링1** | 10d | 2007-06-18 A | 2007-06-29 A | 100% | 2007-06-18 | 2007-06-29 | 10d | start no earlier than 2007-04-25 |  | 2320h | 2320h | 290 | 290 | 290 | 신논리모델 구축 | C02-1 1.2.3 |  |
| 226 | 1.3.2.1.1.1 | 여신공통 엔티티 도출 및 논리 모델링 | 10d | 2007-06-18 A | 2007-06-29 A | 100% | 2007-06-18 | 2007-06-29 | 10d | start no earlier than 2007-06-18 | 이창수 | 80h | 80h | 10 | 10 | 10 | 신논리모델 구축 | C02-1 1.2.3 | 엔티티목록, ERD(논리) |
| 227 | 1.3.2.1.1.2 | 실행(외대포함) 엔티티 도출 및 논리 모델링 | 10d | 2007-06-18 A | 2007-06-29 A | 100% | 2007-06-18 | 2007-06-29 | 10d | start no earlier than 2007-06-18 | 김백기; 김영보; 이창수 | 240h | 240h | 30 | 30 | 30 | 신논리모델 구축 | C02-1 1.2.3 | 엔티티목록, ERD(논리) |
| 228 | 1.3.2.1.1.3 | 상환/매각(외대포함) 엔티티 도출 및 논리 모델링 | 10d | 2007-06-18 A | 2007-06-29 A | 100% | 2007-06-18 | 2007-06-29 | 10d | start no earlier than 2007-06-18 | 양혜란; 서정호; 송진현 | 240h | 240h | 30 | 30 | 30 | 신논리모델 구축 | C02-1 1.2.3 | 엔티티목록, ERD(논리) |
| 229 | 1.3.2.1.1.4 | 여신등록 엔티티 도출 및 논리 모델링 | 10d | 2007-06-18 A | 2007-06-29 A | 100% | 2007-06-18 | 2007-06-29 | 10d | start no earlier than 2007-06-18 | 윤승종; 차호병 | 160h | 160h | 20 | 20 | 20 | 신논리모델 구축 | C02-1 1.2.3 | 엔티티목록, ERD(논리) |
| 230 | 1.3.2.1.1.5 | 차입금 엔티티 도출 및 논리 모델링 | 10d | 2007-06-18 A | 2007-06-29 A | 100% | 2007-06-18 | 2007-06-29 | 10d | start no earlier than 2007-06-18 | 김경희 | 80h | 80h | 10 | 10 | 10 | 신논리모델 구축 | C02-1 1.2.3 | 엔티티목록, ERD(논리) |
| 231 | 1.3.2.1.1.6 | 보증서 엔티티 도출 및 논리 모델링 | 10d | 2007-06-18 A | 2007-06-29 A | 100% | 2007-06-18 | 2007-06-29 | 10d | start no earlier than 2007-06-18 | 송재규; 표기웅 | 160h | 160h | 20 | 20 | 20 | 신논리모델 구축 | C02-1 1.2.3 | 엔티티목록, ERD(논리) |
| 232 | 1.3.2.1.1.7 | 전자결재 엔티티 도출 및 논리 모델링 | 10d | 2007-06-18 A | 2007-06-29 A | 100% | 2007-06-18 | 2007-06-29 | 10d | start no earlier than 2007-06-18 | 송재규; 표기웅 | 160h | 160h | 20 | 20 | 20 | 신논리모델 구축 | C02-1 1.2.3 | 엔티티목록, ERD(논리) |
| 233 | 1.3.2.1.1.8 | 통계정보 엔티티 도출 및 논리 모델링 | 10d | 2007-06-18 A | 2007-06-29 A | 100% | 2007-06-18 | 2007-06-29 | 10d | start no earlier than 2007-06-18 | 차호병; 윤승종 | 160h | 160h | 20 | 20 | 20 | 신논리모델 구축 | C02-1 1.2.3 | 엔티티목록, ERD(논리) |
| 234 | 1.3.2.1.1.9 | 개인심사 엔티티 도출 및 논리 모델링 | 10d | 2007-06-18 A | 2007-06-29 A | 100% | 2007-06-18 | 2007-06-29 | 10d | start no earlier than 2007-06-18 | 전형남; TBD1 | 160h | 160h | 20 | 20 | 20 | 신논리모델 구축 | C02-1 1.2.3 | 엔티티목록, ERD(논리) |
| 235 | 1.3.2.1.1.10 | 기업심사 엔티티 도출 및 논리 모델링 | 10d | 2007-06-18 A | 2007-06-29 A | 100% | 2007-06-18 | 2007-06-29 | 10d | start no earlier than 2007-06-18 | 김영석 | 80h | 80h | 10 | 10 | 10 | 신논리모델 구축 | C02-1 1.2.3 | 엔티티목록, ERD(논리) |
| 236 | 1.3.2.1.1.11 | 신용조사 엔티티 도출 및 논리 모델링 | 10d | 2007-06-18 A | 2007-06-29 A | 100% | 2007-06-18 | 2007-06-29 | 10d | start no earlier than 2007-06-18 | 김형근 | 80h | 80h | 10 | 10 | 10 | 신논리모델 구축 | C02-1 1.2.3 | 엔티티목록, ERD(논리) |
| 237 | 1.3.2.1.1.12 | 한도관리 엔티티 도출 및 논리 모델링 | 10d | 2007-06-18 A | 2007-06-29 A | 100% | 2007-06-18 | 2007-06-29 | 10d | start no earlier than 2007-06-18 | 차호병; 전형남 | 160h | 160h | 20 | 20 | 20 | 신논리모델 구축 | C02-1 1.2.3 | 엔티티목록, ERD(논리) |
| 238 | 1.3.2.1.1.13 | 금리관리 엔티티 도출 및 논리 모델링 | 10d | 2007-06-18 A | 2007-06-29 A | 100% | 2007-06-18 | 2007-06-29 | 10d | start no earlier than 2007-06-18 | 윤승종; 전형남 | 160h | 160h | 20 | 20 | 20 | 신논리모델 구축 | C02-1 1.2.3 | 엔티티목록, ERD(논리) |
| 239 | 1.3.2.1.1.14 | 국민주택기금 엔티티 도출 및 논리 모델링 | 10d | 2007-06-18 A | 2007-06-29 A | 100% | 2007-06-18 | 2007-06-29 | 10d | start no earlier than 2007-06-18 | TBD2; 지용근 | 160h | 160h | 20 | 20 | 20 | 신논리모델 구축 | C02-1 1.2.3 | 엔티티목록, ERD(논리) |
| 240 | 1.3.2.1.1.15 | 농업종합자금 엔티티 도출 및 논리 모델링 | 10d | 2007-06-18 A | 2007-06-29 A | 100% | 2007-06-18 | 2007-06-29 | 10d | start no earlier than 2007-06-18 | 지용근; 김정석 | 160h | 160h | 20 | 20 | 20 | 신논리모델 구축 | C02-1 1.2.3 | 엔티티목록, ERD(논리) |
| 241 | 1.3.2.1.1.16 | 감정담보 엔티티 도출 및 논리 모델링 | 10d | 2007-06-18 A | 2007-06-29 A | 100% | 2007-06-18 | 2007-06-29 | 10d | start no earlier than 2007-06-18 | 정재순 | 80h | 80h | 10 | 10 | 10 | 신논리모델 구축 | C02-1 1.2.3 | 엔티티목록, ERD(논리) |

| ID | WBS | Task | Duration | Start | Finish | Complete | Baseline start | Baseline finish | Baseline duration | Constraint | Resources | Work | Actual work | Cost | Baseline cost | Actual cost | Text20 | Text26 | Text30 |
| --- | --- | --- | --- | --- | --- | --- | --- | --- | --- | --- | --- | --- | --- | --- | --- | --- | --- | --- | --- |
| 242 | 1.3.2.1.2 | **엔티티 도출 및 논리 모델링2** | 10d | 2007-07-02 A | 2007-07-13 A | 100% | 2007-07-02 | 2007-07-13 | 10d |  |  | 2240h | 2240h | 280 | 280 | 280 | 신논리모델 구축 | C02-1 1.2.3 |  |
| 243 | 1.3.2.1.2.1 | 여신공통 엔티티 도출 및 논리 모델링 | 10d | 2007-07-02 A | 2007-07-13 A | 100% | 2007-07-02 | 2007-07-13 | 10d | start no earlier than 2007-07-02 | 이창수 | 80h | 80h | 10 | 10 | 10 | 신논리모델 구축 | C02-1 1.2.3 | 엔티티목록, ERD(논리) |
| 244 | 1.3.2.1.2.2 | 실행(외대포함) 엔티티 도출 및 논리 모델링 | 10d | 2007-07-02 A | 2007-07-13 A | 100% | 2007-07-02 | 2007-07-13 | 10d | start no earlier than 2007-07-02 | 김백기; 김영보; 이창수 | 240h | 240h | 30 | 30 | 30 | 신논리모델 구축 | C02-1 1.2.3 | 엔티티목록, ERD(논리) |
| 245 | 1.3.2.1.2.3 | 상환/매각(외대포함) 엔티티 도출 및 논리 모델링 | 10d | 2007-07-02 A | 2007-07-13 A | 100% | 2007-07-02 | 2007-07-13 | 10d | start no earlier than 2007-07-02 | 양혜란; 서정호; 송진현 | 240h | 240h | 30 | 30 | 30 | 신논리모델 구축 | C02-1 1.2.3 | 엔티티목록, ERD(논리) |
| 246 | 1.3.2.1.2.4 | 여신등록 엔티티 도출 및 논리 모델링 | 10d | 2007-07-02 A | 2007-07-13 A | 100% | 2007-07-02 | 2007-07-13 | 10d | start no earlier than 2007-07-02 | 윤승종; 차호병 | 160h | 160h | 20 | 20 | 20 | 신논리모델 구축 | C02-1 1.2.3 | 엔티티목록, ERD(논리) |
| 247 | 1.3.2.1.2.5 | 차입금 엔티티 도출 및 논리 모델링 | 8d | 2007-07-02 A | 2007-07-11 A | 100% | 2007-07-02 | 2007-07-11 | 8d | start no earlier than 2007-07-02 | 김경희 | 64h | 64h | 8 | 8 | 8 | 신논리모델 구축 | C02-1 1.2.3 | 엔티티목록, ERD(논리) |
| 248 | 1.3.2.1.2.6 | 보증서 엔티티 도출 및 논리 모델링 | 8d | 2007-07-02 A | 2007-07-11 A | 100% | 2007-07-02 | 2007-07-11 | 8d | start no earlier than 2007-07-02 | 송재규; 표기웅 | 128h | 128h | 16 | 16 | 16 | 신논리모델 구축 | C02-1 1.2.3 | 엔티티목록, ERD(논리) |
| 249 | 1.3.2.1.2.7 | 전자결재 엔티티 도출 및 논리 모델링 | 8d | 2007-07-02 A | 2007-07-11 A | 100% | 2007-07-02 | 2007-07-11 | 8d | start no earlier than 2007-07-02 | 송재규; 표기웅 | 128h | 128h | 16 | 16 | 16 | 신논리모델 구축 | C02-1 1.2.3 | 엔티티목록, ERD(논리) |
| 250 | 1.3.2.1.2.8 | 통계정보 엔티티 도출 및 논리 모델링 | 10d | 2007-07-02 A | 2007-07-13 A | 100% | 2007-07-02 | 2007-07-13 | 10d | finish no earlier than 2007-07-13 | 차호병; 윤승종 | 160h | 160h | 20 | 20 | 20 | 신논리모델 구축 | C02-1 1.2.3 | 엔티티목록, ERD(논리) |
| 251 | 1.3.2.1.2.9 | 개인심사 엔티티 도출 및 논리 모델링 | 10d | 2007-07-02 A | 2007-07-13 A | 100% | 2007-07-02 | 2007-07-13 | 10d | start no earlier than 2007-07-02 | 전형남; TBD1 | 160h | 160h | 20 | 20 | 20 | 신논리모델 구축 | C02-1 1.2.3 | 엔티티목록, ERD(논리) |
| 252 | 1.3.2.1.2.10 | 기업심사 엔티티 도출 및 논리 모델링 | 10d | 2007-07-02 A | 2007-07-13 A | 100% | 2007-07-02 | 2007-07-13 | 10d | start no earlier than 2007-07-02 | 김영석 | 80h | 80h | 10 | 10 | 10 | 신논리모델 구축 | C02-1 1.2.3 | 엔티티목록, ERD(논리) |
| 253 | 1.3.2.1.2.11 | 신용조사 엔티티 도출 및 논리 모델링 | 10d | 2007-07-02 A | 2007-07-13 A | 100% | 2007-07-02 | 2007-07-13 | 10d | start no earlier than 2007-07-02 | 김형근 | 80h | 80h | 10 | 10 | 10 | 신논리모델 구축 | C02-1 1.2.3 | 엔티티목록, ERD(논리) |
| 254 | 1.3.2.1.2.12 | 한도관리 엔티티 도출 및 논리 모델링 | 10d | 2007-07-02 A | 2007-07-13 A | 100% | 2007-07-02 | 2007-07-13 | 10d | start no earlier than 2007-07-02 | 차호병; 전형남 | 160h | 160h | 20 | 20 | 20 | 신논리모델 구축 | C02-1 1.2.3 | 엔티티목록, ERD(논리) |
| 255 | 1.3.2.1.2.13 | 금리관리 엔티티 도출 및 논리 모델링 | 10d | 2007-07-02 A | 2007-07-13 A | 100% | 2007-07-02 | 2007-07-13 | 10d | start no earlier than 2007-07-02 | 윤승종; 전형남 | 160h | 160h | 20 | 20 | 20 | 신논리모델 구축 | C02-1 1.2.3 | 엔티티목록, ERD(논리) |
| 256 | 1.3.2.1.2.14 | 국민주택기금 엔티티 도출 및 논리 모델링 | 10d | 2007-07-02 A | 2007-07-13 A | 100% | 2007-07-02 | 2007-07-13 | 10d | start no earlier than 2007-07-02 | TBD2; 지용근 | 160h | 160h | 20 | 20 | 20 | 신논리모델 구축 | C02-1 1.2.3 | 엔티티목록, ERD(논리) |
| 257 | 1.3.2.1.2.15 | 농업종합자금 엔티티 도출 및 논리 모델링 | 10d | 2007-07-02 A | 2007-07-13 A | 100% | 2007-07-02 | 2007-07-13 | 10d | start no earlier than 2007-07-02 | 지용근; 김정석 | 160h | 160h | 20 | 20 | 20 | 신논리모델 구축 | C02-1 1.2.3 | 엔티티목록, ERD(논리) |
| 258 | 1.3.2.1.2.16 | 감정담보 엔티티 도출 및 논리 모델링 | 10d | 2007-07-02 A | 2007-07-13 A | 100% | 2007-07-02 | 2007-07-13 | 10d | start no earlier than 2007-07-02 | 정재순 | 80h | 80h | 10 | 10 | 10 | 신논리모델 구축 | C02-1 1.2.3 | 엔티티목록, ERD(논리) |
| 259 | 1.3.2.2 | **엔티티 정의** | 6d | 2007-07-09 A | 2007-07-16 A | 100% | 2007-07-09 | 2007-07-16 | 6d | start no earlier than 2007-04-25 |  | 1336h | 1336h | 167 | 167 | 167 | 신논리모델 구축 | C02-1 1.2.3 |  |
| 260 | 1.3.2.2.1 | 여신공통 엔티티 정의 | 6d | 2007-07-09 A | 2007-07-16 A | 100% | 2007-07-09 | 2007-07-16 | 6d | start no earlier than 2007-07-09 | 이창수 | 48h | 48h | 6 | 6 | 6 | 신논리모델 구축 | C02-1 1.2.3 | 엔티티정의서 |
| 261 | 1.3.2.2.2 | 실행(외대포함) 엔티티 정의 | 6d | 2007-07-09 A | 2007-07-16 A | 100% | 2007-07-09 | 2007-07-16 | 6d | start no earlier than 2007-07-09 | 김백기; 김영보; 이창수 | 144h | 144h | 18 | 18 | 18 | 신논리모델 구축 | C02-1 1.2.3 | 엔티티정의서 |
| 262 | 1.3.2.2.3 | 상환/매각(외대포함) 엔티티 정의 | 6d | 2007-07-09 A | 2007-07-16 A | 100% | 2007-07-09 | 2007-07-16 | 6d | start no earlier than 2007-07-09 | 양혜란; 서정호; 송진현 | 144h | 144h | 18 | 18 | 18 | 신논리모델 구축 | C02-1 1.2.3 | 엔티티정의서 |
| 263 | 1.3.2.2.4 | 여신등록 엔티티 정의 | 6d | 2007-07-09 A | 2007-07-16 A | 100% | 2007-07-09 | 2007-07-16 | 6d | start no earlier than 2007-07-09 | 윤승종; 차호병 | 96h | 96h | 12 | 12 | 12 | 신논리모델 구축 | C02-1 1.2.3 | 엔티티정의서 |
| 264 | 1.3.2.2.5 | 차입금 엔티티 정의 | 5d | 2007-07-09 A | 2007-07-13 A | 100% | 2007-07-09 | 2007-07-13 | 5d | start no earlier than 2007-07-09 | 김경희 | 40h | 40h | 5 | 5 | 5 | 신논리모델 구축 | C02-1 1.2.3 | 엔티티정의서 |
| 265 | 1.3.2.2.6 | 보증서 엔티티 정의 | 5d | 2007-07-09 A | 2007-07-13 A | 100% | 2007-07-09 | 2007-07-13 | 5d | start no earlier than 2007-07-09 | 송재규; 표기웅 | 80h | 80h | 10 | 10 | 10 | 신논리모델 구축 | C02-1 1.2.3 | 엔티티정의서 |
| 266 | 1.3.2.2.7 | 전자결재 엔티티 정의 | 5d | 2007-07-09 A | 2007-07-13 A | 100% | 2007-07-09 | 2007-07-13 | 5d | start no earlier than 2007-07-09 | 송재규; 표기웅 | 80h | 80h | 10 | 10 | 10 | 신논리모델 구축 | C02-1 1.2.3 | 엔티티정의서 |
| 267 | 1.3.2.2.8 | 통계정보 엔티티 정의 | 5d | 2007-07-10 A | 2007-07-16 A | 100% | 2007-07-10 | 2007-07-16 | 5d | finish no earlier than 2007-07-16 | 차호병; 윤승종 | 80h | 80h | 10 | 10 | 10 | 신논리모델 구축 | C02-1 1.2.3 | 엔티티정의서 |
| 268 | 1.3.2.2.9 | 개인심사 엔티티 정의 | 6d | 2007-07-09 A | 2007-07-16 A | 100% | 2007-07-09 | 2007-07-16 | 6d | start no earlier than 2007-07-09 | 전형남; TBD1 | 96h | 96h | 12 | 12 | 12 | 신논리모델 구축 | C02-1 1.2.3 | 엔티티정의서 |
| 269 | 1.3.2.2.10 | 기업심사 엔티티 정의 | 6d | 2007-07-09 A | 2007-07-16 A | 100% | 2007-07-09 | 2007-07-16 | 6d | start no earlier than 2007-07-09 | 김영석 | 48h | 48h | 6 | 6 | 6 | 신논리모델 구축 | C02-1 1.2.3 | 엔티티정의서 |
| 270 | 1.3.2.2.11 | 신용조사 엔티티 정의 | 6d | 2007-07-09 A | 2007-07-16 A | 100% | 2007-07-09 | 2007-07-16 | 6d | start no earlier than 2007-07-09 | 김형근 | 48h | 48h | 6 | 6 | 6 | 신논리모델 구축 | C02-1 1.2.3 | 엔티티정의서 |
| 271 | 1.3.2.2.12 | 한도관리 엔티티 정의 | 6d | 2007-07-09 A | 2007-07-16 A | 100% | 2007-07-09 | 2007-07-16 | 6d | start no earlier than 2007-07-09 | 차호병; 전형남 | 96h | 96h | 12 | 12 | 12 | 신논리모델 구축 | C02-1 1.2.3 | 엔티티정의서 |
| 272 | 1.3.2.2.13 | 금리관리 엔티티 정의 | 6d | 2007-07-09 A | 2007-07-16 A | 100% | 2007-07-09 | 2007-07-16 | 6d | start no earlier than 2007-07-09 | 윤승종; 전형남 | 96h | 96h | 12 | 12 | 12 | 신논리모델 구축 | C02-1 1.2.3 | 엔티티정의서 |
| 273 | 1.3.2.2.14 | 국민주택기금 엔티티 정의 | 6d | 2007-07-09 A | 2007-07-16 A | 100% | 2007-07-09 | 2007-07-16 | 6d | start no earlier than 2007-07-09 | TBD2; 지용근 | 96h | 96h | 12 | 12 | 12 | 신논리모델 구축 | C02-1 1.2.3 | 엔티티정의서 |
| 274 | 1.3.2.2.15 | 농업종합자금 엔티티 정의 | 6d | 2007-07-09 A | 2007-07-16 A | 100% | 2007-07-09 | 2007-07-16 | 6d | start no earlier than 2007-07-09 | 지용근; 김정석 | 96h | 96h | 12 | 12 | 12 | 신논리모델 구축 | C02-1 1.2.3 | 엔티티정의서 |
| 275 | 1.3.2.2.16 | 감정담보 엔티티 정의 | 6d | 2007-07-09 A | 2007-07-16 A | 100% | 2007-07-09 | 2007-07-16 | 6d | start no earlier than 2007-07-09 | 정재순 | 48h | 48h | 6 | 6 | 6 | 신논리모델 구축 | C02-1 1.2.3 | 엔티티정의서 |
| 276 | 1.3.3 | 인수테스트기준 정의 | 4d | 2007-07-11 A | 2007-07-16 A | 100% | 2007-07-11 | 2007-07-16 | 4d | start no earlier than 2007-07-11 | 서종민; 이창수; 지용근; 김영석 | 128h | 128h | 16 | 16 | 16 | 신논리모델 구축 | C02-1 1.2.3 | 인수테스트기준서 |

| ID | WBS | Task | Duration | Start | Finish | Complete | Baseline start | Baseline finish | Baseline duration | Constraint | Resources | Work | Actual work | Cost | Baseline cost | Actual cost | Text20 | Text26 | Text30 |
| --- | --- | --- | --- | --- | --- | --- | --- | --- | --- | --- | --- | --- | --- | --- | --- | --- | --- | --- | --- |
| 277 | 1.4 | **분석 단계 관리 활동** | 62d | 2007-05-03 A | 2007-08-01 A | 100% | 2007-05-03 | 2007-08-01 | 62d | start no earlier than 2007-04-25 |  | 960h | 960h | 120 | 120 | 120 | 단계완료 | C02-1 1.6.8 |  |
| 278 | 1.4.1 | 오리엔테이션(1차) 실시 | 1d | 2007-05-03 A | 2007-05-03 A | 100% | 2007-05-03 | 2007-05-03 | 1d | start no earlier than 2007-05-03 | 서종민; 이창수; 지용근; 김영석 | 32h | 32h | 4 | 4 | 4 | 단계완료 | C02-1 1.6.8 |  |
| 279 | 1.4.2 | 과업대비표 매핑 | 3d | 2007-05-07 A | 2007-05-09 A | 100% | 2007-05-07 | 2007-05-09 | 3d | start no earlier than 2007-05-07 | 서종민; 이창수; 지용근; 김영석 | 96h | 96h | 12 | 12 | 12 | 단계완료 | C02-1 1.6.8 |  |
| 280 | 1.4.3 | 형상관리 Tool 교육 | 2d | 2007-05-17 A | 2007-05-18 A | 100% | 2007-05-17 | 2007-05-18 | 2d | start no earlier than 2007-05-17 | 서종민; 이창수; 지용근; 김영석 | 64h | 64h | 8 | 8 | 8 | 단계완료 | C02-1 1.6.8 |  |
| 281 | 1.4.4 | Inspection(1차) 실시 및 조치 | 5d | 2007-07-02 A | 2007-07-06 A | 100% | 2007-07-02 | 2007-07-06 | 5d | start no earlier than 2007-07-02 | 서종민; 이창수; 지용근; 김영석 | 160h | 160h | 20 | 20 | 20 | 단계완료 | C02-1 1.6.8 |  |
| 282 | 1.4.5 | 요구사항추적표 매핑 | 2d | 2007-07-09 A | 2007-07-10 A | 100% | 2007-07-09 | 2007-07-10 | 2d | start no earlier than 2007-07-09 | 서종민; 이창수; 지용근; 김영석 | 64h | 64h | 8 | 8 | 8 | 단계완료 | C02-1 1.6.8 |  |
| 283 | 1.4.6 | 요구사항규모측정방법 교육 및 측정 | 5d | 2007-07-09 A | 2007-07-13 A | 100% | 2007-07-09 | 2007-07-13 | 5d | start no earlier than 2007-07-09 | 서종민; 이창수; 지용근; 김영석 | 160h | 160h | 20 | 20 | 20 | 단계완료 | C02-1 1.6.8 |  |
| 284 | 1.4.7 | 고객검토(1차) 실시 및 조치 | 12d | 2007-07-16 A | 2007-08-01 A | 100% | 2007-07-16 | 2007-08-01 | 12d | start no earlier than 2007-07-16 | 서종민; 이창수; 지용근; 김영석 | 384h | 384h | 48 | 48 | 48 | 단계완료 | C02-1 1.6.8 |  |
| 285 | 2 | **설계** | 119d | 2007-07-09 A | 2007-12-31 A | 100% | 2007-07-09 | 2007-12-31 | 119d |  |  | 62504h | 62504h | 5,305 | 5,305 | 5,305 | 설계 | C02-1 1.3 |  |
| 286 | 2.1 | **설계단계착수 준비** | 8d | 2007-08-01 A | 2007-08-10 A | 100% | 2007-08-01 | 2007-08-10 | 8d |  |  | 1472h | 1472h | 128 | 128 | 128 | 단계착수 | C02-1 1.6.1 |  |
| 287 | 2.1.1 | 분석단계 시정조치 | 4d | 2007-08-01 A | 2007-08-06 A | 100% | 2007-08-01 | 2007-08-06 | 4d | start no earlier than 2007-08-01 | 이창수; 김백기; 정이훈; 양혜란; 서정호; 이해미; 윤승준; 송진현; 이천송; 차호병; 김경희; 표기웅; 송재규; 지용근; 김영석; 김정석; 정재순; 전형남; 박소연; 김영석B; 김형근; 선민국; 서종민 | 736h | 736h | 64 | 64 | 64 | 단계착수 | C02-1 1.6.1 |  |
| 288 | 2.1.2 | 설계단계착수 준비 | 4d | 2007-08-07 A | 2007-08-10 A | 100% | 2007-08-07 | 2007-08-10 | 4d | start no earlier than 2007-08-07 | 이창수; 김백기; 정이훈; 양혜란; 서정호; 이해미; 윤승준; 송진현; 이천송; 차호병; 김경희; 표기웅; 송재규; 지용근; 김영석; 김정석; 정재순; 전형남; 박소연; 김영석B; 김형근; 선민국; 서종민 | 736h | 736h | 64 | 64 | 64 | 단계착수 | C02-1 1.6.1 |  |
| 289 | 2.1 | **기본설계** | 31d | 2007-08-13 A | 2007-09-28 A | 100% | 2007-08-13 | 2007-09-28 | 31d |  |  | 12648h | 12648h | 1,065 | 1,065 | 1,065 | 기본설계 | C02-1 1.3.1 |  |
| 290 | 2.2.1 | **시스템구조 설계** | 9d | 2007-08-13 A | 2007-08-24 A | 100% | 2007-08-13 | 2007-08-24 | 9d |  |  | 2688h | 2688h | 224 | 224 | 224 | 기본설계 | C02-1 1.3.1 |  |
| 291 | 2.2.1.1 | **어플리케이션구조도작성** | 9d | 2007-08-13 A | 2007-08-24 A | 100% | 2007-08-13 | 2007-08-24 | 9d |  |  | 1728h | 1728h | 144 | 144 | 144 | 기본설계 | C02-1 1.3.1 |  |
| 292 | 2.2.1.1.1 | 여신공통 어플리케이션구조도작성 | 9d | 2007-08-13 A | 2007-08-24 A | 100% | 2007-08-13 | 2007-08-24 | 9d | start no earlier than 2007-08-13 | 이창수 | 72h | 72h | 9 | 9 | 9 | 기본설계 | C02-1 1.3.1 | 어플리케이션구조도 |
| 293 | 2.2.1.1.2 | 실행 어플리케이션구조도작성 | 9d | 2007-08-13 A | 2007-08-24 A | 100% | 2007-08-13 | 2007-08-24 | 9d | start no earlier than 2007-08-13 | 김백기; 정이훈 | 144h | 144h | 9 | 9 | 9 | 기본설계 | C02-1 1.3.1 | 어플리케이션구조도 |
| 294 | 2.2.1.1.3 | 상환 어플리케이션구조도작성 | 9d | 2007-08-13 A | 2007-08-24 A | 100% | 2007-08-13 | 2007-08-24 | 9d | start no earlier than 2007-08-13 | 양혜란; 서정호; 이해미; 염정호 | 288h | 288h | 18 | 18 | 18 | 기본설계 | C02-1 1.3.1 | 어플리케이션구조도 |
| 295 | 2.2.1.1.4 | 여신등록(한도) 어플리케이션구조도작성 | 9d | 2007-08-13 A | 2007-08-24 A | 100% | 2007-08-13 | 2007-08-24 | 9d | start no earlier than 2007-08-13 | 윤승준; 송진현; 이천송 | 216h | 216h | 9 | 9 | 9 | 기본설계 | C02-1 1.3.1 | 어플리케이션구조도 |
| 296 | 2.2.1.1.5 | 금리관리 어플리케이션구조도작성 | 9d | 2007-08-13 A | 2007-08-24 A | 100% | 2007-08-13 | 2007-08-24 | 9d | start no earlier than 2007-08-13 | 차호병 | 72h | 72h | 9 | 9 | 9 | 기본설계 | C02-1 1.3.1 | 어플리케이션구조도 |
| 297 | 2.2.1.1.6 | 통계정보 어플리케이션구조도작성 | 9d | 2007-08-13 A | 2007-08-24 A | 100% | 2007-08-13 | 2007-08-24 | 9d | start no earlier than 2007-08-13 | 송진현 | 72h | 72h | 9 | 9 | 9 | 기본설계 | C02-1 1.3.1 | 어플리케이션구조도 |
| 298 | 2.2.1.1.7 | 차입금 어플리케이션구조도작성 | 9d | 2007-08-13 A | 2007-08-24 A | 100% | 2007-08-13 | 2007-08-24 | 9d | start no earlier than 2007-08-13 | 김경희 | 72h | 72h | 9 | 9 | 9 | 기본설계 | C02-1 1.3.1 | 어플리케이션구조도 |
| 299 | 2.2.1.1.8 | 전자보증 어플리케이션구조도작성 | 9d | 2007-08-13 A | 2007-08-24 A | 100% | 2007-08-13 | 2007-08-24 | 9d | start no earlier than 2007-08-13 | 표기웅 | 72h | 72h | 9 | 9 | 9 | 기본설계 | C02-1 1.3.1 | 어플리케이션구조도 |
| 300 | 2.2.1.1.9 | 전자결제 어플리케이션구조도작성 | 9d | 2007-08-13 A | 2007-08-24 A | 100% | 2007-08-13 | 2007-08-24 | 9d | start no earlier than 2007-08-13 | 송재규 | 72h | 72h | 9 | 9 | 9 | 기본설계 | C02-1 1.3.1 | 어플리케이션구조도 |
| 301 | 2.2.1.1.10 | 기업심사 어플리케이션구조도작성 | 9d | 2007-08-13 A | 2007-08-24 A | 100% | 2007-08-13 | 2007-08-24 | 9d | start no earlier than 2007-08-13 | 지용근; 김영석 | 144h | 144h | 18 | 18 | 18 | 기본설계 | C02-1 1.3.1 | 어플리케이션구조도 |
| 302 | 2.2.1.1.11 | 종합자금 어플리케이션구조도작성 | 9d | 2007-08-13 A | 2007-08-24 A | 100% | 2007-08-13 | 2007-08-24 | 9d | start no earlier than 2007-08-13 | 김정석 | 72h | 72h | 9 | 9 | 9 | 기본설계 | C02-1 1.3.1 | 어플리케이션구조도 |
| 303 | 2.2.1.1.12 | 감정담보 어플리케이션구조도작성 | 9d | 2007-08-13 A | 2007-08-24 A | 100% | 2007-08-13 | 2007-08-24 | 9d | start no earlier than 2007-08-13 | 정재순 | 72h | 72h | 9 | 9 | 9 | 기본설계 | C02-1 1.3.1 | 어플리케이션구조도 |
| 304 | 2.2.1.1.13 | 개인심사 어플리케이션구조도작성 | 9d | 2007-08-13 A | 2007-08-24 A | 100% | 2007-08-13 | 2007-08-24 | 9d | start no earlier than 2007-08-13 | 전형남; 박소연 | 144h | 144h | 9 | 9 | 9 | 기본설계 | C02-1 1.3.1 | 어플리케이션구조도 |
| 305 | 2.2.1.1.14 | 국민주택 어플리케이션구조도작성 | 9d | 2007-08-13 A | 2007-08-24 A | 100% | 2007-08-13 | 2007-08-24 | 9d | start no earlier than 2007-08-13 | 김영석B | 72h | 72h |  |  |  | 기본설계 | C02-1 1.3.1 | 어플리케이션구조도 |
| 306 | 2.2.1.1.15 | 신용조사 어플리케이션구조도작성 | 9d | 2007-08-13 A | 2007-08-24 A | 100% | 2007-08-13 | 2007-08-24 | 9d | start no earlier than 2007-08-13 | 김형근 | 72h | 72h | 9 | 9 | 9 | 기본설계 | C02-1 1.3.1 | 어플리케이션구조도 |
| 307 | 2.2.1.1.16 | 금리결정 어플리케이션구조도작성 | 9d | 2007-08-13 A | 2007-08-24 A | 100% | 2007-08-13 | 2007-08-24 | 9d | start no earlier than 2007-08-13 | 선민국 | 72h | 72h |  |  |  | 기본설계 | C02-1 1.3.1 | 어플리케이션구조도 |

| ID | WBS | Task | Duration | Start | Finish | Complete | Baseline start | Baseline finish | Baseline duration | Constraint | Resources | Work | Actual work | Cost | Baseline cost | Actual cost | Text20 | Text26 | Text30 |
| --- | --- | --- | --- | --- | --- | --- | --- | --- | --- | --- | --- | --- | --- | --- | --- | --- | --- | --- | --- |
| 308 | 2.2.1.2 | **프로그램목록작성** | 5d | 2007-08-20 A | 2007-08-24 A | 100% | 2007-08-20 | 2007-08-24 | 5d |  |  | 960h | 960h | 80 | 80 | 80 | 기본설계 | C02-1 1.3.1 |  |
| 309 | 2.2.1.2.1 | 여신공통 프로그램목록 작성 | 5d | 2007-08-20 A | 2007-08-24 A | 100% | 2007-08-20 | 2007-08-24 | 5d | start no earlier than 2007-08-20 | 이창수 | 40h | 40h | 5 | 5 | 5 | 기본설계 | C02-1 1.3.1 | 프로그램목록 |
| 310 | 2.2.1.2.2 | 실행 프로그램목록작성 | 5d | 2007-08-20 A | 2007-08-24 A | 100% | 2007-08-20 | 2007-08-24 | 5d | start no earlier than 2007-08-20 | 김백기; 정이훈 | 80h | 80h | 5 | 5 | 5 | 기본설계 | C02-1 1.3.1 | 프로그램목록 |
| 311 | 2.2.1.2.3 | 상환 프로그램목록작성 | 5d | 2007-08-20 A | 2007-08-24 A | 100% | 2007-08-20 | 2007-08-24 | 5d | start no earlier than 2007-08-20 | 양혜란; 서정호; 이해미; 염정호 | 160h | 160h | 10 | 10 | 10 | 기본설계 | C02-1 1.3.1 | 프로그램목록 |
| 312 | 2.2.1.2.4 | 여신등록(한도) 프로그램목록작성 | 5d | 2007-08-20 A | 2007-08-24 A | 100% | 2007-08-20 | 2007-08-24 | 5d | start no earlier than 2007-08-20 | 윤승준; 송진현; 이천송 | 120h | 120h | 5 | 5 | 5 | 기본설계 | C02-1 1.3.1 | 프로그램목록 |
| 313 | 2.2.1.2.5 | 금리관리 프로그램목록작성 | 5d | 2007-08-20 A | 2007-08-24 A | 100% | 2007-08-20 | 2007-08-24 | 5d | start no earlier than 2007-08-20 | 차호병 | 40h | 40h | 5 | 5 | 5 | 기본설계 | C02-1 1.3.1 | 프로그램목록 |
| 314 | 2.2.1.2.6 | 통계정보 프로그램목록작성 | 5d | 2007-08-20 A | 2007-08-24 A | 100% | 2007-08-20 | 2007-08-24 | 5d | start no earlier than 2007-08-20 | 송진현 | 40h | 40h | 5 | 5 | 5 | 기본설계 | C02-1 1.3.1 | 프로그램목록 |
| 315 | 2.2.1.2.7 | 차입금 프로그램목록작성 | 5d | 2007-08-20 A | 2007-08-24 A | 100% | 2007-08-20 | 2007-08-24 | 5d | start no earlier than 2007-08-20 | 김경희 | 40h | 40h | 5 | 5 | 5 | 기본설계 | C02-1 1.3.1 | 프로그램목록 |
| 316 | 2.2.1.2.8 | 전자보증 프로그램목록작성 | 5d | 2007-08-20 A | 2007-08-24 A | 100% | 2007-08-20 | 2007-08-24 | 5d | start no earlier than 2007-08-20 | 표기웅 | 40h | 40h | 5 | 5 | 5 | 기본설계 | C02-1 1.3.1 | 프로그램목록 |
| 317 | 2.2.1.2.9 | 전자결제 프로그램목록작성 | 5d | 2007-08-20 A | 2007-08-24 A | 100% | 2007-08-20 | 2007-08-24 | 5d | start no earlier than 2007-08-20 | 송재규 | 40h | 40h | 5 | 5 | 5 | 기본설계 | C02-1 1.3.1 | 프로그램목록 |
| 318 | 2.2.1.2.10 | 기업심사 프로그램목록작성 | 5d | 2007-08-20 A | 2007-08-24 A | 100% | 2007-08-20 | 2007-08-24 | 5d | start no earlier than 2007-08-20 | 지용근; 김영석 | 80h | 80h | 10 | 10 | 10 | 기본설계 | C02-1 1.3.1 | 프로그램목록 |
| 319 | 2.2.1.2.11 | 종합자금 프로그램목록작성 | 5d | 2007-08-20 A | 2007-08-24 A | 100% | 2007-08-20 | 2007-08-24 | 5d | start no earlier than 2007-08-20 | 김정석 | 40h | 40h | 5 | 5 | 5 | 기본설계 | C02-1 1.3.1 | 프로그램목록 |
| 320 | 2.2.1.2.12 | 감정담보 프로그램목록작성 | 5d | 2007-08-20 A | 2007-08-24 A | 100% | 2007-08-20 | 2007-08-24 | 5d | start no earlier than 2007-08-20 | 정재순 | 40h | 40h | 5 | 5 | 5 | 기본설계 | C02-1 1.3.1 | 프로그램목록 |
| 321 | 2.2.1.2.13 | 개인심사 프로그램목록작성 | 5d | 2007-08-20 A | 2007-08-24 A | 100% | 2007-08-20 | 2007-08-24 | 5d | start no earlier than 2007-08-20 | 전형남; 박소연 | 80h | 80h | 5 | 5 | 5 | 기본설계 | C02-1 1.3.1 | 프로그램목록 |
| 322 | 2.2.1.2.14 | 국민주택 프로그램목록작성 | 5d | 2007-08-20 A | 2007-08-24 A | 100% | 2007-08-20 | 2007-08-24 | 5d | start no earlier than 2007-08-20 | 김영석B | 40h | 40h |  |  |  | 기본설계 | C02-1 1.3.1 | 프로그램목록 |
| 323 | 2.2.1.2.15 | 신용조사 프로그램목록작성 | 5d | 2007-08-20 A | 2007-08-24 A | 100% | 2007-08-20 | 2007-08-24 | 5d | start no earlier than 2007-08-20 | 김형근 | 40h | 40h | 5 | 5 | 5 | 기본설계 | C02-1 1.3.1 | 프로그램목록 |
| 324 | 2.2.1.2.16 | 금리결정 프로그램목록작성 | 5d | 2007-08-20 A | 2007-08-24 A | 100% | 2007-08-20 | 2007-08-24 | 5d | start no earlier than 2007-08-20 | 선민국 | 40h | 40h |  |  |  | 기본설계 | C02-1 1.3.1 | 프로그램목록 |
| 325 | 2.1.2 | 데이터코드 설계 | 4d | 2007-08-21 A | 2007-08-24 A | 100% | 2007-08-21 | 2007-08-24 | 4d | start no earlier than 2007-08-21 | 이창수; 김백기; 정이훈; 양혜란; 서정호; 이해미; 윤승준; 송진현; 이천송; 차호병; 김경희; 표기웅; 송재규; 지용근; 김영석; 김정석; 정재순; 전형남; 박소연; 김영석B; 김형근; 선민국; 서종민 | 736h | 736h | 64 | 64 | 64 | 기본설계 | C02-1 1.3.1 | 데이터코드 목록, 데이터코드 설계서 |
| 326 | 2.2.3 | **데이터베이스 기본설계** | 29d | 2007-08-13 A | 2007-09-21 A | 100% | 2007-08-13 | 2007-09-21 | 29d |  |  | 5528h | 5528h | 464 | 464 | 464 | 기본설계 | C02-1 1.3.1 |  |
| 327 | 2.2.3.1 | **상세논리모델링1차** | 14d | 2007-08-13 A | 2007-08-31 A | 100% | 2007-08-13 | 2007-08-31 | 14d |  |  | 2688h | 2688h | 224 | 224 | 224 | 기본설계 | C02-1 1.3.1 | ERD(논리) |
| 328 | 2.2.3.1.1 | 여신공통 상세논리모델링1차 | 14d | 2007-08-13 A | 2007-08-31 A | 100% | 2007-08-13 | 2007-08-31 | 14d | start no earlier than 2007-08-13 | 이창수 | 112h | 112h | 14 | 14 | 14 | 기본설계 | C02-1 1.3.1 | ERD(논리) |
| 329 | 2.2.3.1.2 | 실행 상세논리모델링1차 | 14d | 2007-08-13 A | 2007-08-31 A | 100% | 2007-08-13 | 2007-08-31 | 14d | start no earlier than 2007-08-13 | 김백기; 정이훈 | 224h | 224h | 14 | 14 | 14 | 기본설계 | C02-1 1.3.1 | ERD(논리) |
| 330 | 2.2.3.1.3 | 상환 상세논리모델링1차 | 14d | 2007-08-13 A | 2007-08-31 A | 100% | 2007-08-13 | 2007-08-31 | 14d | start no earlier than 2007-08-13 | 양혜란; 서정호; 이해미; 염정호 | 448h | 448h | 28 | 28 | 28 | 기본설계 | C02-1 1.3.1 | ERD(논리) |
| 331 | 2.2.3.1.4 | 여신등록(한도) 상세논리모델링1차 | 14d | 2007-08-13 A | 2007-08-31 A | 100% | 2007-08-13 | 2007-08-31 | 14d | start no earlier than 2007-08-13 | 윤승준; 송진현; 이천송 | 336h | 336h | 14 | 14 | 14 | 기본설계 | C02-1 1.3.1 | ERD(논리) |
| 332 | 2.2.3.1.5 | 금리관리 상세논리모델링1차 | 14d | 2007-08-13 A | 2007-08-31 A | 100% | 2007-08-13 | 2007-08-31 | 14d | start no earlier than 2007-08-13 | 차호병 | 112h | 112h | 14 | 14 | 14 | 기본설계 | C02-1 1.3.1 | ERD(논리) |
| 333 | 2.2.3.1.6 | 통계정보 상세논리모델링1차 | 14d | 2007-08-13 A | 2007-08-31 A | 100% | 2007-08-13 | 2007-08-31 | 14d | start no earlier than 2007-08-13 | 송진현 | 112h | 112h | 14 | 14 | 14 | 기본설계 | C02-1 1.3.1 | ERD(논리) |
| 334 | 2.2.3.1.7 | 차입금 상세논리모델링1차 | 14d | 2007-08-13 A | 2007-08-31 A | 100% | 2007-08-13 | 2007-08-31 | 14d | start no earlier than 2007-08-13 | 김경희 | 112h | 112h | 14 | 14 | 14 | 기본설계 | C02-1 1.3.1 | ERD(논리) |
| 335 | 2.2.3.1.8 | 전자보증 상세논리모델링1차 | 14d | 2007-08-13 A | 2007-08-31 A | 100% | 2007-08-13 | 2007-08-31 | 14d | start no earlier than 2007-08-13 | 표기웅 | 112h | 112h | 14 | 14 | 14 | 기본설계 | C02-1 1.3.1 | ERD(논리) |
| 336 | 2.2.3.1.9 | 전자결재 상세논리모델링1차 | 14d | 2007-08-13 A | 2007-08-31 A | 100% | 2007-08-13 | 2007-08-31 | 14d | start no earlier than 2007-08-13 | 송재규 | 112h | 112h | 14 | 14 | 14 | 기본설계 | C02-1 1.3.1 | ERD(논리) |
| 337 | 2.2.3.1.10 | 기업심사 상세논리모델링1차 | 14d | 2007-08-13 A | 2007-08-31 A | 100% | 2007-08-13 | 2007-08-31 | 14d | start no earlier than 2007-08-13 | 지용근; 김영석 | 224h | 224h | 28 | 28 | 28 | 기본설계 | C02-1 1.3.1 | ERD(논리) |
| 338 | 2.2.3.1.11 | 종합자금 상세논리모델링1차 | 14d | 2007-08-13 A | 2007-08-31 A | 100% | 2007-08-13 | 2007-08-31 | 14d | start no earlier than 2007-08-13 | 김정석 | 112h | 112h | 14 | 14 | 14 | 기본설계 | C02-1 1.3.1 | ERD(논리) |
| 339 | 2.2.3.1.12 | 감정담보 상세논리모델링1차 | 14d | 2007-08-13 A | 2007-08-31 A | 100% | 2007-08-13 | 2007-08-31 | 14d | start no earlier than 2007-08-13 | 정재순 | 112h | 112h | 14 | 14 | 14 | 기본설계 | C02-1 1.3.1 | ERD(논리) |
| 340 | 2.2.3.1.13 | 개인심사 상세논리모델링1차 | 14d | 2007-08-13 A | 2007-08-31 A | 100% | 2007-08-13 | 2007-08-31 | 14d | start no earlier than 2007-08-13 | 전형남; 박소연 | 224h | 224h | 14 | 14 | 14 | 기본설계 | C02-1 1.3.1 | ERD(논리) |
| 341 | 2.2.3.1.14 | 국민주택 상세논리모델링1차 | 14d | 2007-08-13 A | 2007-08-31 A | 100% | 2007-08-13 | 2007-08-31 | 14d | start no earlier than 2007-08-13 | 김영석B | 112h | 112h |  |  |  | 기본설계 | C02-1 1.3.1 | ERD(논리) |
| 342 | 2.2.3.1.15 | 신용조사 상세논리모델링1차 | 14d | 2007-08-13 A | 2007-08-31 A | 100% | 2007-08-13 | 2007-08-31 | 14d | start no earlier than 2007-08-13 | 김형근 | 112h | 112h | 14 | 14 | 14 | 기본설계 | C02-1 1.3.1 | ERD(논리) |
| 343 | 2.2.3.1.16 | 금리결정 상세논리모델링1차 | 14d | 2007-08-13 A | 2007-08-31 A | 100% | 2007-08-13 | 2007-08-31 | 14d | start no earlier than 2007-08-13 | 선민국 | 112h | 112h |  |  |  | 기본설계 | C02-1 1.3.1 | ERD(논리) |

| ID | WBS | Task | Duration | Start | Finish | Complete | Baseline start | Baseline finish | Baseline duration | Constraint | Resources | Work | Actual work | Cost | Baseline cost | Actual cost | Text20 | Text26 | Text30 |
| --- | --- | --- | --- | --- | --- | --- | --- | --- | --- | --- | --- | --- | --- | --- | --- | --- | --- | --- | --- |
| 344 | 2.2.3.2 | **상세논리모델링2차** | 10d | 2007-09-03 A | 2007-09-14 A | 100% | 2007-09-03 | 2007-09-14 | 10d |  |  | 1920h | 1920h | 160 | 160 | 160 | 기본설계 | C02-1 1.3.1 | ERD(논리) |
| 345 | 2.2.3.2.1 | 여신공통 상세논리모델링2차 | 10d | 2007-09-03 A | 2007-09-14 A | 100% | 2007-09-03 | 2007-09-14 | 10d | start no earlier than 2007-09-03 | 이창수 | 80h | 80h | 10 | 10 | 10 | 기본설계 | C02-1 1.3.1 | ERD(논리) |
| 346 | 2.2.3.2.2 | 실행 상세논리모델링2차 | 10d | 2007-09-03 A | 2007-09-14 A | 100% | 2007-09-03 | 2007-09-14 | 10d | start no earlier than 2007-09-03 | 김백기; 정이훈 | 160h | 160h | 10 | 10 | 10 | 기본설계 | C02-1 1.3.1 | ERD(논리) |
| 347 | 2.2.3.2.3 | 상환 상세논리모델링2차 | 10d | 2007-09-03 A | 2007-09-14 A | 100% | 2007-09-03 | 2007-09-14 | 10d | start no earlier than 2007-09-03 | 양혜란; 서정호; 이해미; 염정호 | 320h | 320h | 20 | 20 | 20 | 기본설계 | C02-1 1.3.1 | ERD(논리) |
| 348 | 2.2.3.2.4 | 여신등록(한도) 상세논리모델링1차 | 10d | 2007-09-03 A | 2007-09-14 A | 100% | 2007-09-03 | 2007-09-14 | 10d | start no earlier than 2007-09-03 | 윤승준; 송진현; 이천송 | 240h | 240h | 10 | 10 | 10 | 기본설계 | C02-1 1.3.1 | ERD(논리) |
| 349 | 2.2.3.2.5 | 금리관리 상세논리모델링2차 | 10d | 2007-09-03 A | 2007-09-14 A | 100% | 2007-09-03 | 2007-09-14 | 10d | start no earlier than 2007-09-03 | 차호병 | 80h | 80h | 10 | 10 | 10 | 기본설계 | C02-1 1.3.1 | ERD(논리) |
| 350 | 2.2.3.2.6 | 통계정보 상세논리모델링2차 | 10d | 2007-09-03 A | 2007-09-14 A | 100% | 2007-09-03 | 2007-09-14 | 10d | start no earlier than 2007-09-03 | 송진현 | 80h | 80h | 10 | 10 | 10 | 기본설계 | C02-1 1.3.1 | ERD(논리) |
| 351 | 2.2.3.2.7 | 차입금 상세논리모델링2차 | 10d | 2007-09-03 A | 2007-09-14 A | 100% | 2007-09-03 | 2007-09-14 | 10d | start no earlier than 2007-09-03 | 김경희 | 80h | 80h | 10 | 10 | 10 | 기본설계 | C02-1 1.3.1 | ERD(논리) |
| 352 | 2.2.3.2.8 | 전자보증 상세논리모델링2차 | 10d | 2007-09-03 A | 2007-09-14 A | 100% | 2007-09-03 | 2007-09-14 | 10d | start no earlier than 2007-09-03 | 표기웅 | 80h | 80h | 10 | 10 | 10 | 기본설계 | C02-1 1.3.1 | ERD(논리) |
| 353 | 2.2.3.2.9 | 전자결재 상세논리모델링2차 | 10d | 2007-09-03 A | 2007-09-14 A | 100% | 2007-09-03 | 2007-09-14 | 10d | start no earlier than 2007-09-03 | 송재규 | 80h | 80h | 10 | 10 | 10 | 기본설계 | C02-1 1.3.1 | ERD(논리) |
| 354 | 2.2.3.2.10 | 기업심사 상세논리모델링2차 | 10d | 2007-09-03 A | 2007-09-14 A | 100% | 2007-09-03 | 2007-09-14 | 10d | start no earlier than 2007-09-03 | 지용근; 김영석 | 160h | 160h | 20 | 20 | 20 | 기본설계 | C02-1 1.3.1 | ERD(논리) |
| 355 | 2.2.3.2.11 | 종합자금 상세논리모델링2차 | 10d | 2007-09-03 A | 2007-09-14 A | 100% | 2007-09-03 | 2007-09-14 | 10d | start no earlier than 2007-09-03 | 김정석 | 80h | 80h | 10 | 10 | 10 | 기본설계 | C02-1 1.3.1 | ERD(논리) |
| 356 | 2.2.3.2.12 | 감정담보 상세논리모델링2차 | 10d | 2007-09-03 A | 2007-09-14 A | 100% | 2007-09-03 | 2007-09-14 | 10d | start no earlier than 2007-09-03 | 정재순 | 80h | 80h | 10 | 10 | 10 | 기본설계 | C02-1 1.3.1 | ERD(논리) |
| 357 | 2.2.3.2.13 | 개인심사 상세논리모델링2차 | 10d | 2007-09-03 A | 2007-09-14 A | 100% | 2007-09-03 | 2007-09-14 | 10d | start no earlier than 2007-09-03 | 전형남; 박소연 | 160h | 160h | 10 | 10 | 10 | 기본설계 | C02-1 1.3.1 | ERD(논리) |
| 358 | 2.2.3.2.14 | 국민주택 상세논리모델링2차 | 10d | 2007-09-03 A | 2007-09-14 A | 100% | 2007-09-03 | 2007-09-14 | 10d | start no earlier than 2007-09-03 | 김영석B | 80h | 80h |  |  |  | 기본설계 | C02-1 1.3.1 | ERD(논리) |
| 359 | 2.2.3.2.15 | 신용조사 상세논리모델링2차 | 10d | 2007-09-03 A | 2007-09-14 A | 100% | 2007-09-03 | 2007-09-14 | 10d | start no earlier than 2007-09-03 | 김형근 | 80h | 80h | 10 | 10 | 10 | 기본설계 | C02-1 1.3.1 | ERD(논리) |
| 360 | 2.2.3.2.16 | 금리결정 상세논리모델링2차 | 10d | 2007-09-03 A | 2007-09-14 A | 100% | 2007-09-03 | 2007-09-14 | 10d | start no earlier than 2007-09-03 | 선민국 | 80h | 80h |  |  |  | 기본설계 | C02-1 1.3.1 | ERD(논리) |
| 361 | 2.2.3.3 | 상세논리모델 Review 및 수정 | 5d | 2007-09-17 A | 2007-09-21 A | 100% | 2007-09-17 | 2007-09-21 | 5d | start no earlier than 2007-09-17 | 이창수; 김백기; 정이훈; 양혜란; 서정호; 이해미; 윤승준; 송진현; 이천송; 차호병; 김경희; 표기웅; 송재규; 지용근; 김영석; 김정석; 정재순; 전형남; 박소연; 김영석B; 김형근; 선민국; 서종민 | 920h | 920h | 80 | 80 | 80 | 기본설계 | C02-1 1.3.1 | ERD(논리) |
| 362 | 2.1.3 | **화면 및 보고서 설계** | 22d | 2007-08-27 A | 2007-09-28 A | 100% | 2007-08-27 | 2007-09-28 | 22d |  |  | 3696h | 3696h | 313 | 313 | 313 | 기본설계 | C02-1 1.3.1 |  |
| 363 | 2.1.3 | **화면 설계** | 14d | 2007-08-27 A | 2007-09-13 A | 100% | 2007-08-27 | 2007-09-13 | 14d |  |  | 2336h | 2336h | 198 | 198 | 198 | 기본설계 | C02-1 1.3.1 |  |
| 364 | 2.1.3 | 화면표준정의 | 2d | 2007-08-27 A | 2007-08-28 A | 100% | 2007-08-27 | 2007-08-28 | 2d | start no earlier than 2007-08-27 | 서종민; 이창수; 지용근 | 48h | 48h | 6 | 6 | 6 | 기본설계 | C02-1 1.3.1 |  |
| 365 | 2.1.3 | 화면목록작성 | 2d | 2007-08-29 A | 2007-08-30 A | 100% | 2007-08-29 | 2007-08-30 | 2d | start no earlier than 2007-08-29 | 이창수; 김백기; 정이훈; 양혜란; 서정호; 이해미; 윤승준; 송진현; 이천송; 차호병; 김경희; 표기웅; 송재규; 지용근; 김영석; 김정석; 정재순; 전형남; 박소연; 김영석B; 김형근; 선민국; 서종민 | 368h | 368h | 32 | 32 | 32 | 기본설계 | C02-1 1.3.1 | 화면목록 |
| 366 | 2.1.3 | **화면 레이아웃 작성** | 10d | 2007-08-31 A | 2007-09-13 A | 100% | 2007-08-31 | 2007-09-13 | 10d |  |  | 1920h | 1920h | 160 | 160 | 160 | 기본설계 | C02-1 1.3.1 |  |
| 367 | 2.1.3 | 여신공통 화면 레이아웃 작성 | 10d | 2007-08-31 A | 2007-09-13 A | 100% | 2007-08-31 | 2007-09-13 | 10d | start no earlier than 2007-08-31 | 이창수 | 80h | 80h | 10 | 10 | 10 | 기본설계 | C02-1 1.3.1 | 화면레이아웃 |
| 368 | 2.1.3 | 실행 화면 레이아웃 작성 | 10d | 2007-08-31 A | 2007-09-13 A | 100% | 2007-08-31 | 2007-09-13 | 10d | start no earlier than 2007-08-31 | 김백기; 정이훈 | 160h | 160h | 10 | 10 | 10 | 기본설계 | C02-1 1.3.1 | 화면레이아웃 |
| 369 | 2.1.3 | 상환 화면 레이아웃 작성 | 10d | 2007-08-31 A | 2007-09-13 A | 100% | 2007-08-31 | 2007-09-13 | 10d | start no earlier than 2007-08-31 | 양혜란; 서정호; 이해미; 염정호 | 320h | 320h | 20 | 20 | 20 | 기본설계 | C02-1 1.3.1 | 화면레이아웃 |
| 370 | 2.1.3 | 여신등록(한도) 화면 레이아웃 작성 | 10d | 2007-08-31 A | 2007-09-13 A | 100% | 2007-08-31 | 2007-09-13 | 10d | start no earlier than 2007-08-31 | 윤승준; 송진현; 이천송 | 240h | 240h | 10 | 10 | 10 | 기본설계 | C02-1 1.3.1 | 화면레이아웃 |
| 371 | 2.1.3 | 금리관리 화면 레이아웃 작성 | 10d | 2007-08-31 A | 2007-09-13 A | 100% | 2007-08-31 | 2007-09-13 | 10d | start no earlier than 2007-08-31 | 차호병 | 80h | 80h | 10 | 10 | 10 | 기본설계 | C02-1 1.3.1 | 화면레이아웃 |
| 372 | 2.1.3 | 통계정보 화면 레이아웃 작성 | 10d | 2007-08-31 A | 2007-09-13 A | 100% | 2007-08-31 | 2007-09-13 | 10d | start no earlier than 2007-08-31 | 송진현 | 80h | 80h | 10 | 10 | 10 | 기본설계 | C02-1 1.3.1 | 화면레이아웃 |
| 373 | 2.1.3 | 차입금 화면 레이아웃 작성 | 10d | 2007-08-31 A | 2007-09-13 A | 100% | 2007-08-31 | 2007-09-13 | 10d | start no earlier than 2007-08-31 | 김경희 | 80h | 80h | 10 | 10 | 10 | 기본설계 | C02-1 1.3.1 | 화면레이아웃 |
| 374 | 2.1.3 | 전자보증 화면 레이아웃 작성 | 10d | 2007-08-31 A | 2007-09-13 A | 100% | 2007-08-31 | 2007-09-13 | 10d | start no earlier than 2007-08-31 | 표기웅 | 80h | 80h | 10 | 10 | 10 | 기본설계 | C02-1 1.3.1 | 화면레이아웃 |
| 375 | 2.1.3 | 전자결재 화면 레이아웃 작성 | 10d | 2007-08-31 A | 2007-09-13 A | 100% | 2007-08-31 | 2007-09-13 | 10d | start no earlier than 2007-08-31 | 송재규 | 80h | 80h | 10 | 10 | 10 | 기본설계 | C02-1 1.3.1 | 화면레이아웃 |
| 376 | 2.1.3 | 기업심사 화면 레이아웃 작성 | 10d | 2007-08-31 A | 2007-09-13 A | 100% | 2007-08-31 | 2007-09-13 | 10d | start no earlier than 2007-08-31 | 지용근; 김영석 | 160h | 160h | 20 | 20 | 20 | 기본설계 | C02-1 1.3.1 | 화면레이아웃 |
| 377 | 2.1.3 | 종합자금 화면 레이아웃 작성 | 10d | 2007-08-31 A | 2007-09-13 A | 100% | 2007-08-31 | 2007-09-13 | 10d | start no earlier than 2007-08-31 | 김정석 | 80h | 80h | 10 | 10 | 10 | 기본설계 | C02-1 1.3.1 | 화면레이아웃 |
| 378 | 2.1.3 | 감정담보 화면 레이아웃 작성 | 10d | 2007-08-31 A | 2007-09-13 A | 100% | 2007-08-31 | 2007-09-13 | 10d | start no earlier than 2007-08-31 | 정재순 | 80h | 80h | 10 | 10 | 10 | 기본설계 | C02-1 1.3.1 | 화면레이아웃 |
| 379 | 2.1.3 | 개인심사 화면 레이아웃 작성 | 10d | 2007-08-31 A | 2007-09-13 A | 100% | 2007-08-31 | 2007-09-13 | 10d | start no earlier than 2007-08-31 | 전형남; 박소연 | 160h | 160h | 10 | 10 | 10 | 기본설계 | C02-1 1.3.1 | 화면레이아웃 |
| 380 | 2.1.3 | 국민주택 화면 레이아웃 작성 | 10d | 2007-08-31 A | 2007-09-13 A | 100% | 2007-08-31 | 2007-09-13 | 10d | start no earlier than 2007-08-31 | 김영석B | 80h | 80h |  |  |  | 기본설계 | C02-1 1.3.1 | 화면레이아웃 |
| 381 | 2.1.3 | 신용조사 화면 레이아웃 작성 | 10d | 2007-08-31 A | 2007-09-13 A | 100% | 2007-08-31 | 2007-09-13 | 10d | start no earlier than 2007-08-31 | 김형근 | 80h | 80h | 10 | 10 | 10 | 기본설계 | C02-1 1.3.1 | 화면레이아웃 |
| 382 | 2.1.3 | 금리결정 화면 레이아웃 작성 | 10d | 2007-08-31 A | 2007-09-13 A | 100% | 2007-08-31 | 2007-09-13 | 10d | start no earlier than 2007-08-31 | 선민국 | 80h | 80h |  |  |  | 기본설계 | C02-1 1.3.1 | 화면레이아웃 |

| ID | WBS | Task | Duration | Start | Finish | Complete | Baseline start | Baseline finish | Baseline duration | Constraint | Resources | Work | Actual work | Cost | Baseline cost | Actual cost | Text20 | Text26 | Text30 |
| --- | --- | --- | --- | --- | --- | --- | --- | --- | --- | --- | --- | --- | --- | --- | --- | --- | --- | --- | --- |
| 383 | 2.1.3 | **보고서 설계** | 8d | 2007-09-14 A | 2007-09-28 A | 100% | 2007-09-14 | 2007-09-28 | 8d |  |  | 1360h | 1360h | 115 | 115 | 115 | 기본설계 | C02-1 1.3.1 |  |
| 384 | 2.1.3 | 보고서표준정의 | 1d | 2007-09-14 A | 2007-09-14 A | 100% | 2007-09-14 | 2007-09-14 | 1d | start no earlier than 2007-09-14 | 서종민; 이창수; 지용근 | 24h | 24h | 3 | 3 | 3 | 기본설계 | C02-1 1.3.1 |  |
| 385 | 2.1.3 | 보고서목록작성 | 1d | 2007-09-17 A | 2007-09-17 A | 100% | 2007-09-17 | 2007-09-17 | 1d | start no earlier than 2007-09-17 | 이창수; 김백기; 정이훈; 양혜란; 서정호; 이해미; 윤승준; 송진현; 이천송; 차호병; 김경희; 표기웅; 송재규; 지용근; 김영석; 김정석; 정재순; 전형남; 박소연; 김영석B; 김형근; 선민국; 서종민 | 184h | 184h | 16 | 16 | 16 | 기본설계 | C02-1 1.3.1 | 보고서목록 |
| 386 | 2.1.3 | **보고서 레이아웃 작성** | 6d | 2007-09-18 A | 2007-09-28 A | 100% | 2007-09-18 | 2007-09-28 | 6d |  |  | 1152h | 1152h | 96 | 96 | 96 | 기본설계 | C02-1 1.3.1 |  |
| 387 | 2.1.3 | 여신공통 보고서 레이아웃 작성 | 6d | 2007-09-18 A | 2007-09-28 A | 100% | 2007-09-18 | 2007-09-28 | 6d | start no earlier than 2007-09-18 | 이창수 | 48h | 48h | 6 | 6 | 6 | 기본설계 | C02-1 1.3.1 | 보고서레이아웃 |
| 388 | 2.1.3 | 실행 보고서 레이아웃 작성 | 6d | 2007-09-18 A | 2007-09-28 A | 100% | 2007-09-18 | 2007-09-28 | 6d | start no earlier than 2007-09-18 | 김백기; 정이훈 | 96h | 96h | 6 | 6 | 6 | 기본설계 | C02-1 1.3.1 | 보고서레이아웃 |
| 389 | 2.1.3 | 상환 보고서 레이아웃 작성 | 6d | 2007-09-18 A | 2007-09-28 A | 100% | 2007-09-18 | 2007-09-28 | 6d | start no earlier than 2007-09-18 | 양혜란; 서정호; 이해미; 염정호 | 192h | 192h | 12 | 12 | 12 | 기본설계 | C02-1 1.3.1 | 보고서레이아웃 |
| 390 | 2.1.3 | 여신등록(한도) 보고서 레이아웃 작성 | 6d | 2007-09-18 A | 2007-09-28 A | 100% | 2007-09-18 | 2007-09-28 | 6d | start no earlier than 2007-09-18 | 윤승준; 송진현; 이천송 | 144h | 144h | 6 | 6 | 6 | 기본설계 | C02-1 1.3.1 | 보고서레이아웃 |
| 391 | 2.1.3 | 금리관리 보고서 레이아웃 작성 | 6d | 2007-09-18 A | 2007-09-28 A | 100% | 2007-09-18 | 2007-09-28 | 6d | start no earlier than 2007-09-18 | 차호병 | 48h | 48h | 6 | 6 | 6 | 기본설계 | C02-1 1.3.1 | 보고서레이아웃 |
| 392 | 2.1.3 | 통계정보 보고서 레이아웃 작성 | 6d | 2007-09-18 A | 2007-09-28 A | 100% | 2007-09-18 | 2007-09-28 | 6d | start no earlier than 2007-09-18 | 송진현 | 48h | 48h | 6 | 6 | 6 | 기본설계 | C02-1 1.3.1 | 보고서레이아웃 |
| 393 | 2.1.3 | 차입금 보고서 레이아웃 작성 | 6d | 2007-09-18 A | 2007-09-28 A | 100% | 2007-09-18 | 2007-09-28 | 6d | start no earlier than 2007-09-18 | 김경희 | 48h | 48h | 6 | 6 | 6 | 기본설계 | C02-1 1.3.1 | 보고서레이아웃 |
| 394 | 2.1.3 | 전자보증 보고서 레이아웃 작성 | 6d | 2007-09-18 A | 2007-09-28 A | 100% | 2007-09-18 | 2007-09-28 | 6d | start no earlier than 2007-09-18 | 표기웅 | 48h | 48h | 6 | 6 | 6 | 기본설계 | C02-1 1.3.1 | 보고서레이아웃 |
| 395 | 2.1.3 | 전자결재 보고서 레이아웃 작성 | 6d | 2007-09-18 A | 2007-09-28 A | 100% | 2007-09-18 | 2007-09-28 | 6d | start no earlier than 2007-09-18 | 송재규 | 48h | 48h | 6 | 6 | 6 | 기본설계 | C02-1 1.3.1 | 보고서레이아웃 |
| 396 | 2.1.3 | 기업심사 보고서 레이아웃 작성 | 6d | 2007-09-18 A | 2007-09-28 A | 100% | 2007-09-18 | 2007-09-28 | 6d | start no earlier than 2007-09-18 | 지용근; 김영석 | 96h | 96h | 12 | 12 | 12 | 기본설계 | C02-1 1.3.1 | 보고서레이아웃 |
| 397 | 2.1.3 | 종합자금 보고서 레이아웃 작성 | 6d | 2007-09-18 A | 2007-09-28 A | 100% | 2007-09-18 | 2007-09-28 | 6d | start no earlier than 2007-09-18 | 김정석 | 48h | 48h | 6 | 6 | 6 | 기본설계 | C02-1 1.3.1 | 보고서레이아웃 |
| 398 | 2.1.3 | 감정담보 보고서 레이아웃 작성 | 6d | 2007-09-18 A | 2007-09-28 A | 100% | 2007-09-18 | 2007-09-28 | 6d | start no earlier than 2007-09-18 | 정재순 | 48h | 48h | 6 | 6 | 6 | 기본설계 | C02-1 1.3.1 | 보고서레이아웃 |
| 399 | 2.1.3 | 개인심사 보고서 레이아웃 작성 | 6d | 2007-09-18 A | 2007-09-28 A | 100% | 2007-09-18 | 2007-09-28 | 6d | start no earlier than 2007-09-18 | 전형남; 박소연 | 96h | 96h | 6 | 6 | 6 | 기본설계 | C02-1 1.3.1 | 보고서레이아웃 |
| 400 | 2.1.3 | 국민주택 보고서 레이아웃 작성 | 6d | 2007-09-18 A | 2007-09-28 A | 100% | 2007-09-18 | 2007-09-28 | 6d | start no earlier than 2007-09-18 | 김영석B | 48h | 48h |  |  |  | 기본설계 | C02-1 1.3.1 | 보고서레이아웃 |
| 401 | 2.1.3 | 신용조사 보고서 레이아웃 작성 | 6d | 2007-09-18 A | 2007-09-28 A | 100% | 2007-09-18 | 2007-09-28 | 6d | start no earlier than 2007-09-18 | 김형근 | 48h | 48h | 6 | 6 | 6 | 기본설계 | C02-1 1.3.1 | 보고서레이아웃 |
| 402 | 2.1.3 | 금리결정 보고서 레이아웃 작성 | 6d | 2007-09-18 A | 2007-09-28 A | 100% | 2007-09-18 | 2007-09-28 | 6d | start no earlier than 2007-09-18 | 선민국 | 48h | 48h |  |  |  | 기본설계 | C02-1 1.3.1 | 보고서레이아웃 |
| 403 | 2.2 | **상세설계** | 54d | 2007-10-01 A | 2007-12-14 A | 100% | 2007-10-01 | 2007-12-14 | 54d |  |  | 19752h | 19752h | 1,617 | 1,617 | 1,617 | 상세설계 | C02-1 1.3.3 |  |
| 404 | 2.2.1 | **데이터베이스 상세설계** | 14d | 2007-10-01 A | 2007-10-19 A | 100% | 2007-10-01 | 2007-10-19 | 14d |  |  | 4528h | 4528h | 384 | 384 | 384 | 상세설계 | C02-1 1.3.3 |  |
| 405 | 2.2.1 | **ERD 작성** | 4d | 2007-10-01 A | 2007-10-05 A | 100% | 2007-10-01 | 2007-10-05 | 4d |  |  | 768h | 768h | 64 | 64 | 64 | 상세설계 | C02-1 1.3.3 | ERD(물리) |
| 406 | 2.2.1 | 여신공통 ERD 작성 | 4d | 2007-10-01 A | 2007-10-05 A | 100% | 2007-10-01 | 2007-10-05 | 4d | start no earlier than 2007-10-01 | 이창수 | 32h | 32h | 4 | 4 | 4 | 상세설계 | C02-1 1.3.3 | ERD(물리) |
| 407 | 2.2.1 | 실행 ERD 작성 | 4d | 2007-10-01 A | 2007-10-05 A | 100% | 2007-10-01 | 2007-10-05 | 4d | start no earlier than 2007-10-01 | 김백기; 정이훈 | 64h | 64h | 4 | 4 | 4 | 상세설계 | C02-1 1.3.3 | ERD(물리) |
| 408 | 2.2.1 | 상환 ERD 작성 | 4d | 2007-10-01 A | 2007-10-05 A | 100% | 2007-10-01 | 2007-10-05 | 4d | start no earlier than 2007-10-01 | 양혜란; 서정호; 이해미; 염정호 | 128h | 128h | 8 | 8 | 8 | 상세설계 | C02-1 1.3.3 | ERD(물리) |
| 409 | 2.2.1 | 여신등록(한도) ERD 작성 | 4d | 2007-10-01 A | 2007-10-05 A | 100% | 2007-10-01 | 2007-10-05 | 4d | start no earlier than 2007-10-01 | 윤승준; 송진현; 이천송 | 96h | 96h | 4 | 4 | 4 | 상세설계 | C02-1 1.3.3 | ERD(물리) |
| 410 | 2.2.1 | 금리관리 ERD 작성 | 4d | 2007-10-01 A | 2007-10-05 A | 100% | 2007-10-01 | 2007-10-05 | 4d | start no earlier than 2007-10-01 | 차호병 | 32h | 32h | 4 | 4 | 4 | 상세설계 | C02-1 1.3.3 | ERD(물리) |
| 411 | 2.2.1 | 통계정보 ERD 작성 | 4d | 2007-10-01 A | 2007-10-05 A | 100% | 2007-10-01 | 2007-10-05 | 4d | start no earlier than 2007-10-01 | 송진현 | 32h | 32h | 4 | 4 | 4 | 상세설계 | C02-1 1.3.3 | ERD(물리) |
| 412 | 2.2.1 | 차입금 ERD 작성 | 4d | 2007-10-01 A | 2007-10-05 A | 100% | 2007-10-01 | 2007-10-05 | 4d | start no earlier than 2007-10-01 | 김경희 | 32h | 32h | 4 | 4 | 4 | 상세설계 | C02-1 1.3.3 | ERD(물리) |
| 413 | 2.2.1 | 전자보증 ERD 작성 | 4d | 2007-10-01 A | 2007-10-05 A | 100% | 2007-10-01 | 2007-10-05 | 4d | start no earlier than 2007-10-01 | 표기웅 | 32h | 32h | 4 | 4 | 4 | 상세설계 | C02-1 1.3.3 | ERD(물리) |
| 414 | 2.2.1 | 전자결재 ERD 작성 | 4d | 2007-10-01 A | 2007-10-05 A | 100% | 2007-10-01 | 2007-10-05 | 4d | start no earlier than 2007-10-01 | 송재규 | 32h | 32h | 4 | 4 | 4 | 상세설계 | C02-1 1.3.3 | ERD(물리) |
| 415 | 2.2.1 | 기업심사 ERD 작성 | 4d | 2007-10-01 A | 2007-10-05 A | 100% | 2007-10-01 | 2007-10-05 | 4d | start no earlier than 2007-10-01 | 지용근; 김영석 | 64h | 64h | 8 | 8 | 8 | 상세설계 | C02-1 1.3.3 | ERD(물리) |
| 416 | 2.2.1 | 종합자금 ERD 작성 | 4d | 2007-10-01 A | 2007-10-05 A | 100% | 2007-10-01 | 2007-10-05 | 4d | start no earlier than 2007-10-01 | 김정석 | 32h | 32h | 4 | 4 | 4 | 상세설계 | C02-1 1.3.3 | ERD(물리) |
| 417 | 2.2.1 | 감정담보 ERD 작성 | 4d | 2007-10-01 A | 2007-10-05 A | 100% | 2007-10-01 | 2007-10-05 | 4d | start no earlier than 2007-10-01 | 정재순 | 32h | 32h | 4 | 4 | 4 | 상세설계 | C02-1 1.3.3 | ERD(물리) |
| 418 | 2.2.1 | 개인심사 ERD 작성 | 4d | 2007-10-01 A | 2007-10-05 A | 100% | 2007-10-01 | 2007-10-05 | 4d | start no earlier than 2007-10-01 | 전형남; 박소연 | 64h | 64h | 4 | 4 | 4 | 상세설계 | C02-1 1.3.3 | ERD(물리) |
| 419 | 2.2.1 | 국민주택 ERD 작성 | 4d | 2007-10-01 A | 2007-10-05 A | 100% | 2007-10-01 | 2007-10-05 | 4d | start no earlier than 2007-10-01 | 김영석B | 32h | 32h |  |  |  | 상세설계 | C02-1 1.3.3 | ERD(물리) |
| 420 | 2.2.1 | 신용조사 ERD 작성 | 4d | 2007-10-01 A | 2007-10-05 A | 100% | 2007-10-01 | 2007-10-05 | 4d | start no earlier than 2007-10-01 | 김형근 | 32h | 32h | 4 | 4 | 4 | 상세설계 | C02-1 1.3.3 | ERD(물리) |
| 421 | 2.2.1 | 금리결정 ERD 작성 | 4d | 2007-10-01 A | 2007-10-05 A | 100% | 2007-10-01 | 2007-10-05 | 4d | start no earlier than 2007-10-01 | 선민국 | 32h | 32h |  |  |  | 상세설계 | C02-1 1.3.3 | ERD(물리) |

| ID | WBS | Task | Duration | Start | Finish | Complete | Baseline start | Baseline finish | Baseline duration | Constraint | Resources | Work | Actual work | Cost | Baseline cost | Actual cost | Text20 | Text26 | Text30 |
| --- | --- | --- | --- | --- | --- | --- | --- | --- | --- | --- | --- | --- | --- | --- | --- | --- | --- | --- | --- |
| 422 | 2.2.1 | **테이블정의서작성** | 5d | 2007-10-08 A | 2007-10-12 A | 100% | 2007-10-08 | 2007-10-12 | 5d |  |  | 960h | 960h | 80 | 80 | 80 | 상세설계 | C02-1 1.3.3 |  |
| 423 | 2.2.1 | 여신공통 테이블정의서작성 | 5d | 2007-10-08 A | 2007-10-12 A | 100% | 2007-10-08 | 2007-10-12 | 5d | start no earlier than 2007-10-08 | 이창수 | 40h | 40h | 5 | 5 | 5 | 상세설계 | C02-1 1.3.3 | 테이블목록, 테이블정의서 |
| 424 | 2.2.1 | 실행 테이블정의서작성 | 5d | 2007-10-08 A | 2007-10-12 A | 100% | 2007-10-08 | 2007-10-12 | 5d | start no earlier than 2007-10-08 | 김백기; 정이훈 | 80h | 80h | 5 | 5 | 5 | 상세설계 | C02-1 1.3.3 | 테이블목록, 테이블정의서 |
| 425 | 2.2.1 | 상환 테이블정의서작성 | 5d | 2007-10-08 A | 2007-10-12 A | 100% | 2007-10-08 | 2007-10-12 | 5d | start no earlier than 2007-10-08 | 양혜란; 서정호; 이해미; 염정호 | 160h | 160h | 10 | 10 | 10 | 상세설계 | C02-1 1.3.3 | 테이블목록, 테이블정의서 |
| 426 | 2.2.1 | 여신등록(한도) 테이블정의서작성 | 5d | 2007-10-08 A | 2007-10-12 A | 100% | 2007-10-08 | 2007-10-12 | 5d | start no earlier than 2007-10-08 | 윤승준; 송진현; 이천송 | 120h | 120h | 5 | 5 | 5 | 상세설계 | C02-1 1.3.3 | 테이블목록, 테이블정의서 |
| 427 | 2.2.1 | 금리관리 테이블정의서작성 | 5d | 2007-10-08 A | 2007-10-12 A | 100% | 2007-10-08 | 2007-10-12 | 5d | start no earlier than 2007-10-08 | 차호병 | 40h | 40h | 5 | 5 | 5 | 상세설계 | C02-1 1.3.3 | 테이블목록, 테이블정의서 |
| 428 | 2.2.1 | 통계정보 테이블정의서작성 | 5d | 2007-10-08 A | 2007-10-12 A | 100% | 2007-10-08 | 2007-10-12 | 5d | start no earlier than 2007-10-08 | 송진현 | 40h | 40h | 5 | 5 | 5 | 상세설계 | C02-1 1.3.3 | 테이블목록, 테이블정의서 |
| 429 | 2.2.1 | 차입금 테이블정의서작성 | 5d | 2007-10-08 A | 2007-10-12 A | 100% | 2007-10-08 | 2007-10-12 | 5d | start no earlier than 2007-10-08 | 김경희 | 40h | 40h | 5 | 5 | 5 | 상세설계 | C02-1 1.3.3 | 테이블목록, 테이블정의서 |
| 430 | 2.2.1 | 전자보증 테이블정의서작성 | 5d | 2007-10-08 A | 2007-10-12 A | 100% | 2007-10-08 | 2007-10-12 | 5d | start no earlier than 2007-10-08 | 표기웅 | 40h | 40h | 5 | 5 | 5 | 상세설계 | C02-1 1.3.3 | 테이블목록, 테이블정의서 |
| 431 | 2.2.1 | 전자결재 테이블정의서작성 | 5d | 2007-10-08 A | 2007-10-12 A | 100% | 2007-10-08 | 2007-10-12 | 5d | start no earlier than 2007-10-08 | 송재규 | 40h | 40h | 5 | 5 | 5 | 상세설계 | C02-1 1.3.3 | 테이블목록, 테이블정의서 |
| 432 | 2.2.1 | 기업심사 테이블정의서작성 | 5d | 2007-10-08 A | 2007-10-12 A | 100% | 2007-10-08 | 2007-10-12 | 5d | start no earlier than 2007-10-08 | 지용근; 김영석 | 80h | 80h | 10 | 10 | 10 | 상세설계 | C02-1 1.3.3 | 테이블목록, 테이블정의서 |
| 433 | 2.2.1 | 종합자금 테이블정의서작성 | 5d | 2007-10-08 A | 2007-10-12 A | 100% | 2007-10-08 | 2007-10-12 | 5d | start no earlier than 2007-10-08 | 김정석 | 40h | 40h | 5 | 5 | 5 | 상세설계 | C02-1 1.3.3 | 테이블목록, 테이블정의서 |
| 434 | 2.2.1 | 감정담보 테이블정의서작성 | 5d | 2007-10-08 A | 2007-10-12 A | 100% | 2007-10-08 | 2007-10-12 | 5d | start no earlier than 2007-10-08 | 정재순 | 40h | 40h | 5 | 5 | 5 | 상세설계 | C02-1 1.3.3 | 테이블목록, 테이블정의서 |
| 435 | 2.2.1 | 개인심사 테이블정의서작성 | 5d | 2007-10-08 A | 2007-10-12 A | 100% | 2007-10-08 | 2007-10-12 | 5d | start no earlier than 2007-10-08 | 전형남; 박소연 | 80h | 80h | 5 | 5 | 5 | 상세설계 | C02-1 1.3.3 | 테이블목록, 테이블정의서 |
| 436 | 2.2.1 | 국민주택 테이블정의서작성 | 5d | 2007-10-08 A | 2007-10-12 A | 100% | 2007-10-08 | 2007-10-12 | 5d | start no earlier than 2007-10-08 | 김영석B | 40h | 40h |  |  |  | 상세설계 | C02-1 1.3.3 | 테이블목록, 테이블정의서 |
| 437 | 2.2.1 | 신용조사 테이블정의서작성 | 5d | 2007-10-08 A | 2007-10-12 A | 100% | 2007-10-08 | 2007-10-12 | 5d | start no earlier than 2007-10-08 | 김형근 | 40h | 40h | 5 | 5 | 5 | 상세설계 | C02-1 1.3.3 | 테이블목록, 테이블정의서 |
| 438 | 2.2.1 | 금리결정 테이블정의서작성 | 5d | 2007-10-08 A | 2007-10-12 A | 100% | 2007-10-08 | 2007-10-12 | 5d | start no earlier than 2007-10-08 | 선민국 | 40h | 40h |  |  |  | 상세설계 | C02-1 1.3.3 | 테이블목록, 테이블정의서 |
| 439 | 2.2.1 | ERD Review 및 수정 | 10d | 2007-10-08 A | 2007-10-19 A | 100% | 2007-10-08 | 2007-10-19 | 10d | start no earlier than 2007-10-08 | 이창수; 김백기; 정이훈; 양혜란; 서정호; 이해미; 윤승준; 송진현; 이천송; 차호병; 김경희; 표기웅; 송재규; 지용근; 김영석; 김정석; 정재순; 전형남; 박소연; 김영석B; 김형근; 선민국; 서종민 | 1840h | 1840h | 160 | 160 | 160 | 상세설계 | C02-1 1.3.3 | ERD(물리) |
| 440 | 2.2.1 | **프로그램테이블상관도작성** | 5d | 2007-10-15 A | 2007-10-19 A | 100% | 2007-10-15 | 2007-10-19 | 5d |  |  | 960h | 960h | 80 | 80 | 80 | 상세설계 | C02-1 1.3.3 |  |
| 441 | 2.2.1 | 여신공통 프로그램테이블상관도작성 | 5d | 2007-10-15 A | 2007-10-19 A | 100% | 2007-10-15 | 2007-10-19 | 5d | start no earlier than 2007-10-15 | 이창수 | 40h | 40h | 5 | 5 | 5 | 상세설계 | C02-1 1.3.3 | 프로그램대테이블상관도 |
| 442 | 2.2.1 | 실행 프로그램테이블상관도작성 | 5d | 2007-10-15 A | 2007-10-19 A | 100% | 2007-10-15 | 2007-10-19 | 5d | start no earlier than 2007-10-15 | 김백기; 정이훈 | 80h | 80h | 5 | 5 | 5 | 상세설계 | C02-1 1.3.3 | 프로그램대테이블상관도 |
| 443 | 2.2.1 | 상환 프로그램테이블상관도작성 | 5d | 2007-10-15 A | 2007-10-19 A | 100% | 2007-10-15 | 2007-10-19 | 5d | start no earlier than 2007-10-15 | 양혜란; 서정호; 이해미; 염정호 | 160h | 160h | 10 | 10 | 10 | 상세설계 | C02-1 1.3.3 | 프로그램대테이블상관도 |
| 444 | 2.2.1 | 여신등록(한도) 프로그램테이블상관도작성 | 5d | 2007-10-15 A | 2007-10-19 A | 100% | 2007-10-15 | 2007-10-19 | 5d | start no earlier than 2007-10-15 | 윤승준; 송진현; 이천송 | 120h | 120h | 5 | 5 | 5 | 상세설계 | C02-1 1.3.3 | 프로그램대테이블상관도 |
| 445 | 2.2.1 | 금리관리 프로그램테이블상관도작성 | 5d | 2007-10-15 A | 2007-10-19 A | 100% | 2007-10-15 | 2007-10-19 | 5d | start no earlier than 2007-10-15 | 차호병 | 40h | 40h | 5 | 5 | 5 | 상세설계 | C02-1 1.3.3 | 프로그램대테이블상관도 |
| 446 | 2.2.1 | 통계정보 프로그램테이블상관도작성 | 5d | 2007-10-15 A | 2007-10-19 A | 100% | 2007-10-15 | 2007-10-19 | 5d | start no earlier than 2007-10-15 | 송진현 | 40h | 40h | 5 | 5 | 5 | 상세설계 | C02-1 1.3.3 | 프로그램대테이블상관도 |
| 447 | 2.2.1 | 차입금 프로그램테이블상관도작성 | 5d | 2007-10-15 A | 2007-10-19 A | 100% | 2007-10-15 | 2007-10-19 | 5d | start no earlier than 2007-10-15 | 김경희 | 40h | 40h | 5 | 5 | 5 | 상세설계 | C02-1 1.3.3 | 프로그램대테이블상관도 |
| 448 | 2.2.1 | 전자보증 프로그램테이블상관도작성 | 5d | 2007-10-15 A | 2007-10-19 A | 100% | 2007-10-15 | 2007-10-19 | 5d | start no earlier than 2007-10-15 | 표기웅 | 40h | 40h | 5 | 5 | 5 | 상세설계 | C02-1 1.3.3 | 프로그램대테이블상관도 |
| 449 | 2.2.1 | 전자결재 프로그램테이블상관도작성 | 5d | 2007-10-15 A | 2007-10-19 A | 100% | 2007-10-15 | 2007-10-19 | 5d | start no earlier than 2007-10-15 | 송재규 | 40h | 40h | 5 | 5 | 5 | 상세설계 | C02-1 1.3.3 | 프로그램대테이블상관도 |
| 450 | 2.2.1 | 기업심사 프로그램테이블상관도작성 | 5d | 2007-10-15 A | 2007-10-19 A | 100% | 2007-10-15 | 2007-10-19 | 5d | start no earlier than 2007-10-15 | 지용근; 김영석 | 80h | 80h | 10 | 10 | 10 | 상세설계 | C02-1 1.3.3 | 프로그램대테이블상관도 |
| 451 | 2.2.1 | 종합자금 프로그램테이블상관도작성 | 5d | 2007-10-15 A | 2007-10-19 A | 100% | 2007-10-15 | 2007-10-19 | 5d | start no earlier than 2007-10-15 | 김정석 | 40h | 40h | 5 | 5 | 5 | 상세설계 | C02-1 1.3.3 | 프로그램대테이블상관도 |
| 452 | 2.2.1 | 감정담보 프로그램테이블상관도작성 | 5d | 2007-10-15 A | 2007-10-19 A | 100% | 2007-10-15 | 2007-10-19 | 5d | start no earlier than 2007-10-15 | 정재순 | 40h | 40h | 5 | 5 | 5 | 상세설계 | C02-1 1.3.3 | 프로그램대테이블상관도 |
| 453 | 2.2.1 | 개인심사 프로그램테이블상관도작성 | 5d | 2007-10-15 A | 2007-10-19 A | 100% | 2007-10-15 | 2007-10-19 | 5d | start no earlier than 2007-10-15 | 전형남; 박소연 | 80h | 80h | 5 | 5 | 5 | 상세설계 | C02-1 1.3.3 | 프로그램대테이블상관도 |
| 454 | 2.2.1 | 국민주택 프로그램테이블상관도작성 | 5d | 2007-10-15 A | 2007-10-19 A | 100% | 2007-10-15 | 2007-10-19 | 5d | start no earlier than 2007-10-15 | 김영석B | 40h | 40h |  |  |  | 상세설계 | C02-1 1.3.3 | 프로그램대테이블상관도 |
| 455 | 2.2.1 | 신용조사 프로그램테이블상관도작성 | 5d | 2007-10-15 A | 2007-10-19 A | 100% | 2007-10-15 | 2007-10-19 | 5d | start no earlier than 2007-10-15 | 김형근 | 40h | 40h | 5 | 5 | 5 | 상세설계 | C02-1 1.3.3 | 프로그램대테이블상관도 |
| 456 | 2.2.1 | 금리결정 프로그램테이블상관도작성 | 5d | 2007-10-15 A | 2007-10-19 A | 100% | 2007-10-15 | 2007-10-19 | 5d | start no earlier than 2007-10-15 | 선민국 | 40h | 40h |  |  |  | 상세설계 | C02-1 1.3.3 | 프로그램대테이블상관도 |

| ID | WBS | Task | Duration | Start | Finish | Complete | Baseline start | Baseline finish | Baseline duration | Constraint | Resources | Work | Actual work | Cost | Baseline cost | Actual cost | Text20 | Text26 | Text30 |
| --- | --- | --- | --- | --- | --- | --- | --- | --- | --- | --- | --- | --- | --- | --- | --- | --- | --- | --- | --- |
| 457 | 2.2.2 | **인터페이스설계(상세)** | 10d | 2007-10-08 A | 2007-10-19 A | 100% | 2007-10-08 | 2007-10-19 | 10d |  |  | 1920h | 1920h | 160 | 160 | 160 | 상세설계 | C02-1 1.3.3 |  |
| 458 | 2.2.2 | 여신공통 인터페이스설계(상세) | 10d | 2007-10-08 A | 2007-10-19 A | 100% | 2007-10-08 | 2007-10-19 | 10d | start no earlier than 2007-10-08 | 이창수 | 80h | 80h | 10 | 10 | 10 | 상세설계 | C02-1 1.3.3 | 인터페이스설계서 |
| 459 | 2.2.2 | 실행 인터페이스설계(상세) | 10d | 2007-10-08 A | 2007-10-19 A | 100% | 2007-10-08 | 2007-10-19 | 10d | start no earlier than 2007-10-08 | 김백기; 정이훈 | 160h | 160h | 10 | 10 | 10 | 상세설계 | C02-1 1.3.3 | 인터페이스설계서 |
| 460 | 2.2.2 | 상환 인터페이스설계(상세) | 10d | 2007-10-08 A | 2007-10-19 A | 100% | 2007-10-08 | 2007-10-19 | 10d | start no earlier than 2007-10-08 | 양혜란; 서정호; 이해미; 염정호 | 320h | 320h | 20 | 20 | 20 | 상세설계 | C02-1 1.3.3 | 인터페이스설계서 |
| 461 | 2.2.2 | 여신등록(한도) 인터페이스설계(상세) | 10d | 2007-10-08 A | 2007-10-19 A | 100% | 2007-10-08 | 2007-10-19 | 10d | start no earlier than 2007-10-08 | 윤승준; 송진현; 이천송 | 240h | 240h | 10 | 10 | 10 | 상세설계 | C02-1 1.3.3 | 인터페이스설계서 |
| 462 | 2.2.2 | 금리관리 인터페이스설계(상세) | 10d | 2007-10-08 A | 2007-10-19 A | 100% | 2007-10-08 | 2007-10-19 | 10d | start no earlier than 2007-10-08 | 차호병 | 80h | 80h | 10 | 10 | 10 | 상세설계 | C02-1 1.3.3 | 인터페이스설계서 |
| 463 | 2.2.2 | 통계정보 인터페이스설계(상세) | 10d | 2007-10-08 A | 2007-10-19 A | 100% | 2007-10-08 | 2007-10-19 | 10d | start no earlier than 2007-10-08 | 송진현 | 80h | 80h | 10 | 10 | 10 | 상세설계 | C02-1 1.3.3 | 인터페이스설계서 |
| 464 | 2.2.2 | 차입금 인터페이스설계(상세) | 10d | 2007-10-08 A | 2007-10-19 A | 100% | 2007-10-08 | 2007-10-19 | 10d | start no earlier than 2007-10-08 | 김경희 | 80h | 80h | 10 | 10 | 10 | 상세설계 | C02-1 1.3.3 | 인터페이스설계서 |
| 465 | 2.2.2 | 전자보증 인터페이스설계(상세) | 10d | 2007-10-08 A | 2007-10-19 A | 100% | 2007-10-08 | 2007-10-19 | 10d | start no earlier than 2007-10-08 | 표기웅 | 80h | 80h | 10 | 10 | 10 | 상세설계 | C02-1 1.3.3 | 인터페이스설계서 |
| 466 | 2.2.2 | 전자결재 인터페이스설계(상세) | 10d | 2007-10-08 A | 2007-10-19 A | 100% | 2007-10-08 | 2007-10-19 | 10d | start no earlier than 2007-10-08 | 송재규 | 80h | 80h | 10 | 10 | 10 | 상세설계 | C02-1 1.3.3 | 인터페이스설계서 |
| 467 | 2.2.2 | 기업심사 인터페이스설계(상세) | 10d | 2007-10-08 A | 2007-10-19 A | 100% | 2007-10-08 | 2007-10-19 | 10d | start no earlier than 2007-10-08 | 지용근; 김영석 | 160h | 160h | 20 | 20 | 20 | 상세설계 | C02-1 1.3.3 | 인터페이스설계서 |
| 468 | 2.2.2 | 종합자금 인터페이스설계(상세) | 10d | 2007-10-08 A | 2007-10-19 A | 100% | 2007-10-08 | 2007-10-19 | 10d | start no earlier than 2007-10-08 | 김정석 | 80h | 80h | 10 | 10 | 10 | 상세설계 | C02-1 1.3.3 | 인터페이스설계서 |
| 469 | 2.2.2 | 감정담보 인터페이스설계(상세) | 10d | 2007-10-08 A | 2007-10-19 A | 100% | 2007-10-08 | 2007-10-19 | 10d | start no earlier than 2007-10-08 | 정재순 | 80h | 80h | 10 | 10 | 10 | 상세설계 | C02-1 1.3.3 | 인터페이스설계서 |
| 470 | 2.2.2 | 개인심사 인터페이스설계(상세) | 10d | 2007-10-08 A | 2007-10-19 A | 100% | 2007-10-08 | 2007-10-19 | 10d | start no earlier than 2007-10-08 | 전형남; 박소연 | 160h | 160h | 10 | 10 | 10 | 상세설계 | C02-1 1.3.3 | 인터페이스설계서 |
| 471 | 2.2.2 | 국민주택 인터페이스설계(상세) | 10d | 2007-10-08 A | 2007-10-19 A | 100% | 2007-10-08 | 2007-10-19 | 10d | start no earlier than 2007-10-08 | 김영석B | 80h | 80h |  |  |  | 상세설계 | C02-1 1.3.3 | 인터페이스설계서 |
| 472 | 2.2.2 | 신용조사 인터페이스설계(상세) | 10d | 2007-10-08 A | 2007-10-19 A | 100% | 2007-10-08 | 2007-10-19 | 10d | start no earlier than 2007-10-08 | 김형근 | 80h | 80h | 10 | 10 | 10 | 상세설계 | C02-1 1.3.3 | 인터페이스설계서 |
| 473 | 2.2.2 | 금리결정 인터페이스설계(상세) | 10d | 2007-10-08 A | 2007-10-19 A | 100% | 2007-10-08 | 2007-10-19 | 10d | start no earlier than 2007-10-08 | 선민국 | 80h | 80h |  |  |  | 상세설계 | C02-1 1.3.3 | 인터페이스설계서 |
| 474 | 2.2.3 | 온라인도움말 설계 | 5d | 2007-10-15 A | 2007-10-19 A | 100% | 2007-10-15 | 2007-10-19 | 5d | start no earlier than 2007-10-15 | 서종민; 이창수; 지용근 | 120h | 120h | 15 | 15 | 15 | 상세설계 | C02-1 1.3.3 | 온라인도움말설계서 |
| 475 | 2.2.2 | **공통프로그램 설계** | 32d | 2007-10-22 A | 2007-12-04 A | 100% | 2007-10-22 | 2007-12-04 | 32d |  |  | 432h | 432h | 54 | 54 | 54 | 상세설계 | C02-1 1.3.3 |  |
| 476 | 2.2.2 | 공통프로그램 설계 1차 | 32d | 2007-10-22 A | 2007-12-04 A | 100% | 2007-10-22 | 2007-12-04 | 32d | start no earlier than 2007-10-22 | 이창수 | 256h | 256h | 32 | 32 | 32 | 상세설계 | C02-1 1.3.3 | 프로그램사양서(공통) |
| 477 | 2.2.2 | 공통프로그램 설계 2차 | 22d | 2007-11-05 A | 2007-12-04 A | 100% | 2007-11-05 | 2007-12-04 | 22d | start no earlier than 2007-11-05 | 이창수 | 176h | 176h | 22 | 22 | 22 | 상세설계 | C02-1 1.3.3 | 프로그램사양서(공통) |
| 478 | 2.2.4 | **서버프로그램 설계** | 40d | 2007-10-22 A | 2007-12-14 A | 100% | 2007-10-22 | 2007-12-14 | 40d |  |  | 8272h | 8272h | 664 | 664 | 664 | 상세설계 | C02-1 1.3.3 |  |
| 479 | 2.2.4 | **서버프로그램 설계 1차** | 40d | 2007-10-22 A | 2007-12-14 A | 100% | 2007-10-22 | 2007-12-14 | 40d |  |  | 5792h | 5792h | 474 | 474 | 474 | 상세설계 | C02-1 1.3.3 |  |
| 480 | 2.2.4 | 실행 서버프로그램 설계 1차 | 10d | 2007-10-22 A | 2007-11-02 A | 100% | 2007-10-22 | 2007-11-02 | 10d | start no earlier than 2007-10-22 | 김백기; 정이훈 | 160h | 160h | 10 | 10 | 10 | 상세설계 | C02-1 1.3.3 | 프로그램사양서(서버) |
| 481 | 2.2.4 | 상환 서버프로그램 설계 1차 | 40d | 2007-10-22 A | 2007-12-14 A | 100% | 2007-10-22 | 2007-12-14 | 40d | start no earlier than 2007-10-22 | 양혜란; 서정호; 이해미; 염정호 | 1280h | 1280h | 80 | 80 | 80 | 상세설계 | C02-1 1.3.3 | 프로그램사양서(서버) |
| 482 | 2.2.4 | 여신등록(한도) 서버프로그램 설계 1차 | 32d | 2007-10-22 A | 2007-12-04 A | 100% | 2007-10-22 | 2007-12-04 | 32d | start no earlier than 2007-10-22 | 윤승준; 송진현; 이천송 | 768h | 768h | 32 | 32 | 32 | 상세설계 | C02-1 1.3.3 | 프로그램사양서(서버) |
| 483 | 2.2.4 | 금리관리 서버프로그램 설계 1차 | 32d | 2007-10-22 A | 2007-12-04 A | 100% | 2007-10-22 | 2007-12-04 | 32d | start no earlier than 2007-10-22 | 차호병 | 256h | 256h | 32 | 32 | 32 | 상세설계 | C02-1 1.3.3 | 프로그램사양서(서버) |
| 484 | 2.2.4 | 통계정보 서버프로그램 설계 1차 | 32d | 2007-10-22 A | 2007-12-04 A | 100% | 2007-10-22 | 2007-12-04 | 32d | start no earlier than 2007-10-22 | 송진현 | 256h | 256h | 32 | 32 | 32 | 상세설계 | C02-1 1.3.3 | 프로그램사양서(서버) |
| 485 | 2.2.4 | 차입금 서버프로그램 설계 1차 | 32d | 2007-10-22 A | 2007-12-04 A | 100% | 2007-10-22 | 2007-12-04 | 32d | start no earlier than 2007-10-22 | 김경희 | 256h | 256h | 32 | 32 | 32 | 상세설계 | C02-1 1.3.3 | 프로그램사양서(서버) |
| 486 | 2.2.4 | 전자보증 서버프로그램 설계 1차 | 32d | 2007-10-22 A | 2007-12-04 A | 100% | 2007-10-22 | 2007-12-04 | 32d | start no earlier than 2007-10-22 | 표기웅 | 256h | 256h | 32 | 32 | 32 | 상세설계 | C02-1 1.3.3 | 프로그램사양서(서버) |
| 487 | 2.2.4 | 전자결재 서버프로그램 설계 1차 | 32d | 2007-10-22 A | 2007-12-04 A | 100% | 2007-10-22 | 2007-12-04 | 32d | start no earlier than 2007-10-22 | 송재규 | 256h | 256h | 32 | 32 | 32 | 상세설계 | C02-1 1.3.3 | 프로그램사양서(서버) |
| 488 | 2.2.4 | 기업심사 서버프로그램 설계 1차 | 32d | 2007-10-22 A | 2007-12-04 A | 100% | 2007-10-22 | 2007-12-04 | 32d | start no earlier than 2007-10-22 | 지용근; 김영석 | 512h | 512h | 64 | 64 | 64 | 상세설계 | C02-1 1.3.3 | 프로그램사양서(서버) |
| 489 | 2.2.4 | 종합자금 서버프로그램 설계 1차 | 32d | 2007-10-22 A | 2007-12-04 A | 100% | 2007-10-22 | 2007-12-04 | 32d | start no earlier than 2007-10-22 | 김정석 | 256h | 256h | 32 | 32 | 32 | 상세설계 | C02-1 1.3.3 | 프로그램사양서(서버) |
| 490 | 2.2.4 | 감정담보 서버프로그램 설계 1차 | 32d | 2007-10-22 A | 2007-12-04 A | 100% | 2007-10-22 | 2007-12-04 | 32d | start no earlier than 2007-10-22 | 정재순 | 256h | 256h | 32 | 32 | 32 | 상세설계 | C02-1 1.3.3 | 프로그램사양서(서버) |
| 491 | 2.2.4 | 개인심사 서버프로그램 설계 1차 | 32d | 2007-10-22 A | 2007-12-04 A | 100% | 2007-10-22 | 2007-12-04 | 32d | start no earlier than 2007-10-22 | 전형남; 박소연 | 512h | 512h | 32 | 32 | 32 | 상세설계 | C02-1 1.3.3 | 프로그램사양서(서버) |
| 492 | 2.2.4 | 국민주택 서버프로그램 설계 1차 | 32d | 2007-10-22 A | 2007-12-04 A | 100% | 2007-10-22 | 2007-12-04 | 32d | start no earlier than 2007-10-22 | 김영석B | 256h | 256h |  |  |  | 상세설계 | C02-1 1.3.3 | 프로그램사양서(서버) |
| 493 | 2.2.4 | 신용조사 서버프로그램 설계 1차 | 32d | 2007-10-22 A | 2007-12-04 A | 100% | 2007-10-22 | 2007-12-04 | 32d | start no earlier than 2007-10-22 | 김형근 | 256h | 256h | 32 | 32 | 32 | 상세설계 | C02-1 1.3.3 | 프로그램사양서(서버) |
| 494 | 2.2.4 | 금리결정 서버프로그램 설계 1차 | 32d | 2007-10-22 A | 2007-12-04 A | 100% | 2007-10-22 | 2007-12-04 | 32d | start no earlier than 2007-10-22 | 선민국 | 256h | 256h |  |  |  | 상세설계 | C02-1 1.3.3 | 프로그램사양서(서버) |

| ID | WBS | Task | Duration | Start | Finish | Complete | Baseline start | Baseline finish | Baseline duration | Constraint | Resources | Work | Actual work | Cost | Baseline cost | Actual cost | Text20 | Text26 | Text30 |
| --- | --- | --- | --- | --- | --- | --- | --- | --- | --- | --- | --- | --- | --- | --- | --- | --- | --- | --- | --- |
| 495 | 2.2.4 | **서버프로그램 설계 2차** | 30d | 2007-11-05 A | 2007-12-14 A | 100% | 2007-11-05 | 2007-12-14 | 30d |  |  | 2480h | 2480h | 190 | 190 | 190 | 상세설계 | C02-1 1.3.3 |  |
| 496 | 2.2.4 | 실행 서버프로그램 설계 2차 | 10d | 2007-11-05 A | 2007-11-16 A | 100% | 2007-11-05 | 2007-11-16 | 10d | start no earlier than 2007-11-05 | 김백기; 정이훈 | 160h | 160h | 10 | 10 | 10 | 상세설계 | C02-1 1.3.3 | 프로그램사양서(서버) |
| 497 | 2.2.4 | 상환 서버프로그램 설계 2차 | 30d | 2007-11-05 A | 2007-12-14 A | 100% | 2007-11-05 | 2007-12-14 | 30d | start no earlier than 2007-11-05 | 양혜란; 서정호; 이해미; 염정호 | 960h | 960h | 60 | 60 | 60 | 상세설계 | C02-1 1.3.3 | 프로그램사양서(서버) |
| 498 | 2.2.4 | 여신등록(한도) 서버프로그램 설계 2차 | 10d | 2007-11-05 A | 2007-11-16 A | 100% | 2007-11-05 | 2007-11-16 | 10d | start no earlier than 2007-11-05 | 윤승준; 송진현; 이천송 | 240h | 240h | 10 | 10 | 10 | 상세설계 | C02-1 1.3.3 | 프로그램사양서(서버) |
| 499 | 2.2.4 | 금리관리 서버프로그램 설계 2차 | 10d | 2007-11-05 A | 2007-11-16 A | 100% | 2007-11-05 | 2007-11-16 | 10d | start no earlier than 2007-11-05 | 차호병 | 80h | 80h | 10 | 10 | 10 | 상세설계 | C02-1 1.3.3 | 프로그램사양서(서버) |
| 500 | 2.2.4 | 통계정보 서버프로그램 설계 2차 | 10d | 2007-11-05 A | 2007-11-16 A | 100% | 2007-11-05 | 2007-11-16 | 10d | start no earlier than 2007-11-05 | 송진현 | 80h | 80h | 10 | 10 | 10 | 상세설계 | C02-1 1.3.3 | 프로그램사양서(서버) |
| 501 | 2.2.4 | 차입금 서버프로그램 설계 2차 | 10d | 2007-11-05 A | 2007-11-16 A | 100% | 2007-11-05 | 2007-11-16 | 10d | start no earlier than 2007-11-05 | 김경희 | 80h | 80h | 10 | 10 | 10 | 상세설계 | C02-1 1.3.3 | 프로그램사양서(서버) |
| 502 | 2.2.4 | 전자보증 서버프로그램 설계 2차 | 10d | 2007-11-05 A | 2007-11-16 A | 100% | 2007-11-05 | 2007-11-16 | 10d | start no earlier than 2007-11-05 | 표기웅 | 80h | 80h | 10 | 10 | 10 | 상세설계 | C02-1 1.3.3 | 프로그램사양서(서버) |
| 503 | 2.2.4 | 전자결재 서버프로그램 설계 2차 | 10d | 2007-11-05 A | 2007-11-16 A | 100% | 2007-11-05 | 2007-11-16 | 10d | start no earlier than 2007-11-05 | 송재규 | 80h | 80h | 10 | 10 | 10 | 상세설계 | C02-1 1.3.3 | 프로그램사양서(서버) |
| 504 | 2.2.4 | 기업심사 서버프로그램 설계 2차 | 10d | 2007-11-05 A | 2007-11-16 A | 100% | 2007-11-05 | 2007-11-16 | 10d | start no earlier than 2007-11-05 | 지용근; 김영석 | 160h | 160h | 20 | 20 | 20 | 상세설계 | C02-1 1.3.3 | 프로그램사양서(서버) |
| 505 | 2.2.4 | 종합자금 서버프로그램 설계 2차 | 10d | 2007-11-05 A | 2007-11-16 A | 100% | 2007-11-05 | 2007-11-16 | 10d | start no earlier than 2007-11-05 | 김정석 | 80h | 80h | 10 | 10 | 10 | 상세설계 | C02-1 1.3.3 | 프로그램사양서(서버) |
| 506 | 2.2.4 | 감정담보 서버프로그램 설계 2차 | 10d | 2007-11-05 A | 2007-11-16 A | 100% | 2007-11-05 | 2007-11-16 | 10d | start no earlier than 2007-11-05 | 정재순 | 80h | 80h | 10 | 10 | 10 | 상세설계 | C02-1 1.3.3 | 프로그램사양서(서버) |
| 507 | 2.2.4 | 개인심사 서버프로그램 설계 2차 | 10d | 2007-11-05 A | 2007-11-16 A | 100% | 2007-11-05 | 2007-11-16 | 10d | start no earlier than 2007-11-05 | 전형남; 박소연 | 160h | 160h | 10 | 10 | 10 | 상세설계 | C02-1 1.3.3 | 프로그램사양서(서버) |
| 508 | 2.2.4 | 국민주택 서버프로그램 설계 2차 | 10d | 2007-11-05 A | 2007-11-16 A | 100% | 2007-11-05 | 2007-11-16 | 10d | start no earlier than 2007-11-05 | 김영석B | 80h | 80h |  |  |  | 상세설계 | C02-1 1.3.3 | 프로그램사양서(서버) |
| 509 | 2.2.4 | 신용조사 서버프로그램 설계 2차 | 10d | 2007-11-05 A | 2007-11-16 A | 100% | 2007-11-05 | 2007-11-16 | 10d | start no earlier than 2007-11-05 | 김형근 | 80h | 80h | 10 | 10 | 10 | 상세설계 | C02-1 1.3.3 | 프로그램사양서(서버) |
| 510 | 2.2.4 | 금리결정 서버프로그램 설계 2차 | 10d | 2007-11-05 A | 2007-11-16 A | 100% | 2007-11-05 | 2007-11-16 | 10d | start no earlier than 2007-11-05 | 선민국 | 80h | 80h |  |  |  | 상세설계 | C02-1 1.3.3 | 프로그램사양서(서버) |
| 511 | 2.2.5 | **클라이언트프로그램 설계** | 35d | 2007-10-29 A | 2007-12-14 A | 100% | 2007-10-29 | 2007-12-14 | 35d |  |  | 4480h | 4480h | 340 | 340 | 340 | 상세설계 | C02-1 1.3.3 |  |
| 512 | 2.2.5 | **클라이언트프로그램 설계 1차** | 35d | 2007-10-29 A | 2007-12-14 A | 100% | 2007-10-29 | 2007-12-14 | 35d |  |  | 1920h | 1920h | 140 | 140 | 140 | 상세설계 | C02-1 1.3.3 |  |
| 513 | 2.2.5 | 여신공통 클라이언트프로그램 설계 1차 | 5d | 2007-10-29 A | 2007-11-02 A | 100% | 2007-10-29 | 2007-11-02 | 5d | start no earlier than 2007-10-29 | 이창수 | 40h | 40h | 5 | 5 | 5 | 상세설계 | C02-1 1.3.3 | 프로그램사양서(클라이언트) |
| 514 | 2.2.5 | 실행 클라이언트프로그램 설계 1차 | 5d | 2007-10-29 A | 2007-11-02 A | 100% | 2007-10-29 | 2007-11-02 | 5d | start no earlier than 2007-10-29 | 김백기; 정이훈 | 80h | 80h | 5 | 5 | 5 | 상세설계 | C02-1 1.3.3 | 프로그램사양서(클라이언트) |
| 515 | 2.2.5 | 상환 클라이언트프로그램 설계 1차 | 35d | 2007-10-29 A | 2007-12-14 A | 100% | 2007-10-29 | 2007-12-14 | 35d | start no earlier than 2007-10-29 | 양혜란; 서정호; 이해미; 염정호 | 1120h | 1120h | 70 | 70 | 70 | 상세설계 | C02-1 1.3.3 | 프로그램사양서(클라이언트) |
| 516 | 2.2.5 | 여신등록(한도) 클라이언트프로그램 설계 1차 | 5d | 2007-10-29 A | 2007-11-02 A | 100% | 2007-10-29 | 2007-11-02 | 5d | start no earlier than 2007-10-29 | 윤승준; 송진현; 이천송 | 120h | 120h | 5 | 5 | 5 | 상세설계 | C02-1 1.3.3 | 프로그램사양서(클라이언트) |
| 517 | 2.2.5 | 금리관리 클라이언트프로그램 설계 1차 | 5d | 2007-10-29 A | 2007-11-02 A | 100% | 2007-10-29 | 2007-11-02 | 5d | start no earlier than 2007-10-29 | 차호병 | 40h | 40h | 5 | 5 | 5 | 상세설계 | C02-1 1.3.3 | 프로그램사양서(클라이언트) |
| 518 | 2.2.5 | 통계정보 클라이언트프로그램 설계 1차 | 5d | 2007-10-29 A | 2007-11-02 A | 100% | 2007-10-29 | 2007-11-02 | 5d | start no earlier than 2007-10-29 | 송진현 | 40h | 40h | 5 | 5 | 5 | 상세설계 | C02-1 1.3.3 | 프로그램사양서(클라이언트) |
| 519 | 2.2.5 | 차입금 클라이언트프로그램 설계 1차 | 5d | 2007-10-29 A | 2007-11-02 A | 100% | 2007-10-29 | 2007-11-02 | 5d | start no earlier than 2007-10-29 | 김경희 | 40h | 40h | 5 | 5 | 5 | 상세설계 | C02-1 1.3.3 | 프로그램사양서(클라이언트) |
| 520 | 2.2.5 | 전자보증 클라이언트프로그램 설계 1차 | 5d | 2007-10-29 A | 2007-11-02 A | 100% | 2007-10-29 | 2007-11-02 | 5d | start no earlier than 2007-10-29 | 표기웅 | 40h | 40h | 5 | 5 | 5 | 상세설계 | C02-1 1.3.3 | 프로그램사양서(클라이언트) |
| 521 | 2.2.5 | 전자결재 클라이언트프로그램 설계 1차 | 5d | 2007-10-29 A | 2007-11-02 A | 100% | 2007-10-29 | 2007-11-02 | 5d | start no earlier than 2007-10-29 | 송재규 | 40h | 40h | 5 | 5 | 5 | 상세설계 | C02-1 1.3.3 | 프로그램사양서(클라이언트) |
| 522 | 2.2.5 | 기업심사 클라이언트프로그램 설계 1차 | 5d | 2007-10-29 A | 2007-11-02 A | 100% | 2007-10-29 | 2007-11-02 | 5d | start no earlier than 2007-10-29 | 지용근; 김영석 | 80h | 80h | 10 | 10 | 10 | 상세설계 | C02-1 1.3.3 | 프로그램사양서(클라이언트) |
| 523 | 2.2.5 | 종합자금 클라이언트프로그램 설계 1차 | 5d | 2007-10-29 A | 2007-11-02 A | 100% | 2007-10-29 | 2007-11-02 | 5d | start no earlier than 2007-10-29 | 김정석 | 40h | 40h | 5 | 5 | 5 | 상세설계 | C02-1 1.3.3 | 프로그램사양서(클라이언트) |
| 524 | 2.2.5 | 감정담보 클라이언트프로그램 설계 1차 | 5d | 2007-10-29 A | 2007-11-02 A | 100% | 2007-10-29 | 2007-11-02 | 5d | start no earlier than 2007-10-29 | 정재순 | 40h | 40h | 5 | 5 | 5 | 상세설계 | C02-1 1.3.3 | 프로그램사양서(클라이언트) |
| 525 | 2.2.5 | 개인심사 클라이언트프로그램 설계 1차 | 5d | 2007-10-29 A | 2007-11-02 A | 100% | 2007-10-29 | 2007-11-02 | 5d | start no earlier than 2007-10-29 | 전형남; 박소연 | 80h | 80h | 5 | 5 | 5 | 상세설계 | C02-1 1.3.3 | 프로그램사양서(클라이언트) |
| 526 | 2.2.5 | 국민주택 클라이언트프로그램 설계 1차 | 5d | 2007-10-29 A | 2007-11-02 A | 100% | 2007-10-29 | 2007-11-02 | 5d | start no earlier than 2007-10-29 | 김영석B | 40h | 40h |  |  |  | 상세설계 | C02-1 1.3.3 | 프로그램사양서(클라이언트) |
| 527 | 2.2.5 | 신용조사 클라이언트프로그램 설계 1차 | 5d | 2007-10-29 A | 2007-11-02 A | 100% | 2007-10-29 | 2007-11-02 | 5d | start no earlier than 2007-10-29 | 김형근 | 40h | 40h | 5 | 5 | 5 | 상세설계 | C02-1 1.3.3 | 프로그램사양서(클라이언트) |
| 528 | 2.2.5 | 금리결정 클라이언트프로그램 설계 1차 | 5d | 2007-10-29 A | 2007-11-02 A | 100% | 2007-10-29 | 2007-11-02 | 5d | start no earlier than 2007-10-29 | 선민국 | 40h | 40h |  |  |  | 상세설계 | C02-1 1.3.3 | 프로그램사양서(클라이언트) |

| ID | WBS | Task | Duration | Start | Finish | Complete | Baseline start | Baseline finish | Baseline duration | Constraint | Resources | Work | Actual work | Cost | Baseline cost | Actual cost | Text20 | Text26 | Text30 |
| --- | --- | --- | --- | --- | --- | --- | --- | --- | --- | --- | --- | --- | --- | --- | --- | --- | --- | --- | --- |
| 529 | 2.2.5 | **클라이언트프로그램 설계 2차** | 30d | 2007-11-05 A | 2007-12-14 A | 100% | 2007-11-05 | 2007-12-14 | 30d |  |  | 2560h | 2560h | 200 | 200 | 200 | 상세설계 | C02-1 1.3.3 |  |
| 530 | 2.2.5 | 여신공통 클라이언트프로그램 설계 2차 | 10d | 2007-11-05 A | 2007-11-16 A | 100% | 2007-11-05 | 2007-11-16 | 10d | start no earlier than 2007-11-05 | 이창수 | 80h | 80h | 10 | 10 | 10 | 상세설계 | C02-1 1.3.3 | 프로그램사양서(클라이언트) |
| 531 | 2.2.5 | 실행 클라이언트프로그램 설계 2차 | 10d | 2007-11-05 A | 2007-11-16 A | 100% | 2007-11-05 | 2007-11-16 | 10d | start no earlier than 2007-11-05 | 김백기; 정이훈 | 160h | 160h | 10 | 10 | 10 | 상세설계 | C02-1 1.3.3 | 프로그램사양서(클라이언트) |
| 532 | 2.2.5 | 상환 클라이언트프로그램 설계 2차 | 30d | 2007-11-05 A | 2007-12-14 A | 100% | 2007-11-05 | 2007-12-14 | 30d | start no earlier than 2007-11-05 | 양혜란; 서정호; 이해미; 염정호 | 960h | 960h | 60 | 60 | 60 | 상세설계 | C02-1 1.3.3 | 프로그램사양서(클라이언트) |
| 533 | 2.2.5 | 여신등록(한도) 클라이언트프로그램 설계 2차 | 10d | 2007-11-05 A | 2007-11-16 A | 100% | 2007-11-05 | 2007-11-16 | 10d | start no earlier than 2007-11-05 | 윤승준; 송진현; 이천송 | 240h | 240h | 10 | 10 | 10 | 상세설계 | C02-1 1.3.3 | 프로그램사양서(클라이언트) |
| 534 | 2.2.5 | 금리관리 클라이언트프로그램 설계 2차 | 10d | 2007-11-05 A | 2007-11-16 A | 100% | 2007-11-05 | 2007-11-16 | 10d | start no earlier than 2007-11-05 | 차호병 | 80h | 80h | 10 | 10 | 10 | 상세설계 | C02-1 1.3.3 | 프로그램사양서(클라이언트) |
| 535 | 2.2.5 | 통계정보 클라이언트프로그램 설계 2차 | 10d | 2007-11-05 A | 2007-11-16 A | 100% | 2007-11-05 | 2007-11-16 | 10d | start no earlier than 2007-11-05 | 송진현 | 80h | 80h | 10 | 10 | 10 | 상세설계 | C02-1 1.3.3 | 프로그램사양서(클라이언트) |
| 536 | 2.2.5 | 차입금 클라이언트프로그램 설계 2차 | 10d | 2007-11-05 A | 2007-11-16 A | 100% | 2007-11-05 | 2007-11-16 | 10d | start no earlier than 2007-11-05 | 김경희 | 80h | 80h | 10 | 10 | 10 | 상세설계 | C02-1 1.3.3 | 프로그램사양서(클라이언트) |
| 537 | 2.2.5 | 전자보증 클라이언트프로그램 설계 2차 | 10d | 2007-11-05 A | 2007-11-16 A | 100% | 2007-11-05 | 2007-11-16 | 10d | start no earlier than 2007-11-05 | 표기웅 | 80h | 80h | 10 | 10 | 10 | 상세설계 | C02-1 1.3.3 | 프로그램사양서(클라이언트) |
| 538 | 2.2.5 | 전자결재 클라이언트프로그램 설계 2차 | 10d | 2007-11-05 A | 2007-11-16 A | 100% | 2007-11-05 | 2007-11-16 | 10d | start no earlier than 2007-11-05 | 송재규 | 80h | 80h | 10 | 10 | 10 | 상세설계 | C02-1 1.3.3 | 프로그램사양서(클라이언트) |
| 539 | 2.2.5 | 기업심사 클라이언트프로그램 설계 2차 | 10d | 2007-11-05 A | 2007-11-16 A | 100% | 2007-11-05 | 2007-11-16 | 10d | start no earlier than 2007-11-05 | 지용근; 김영석 | 160h | 160h | 20 | 20 | 20 | 상세설계 | C02-1 1.3.3 | 프로그램사양서(클라이언트) |
| 540 | 2.2.5 | 종합자금 클라이언트프로그램 설계 2차 | 10d | 2007-11-05 A | 2007-11-16 A | 100% | 2007-11-05 | 2007-11-16 | 10d | start no earlier than 2007-11-05 | 김정석 | 80h | 80h | 10 | 10 | 10 | 상세설계 | C02-1 1.3.3 | 프로그램사양서(클라이언트) |
| 541 | 2.2.5 | 감정담보 클라이언트프로그램 설계 2차 | 10d | 2007-11-05 A | 2007-11-16 A | 100% | 2007-11-05 | 2007-11-16 | 10d | start no earlier than 2007-11-05 | 정재순 | 80h | 80h | 10 | 10 | 10 | 상세설계 | C02-1 1.3.3 | 프로그램사양서(클라이언트) |
| 542 | 2.2.5 | 개인심사 클라이언트프로그램 설계 2차 | 10d | 2007-11-05 A | 2007-11-16 A | 100% | 2007-11-05 | 2007-11-16 | 10d | start no earlier than 2007-11-05 | 전형남; 박소연 | 160h | 160h | 10 | 10 | 10 | 상세설계 | C02-1 1.3.3 | 프로그램사양서(클라이언트) |
| 543 | 2.2.5 | 국민주택 클라이언트프로그램 설계 2차 | 10d | 2007-11-05 A | 2007-11-16 A | 100% | 2007-11-05 | 2007-11-16 | 10d | start no earlier than 2007-11-05 | 김영석B | 80h | 80h |  |  |  | 상세설계 | C02-1 1.3.3 | 프로그램사양서(클라이언트) |
| 544 | 2.2.5 | 신용조사 클라이언트프로그램 설계 2차 | 10d | 2007-11-05 A | 2007-11-16 A | 100% | 2007-11-05 | 2007-11-16 | 10d | start no earlier than 2007-11-05 | 김형근 | 80h | 80h | 10 | 10 | 10 | 상세설계 | C02-1 1.3.3 | 프로그램사양서(클라이언트) |
| 545 | 2.2.5 | 금리결정 클라이언트프로그램 설계 2차 | 10d | 2007-11-05 A | 2007-11-16 A | 100% | 2007-11-05 | 2007-11-16 | 10d | start no earlier than 2007-11-05 | 선민국 | 80h | 80h |  |  |  | 상세설계 | C02-1 1.3.3 | 프로그램사양서(클라이언트) |
| 546 | 2.3 | **컨버젼설계** | 30d | 2007-11-19 A | 2007-12-31 A | 100% | 2007-11-19 | 2007-12-31 | 30d |  |  | 4344h | 4344h | 383 | 383 | 383 | 컨버전 설계 | C02-1 1.3.5 |  |
| 547 | 2.3.1 | 컨버젼계획 수립 | 21d | 2007-11-19 A | 2007-12-17 A | 100% | 2007-11-19 | 2007-12-17 | 21d | start no earlier than 2007-11-19 | 서종민; 이창수; 지용근 | 504h | 504h | 63 | 63 | 63 | 컨버전 설계 | C02-1 1.3.5 | 컨버전계획서 |
| 548 | 2.3.2 | **데이터매핑 설계** | 25d | 2007-11-26 A | 2007-12-31 A | 100% | 2007-11-26 | 2007-12-31 | 25d |  |  | 3840h | 3840h | 320 | 320 | 320 | 컨버전 설계 | C02-1 1.3.5 |  |
| 549 | 2.3.2 | 여신공통 데이터매핑 설계 | 20d | 2007-12-03 A | 2007-12-31 A | 100% | 2007-12-03 | 2007-12-31 | 20d | start no earlier than 2007-11-05 | 이창수 | 160h | 160h | 20 | 20 | 20 | 컨버전 설계 | C02-1 1.3.5 | 매핑정의서 |
| 550 | 2.3.2 | 실행 데이터매핑 설계 | 20d | 2007-12-03 A | 2007-12-31 A | 100% | 2007-12-03 | 2007-12-31 | 20d | start no earlier than 2007-11-05 | 김백기; 정이훈 | 320h | 320h | 20 | 20 | 20 | 컨버전 설계 | C02-1 1.3.5 | 매핑정의서 |
| 551 | 2.3.2 | 상환 데이터매핑 설계 | 20d | 2007-12-03 A | 2007-12-31 A | 100% | 2007-12-03 | 2007-12-31 | 20d | start no earlier than 2007-11-05 | 양혜란; 서정호; 이해미; 염정호 | 640h | 640h | 40 | 40 | 40 | 컨버전 설계 | C02-1 1.3.5 | 매핑정의서 |
| 552 | 2.3.2 | 상환등록(한도) 데이터매핑 설계 | 20d | 2007-12-03 A | 2007-12-31 A | 100% | 2007-12-03 | 2007-12-31 | 20d | start no earlier than 2007-11-05 | 윤승준; 송진현; 이천송 | 480h | 480h | 20 | 20 | 20 | 컨버전 설계 | C02-1 1.3.5 | 매핑정의서 |
| 553 | 2.3.2 | 금리관리 데이터매핑 설계 | 20d | 2007-12-03 A | 2007-12-31 A | 100% | 2007-12-03 | 2007-12-31 | 20d | start no earlier than 2007-11-05 | 차호병 | 160h | 160h | 20 | 20 | 20 | 컨버전 설계 | C02-1 1.3.5 | 매핑정의서 |
| 554 | 2.3.2 | 통계정보 데이터매핑 설계 | 20d | 2007-12-03 A | 2007-12-31 A | 100% | 2007-12-03 | 2007-12-31 | 20d | start no earlier than 2007-11-05 | 송진현 | 160h | 160h | 20 | 20 | 20 | 컨버전 설계 | C02-1 1.3.5 | 매핑정의서 |
| 555 | 2.3.2 | 차입금 데이터매핑 설계 | 20d | 2007-12-03 A | 2007-12-31 A | 100% | 2007-12-03 | 2007-12-31 | 20d | start no earlier than 2007-11-05 | 김경희 | 160h | 160h | 20 | 20 | 20 | 컨버전 설계 | C02-1 1.3.5 | 매핑정의서 |
| 556 | 2.3.2 | 전자보증 데이터매핑 설계 | 20d | 2007-12-03 A | 2007-12-31 A | 100% | 2007-12-03 | 2007-12-31 | 20d | start no earlier than 2007-11-05 | 표기웅 | 160h | 160h | 20 | 20 | 20 | 컨버전 설계 | C02-1 1.3.5 | 매핑정의서 |
| 557 | 2.3.2 | 전자결재 데이터매핑 설계 | 20d | 2007-12-03 A | 2007-12-31 A | 100% | 2007-12-03 | 2007-12-31 | 20d | start no earlier than 2007-11-05 | 송재규 | 160h | 160h | 20 | 20 | 20 | 컨버전 설계 | C02-1 1.3.5 | 매핑정의서 |
| 558 | 2.3.2 | 기업심사 데이터매핑 설계 | 20d | 2007-11-26 A | 2007-12-21 A | 100% | 2007-11-26 | 2007-12-21 | 20d | start no earlier than 2007-11-05 | 지용근; 김영석 | 320h | 320h | 40 | 40 | 40 | 컨버전 설계 | C02-1 1.3.5 | 매핑정의서 |
| 559 | 2.3.2 | 종합자금 데이터매핑 설계 | 20d | 2007-11-26 A | 2007-12-21 A | 100% | 2007-11-26 | 2007-12-21 | 20d | start no earlier than 2007-11-05 | 김정석 | 160h | 160h | 20 | 20 | 20 | 컨버전 설계 | C02-1 1.3.5 | 매핑정의서 |
| 560 | 2.3.2 | 감정담보 데이터매핑 설계 | 20d | 2007-11-26 A | 2007-12-21 A | 100% | 2007-11-26 | 2007-12-21 | 20d | start no earlier than 2007-11-05 | 정재순 | 160h | 160h | 20 | 20 | 20 | 컨버전 설계 | C02-1 1.3.5 | 매핑정의서 |
| 561 | 2.3.2 | 개인심사 데이터매핑 설계 | 20d | 2007-11-26 A | 2007-12-21 A | 100% | 2007-11-26 | 2007-12-21 | 20d | start no earlier than 2007-11-05 | 전형남; 박소연 | 320h | 320h | 20 | 20 | 20 | 컨버전 설계 | C02-1 1.3.5 | 매핑정의서 |
| 562 | 2.3.2 | 국민주택 데이터매핑 설계 | 20d | 2007-11-26 A | 2007-12-21 A | 100% | 2007-11-26 | 2007-12-21 | 20d | start no earlier than 2007-11-05 | 김영석B | 160h | 160h |  |  |  | 컨버전 설계 | C02-1 1.3.5 | 매핑정의서 |
| 563 | 2.3.2 | 신용조사 데이터매핑 설계 | 20d | 2007-11-26 A | 2007-12-21 A | 100% | 2007-11-26 | 2007-12-21 | 20d | start no earlier than 2007-11-05 | 김형근 | 160h | 160h | 20 | 20 | 20 | 컨버전 설계 | C02-1 1.3.5 | 매핑정의서 |
| 564 | 2.3.2 | 금리결정 데이터매핑 설계 | 20d | 2007-11-26 A | 2007-12-21 A | 100% | 2007-11-26 | 2007-12-21 | 20d | start no earlier than 2007-11-05 | 선민국 | 160h | 160h |  |  |  | 컨버전 설계 | C02-1 1.3.5 | 매핑정의서 |

| ID | WBS | Task | Duration | Start | Finish | Complete | Remaining | Baseline start | Baseline finish | Baseline duration | Total slack | Constraint | Resources | Work | Actual work | Cost | Baseline cost | Actual cost | Text20 | Text26 | Text30 |
| --- | --- | --- | --- | --- | --- | --- | --- | --- | --- | --- | --- | --- | --- | --- | --- | --- | --- | --- | --- | --- | --- |
| 565 | 2.3 | **설계단계관리활동** | 110d | 2007-07-09 A | 2007-12-17 A | 100% |  | 2007-07-09 | 2007-12-17 | 110d |  |  |  | 24288h | 24288h | 2,112 | 2,112 | 2,112 | 단계완료 | C02-1 1.6.8 |  |
| 566 | 2.3.1 | 설계SPM검토 및 수정 | 5d | 2007-07-09 A | 2007-07-13 A | 100% |  | 2007-07-09 | 2007-07-13 | 5d |  | start no earlier than 2007-07-09 | 이창수; 김백기; 정이훈; 양혜란; 서정호; 이해미; 윤승준; 송진현; 이천송; 차호병; 김경희; 표기웅; 송재규; 지용근; 김영석; 김정석; 정재순; 전형남; 박소연; 김영석B; 김형근; 선민국; 서종민 | 920h | 920h | 80 | 80 | 80 | 단계완료 | C02-1 1.6.8 |  |
| 567 | 2.3.2 | 분석감리조치 | 5d | 2007-07-23 A | 2007-07-27 A | 100% |  | 2007-07-23 | 2007-07-27 | 5d |  | start no earlier than 2007-07-23 | 이창수; 김백기; 정이훈; 양혜란; 서정호; 이해미; 윤승준; 송진현; 이천송; 차호병; 김경희; 표기웅; 송재규; 지용근; 김영석; 김정석; 정재순; 전형남; 박소연; 김영석B; 김형근; 선민국; 서종민 | 920h | 920h | 80 | 80 | 80 | 단계완료 | C02-1 1.6.8 |  |
| 568 | 2.3.2 | 오리엔테이션(2차) 실시 | 5d | 2007-07-23 A | 2007-07-27 A | 100% |  | 2007-07-23 | 2007-07-27 | 5d |  | start no earlier than 2007-07-23 | 이창수; 김백기; 정이훈; 양혜란; 서정호; 이해미; 윤승준; 송진현; 이천송; 차호병; 김경희; 표기웅; 송재규; 지용근; 김영석; 김정석; 정재순; 전형남; 박소연; 김영석B; 김형근; 선민국; 서종민 | 920h | 920h | 80 | 80 | 80 | 단계완료 | C02-1 1.6.8 |  |
| 569 | 2.3.2 | QAO심사(2차) 조치 | 71d | 2007-09-03 A | 2007-12-14 A | 100% |  | 2007-09-03 | 2007-12-14 | 71d |  | start no earlier than 2007-09-03 | 이창수; 김백기; 정이훈; 양혜란; 서정호; 이해미; 윤승준; 송진현; 이천송; 차호병; 김경희; 표기웅; 송재규; 지용근; 김영석; 김정석; 정재순; 전형남; 박소연; 김영석B; 김형근; 선민국; 서종민 | 13064h | 13064h | 1,136 | 1,136 | 1,136 | 단계완료 | C02-1 1.6.8 |  |
| 570 | 2.3.2 | Inspection(2차) 실시 및 조치 | 20d | 2007-11-19 A | 2007-12-14 A | 100% |  | 2007-11-19 | 2007-12-14 | 20d |  | start no earlier than 2007-11-19 | 이창수; 김백기; 정이훈; 양혜란; 서정호; 이해미; 윤승준; 송진현; 이천송; 차호병; 김경희; 표기웅; 송재규; 지용근; 김영석; 김정석; 정재순; 전형남; 박소연; 김영석B; 김형근; 선민국; 서종민 | 3680h | 3680h | 320 | 320 | 320 | 단계완료 | C02-1 1.6.8 |  |
| 571 | 2.3.2 | 설계요구사항추적표매핑 | 15d | 2007-11-26 A | 2007-12-14 A | 100% |  | 2007-11-26 | 2007-12-14 | 15d |  | start no earlier than 2007-11-26 | 이창수; 김백기; 정이훈; 양혜란; 서정호; 이해미; 윤승준; 송진현; 이천송; 차호병; 김경희; 표기웅; 송재규; 지용근; 김영석; 김정석; 정재순; 전형남; 박소연; 김영석B; 김형근; 선민국; 서종민 | 2760h | 2760h | 240 | 240 | 240 | 단계완료 | C02-1 1.6.8 |  |
| 572 | 2.3.2 | 고객검토2차실시 및 조치 | 11d | 2007-12-03 A | 2007-12-17 A | 100% |  | 2007-12-03 | 2007-12-17 | 11d |  | start no earlier than 2007-12-03 | 이창수; 김백기; 정이훈; 양혜란; 서정호; 이해미; 윤승준; 송진현; 이천송; 차호병; 김경희; 표기웅; 송재규; 지용근; 김영석; 김정석; 정재순; 전형남; 박소연; 김영석B; 김형근; 선민국; 서종민 | 2024h | 2024h | 176 | 176 | 176 | 단계완료 | C02-1 1.6.8 |  |
| 573 | 3 | **개발** | 142d | 2007-12-03 A | 2008-06-30 A | 100% |  | 2007-12-03 | 2008-06-30 | 142d |  | start no earlier than 2007-04-25 |  |  |  |  |  |  | 개발 | C02-1 1.4 |  |
| 574 | 3.1 | **코딩 및 단위테스트 실시** | 137d | 2007-12-10 A | 2008-06-30 A | 100% |  | 2007-12-10 | 2008-06-30 | 137d |  | start no earlier than 2007-04-25 |  |  |  |  |  |  | 코딩 및 단위테스트 실시 | C02-1 1.4.1 |  |
| 575 | 3.1.1 | 단위테스트체크리스트작성 | 15d | 2007-12-10 A | 2007-12-31 A | 100% |  | 2007-12-10 | 2007-12-31 | 15d |  | start no earlier than 2007-12-10 |  |  |  |  |  |  | 코딩 및 단위테스트 실시 | C02-1 1.4.1 | 단위테스트체크리스트 |
| 576 | 3.1.2 | 프로그램모델 및 공통프로그램 개발 | 80d | 2008-01-07 A | 2008-04-30 A | 100% |  | 2008-01-07 | 2008-04-30 | 80d |  | start no earlier than 2008-01-07 |  |  |  |  |  |  | 코딩 및 단위테스트 실시 | C02-1 1.4.1 | 소스코드(공통) |
| 577 | 3.1.3 | 프로그램 코딩 | 100d | 2008-01-04 A | 2008-05-30 A | 100% |  | 2008-01-04 | 2008-05-30 | 100d |  | finish no earlier than 2008-05-30 |  |  |  |  |  |  | 코딩 및 단위테스트 실시 | C02-1 1.4.1 | 소스코드 |
| 578 | 3.1.4 | 단위테스트 실시 | 100d | 2008-02-01 A | 2008-06-30 A | 100% |  | 2008-02-01 | 2008-06-30 | 100d |  | finish no earlier than 2008-06-30 |  |  |  |  |  |  | 코딩 및 단위테스트 실시 | C02-1 1.4.1 | 단위테스트결과서 |
| 579 | 3.2 | **개발단계 관리 활동** | 126d | 2007-12-03 A | 2008-06-05 A | 100% |  | 2007-12-03 | 2008-06-05 | 126d |  |  |  |  |  |  |  |  | 품질활동수행 | C02-1 1.6.2 |  |
| 580 | 3.2.1 | 개발 SPM검토및 수정 | 5d | 2007-12-10 A | 2007-12-14 A | 100% |  | 2007-12-10 | 2007-12-14 | 5d |  | start no earlier than 2007-12-10 |  |  |  |  |  |  | 품질활동수행 | C02-1 1.6.2 |  |
| 581 | 3.2.2 | 설계감리조치 | 11d | 2007-12-03 A | 2007-12-17 A | 100% |  | 2007-12-03 | 2007-12-17 | 11d |  | start no earlier than 2007-12-03 |  |  |  |  |  |  | 품질활동수행 | C02-1 1.6.2 |  |
| 582 | 3.2.3 | 오리엔테이션(3차)실시 | 5d | 2007-12-17 A | 2007-12-21 A | 100% |  | 2007-12-17 | 2007-12-21 | 5d |  | start no earlier than 2007-12-17 |  |  |  |  |  |  | 품질활동수행 | C02-1 1.6.2 |  |
| 583 | 3.2.4 | QAO심사(3차)조치 | 70d | 2008-02-04 A | 2008-05-19 A | 100% |  | 2008-02-04 | 2008-05-19 | 70d |  | start no earlier than 2008-02-04 |  |  |  |  |  |  | 품질활동수행 | C02-1 1.6.2 |  |
| 584 | 3.2.5 | Inspection(3차) 실시 및 조치 | 63d | 2008-01-24 A | 2008-04-24 A | 100% |  | 2008-01-24 | 2008-04-24 | 63d |  | start no earlier than 2008-03-03 |  |  |  |  |  |  | 품질활동수행 | C02-1 1.6.2 |  |
| 585 | 3.2.6 | 개발요구사항추적표매핑 | 4d | 2008-06-02 A | 2008-06-05 A | 100% |  | 2008-06-02 | 2008-06-05 | 4d |  | start no earlier than 2008-06-02 |  |  |  |  |  |  | 품질활동수행 | C02-1 1.6.2 |  |
| 586 | 4 | **통합테스트** | 205d | 2008-05-13 A | 2009-02-20 | 94% | 12.35d | 2008-05-13 | 2009-02-20 | 205d | 22d | start no earlier than 2007-04-25 |  |  |  |  |  |  | 개발 | C02-1 1.4 |  |
| 587 | 4.1 | **테스트 실시** | 52d | 2008-05-13 A | 2008-07-25 A | 100% |  | 2008-05-13 | 2008-07-25 | 52d |  | start no earlier than 2007-04-25 |  |  |  |  |  |  | 테스트 실시 | C02-1 1.4.2 |  |
| 588 | 4.1.1 | 통합테스트계획 수립 | 6d | 2008-05-13 A | 2008-05-20 A | 100% |  | 2008-05-13 | 2008-05-20 | 6d |  | start no earlier than 2008-05-12 |  |  |  |  |  |  | 테스트 실시 | C02-1 1.4.2 | 통합테스트계획서 |
| 589 | 4.1.2 | 통합테스트 시나리오 작성 | 10d | 2008-05-22 A | 2008-06-04 A | 100% |  | 2008-05-22 | 2008-06-04 | 10d |  | start no earlier than 2008-05-22 |  |  |  |  |  |  | 테스트 실시 | C02-1 1.4.2 | 통합테스트시나리오 |
| 590 | 4.1.3 | 1차통합테스트 실시 | 5d | 2008-06-09 A | 2008-06-13 A | 100% |  | 2008-06-09 | 2008-06-13 | 5d |  | finish no earlier than 2008-06-13 |  |  |  |  |  |  | 테스트 실시 | C02-1 1.4.2 | 통합테스트시나리오(결과), 결함보고서(통합) |
| 591 | 4.1.4 | 2차통합테스트 실시 | 5d | 2008-06-23 A | 2008-06-27 A | 100% |  | 2008-06-23 | 2008-06-27 | 5d |  | start no earlier than 2008-06-23 |  |  |  |  |  |  | 테스트 실시 | C02-1 1.4.2 | 통합테스트시나리오(결과), 결함보고서(통합) |
| 592 | 4.1.5 | 3차통합테스트 실시 | 5d | 2008-07-07 A | 2008-07-11 A | 100% |  | 2008-07-07 | 2008-07-11 | 5d |  | start no earlier than 2008-07-07 |  |  |  |  |  |  | 테스트 실시 | C02-1 1.4.2 | 통합테스트시나리오(결과), 결함보고서(통합) |
| 593 | 4.1.3 | 4차통합테스트 실시 | 5d | 2008-07-21 A | 2008-07-25 A | 100% |  | 2008-07-21 | 2008-07-25 | 5d |  | start no earlier than 2008-07-21 |  |  |  |  |  |  | 테스트 실시 | C02-1 1.4.2 | 통합테스트시나리오(결과), 결함보고서(통합) |

| ID | WBS | Task | Duration | Start | Finish | Predecessors | Complete | Remaining | Baseline start | Baseline finish | Baseline duration | Total slack | Free slack | Constraint | Text20 | Text26 | Text30 |
| --- | --- | --- | --- | --- | --- | --- | --- | --- | --- | --- | --- | --- | --- | --- | --- | --- | --- |
| 594 | 4.2 | **통합테스트 단계 관리 활동** | 201d | 2008-05-19 A | 2009-02-20 |  | 89% | 21.38d | 2008-05-19 | 2009-02-20 | 201d | 22d |  |  | 품질활동수행 | C02-1 1.6.2 |  |
| 595 | 4.2.1 | 통합테스트 SPM검토및 수정 | 5d | 2008-05-19 A | 2008-05-23 A |  | 100% |  | 2008-05-19 | 2008-05-23 | 5d |  |  | start no earlier than 2008-05-19 | 품질활동수행 | C02-1 1.6.2 |  |
| 596 | 4.2.2 | 오리엔테이션(4차)실시 | 5d | 2008-05-29 A | 2008-06-04 A |  | 100% |  | 2008-05-29 | 2008-06-04 | 5d |  |  | start no earlier than 2008-05-29 | 품질활동수행 | C02-1 1.6.2 |  |
| 597 | 4.2.3 | QAO심사(4차)조치 | 23d | 2008-05-20 A | 2008-06-20 A |  | 100% |  | 2008-05-20 | 2008-06-20 | 23d |  |  | finish no earlier than 2008-06-20 | 품질활동수행 | C02-1 1.6.2 |  |
| 598 | 4.2.4 | Inspection(4차) 실시 및 조치 | 4d | 2008-07-14 A | 2008-07-18 A |  | 100% |  | 2008-07-14 | 2008-07-18 | 4d |  |  | finish no earlier than 2008-07-18 | 품질활동수행 | C02-1 1.6.2 |  |
| 599 | 4.2.5 | 통합테스트 요구사항추적표매핑 | 5d | 2008-07-28 A | 2008-08-01 A | 600 | 100% |  | 2008-07-28 | 2008-08-01 | 5d |  |  | start no earlier than 2008-07-28 | 품질활동수행 | C02-1 1.6.2 |  |
| 600 | 4.2.6 | 실적규모측정방법 교육 및 측정 | 5d | 2009-02-16 | 2009-02-20 |  |  |  | 2009-02-16 | 2009-02-20 | 5d | 22d |  | start no earlier than 2009-02-16 | 품질활동수행 | C02-1 1.6.2 |  |
| 601 | 5 | **영업점테스트** | 154d | 2008-07-01 A | 2009-01-28 |  | 69% | 48.02d | 2008-07-01 | 2009-01-28 | 154d | 39d |  | start no earlier than 2007-04-25 | 개발 | C02-1 1.4 |  |
| 602 | 5.1 | **시스템 사용교육** | 30d | 2008-07-01 A | 2008-08-11 A |  | 100% |  | 2008-07-01 | 2008-08-11 | 30d |  |  | start no earlier than 2007-04-25 | 시스템 사용교육 | C02-1 1.5.3 |  |
| 603 | 5.1.1 | 교육훈련 수립 | 5d | 2008-07-01 A | 2008-07-07 A |  | 100% |  | 2008-07-01 | 2008-07-07 | 5d |  |  | start no earlier than 2008-07-01 | 시스템 사용교육 | C02-1 1.5.3 | 교육계획서 |
| 604 | 5.1.2 | 사용자매뉴얼 작성 | 20d | 2008-07-03 A | 2008-07-31 A |  | 100% |  | 2008-07-03 | 2008-07-31 | 20d |  |  | start no earlier than 2008-07-03 | 시스템 사용교육 | C02-1 1.5.3 | 사용자매뉴얼 |
| 605 | 5.1.3 | 운영매뉴얼 작성 | 10d | 2008-07-18 A | 2008-07-31 A |  | 100% |  | 2008-07-18 | 2008-07-31 | 10d |  |  | start no earlier than 2008-07-17 | 시스템 사용교육 | C02-1 1.5.3 | 운영매뉴얼 |
| 606 | 5.1.4 | 사용자교육 실시 | 8d | 2008-08-01 A | 2008-08-11 A |  | 100% |  | 2008-08-01 | 2008-08-11 | 8d |  |  | start no earlier than 2008-08-01 | 시스템 사용교육 | C02-1 1.5.3 | 교육결과서 |
| 607 | 5.1.5 | 운영자교육 실시 | 7d | 2008-08-01 A | 2008-08-10 A |  | 100% |  | 2008-08-01 | 2008-08-10 | 7d |  |  | start no earlier than 2008-08-01 | 시스템 사용교육 | C02-1 1.5.3 | 교육결과서 |
| 608 | 5.2 | **영업점 테스트** | 113d | 2008-07-21 A | 2008-12-18 |  | 89% | 12.76d | 2008-07-21 | 2008-12-18 | 113d | 67d |  | start no earlier than 2007-04-25 | 테스트 실시 | C02-1 1.4.2 |  |
| 609 | 5.2.1 | 영업점테스트 계획수립 | 5d | 2008-07-21 A | 2008-07-25 A |  | 100% |  | 2008-07-21 | 2008-07-25 | 5d |  |  | start no earlier than 2008-07-21 | 테스트 실시 | C02-1 1.4.2 | 영업점테스트계획서 |
| 610 | 5.2.2 | 영업점테스트 시나리오 작성 | 12d | 2008-07-28 A | 2008-08-11 A |  | 100% |  | 2008-07-28 | 2008-08-11 | 12d |  |  | start no earlier than 2008-07-28 | 테스트 실시 | C02-1 1.4.2 | 영업점테스트시나리오 |
| 611 | 5.2.3 | 1차시범영업점테스트 실시 | 12d | 2008-08-17 A | 2008-09-01 A | 610 | 100% |  | 2008-08-17 | 2008-09-01 | 12d |  |  | start no earlier than 2008-08-17 | 테스트 실시 | C02-1 1.4.2 | 영업점테스트결과, 결함보고서(영업점) |
| 612 | 5.2.4 | 2차시범영업점테스트 실시 | 12d | 2008-09-02 A | 2008-09-18 A | 611 | 100% |  | 2008-09-02 | 2008-09-18 | 12d |  |  | start no earlier than 2008-09-01 | 테스트 실시 | C02-1 1.4.2 | 영업점테스트결과, 결함보고서(영업점) |
| 613 | 5.2.3 | 1차영업점테스트 실시 | 12d | 2008-09-21 A | 2008-10-07 A | 612 | 100% |  | 2008-09-21 | 2008-10-07 | 12d |  |  | start no earlier than 2008-09-21 | 테스트 실시 | C02-1 1.4.2 | 영업점테스트결과, 결함보고서(영업점) |
| 614 | 5.2.3 | 2차영업점테스트 실시 | 12d | 2008-10-12 A | 2008-10-27 A | 613 | 100% |  | 2008-10-12 | 2008-10-27 | 12d |  |  | start no earlier than 2008-10-12 | 테스트 실시 | C02-1 1.4.2 | 영업점테스트결과, 결함보고서(영업점) |
| 615 | 5.2.3 | 3차영업점테스트 실시 | 8d | 2008-11-02 A | 2008-11-11 A | 614 | 100% |  | 2008-11-02 | 2008-11-11 | 8d |  |  | start no earlier than 2008-11-02 | 테스트 실시 | C02-1 1.4.2 | 영업점테스트결과, 결함보고서(영업점) |
| 616 | 5.2.3 | 4차영업점테스트 실시 | 10d | 2008-11-15 A | 2008-11-27 | 615 | 95% | 0.5d | 2008-11-15 | 2008-11-27 | 10d | 73d | 6d | start no earlier than 2008-11-15 | 테스트 실시 | C02-1 1.4.2 | 영업점테스트결과, 결함보고서(영업점) |
| 617 | 5.2.3 | 5차영업점테스트 실시 | 10d | 2008-12-07 | 2008-12-18 | 616 |  |  | 2008-12-07 | 2008-12-18 | 10d | 67d |  | start no earlier than 2008-12-07 | 테스트 실시 | C02-1 1.4.2 | 영업점테스트결과, 결함보고서(영업점) |

| ID | WBS | Task | Duration | Start | Finish | Complete | Remaining | Baseline start | Baseline finish | Baseline duration | Total slack | Constraint | Text20 | Text26 | Text30 |
| --- | --- | --- | --- | --- | --- | --- | --- | --- | --- | --- | --- | --- | --- | --- | --- |
| 618 | 6 | **인수테스트** | 18d | 2008-12-15 | 2009-01-09 |  |  | 2008-12-15 | 2009-01-09 | 18d | 53d | start no earlier than 2007-04-25 | 테스트 실시 | C02-1 1.4.2 |  |
| 619 | 6.1 | 인수테스트 실시 | 18d | 2008-12-15 | 2009-01-09 |  |  | 2008-12-15 | 2009-01-09 | 18d | 53d | start no earlier than 2008-12-15 | 테스트 실시 | C02-1 1.4.2 |  |
| 620 | 5.3 | **이행** | 19d | 2009-01-02 | 2009-01-27 |  |  | 2009-01-02 | 2009-01-27 | 19d | 40d | start no earlier than 2007-04-25 | 시범운영 | C02-1 1.5.4 |  |
| 621 | 5.3.1 | 이행계획 수립 | 5d | 2009-01-02 | 2009-01-08 |  |  | 2009-01-02 | 2009-01-08 | 5d | 54d | start no earlier than 2009-01-02 | 시범운영 | C02-1 1.5.4 | 이행계획서 |
| 622 | 5.3.2 | 이행시나리오 작성 | 6d | 2009-01-09 | 2009-01-16 |  |  | 2009-01-09 | 2009-01-16 | 6d | 48d | start no earlier than 2009-01-09 | 시범운영 | C02-1 1.5.4 | 이행시나리오 |
| 623 | 5.3.3 | 이행 실시 | 3d | 2009-01-25 | 2009-01-27 |  |  | 2009-01-25 | 2009-01-27 | 3d | 40d | start no earlier than 2009-01-25 | 시범운영 | C02-1 1.5.4 | 운영시스템 |
| 624 | 5.5 | **영업점테스트 단계 관리 활동** | 141d | 2008-07-21 A | 2009-01-28 | 56% | 61.69d | 2008-07-21 | 2009-01-28 | 141d | 39d |  | 품질활동수행 | C02-1 1.6.2 |  |
| 625 | 5.5.1 | 영업점테스트 SPM검토및 수정 | 4d | 2008-07-21 A | 2008-07-24 A | 100% |  | 2008-07-21 | 2008-07-24 | 4d |  | start no earlier than 2008-07-21 | 품질활동수행 | C02-1 1.6.2 |  |
| 626 | 5.5.2 | 오리엔테이션(5차)실시 | 5d | 2008-07-28 A | 2008-08-01 A | 100% |  | 2008-07-28 | 2008-08-01 | 5d |  | start no earlier than 2008-07-28 | 품질활동수행 | C02-1 1.6.2 |  |
| 627 | 5.5.3 | QAO심사(5차)조치 | 45d | 2008-08-25 A | 2008-10-24 A | 100% |  | 2008-08-25 | 2008-10-24 | 45d |  | start no earlier than 2008-08-25 | 품질활동수행 | C02-1 1.6.2 |  |
| 628 | 5.5.4 | Inspection(5차) 실시 및 조치 | 9d | 2008-12-08 | 2008-12-18 |  |  | 2008-12-08 | 2008-12-18 | 9d | 67d | start no earlier than 2008-12-08 | 품질활동수행 | C02-1 1.6.2 |  |
| 629 | 5.5.5 | 예비제품검사 조치 | 10d | 2008-12-22 | 2009-01-06 |  |  | 2008-12-22 | 2009-01-06 | 10d | 56d | start no earlier than 2008-12-22 | 품질활동수행 | C02-1 1.6.2 |  |
| 630 | 5.5.6 | 제품검사 조치 | 9d | 2009-01-19 | 2009-01-28 |  |  | 2009-01-19 | 2009-01-28 | 9d | 39d | start no earlier than 2009-01-19 | 품질활동수행 | C02-1 1.6.2 |  |
| 631 | 5.5.7 | 최종 요구사항추적표매핑 | 4d | 2008-12-29 | 2009-01-02 |  |  | 2008-12-29 | 2009-01-02 | 4d | 58d | start no earlier than 2008-12-29 | 품질활동수행 | C02-1 1.6.2 |  |
| 632 | 5.5.8 | 고객검토(3차) 실시 및 조치 | 5d | 2008-12-22 | 2008-12-29 |  |  | 2008-12-22 | 2008-12-29 | 5d | 61d | start no earlier than 2008-12-22 | 품질활동수행 | C02-1 1.6.2 |  |
| 633 | 5.5.9 | 과업대비표매핑 | 5d | 2009-01-19 | 2009-01-23 |  |  | 2009-01-19 | 2009-01-23 | 5d | 43d | start no earlier than 2009-01-19 | 품질활동수행 | C02-1 1.6.2 |  |
| 634 | 7 | **시스템안정화** | 40d | 2009-01-28 | 2009-03-24 |  |  | 2009-01-28 | 2009-03-24 | 40d | 0d | start no earlier than 2007-04-25 | 구현 | C02-1 1.5 |  |
| 635 | 7.1 | **시스템 운영** | 40d | 2009-01-28 | 2009-03-24 |  |  | 2009-01-28 | 2009-03-24 | 40d | 0d | start no earlier than 2007-04-25 | 시범운영 | C02-1 1.5.4 |  |
| 636 | 7.1.1 | 시스템운영 실시 | 40d | 2009-01-28 | 2009-03-24 |  |  | 2009-01-28 | 2009-03-24 | 40d | 0d | start no earlier than 2009-01-28 | 시범운영 | C02-1 1.5.4 | 시범운영일지 |
