# 자동화기기

Schedule from MS Project, 2007-04-25 to 2009-03-24, costs in ₩, A marks actual dates.
HSIC-0600001
�궪�꽦SDS

## Calendars

- 농협신용신시스템: Mon-Fri 08:00-12:00, 13:00-17:00; Sat-Sun off. Exceptions (off unless hours are given): 2007-05-01, 2007-05-24, 2007-06-06, 2007-07-17, 2007-08-15, 2007-09-24 to 2007-09-26, 2007-10-03, 2007-12-25, 2008-01-01, 2008-02-06 to 2008-02-08, 2008-05-01 08:00-12:00, 13:00-17:00, 2008-05-05, 2008-05-12 08:00-12:00, 13:00-17:00, 2008-06-06, 2008-06-07 08:00-12:00, 13:00-17:00, 2008-07-17, 2008-08-10 08:00-12:00, 13:00-17:00, 2008-08-15, 2008-08-31 08:00-12:00, 13:00-17:00, 2008-09-15, 2008-09-21 08:00-12:00, 13:00-17:00, 2008-10-03, 2008-10-12 08:00-12:00, 13:00-17:00, 2008-11-02 08:00-12:00, 13:00-17:00, 2008-11-15 08:00-12:00, 13:00-17:00, 2008-12-07 08:00-12:00, 13:00-17:00, 2008-12-25, 2009-01-01, 2009-01-25.

## Resources

| Resource | Rate |
| --- | --- |
| 김태룡 | 0.12 |
| 윤덕형 | 0.12 |
| 최진희 | 0.12 |
| 김상엽 |  |
| 전관호 |  |
| 정용택 |  |

## Schedule

| ID | WBS | Task | Duration | Start | Finish | Complete | Baseline start | Baseline finish | Baseline duration | Constraint | Resources | Work | Actual work | Cost | Baseline cost | Actual cost | Text20 | Text26 | Text30 |
| --- | --- | --- | --- | --- | --- | --- | --- | --- | --- | --- | --- | --- | --- | --- | --- | --- | --- | --- | --- |
| 1 | 1 | **분석** | 34d | 2007-06-07 A | 2007-07-25 A | 100% | 2007-06-07 | 2007-07-25 | 34d |  |  | 1936h | 1936h | 242 | 242 | 242 | 분석 | C02-1 1.2 |  |
| 2 | 1.1 | **현황 평가** | 15d | 2007-06-07 A | 2007-06-27 A | 100% | 2007-06-07 | 2007-06-27 | 15d |  |  | 528h | 528h | 66 | 66 | 66 | 현황 평가 | C02-1 1.2.1 |  |
| 4 | 1.1.1 | **지급/입금 업무** | 5d | 2007-06-07 A | 2007-06-13 A | 100% | 2007-06-07 | 2007-06-13 | 5d | finish no earlier than 2007-06-13 | 김태룡; 윤덕형 | 80h | 80h | 10 | 10 | 10 | 현황 평가 | C02-1 1.2.1 |  |
| 5 | 1.1.1.1 | 조회 업무 | 5d | 2007-06-07 A | 2007-06-13 A | 100% | 2007-06-07 | 2007-06-13 | 5d | finish no earlier than 2007-06-13 | 김태룡; 윤덕형 | 80h | 80h | 10 | 10 | 10 | 현황 평가 | C02-1 1.2.1 |  |
| 6 | 1.1.1.2 | 계좌이체 업무 | 5d | 2007-06-14 A | 2007-06-20 A | 100% | 2007-06-14 | 2007-06-20 | 5d | start no earlier than 2007-06-14 | 김태룡; 윤덕형 | 80h | 80h | 10 | 10 | 10 | 현황 평가 | C02-1 1.2.1 |  |
| 7 | 1.1.1.3 | 수납업무 | 5d | 2007-06-14 A | 2007-06-20 A | 100% | 2007-06-14 | 2007-06-20 | 5d | start no earlier than 2007-06-14 | 김태룡; 윤덕형 | 80h | 80h | 10 | 10 | 10 | 현황 평가 | C02-1 1.2.1 |  |
| 8 | 1.1.1.4 | 전자화폐 업무 | 5d | 2007-06-21 A | 2007-06-27 A | 100% | 2007-06-21 | 2007-06-27 | 5d | start no earlier than 2007-06-21 | 김태룡; 윤덕형 | 80h | 80h | 10 | 10 | 10 | 현황 평가 | C02-1 1.2.1 |  |
| 9 | 1.1.1.5 | 기타업무(개국,합계,통장기장,사고등록,원격제어등) | 5d | 2007-06-21 A | 2007-06-27 A | 100% | 2007-06-21 | 2007-06-27 | 5d | finish no earlier than 2007-06-27 | 김태룡; 윤덕형 | 80h | 80h | 10 | 10 | 10 | 현황 평가 | C02-1 1.2.1 |  |
| 10 | 1.1.2 | **현행업무 분석** | 5d | 2007-06-11 A | 2007-06-15 A | 100% | 2007-06-11 | 2007-06-15 | 5d |  |  | 48h | 48h | 6 | 6 | 6 | 현황 평가 | C02-1 1.2.1 | 현행시스템분석서 |
| 11 | 1.1.2.1 | 지급/입금 업무 | 1d | 2007-06-11 A | 2007-06-11 A | 100% | 2007-06-11 | 2007-06-11 | 1d | start no earlier than 2007-06-11 | 김태룡 | 8h | 8h | 1 | 1 | 1 | 현황 평가 | C02-1 1.2.1 |  |
| 12 | 1.1.2.2 | 조회 업무 | 1d | 2007-06-12 A | 2007-06-12 A | 100% | 2007-06-12 | 2007-06-12 | 1d | start no earlier than 2007-06-12 | 김태룡 | 8h | 8h | 1 | 1 | 1 | 현황 평가 | C02-1 1.2.1 |  |
| 13 | 1.1.2.3 | 계좌이체 업무 | 1d | 2007-06-13 A | 2007-06-13 A | 100% | 2007-06-13 | 2007-06-13 | 1d | start no earlier than 2007-06-13 | 김태룡 | 8h | 8h | 1 | 1 | 1 | 현황 평가 | C02-1 1.2.1 |  |
| 14 | 1.1.2.4 | 수납업무 | 1d | 2007-06-14 A | 2007-06-14 A | 100% | 2007-06-14 | 2007-06-14 | 1d | start no earlier than 2007-06-14 | 김태룡 | 8h | 8h | 1 | 1 | 1 | 현황 평가 | C02-1 1.2.1 |  |
| 15 | 1.1.2.5 | 전자화폐 업무 | 1d | 2007-06-15 A | 2007-06-15 A | 100% | 2007-06-15 | 2007-06-15 | 1d | start no earlier than 2007-06-15 | 김태룡 | 8h | 8h | 1 | 1 | 1 | 현황 평가 | C02-1 1.2.1 |  |
| 16 | 1.1.2.6 | 기타업무(개국,합계,통장기장,사고등록,원격제어등) | 1d | 2007-06-15 A | 2007-06-15 A | 100% | 2007-06-15 | 2007-06-15 | 1d | start no earlier than 2007-06-15 | 김태룡 | 8h | 8h | 1 | 1 | 1 | 현황 평가 | C02-1 1.2.1 |  |
| 17 | 1.2 | **요구사항 정의** | 9d | 2007-06-18 A | 2007-06-28 A | 100% | 2007-06-18 | 2007-06-28 | 9d |  |  | 560h | 560h | 70 | 70 | 70 | 요구사항 정의 | C02-1 1.2.2 |  |
| 18 | 1.2.1 | **기능요구사항 정의** | 7d | 2007-06-18 A | 2007-06-26 A | 100% | 2007-06-18 | 2007-06-26 | 7d |  |  | 160h | 160h | 20 | 20 | 20 | 요구사항 정의 | C02-1 1.2.2 | 현업요구사항정의서 |
| 19 | 1.2.1.1 | 공통기능 요구사항 정의 | 2d | 2007-06-18 A | 2007-06-19 A | 100% | 2007-06-18 | 2007-06-19 | 2d | finish no earlier than 2007-06-19 | 김태룡; 윤덕형 | 32h | 32h | 4 | 4 | 4 | 요구사항 정의 | C02-1 1.2.2 |  |
| 20 | 1.2.1.2 | 업무 기능별 요구사항 정의 | 3d | 2007-06-20 A | 2007-06-22 A | 100% | 2007-06-20 | 2007-06-22 | 3d | finish no earlier than 2007-06-22 | 김태룡; 윤덕형 | 48h | 48h | 6 | 6 | 6 | 요구사항 정의 | C02-1 1.2.2 |  |
| 21 | 1.2.1.3 | 인터페이스유형별 요구사항 정의 | 5d | 2007-06-20 A | 2007-06-26 A | 100% | 2007-06-20 | 2007-06-26 | 5d | finish no earlier than 2007-06-26 | 김태룡; 윤덕형 | 80h | 80h | 10 | 10 | 10 | 요구사항 정의 | C02-1 1.2.2 |  |
| 22 | 1.2.2 | **인터페이스 요구사항 정의** | 4d | 2007-06-21 A | 2007-06-26 A | 100% | 2007-06-21 | 2007-06-26 | 4d |  |  | 256h | 256h | 32 | 32 | 32 | 요구사항 정의 | C02-1 1.2.2 | 현업요구사항정의서 |
| 23 | 1.2.2.1 | 뱅킹신시스템과의 인터페이스도출 및 정의 | 4d | 2007-06-21 A | 2007-06-26 A | 100% | 2007-06-21 | 2007-06-26 | 4d | finish no earlier than 2007-06-26 | 김태룡; 윤덕형 | 64h | 64h | 8 | 8 | 8 | 요구사항 정의 | C02-1 1.2.2 |  |
| 24 | 1.2.2.2 | 업무시스템과의 인터페이스도출 및 정의 | 4d | 2007-06-21 A | 2007-06-26 A | 100% | 2007-06-21 | 2007-06-26 | 4d | finish no earlier than 2007-06-26 | 김태룡; 윤덕형 | 64h | 64h | 8 | 8 | 8 | 요구사항 정의 | C02-1 1.2.2 |  |
| 25 | 1.2.2.3 | 대외통합시스템과의인터페이스도출 및 정의 | 4d | 2007-06-21 A | 2007-06-26 A | 100% | 2007-06-21 | 2007-06-26 | 4d | finish no earlier than 2007-06-26 | 김태룡; 윤덕형 | 64h | 64h | 8 | 8 | 8 | 요구사항 정의 | C02-1 1.2.2 |  |
| 26 | 1.2.2.4 | 채널통합과의 인터페이스도출 및 정의 | 4d | 2007-06-21 A | 2007-06-26 A | 100% | 2007-06-21 | 2007-06-26 | 4d | finish no earlier than 2007-06-26 | 김태룡; 윤덕형 | 64h | 64h | 8 | 8 | 8 | 요구사항 정의 | C02-1 1.2.2 |  |

| ID | WBS | Task | Duration | Start | Finish | Complete | Baseline start | Baseline finish | Baseline duration | Constraint | Resources | Work | Actual work | Cost | Baseline cost | Actual cost | Text20 | Text26 | Text30 |
| --- | --- | --- | --- | --- | --- | --- | --- | --- | --- | --- | --- | --- | --- | --- | --- | --- | --- | --- | --- |
| 27 | 1.2.3 | **시스템화 범위 결정** | 3d | 2007-06-26 A | 2007-06-28 A | 100% | 2007-06-26 | 2007-06-28 | 3d |  |  | 144h | 144h | 18 | 18 | 18 | 요구사항 정의 | C02-1 1.2.2 | 현업요구사항정의서 |
| 28 | 1.2.3.1 | 공통업무 시스템화 범위 결정 | 3d | 2007-06-26 A | 2007-06-28 A | 100% | 2007-06-26 | 2007-06-28 | 3d | finish no earlier than 2007-06-28 | 김태룡; 윤덕형 | 48h | 48h | 6 | 6 | 6 | 요구사항 정의 | C02-1 1.2.2 |  |
| 29 | 1.2.3.2 | 기능별 시스템화 범위 결정 | 3d | 2007-06-26 A | 2007-06-28 A | 100% | 2007-06-26 | 2007-06-28 | 3d | finish no earlier than 2007-06-28 | 김태룡; 윤덕형 | 48h | 48h | 6 | 6 | 6 | 요구사항 정의 | C02-1 1.2.2 |  |
| 30 | 1.2.3.3 | 인터페이스유형별 시스템화 범위 결정 | 3d | 2007-06-26 A | 2007-06-28 A | 100% | 2007-06-26 | 2007-06-28 | 3d | finish no earlier than 2007-06-28 | 김태룡; 윤덕형 | 48h | 48h | 6 | 6 | 6 | 요구사항 정의 | C02-1 1.2.2 |  |
| 31 | 1.3 | **신논리모델 구축** | 14d | 2007-06-29 A | 2007-07-19 A | 100% | 2007-06-29 | 2007-07-19 | 14d |  |  | 624h | 624h | 78 | 78 | 78 | 신논리모델 구축 | C02-1 1.2.3 |  |
| 32 | 1.3.1 | **프로세스 모델링** | 12d | 2007-06-29 A | 2007-07-16 A | 100% | 2007-06-29 | 2007-07-16 | 12d |  |  | 496h | 496h | 62 | 62 | 62 | 신논리모델 구축 | C02-1 1.2.3 |  |
| 33 | 1.3.1.1 | **프로세스 도출 및 정의** | 8d | 2007-06-29 A | 2007-07-10 A | 100% | 2007-06-29 | 2007-07-10 | 8d |  |  | 128h | 128h | 16 | 16 | 16 | 신논리모델 구축 | C02-1 1.2.3 | 기능차트, 프로세스정의서 |
| 34 | 1.3.1.1.1 | 공통프로세스 도출 및 정의 | 2d | 2007-06-29 A | 2007-07-02 A | 100% | 2007-06-29 | 2007-07-02 | 2d | start no earlier than 2007-06-29 | 김태룡; 윤덕형 | 32h | 32h | 4 | 4 | 4 | 신논리모델 구축 | C02-1 1.2.3 |  |
| 35 | 1.3.1.1.2 | 채널프로세스 도출 및 정의 | 2d | 2007-07-03 A | 2007-07-04 A | 100% | 2007-07-03 | 2007-07-04 | 2d | start no earlier than 2007-07-03 | 김태룡; 윤덕형 | 32h | 32h | 4 | 4 | 4 | 신논리모델 구축 | C02-1 1.2.3 |  |
| 36 | 1.3.1.1.3 | 기능별 프로세스 도출 및 정의 | 3d | 2007-07-05 A | 2007-07-09 A | 100% | 2007-07-05 | 2007-07-09 | 3d | start no earlier than 2007-07-05 | 김태룡; 윤덕형 | 48h | 48h | 6 | 6 | 6 | 신논리모델 구축 | C02-1 1.2.3 |  |
| 37 | 1.3.1.1.4 | 관리프로세스 도출 및 정의 | 1d | 2007-07-10 A | 2007-07-10 A | 100% | 2007-07-10 | 2007-07-10 | 1d | start no earlier than 2007-07-10 | 김태룡; 윤덕형 | 16h | 16h | 2 | 2 | 2 | 신논리모델 구축 | C02-1 1.2.3 |  |
| 38 | 1.3.1.2 | **내부인터페이스도출 및 정의** | 3d | 2007-07-11 A | 2007-07-13 A | 100% | 2007-07-11 | 2007-07-13 | 3d |  |  | 48h | 48h | 6 | 6 | 6 | 신논리모델 구축 | C02-1 1.2.3 | 인터페이스정의서 |
| 39 | 1.3.1.2.1 | 기능프로세스와 채널프로세스 인터페이스 도출 및 정의 | 2d | 2007-07-11 A | 2007-07-12 A | 100% | 2007-07-11 | 2007-07-12 | 2d | start no earlier than 2007-07-11 | 김태룡; 윤덕형 | 32h | 32h | 4 | 4 | 4 | 신논리모델 구축 | C02-1 1.2.3 |  |
| 40 | 1.3.1.2.2 | DB 인터페이스 도출 및 정의 | 1d | 2007-07-13 A | 2007-07-13 A | 100% | 2007-07-13 | 2007-07-13 | 1d | start no earlier than 2007-07-13 | 김태룡; 윤덕형 | 16h | 16h | 2 | 2 | 2 | 신논리모델 구축 | C02-1 1.2.3 |  |
| 41 | 1.3.1.3 | **외부인터페이스도출 및 정의** | 5d | 2007-07-10 A | 2007-07-16 A | 100% | 2007-07-10 | 2007-07-16 | 5d |  |  | 320h | 320h | 40 | 40 | 40 | 신논리모델 구축 | C02-1 1.2.3 | 인터페이스정의서 |
| 42 | 1.3.1.3.1 | 뱅킹신시스템과의 인터페이스도출 및 정의 | 5d | 2007-07-10 A | 2007-07-16 A | 100% | 2007-07-10 | 2007-07-16 | 5d | finish no earlier than 2007-07-16 | 김태룡; 윤덕형 | 80h | 80h | 10 | 10 | 10 | 신논리모델 구축 | C02-1 1.2.3 |  |
| 43 | 1.3.1.3.2 | 업무시스템과의 인터페이스도출 및 정의 | 5d | 2007-07-10 A | 2007-07-16 A | 100% | 2007-07-10 | 2007-07-16 | 5d | start no earlier than 2007-07-10 | 김태룡; 윤덕형 | 80h | 80h | 10 | 10 | 10 | 신논리모델 구축 | C02-1 1.2.3 |  |
| 44 | 1.3.1.3.3 | 대외통합시스템과의인터페이스도출 및 정의 | 5d | 2007-07-10 A | 2007-07-16 A | 100% | 2007-07-10 | 2007-07-16 | 5d | start no earlier than 2007-07-10 | 김태룡; 윤덕형 | 80h | 80h | 10 | 10 | 10 | 신논리모델 구축 | C02-1 1.2.3 |  |
| 45 | 1.3.1.3.4 | 채널통합과의 인터페이스도출 및 정의 | 5d | 2007-07-10 A | 2007-07-16 A | 100% | 2007-07-10 | 2007-07-16 | 5d | start no earlier than 2007-07-10 | 김태룡; 윤덕형 | 80h | 80h | 10 | 10 | 10 | 신논리모델 구축 | C02-1 1.2.3 |  |
| 46 | 1.3.2 | **데이터 모델링** | 5d | 2007-07-12 A | 2007-07-19 A | 100% | 2007-07-12 | 2007-07-19 | 5d |  |  | 128h | 128h | 16 | 16 | 16 | 신논리모델 구축 | C02-1 1.2.3 |  |
| 47 | 1.3.2.1 | **엔티티 도출 및 논리 모델링** | 2d | 2007-07-18 A | 2007-07-19 A | 100% | 2007-07-18 | 2007-07-19 | 2d |  |  | 64h | 64h | 8 | 8 | 8 | 신논리모델 구축 | C02-1 1.2.3 | 엔티티목록, ERD(논리) |
| 48 | 1.3.2.1.1 | 공통업무 엔티티 도출 및 정의 | 2d | 2007-07-18 A | 2007-07-19 A | 100% | 2007-07-18 | 2007-07-19 | 2d | finish no earlier than 2007-07-19 | 윤덕형 | 16h | 16h | 2 | 2 | 2 | 신논리모델 구축 | C02-1 1.2.3 |  |
| 49 | 1.3.2.1.2 | 채널업무 엔티티 도출 및 정의 | 2d | 2007-07-18 A | 2007-07-19 A | 100% | 2007-07-18 | 2007-07-19 | 2d | finish no earlier than 2007-07-19 | 윤덕형 | 16h | 16h | 2 | 2 | 2 | 신논리모델 구축 | C02-1 1.2.3 |  |
| 50 | 1.3.2.1.3 | 기능업무단위 엔티티 도출 및 정의 | 2d | 2007-07-18 A | 2007-07-19 A | 100% | 2007-07-18 | 2007-07-19 | 2d | finish no earlier than 2007-07-19 | 윤덕형 | 16h | 16h | 2 | 2 | 2 | 신논리모델 구축 | C02-1 1.2.3 |  |
| 51 | 1.3.2.1.4 | 자동화기기 관리업무 엔티티 도출 및 정의 | 2d | 2007-07-18 A | 2007-07-19 A | 100% | 2007-07-18 | 2007-07-19 | 2d | finish no earlier than 2007-07-19 | 윤덕형 | 16h | 16h | 2 | 2 | 2 | 신논리모델 구축 | C02-1 1.2.3 |  |

| ID | WBS | Task | Duration | Start | Finish | Complete | Baseline start | Baseline finish | Baseline duration | Constraint | Resources | Work | Actual work | Cost | Baseline cost | Actual cost | Text20 | Text26 | Text30 |
| --- | --- | --- | --- | --- | --- | --- | --- | --- | --- | --- | --- | --- | --- | --- | --- | --- | --- | --- | --- |
| 52 | 1.3.2.2 | **엔티티 정의** | 2d | 2007-07-12 A | 2007-07-13 A | 100% | 2007-07-12 | 2007-07-13 | 2d |  |  | 64h | 64h | 8 | 8 | 8 | 신논리모델 구축 | C02-1 1.2.3 | 엔티티정의서 |
| 53 | 1.3.2.2.1 | 공통업무 엔티티 정의 | 2d | 2007-07-12 A | 2007-07-13 A | 100% | 2007-07-12 | 2007-07-13 | 2d | finish no earlier than 2007-07-23 | 윤덕형 | 16h | 16h | 2 | 2 | 2 | 신논리모델 구축 | C02-1 1.2.3 |  |
| 54 | 1.3.2.2.2 | 채널업무 엔티티 정의 | 2d | 2007-07-12 A | 2007-07-13 A | 100% | 2007-07-12 | 2007-07-13 | 2d | start no earlier than 2007-07-20 | 윤덕형 | 16h | 16h | 2 | 2 | 2 | 신논리모델 구축 | C02-1 1.2.3 |  |
| 55 | 1.3.2.2.3 | 기능업무 엔티티 정의 | 2d | 2007-07-12 A | 2007-07-13 A | 100% | 2007-07-12 | 2007-07-13 | 2d | start no earlier than 2007-07-20 | 윤덕형 | 16h | 16h | 2 | 2 | 2 | 신논리모델 구축 | C02-1 1.2.3 |  |
| 56 | 1.3.2.2.4 | 자동화기기관리업무 엔티티 정의 | 2d | 2007-07-12 A | 2007-07-13 A | 100% | 2007-07-12 | 2007-07-13 | 2d | start no earlier than 2007-07-20 | 윤덕형 | 16h | 16h | 2 | 2 | 2 | 신논리모델 구축 | C02-1 1.2.3 |  |
| 57 | 1.4 | 인수테스트기준정의 | 5d | 2007-07-18 A | 2007-07-24 A | 100% | 2007-07-18 | 2007-07-24 | 5d | start no earlier than 2007-07-18 | 김태룡; 윤덕형 | 80h | 80h | 10 | 10 | 10 | 검수기준관리활동 수행 | C02-1 1.6.5 | 인수테스트기준서 |
| 58 | 1.5 | **분석단계관리활동** | 15d | 2007-07-04 A | 2007-07-25 A | 100% | 2007-07-04 | 2007-07-25 | 15d |  |  | 144h | 144h | 18 | 18 | 18 | 단계완료 | C02-1 1.6.8 |  |
| 59 | 1.5.1 | Inspection(1차) 실시 및 조치 | 3d | 2007-07-04 A | 2007-07-06 A | 100% | 2007-07-04 | 2007-07-06 | 3d | start no earlier than 2007-07-04 | 김태룡; 윤덕형 | 48h | 48h | 6 | 6 | 6 | 단계완료 | C02-1 1.6.8 |  |
| 60 | 1.5.2 | 요구사항추적표 매핑 | 2d | 2007-07-09 A | 2007-07-10 A | 100% | 2007-07-09 | 2007-07-10 | 2d | start no earlier than 2007-07-09 | 김태룡; 윤덕형 | 32h | 32h | 4 | 4 | 4 | 단계완료 | C02-1 1.6.8 |  |
| 61 | 1.5.3 | 요구사항규모측정방법 교육 및 측정 | 1d | 2007-07-13 A | 2007-07-13 A | 100% | 2007-07-13 | 2007-07-13 | 1d | start no earlier than 2007-07-13 | 김태룡; 윤덕형 | 16h | 16h | 2 | 2 | 2 | 단계완료 | C02-1 1.6.8 |  |
| 62 | 1.5.4 | 고객검토(1차) 실시 및 조치 | 3d | 2007-07-23 A | 2007-07-25 A | 100% | 2007-07-23 | 2007-07-25 | 3d | start no earlier than 2007-07-23 | 김태룡; 윤덕형 | 48h | 48h | 6 | 6 | 6 | 단계완료 | C02-1 1.6.8 |  |
| 63 | 2 | **설계** | 103d | 2007-08-01 A | 2007-12-31 A | 100% | 2007-08-01 | 2007-12-31 | 103d |  |  | 3528h | 3528h | 218 | 218 | 218 | 설계 | C02-1 1.3 |  |
| 64 | 2.1 | **기본 설계** | 39d | 2007-08-01 A | 2007-09-28 A | 100% | 2007-08-01 | 2007-09-28 | 39d |  |  | 1384h | 1384h | 85 | 85 | 85 | 기본설계 | C02-1 1.3.1 |  |
| 65 | 2.1.1 | **시스템구조 설계** | 30d | 2007-08-01 A | 2007-09-12 A | 100% | 2007-08-01 | 2007-09-12 | 30d |  |  | 688h | 688h | 43 | 43 | 43 | 기본설계 | C02-1 1.3.1 | 어플리케이션구조도, 프로그램목록 |
| 66 | 2.1.1.1 | 어플리케이션구조도작성 | 14d | 2007-08-01 A | 2007-08-20 A | 100% | 2007-08-01 | 2007-08-20 | 14d |  | 김상엽; 윤덕형 | 208h | 208h | 13 | 13 | 13 | 기본설계 | C02-1 1.3.1 |  |
| 67 | 2.1.1.2 | 프로그램목록작성 | 10d | 2007-08-16 A | 2007-08-29 A | 100% | 2007-08-16 | 2007-08-29 | 10d | start no earlier than 2007-08-16 | 김상엽; 윤덕형 | 160h | 160h | 10 | 10 | 10 | 기본설계 | C02-1 1.3.1 |  |
| 68 | 2.1.1.3 | 인터페이스기본설계 | 20d | 2007-08-16 A | 2007-09-12 A | 100% | 2007-08-16 | 2007-09-12 | 20d | start no earlier than 2007-08-16 | 김상엽; 윤덕형 | 320h | 320h | 20 | 20 | 20 | 기본설계 | C02-1 1.3.1 |  |
| 69 | 2.1.2 | **데이터코드 설계** | 5d | 2007-09-13 A | 2007-09-19 A | 100% | 2007-09-13 | 2007-09-19 | 5d |  | 김상엽; 윤덕형 | 240h | 240h | 15 | 15 | 15 | 기본설계 | C02-1 1.3.1 | 데이터코드설계서, 데이터코드목록 |
| 70 | 2.1.2.1 | 데이터코드설계작성 | 5d | 2007-09-13 A | 2007-09-19 A | 100% | 2007-09-13 | 2007-09-19 | 5d | start no earlier than 2007-09-13 | 김상엽; 윤덕형 | 80h | 80h | 5 | 5 | 5 | 기본설계 | C02-1 1.3.1 |  |
| 71 | 2.1.2.2 | 데이터코드목록작성 | 5d | 2007-09-13 A | 2007-09-19 A | 100% | 2007-09-13 | 2007-09-19 | 5d | start no earlier than 2007-09-13 | 김상엽; 윤덕형 | 80h | 80h | 5 | 5 | 5 | 기본설계 | C02-1 1.3.1 |  |
| 72 | 2.1.3 | **화면 설계** | 9d | 2007-09-13 A | 2007-09-28 A | 100% | 2007-09-13 | 2007-09-28 | 9d |  | 김상엽; 윤덕형 | 456h | 456h | 27 | 27 | 27 | 기본설계 | C02-1 1.3.1 | 화면목록, 화면레이아웃 |
| 73 | 2.1.3.1 | 화면목록작성 | 11d | 2007-09-13 A | 2007-09-28 A | 100% | 2007-09-13 | 2007-09-28 | 11d | start no earlier than 2007-09-13 | 김상엽; 윤덕형 | 144h | 144h | 9 | 9 | 9 | 기본설계 | C02-1 1.3.1 |  |
| 74 | 2.1.3.2 | 화면레이아웃작성 | 11d | 2007-09-13 A | 2007-09-28 A | 100% | 2007-09-13 | 2007-09-28 | 11d | start no earlier than 2007-09-13 | 김상엽; 윤덕형 | 144h | 144h | 9 | 9 | 9 | 기본설계 | C02-1 1.3.1 |  |
| 75 | 2.2 | **상세 설계** | 44d | 2007-10-01 A | 2007-11-30 A | 100% | 2007-10-01 | 2007-11-30 | 44d |  | 김상엽; 윤덕형 | 2144h | 2144h | 133 | 133 | 133 | 상세설계 | C02-1 1.3.3 |  |
| 76 | 2.2.1 | **데이터베이스 상세설계** | 7d | 2007-10-01 A | 2007-10-10 A | 100% | 2007-10-01 | 2007-10-10 | 7d |  | 김상엽; 윤덕형 | 280h | 280h | 17 | 17 | 17 | 상세설계 | C02-1 1.3.3 | ERD(물리), 테이블목록, 테이블정의서, 프로그램대테이블상관도 |
| 77 | 2.2.1.1 | ERD(물리)작성 | 2d | 2007-10-01 A | 2007-10-02 A | 100% | 2007-10-01 | 2007-10-02 | 2d | start no earlier than 2007-10-01 | 김상엽; 윤덕형 | 32h | 32h | 2 | 2 | 2 | 상세설계 | C02-1 1.3.3 |  |
| 78 | 2.2.1.2 | 테이블목록작성 | 3d | 2007-10-04 A | 2007-10-08 A | 100% | 2007-10-04 | 2007-10-08 | 3d | start no earlier than 2007-10-03 | 김상엽; 윤덕형 | 48h | 48h | 3 | 3 | 3 | 상세설계 | C02-1 1.3.3 |  |
| 79 | 2.2.1.3 | 테이블정의서작성 | 3d | 2007-10-04 A | 2007-10-08 A | 100% | 2007-10-04 | 2007-10-08 | 3d | start no earlier than 2007-10-03 | 김상엽; 윤덕형 | 48h | 48h | 3 | 3 | 3 | 상세설계 | C02-1 1.3.3 |  |
| 80 | 2.2.1.4 | 프로그램대테이블상관도작성 | 2d | 2007-10-09 A | 2007-10-10 A | 100% | 2007-10-09 | 2007-10-10 | 2d | start no earlier than 2007-10-09 | 김상엽; 윤덕형 | 32h | 32h | 2 | 2 | 2 | 상세설계 | C02-1 1.3.3 |  |

| ID | WBS | Task | Duration | Start | Finish | Complete | Remaining | Baseline start | Baseline finish | Baseline duration | Total slack | Constraint | Resources | Work | Actual work | Cost | Baseline cost | Actual cost | Text20 | Text26 | Text30 |
| --- | --- | --- | --- | --- | --- | --- | --- | --- | --- | --- | --- | --- | --- | --- | --- | --- | --- | --- | --- | --- | --- |
| 81 | 2.2.2 | **공통프로그램 설계** | 20d | 2007-10-08 A | 2007-11-02 A | 100% |  | 2007-10-08 | 2007-11-02 | 20d |  |  | 김상엽; 윤덕형 | 640h | 640h | 40 | 40 | 40 | 상세설계 | C02-1 1.3.3 | 프로그램사양서(공통) |
| 82 | 2.2.2.1 | 프로그램사양서(공통)작성 | 20d | 2007-10-08 A | 2007-11-02 A | 100% |  | 2007-10-08 | 2007-11-02 | 20d |  | finish no earlier than 2007-11-02 | 김상엽; 윤덕형 | 320h | 320h | 20 | 20 | 20 | 상세설계 | C02-1 1.3.3 |  |
| 83 | 2.2.3 | **서버프로그램 설계** | 16d | 2007-10-26 A | 2007-11-16 A | 100% |  | 2007-10-26 | 2007-11-16 | 16d |  |  | 김상엽; 윤덕형 | 512h | 512h | 32 | 32 | 32 | 상세설계 | C02-1 1.3.3 | 프로그램사양서(서버) |
| 84 | 2.2.3.1 | 프로그램사양서(서버)작성 | 16d | 2007-10-26 A | 2007-11-16 A | 100% |  | 2007-10-26 | 2007-11-16 | 16d |  | finish no earlier than 2007-11-16 | 김상엽; 윤덕형 | 256h | 256h | 16 | 16 | 16 | 상세설계 | C02-1 1.3.3 |  |
| 85 | 2.2.4 | **클라이언트프로그램 설계** | 10d | 2007-11-19 A | 2007-11-30 A | 100% |  | 2007-11-19 | 2007-11-30 | 10d |  |  |  |  |  |  |  |  | 상세설계 | C02-1 1.3.3 | 프로그램사양서(클라이언트) |
| 86 | 2.2.4.1 | 프로그램사양서(클라이언트)작성 | 10d | 2007-11-19 A | 2007-11-30 A | 100% |  | 2007-11-19 | 2007-11-30 | 10d |  | start no earlier than 2007-11-19 |  |  |  |  |  |  | 상세설계 | C02-1 1.3.3 |  |
| 87 | 2.3 | **설계단계관리활동** | 20d | 2007-11-12 A | 2007-12-07 A | 100% |  | 2007-11-12 | 2007-12-07 | 20d |  |  |  |  |  |  |  |  | 단계완료 | C02-1 1.6.8 |  |
| 88 | 2.3.1 | QAO심사(2차) 조치 | 5d | 2007-11-12 A | 2007-11-16 A | 100% |  | 2007-11-12 | 2007-11-16 | 5d |  | finish no earlier than 2007-11-16 |  |  |  |  |  |  | 단계완료 | C02-1 1.6.8 |  |
| 89 | 2.3.2 | Inspection(2차) 실시 및 조치 | 10d | 2007-11-19 A | 2007-11-30 A | 100% |  | 2007-11-19 | 2007-11-30 | 10d |  | start no earlier than 2007-11-19 |  |  |  |  |  |  | 단계완료 | C02-1 1.6.8 |  |
| 90 | 2.3.3 | 설계 요구사항추적표 매핑 | 5d | 2007-11-26 A | 2007-11-30 A | 100% |  | 2007-11-26 | 2007-11-30 | 5d |  | start no earlier than 2007-11-26 |  |  |  |  |  |  | 단계완료 | C02-1 1.6.8 |  |
| 91 | 2.3.4 | 고객검토(2차) 실시 및 조치 | 5d | 2007-12-03 A | 2007-12-07 A | 100% |  | 2007-12-03 | 2007-12-07 | 5d |  | start no earlier than 2007-12-03 |  |  |  |  |  |  | 단계완료 | C02-1 1.6.8 |  |
| 92 | 2.4 | **단계말정리** | 15d | 2007-12-10 A | 2007-12-31 A | 100% |  | 2007-12-10 | 2007-12-31 | 15d |  |  |  |  |  |  |  |  | 단계완료 | C02-1 1.6.8 |  |
| 93 | 2.4.1 | 프로젝트제출물검토 | 10d | 2007-12-10 A | 2007-12-21 A | 100% |  | 2007-12-10 | 2007-12-21 | 10d |  | finish no earlier than 2007-12-12 |  |  |  |  |  |  | 단계완료 | C02-1 1.6.8 |  |
| 94 | 2.4.2 | 다음단계 일정계획 수립 | 5d | 2007-12-24 A | 2007-12-31 A | 100% |  | 2007-12-24 | 2007-12-31 | 5d |  | start no earlier than 2007-12-24 |  |  |  |  |  |  | 단계완료 | C02-1 1.6.8 |  |
| 95 | 3 | **개발** | 241d? | 2007-12-10 A | 2008-11-15 | 99% | 1.14d? | 2007-12-10 | 2008-10-13 | 215d? | 91d |  |  | 240h | 240h | 15 | 15 | 15 | 개발 | C02-1 1.4 |  |
| 96 | 3.1 | **코딩 및 단위테스트 실시** | 226d? | 2008-01-02 A | 2008-11-15 | 99% | 2.13d? | 2008-01-02 | 2008-10-13 | 200d? | 91d |  |  |  |  |  |  |  | 코딩 및 단위테스트 실시 | C02-1 1.4.1 |  |
| 97 | 3.1.1 | **단위테스트체크리스트작성** | 13d | 2008-01-02 A | 2008-01-18 A | 100% |  | 2008-01-02 | 2008-01-18 | 13d |  |  |  |  |  |  |  |  | 코딩 및 단위테스트 실시 | C02-1 1.4.1 | 단위테스트체크리스트 |
| 98 | 3.1.1.1 | 단위테스트체크리스트작성 | 13d | 2008-01-02 A | 2008-01-18 A | 100% |  | 2008-01-02 | 2008-01-18 | 13d |  | start no earlier than 2008-01-02 |  |  |  |  |  |  | 코딩 및 단위테스트 실시 | C02-1 1.4.1 |  |
| 99 | 3.1.2 | **프로그램모델 및 공통프로그램 개발** | 27d | 2008-01-21 A | 2008-02-29 A | 100% |  | 2008-01-21 | 2008-02-29 | 27d |  |  |  |  |  |  |  |  | 코딩 및 단위테스트 실시 | C02-1 1.4.1 | 소스코드(공통) |
| 100 | 3.1.2.1 | 소스코드(공통)작성 | 27d | 2008-01-21 A | 2008-02-29 A | 100% |  | 2008-01-21 | 2008-02-29 | 27d |  | start no earlier than 2008-01-21 |  |  |  |  |  |  | 코딩 및 단위테스트 실시 | C02-1 1.4.1 |  |
| 101 | 3.1.3 | **프로그램 코딩** | 201d? | 2008-02-11 A | 2008-11-15 | 99% | 1.98d? | 2008-02-11 | 2008-10-13 | 175d? | 91d |  |  |  |  |  |  |  | 코딩 및 단위테스트 실시 | C02-1 1.4.1 | 소스코드 |
| 102 | 3.1.3.1 | 소스코드작성 | 68d | 2008-02-11 A | 2008-05-15 A | 100% |  | 2008-02-11 | 2008-05-15 | 68d |  | start no earlier than 2008-02-11 |  |  |  |  |  |  | 코딩 및 단위테스트 실시 | C02-1 1.4.1 |  |
| 103 | 3.1.3.2 | 운용관리프로그램 개발 | 66d? | 2008-08-20 A | 2008-11-15 | 98% | 1.32d? | 2008-07-14 | 2008-10-13 | 66d? | 91d | finish no earlier than 2008-10-13 |  |  |  |  |  |  | 코딩 및 단위테스트 실시 | C02-1 1.4.1 |  |
| 104 | 3.1.4 | **단위테스트 실시** | 31d | 2008-04-17 A | 2008-05-30 | 98% | 0.62d | 2008-04-17 | 2008-05-30 | 31d | 213d |  |  |  |  |  |  |  | 코딩 및 단위테스트 실시 | C02-1 1.4.1 | 단위테스트결과서 |
| 105 | 3.1.4.1 | 단위테스트결과서작성 | 30d | 2008-04-17 A | 2008-05-30 | 98% | 0.6d | 2008-04-17 | 2008-05-30 | 30d | 213d | finish no earlier than 2008-05-30 |  |  |  |  |  |  | 코딩 및 단위테스트 실시 | C02-1 1.4.1 |  |

| ID | WBS | Task | Duration | Start | Finish | Predecessors | Complete | Baseline start | Baseline finish | Baseline duration | Constraint | Resources | Work | Actual work | Cost | Baseline cost | Actual cost | Text20 | Text26 | Text30 |
| --- | --- | --- | --- | --- | --- | --- | --- | --- | --- | --- | --- | --- | --- | --- | --- | --- | --- | --- | --- | --- |
| 106 | 3.2 | **개발단계관리활동** | 123d | 2007-12-10 A | 2008-06-05 A |  | 100% | 2007-12-10 | 2008-06-05 | 123d |  |  | 240h | 240h | 15 | 15 | 15 | 품질활동수행 | C02-1 1.6.2 |  |
| 107 | 3.2.1 | 개발 SPM 검토 및 수정 | 5d | 2007-12-10 A | 2007-12-14 A |  | 100% | 2007-12-10 | 2007-12-14 | 5d | start no earlier than 2007-12-10 | 김상엽; 윤덕형 | 80h | 80h | 5 | 5 | 5 | 품질활동수행 | C02-1 1.6.2 |  |
| 108 | 3.2.2 | 설계 감리 조치 | 5d | 2007-12-17 A | 2007-12-21 A |  | 100% | 2007-12-17 | 2007-12-21 | 5d | start no earlier than 2007-12-17 | 윤덕형; 김상엽 | 80h | 80h | 5 | 5 | 5 | 품질활동수행 | C02-1 1.6.2 |  |
| 109 | 3.2.3 | 오리엔테이션(3차) 실시 | 5d | 2007-12-17 A | 2007-12-21 A |  | 100% | 2007-12-17 | 2007-12-21 | 5d | start no earlier than 2007-12-17 | 윤덕형; 김상엽 | 80h | 80h | 5 | 5 | 5 | 품질활동수행 | C02-1 1.6.2 |  |
| 110 | 3.2.4 | QAO심사(3차) 조치 | 70d | 2008-02-04 A | 2008-05-15 A |  | 100% | 2008-02-04 | 2008-05-15 | 70d | start no earlier than 2008-02-04 |  |  |  |  |  |  | 품질활동수행 | C02-1 1.6.2 |  |
| 111 | 3.2.5 | Inspection(3차) 실시 및 조치 | 95d | 2008-01-15 A | 2008-05-30 A |  | 100% | 2008-01-15 | 2008-05-30 | 95d | finish no earlier than 2008-05-30 |  |  |  |  |  |  | 품질활동수행 | C02-1 1.6.2 |  |
| 112 | 3.2.6 | 개발 요구사항추적표 매핑 | 4d | 2008-06-02 A | 2008-06-05 A | 111 | 100% | 2008-06-02 | 2008-06-05 | 4d | finish no earlier than 2008-06-05 |  |  |  |  |  |  | 품질활동수행 | C02-1 1.6.2 |  |
| 113 | 3.2.7 | 통합테스트계획서작성 | 9d | 2008-05-20 A | 2008-05-30 A |  | 100% | 2008-05-20 | 2008-05-30 | 9d | finish no earlier than 2008-05-30 |  |  |  |  |  |  | 품질활동수행 | C02-1 1.6.2 |  |
| 114 | 3.2.8 | 통합테스트시나리오작성 | 9d | 2008-05-20 A | 2008-05-30 A |  | 100% | 2008-05-20 | 2008-05-30 | 9d | finish no earlier than 2008-05-30 |  |  |  |  |  |  | 품질활동수행 | C02-1 1.6.2 |  |
| 115 | 4 | **통합테스트** | 72d? | 2008-04-22 A | 2008-08-01 A |  | 100% | 2008-04-22 | 2008-08-01 | 72d? |  |  |  |  |  |  |  | 개발 | C02-1 1.4 |  |
| 116 | 4.1 | **통합테스트** | 67d? | 2008-04-22 A | 2008-07-25 A |  | 100% | 2008-04-22 | 2008-07-25 | 67d? |  |  |  |  |  |  |  | 테스트 실시 | C02-1 1.4.2 |  |
| 117 | 4.1.1 | **통합테스트계획 수립** | 23d? | 2008-04-29 A | 2008-05-30 A |  | 100% | 2008-04-29 | 2008-05-30 | 23d? |  |  |  |  |  |  |  | 테스트 실시 | C02-1 1.4.2 | 통합테스트계획서 |
| 118 | 4.1.1.1 | 통합테스트계획서 작성 | 13d? | 2008-04-29 A | 2008-05-16 A |  | 100% | 2008-04-29 | 2008-05-16 | 13d? | finish no earlier than 2008-05-16 |  |  |  |  |  |  | 테스트 실시 | C02-1 1.4.2 |  |
| 119 | 4.1.1.2 | 통합테스트계획서 보완 | 5d? | 2008-05-26 A | 2008-05-30 A |  | 100% | 2008-05-26 | 2008-05-30 | 5d? | finish no earlier than 2008-05-30 |  |  |  |  |  |  | 테스트 실시 | C02-1 1.4.2 |  |
| 120 | 4.1.2 | **통합테스트 시나리오 작성** | 28d? | 2008-04-22 A | 2008-05-30 A |  | 100% | 2008-04-22 | 2008-05-30 | 28d? |  |  |  |  |  |  |  | 테스트 실시 | C02-1 1.4.2 | 통합테스트시나리오 |
| 121 | 4.1.2.1 | 통합테스트시나리오목록 작성 | 7d? | 2008-04-22 A | 2008-04-30 A |  | 100% | 2008-04-22 | 2008-04-30 | 7d? | finish no earlier than 2008-04-30 |  |  |  |  |  |  | 테스트 실시 | C02-1 1.4.2 |  |
| 122 | 4.1.2.2 | 통합테스트시나리오목록 보완 | 4d? | 2008-05-13 A | 2008-05-16 A |  | 100% | 2008-05-13 | 2008-05-16 | 4d? | finish no earlier than 2008-05-16 |  |  |  |  |  |  | 테스트 실시 | C02-1 1.4.2 |  |
| 123 | 4.1.2.3 | 통합테스트시나리오 작성(1차) | 11d? | 2008-05-01 A | 2008-05-16 A | 121 | 100% | 2008-05-01 | 2008-05-16 | 11d? | finish no earlier than 2008-05-16 |  |  |  |  |  |  | 테스트 실시 | C02-1 1.4.2 |  |
| 124 | 4.1.2.4 | 통합테스트시나리오 작성(2차) | 5d? | 2008-05-19 A | 2008-05-23 A |  | 100% | 2008-05-19 | 2008-05-23 | 5d? | start no earlier than 2008-05-19 |  |  |  |  |  |  | 테스트 실시 | C02-1 1.4.2 |  |
| 125 | 4.1.2.5 | 통합테스트시나리오 보완 | 5d? | 2008-05-26 A | 2008-05-30 A |  | 100% | 2008-05-26 | 2008-05-30 | 5d? | start no earlier than 2008-05-26 |  |  |  |  |  |  | 테스트 실시 | C02-1 1.4.2 |  |
| 126 | 4.1.3 | **통합테스트 실시** | 34d | 2008-06-09 A | 2008-07-25 A |  | 100% | 2008-06-09 | 2008-07-25 | 34d |  |  |  |  |  |  |  | 테스트 실시 | C02-1 1.4.2 | 통합테스트시나리오(결과), 결함보고서(통합) |
| 127 | 4.1.3.1 | 1차 통합테스트 실시 | 5d | 2008-06-09 A | 2008-06-13 A |  | 100% | 2008-06-09 | 2008-06-13 | 5d | start no earlier than 2008-06-09 |  |  |  |  |  |  | 테스트 실시 | C02-1 1.4.2 |  |
| 128 | 4.1.3.2 | 2차 통합테스트 실시 | 5d | 2008-06-23 A | 2008-06-27 A |  | 100% | 2008-06-23 | 2008-06-27 | 5d | start no earlier than 2008-06-23 |  |  |  |  |  |  | 테스트 실시 | C02-1 1.4.2 |  |
| 129 | 4.1.3.3 | 3차 통합테스트 실시 | 5d | 2008-07-07 A | 2008-07-11 A |  | 100% | 2008-07-07 | 2008-07-11 | 5d | start no earlier than 2008-07-07 |  |  |  |  |  |  | 테스트 실시 | C02-1 1.4.2 |  |
| 130 | 4.1.3.4 | 4차 통합테스트 실시 | 5d | 2008-07-21 A | 2008-07-25 A |  | 100% | 2008-07-21 | 2008-07-25 | 5d | finish no earlier than 2008-07-25 |  |  |  |  |  |  | 테스트 실시 | C02-1 1.4.2 |  |

| ID | WBS | Task | Duration | Start | Finish | Predecessors | Complete | Remaining | Baseline start | Baseline finish | Baseline duration | Total slack | Constraint | Text20 | Text26 | Text30 |
| --- | --- | --- | --- | --- | --- | --- | --- | --- | --- | --- | --- | --- | --- | --- | --- | --- |
| 131 | 4.2 | **통합테스트단계관리활동** | 54d | 2008-05-19 A | 2008-08-01 A |  | 100% |  | 2008-05-19 | 2008-08-01 | 54d |  |  | 품질활동수행 | C02-1 1.6.2 |  |
| 132 | 4.2.1 | 통합테스트 단계 계획 검토 및 수정 | 5d | 2008-05-19 A | 2008-05-23 A |  | 100% |  | 2008-05-19 | 2008-05-23 | 5d |  | start no earlier than 2008-05-19 | 품질활동수행 | C02-1 1.6.2 |  |
| 133 | 4.2.2 | 통합테스트 SPM 검토 및 수정 | 5d | 2008-05-19 A | 2008-05-23 A |  | 100% |  | 2008-05-19 | 2008-05-23 | 5d |  | start no earlier than 2008-05-19 | 품질활동수행 | C02-1 1.6.2 |  |
| 134 | 4.2.3 | 오리엔테이션(4차) 실시 | 5d | 2008-05-29 A | 2008-06-04 A | 133 | 100% |  | 2008-05-29 | 2008-06-04 | 5d |  | start no earlier than 2008-05-29 | 품질활동수행 | C02-1 1.6.2 |  |
| 135 | 4.2.4 | QAO심사(4차) 조치 | 5d | 2008-06-16 A | 2008-06-20 A | 134 | 100% |  | 2008-06-16 | 2008-06-20 | 5d |  | finish no earlier than 2008-06-20 | 품질활동수행 | C02-1 1.6.2 |  |
| 136 | 4.2.5 | Inspection(4차) 실시 및 조치 | 4d | 2008-07-14 A | 2008-07-18 A |  | 100% |  | 2008-07-14 | 2008-07-18 | 4d |  | finish no earlier than 2008-07-18 | 품질활동수행 | C02-1 1.6.2 |  |
| 137 | 4.2.6 | 통합테스트 요구사항추적표 매핑 | 5d | 2008-07-28 A | 2008-08-01 A | 136 | 100% |  | 2008-07-28 | 2008-08-01 | 5d |  | finish no earlier than 2008-08-01 | 품질활동수행 | C02-1 1.6.2 |  |
| 138 | 5 | **영업점테스트** | 172d | 2008-07-21 A | 2009-03-13 |  | 26% | 128.09d | 2008-07-21 | 2009-03-13 | 172d | 7d |  | 개발 | C02-1 1.4 |  |
| 139 | 5.1 | **시스템사용교육** | 21d | 2008-09-01 | 2008-09-29 |  |  |  | 2008-09-01 | 2008-09-29 | 21d | 127d |  | 시스템 사용교육 | C02-1 1.5.3 |  |
| 140 | 5.1.1 | **교육계획수립** | 12d | 2008-09-01 | 2008-09-17 |  |  |  | 2008-09-01 | 2008-09-17 | 12d | 136d |  | 시스템 사용교육 | C02-1 1.5.3 | 교육계획서 |
| 141 | 5.1.1.1 | 교육계획서작성 | 12d | 2008-09-01 | 2008-09-17 |  |  |  | 2008-09-01 | 2008-09-17 | 12d | 136d | start no earlier than 2008-09-01 | 시스템 사용교육 | C02-1 1.5.3 |  |
| 142 | 5.1.2 | **사용자매뉴얼작성** | 12d | 2008-09-01 | 2008-09-17 |  |  |  | 2008-09-01 | 2008-09-17 | 12d | 136d |  | 시스템 사용교육 | C02-1 1.5.3 | 사용자매뉴얼 |
| 143 | 5.1.2.1 | 사용자매뉴얼작성 | 12d | 2008-09-01 | 2008-09-17 |  |  |  | 2008-09-01 | 2008-09-17 | 12d | 136d | start no earlier than 2008-09-01 | 시스템 사용교육 | C02-1 1.5.3 |  |
| 144 | 5.1.3 | **운영매뉴얼작성** | 12d | 2008-09-01 | 2008-09-17 |  |  |  | 2008-09-01 | 2008-09-17 | 12d | 136d |  | 시스템 사용교육 | C02-1 1.5.3 | 운영자매뉴얼 |
| 145 | 5.1.3.1 | 운영자매뉴얼작성 | 12d | 2008-09-01 | 2008-09-17 |  |  |  | 2008-09-01 | 2008-09-17 | 12d | 136d | start no earlier than 2008-09-01 | 시스템 사용교육 | C02-1 1.5.3 |  |
| 146 | 5.1.4 | **사용자교육실시** | 9d | 2008-09-18 | 2008-09-29 |  |  |  | 2008-09-18 | 2008-09-29 | 9d | 127d |  | 시스템 사용교육 | C02-1 1.5.3 | 교육결과서 |
| 147 | 5.1.4.1 | 교육결과서 작성 | 9d | 2008-09-18 | 2008-09-29 |  |  |  | 2008-09-18 | 2008-09-29 | 9d | 127d | start no earlier than 2008-09-18 | 시스템 사용교육 | C02-1 1.5.3 |  |
| 148 | 5.1.5 | **운영자교육실시** | 9d | 2008-09-18 | 2008-09-29 |  |  |  | 2008-09-18 | 2008-09-29 | 9d | 127d |  | 시스템 사용교육 | C02-1 1.5.3 | 교육결과서 |
| 149 | 5.1.5.1 | 교육결과서작성 | 9d | 2008-09-18 | 2008-09-29 |  |  |  | 2008-09-18 | 2008-09-29 | 9d | 127d | start no earlier than 2008-09-18 | 시스템 사용교육 | C02-1 1.5.3 |  |
| 150 | 5.2 | **영업점테스트** | 97d | 2008-08-11 A | 2008-12-18 |  | 75% | 23.78d | 2008-08-11 | 2008-12-18 | 97d | 66d |  | 테스트 실시 | C02-1 1.4.2 |  |
| 151 | 5.2.1 | **영업점테스트계획 수립** | 6d | 2008-10-01 A | 2008-10-09 A |  | 100% |  | 2008-10-01 | 2008-10-09 | 6d |  |  | 테스트 실시 | C02-1 1.4.2 | 영업점테스트계획서 |
| 152 | 5.2.1.1 | 영업점테스트계획서 작성 | 6d | 2008-10-01 A | 2008-10-09 A |  | 100% |  | 2008-10-01 | 2008-10-09 | 6d |  | start no earlier than 2008-10-01 | 테스트 실시 | C02-1 1.4.2 |  |
| 153 | 5.2.2 | **영업점테스트 시나리오 작성** | 6d | 2008-10-01 A | 2008-10-09 |  | 20% | 4.8d | 2008-10-01 | 2008-10-09 | 6d | 120d |  | 테스트 실시 | C02-1 1.4.2 | 영업점테스트시나리오 |
| 154 | 5.2.2.1 | 영업점테스트시나리오작성 | 6d | 2008-10-01 A | 2008-10-09 |  | 20% | 4.8d | 2008-10-01 | 2008-10-09 | 6d | 120d | start no earlier than 2008-10-01 | 테스트 실시 | C02-1 1.4.2 |  |

| ID | WBS | Task | Duration | Start | Finish | Predecessors | Complete | Remaining | Baseline start | Baseline finish | Baseline duration | Total slack | Free slack | Constraint | Text20 | Text26 | Text30 |
| --- | --- | --- | --- | --- | --- | --- | --- | --- | --- | --- | --- | --- | --- | --- | --- | --- | --- |
| 155 | 5.2.3 | **영업점테스트 실시** | 97d | 2008-08-11 A | 2008-12-18 |  | 78% | 21.56d | 2008-08-11 | 2008-12-18 | 97d | 66d |  |  | 테스트 실시 | C02-1 1.4.2 | 영업점테스트시나리오(결과), 결함보고서(영업점) |
| 156 | 5.2.3.1 | 1차 시범점테스트 실시 및 보완 | 15d | 2008-08-11 A | 2008-08-31 A |  | 100% |  | 2008-08-11 | 2008-08-31 | 15d |  |  | finish no earlier than 2008-08-31 | 테스트 실시 | C02-1 1.4.2 |  |
| 157 | 5.2.3.2 | 2차 시범점테스트 실시 및 보완 | 14d | 2008-08-31 A | 2008-09-18 A |  | 100% |  | 2008-08-31 | 2008-09-18 | 14d |  |  | start no earlier than 2008-08-31 | 테스트 실시 | C02-1 1.4.2 |  |
| 158 | 5.2.3.3 | 1차 영업점테스트 실시 및 보완 | 7d | 2008-09-21 A | 2008-09-29 A |  | 100% |  | 2008-09-21 | 2008-09-29 | 7d |  |  | start no earlier than 2008-09-21 | 테스트 실시 | C02-1 1.4.2 |  |
| 159 | 5.2.3.4 | 2차 영업점테스트 실시 및 보완 | 14d | 2008-10-12 A | 2008-10-29 A |  | 100% |  | 2008-10-12 | 2008-10-29 | 14d |  |  | start no earlier than 2008-10-12 | 테스트 실시 | C02-1 1.4.2 |  |
| 160 | 5.2.3.5 | 3차 영업점테스트 실시 및 보완 | 6d | 2008-11-02 A | 2008-11-07 A |  | 100% |  | 2008-11-02 | 2008-11-07 | 6d |  |  | start no earlier than 2008-11-02 | 테스트 실시 | C02-1 1.4.2 |  |
| 161 | 5.2.3.6 | 4차 영업점테스트 실시 및 보완 | 10d | 2008-11-15 A | 2008-11-27 |  | 70% | 3d | 2008-11-15 | 2008-11-27 | 10d | 82d |  | start no earlier than 2008-11-15 | 테스트 실시 | C02-1 1.4.2 |  |
| 162 | 5.2.3.7 | 5차 영업점테스트 실시 및 보완 | 10d | 2008-12-07 | 2008-12-18 |  |  |  | 2008-12-07 | 2008-12-18 | 10d | 66d |  | start no earlier than 2008-12-07 | 테스트 실시 | C02-1 1.4.2 |  |
| 163 | 5.2.3.8 | 결함보고서(영업점)작성 | 5d | 2008-12-09 | 2008-12-15 |  |  |  | 2008-12-09 | 2008-12-15 | 5d | 69d |  | start no earlier than 2008-12-09 | 테스트 실시 | C02-1 1.4.2 |  |
| 164 | 5.3 | **인수테스트실시** | 18d | 2008-12-15 | 2009-01-09 |  |  |  | 2008-12-15 | 2009-01-09 | 18d | 52d |  |  | 테스트 실시 | C02-1 1.4.2 |  |
| 165 | 5.3.1 | **인수테스트실시** | 18d | 2008-12-15 | 2009-01-09 |  |  |  | 2008-12-15 | 2009-01-09 | 18d | 52d |  |  | 테스트 실시 | C02-1 1.4.2 | 인수테스트기준서(결과), 결함보고서(인수) |
| 166 | 5.3.1.1 | 인수테스트기준서(결과)작성 | 18d | 2008-12-15 | 2009-01-09 |  |  |  | 2008-12-15 | 2009-01-09 | 18d | 52d |  | start no earlier than 2008-12-15 | 테스트 실시 | C02-1 1.4.2 |  |
| 167 | 5.3.1.2 | 결함보고서(인수)작성 | 5d | 2009-01-05 | 2009-01-09 |  |  |  | 2009-01-05 | 2009-01-09 | 5d | 52d |  | start no earlier than 2009-01-05 | 테스트 실시 | C02-1 1.4.2 |  |
| 168 | 5.4 | **이행** | 19d | 2009-01-02 | 2009-01-28 |  |  |  | 2009-01-02 | 2009-01-28 | 19d | 39d |  |  | 컨버전 및 릴리이즈 | C02-1 1.5.2 |  |
| 169 | 5.4.1 | **이행계획 수립** | 18d | 2009-01-02 | 2009-01-27 |  |  |  | 2009-01-02 | 2009-01-27 | 18d | 40d |  |  | 컨버전 및 릴리이즈 | C02-1 1.5.2 | 이행계획서 |
| 170 | 5.4.1.1 | 이행계획서작성 | 18d | 2009-01-02 | 2009-01-27 |  |  |  | 2009-01-02 | 2009-01-27 | 18d | 40d |  | start no earlier than 2009-01-02 | 컨버전 및 릴리이즈 | C02-1 1.5.2 |  |
| 171 | 5.4.2 | **이행시나리오작성** | 18d | 2009-01-02 | 2009-01-27 |  |  |  | 2009-01-02 | 2009-01-27 | 18d | 40d |  |  | 컨버전 및 릴리이즈 | C02-1 1.5.2 | 이행시나리오 |
| 172 | 5.4.2.1 | 이행시나리오작성 | 18d | 2009-01-02 | 2009-01-27 |  |  |  | 2009-01-02 | 2009-01-27 | 18d | 40d |  | start no earlier than 2009-01-02 | 컨버전 및 릴리이즈 | C02-1 1.5.2 |  |
| 173 | 5.4.3 | **이행실시** | 3d | 2009-01-26 | 2009-01-28 |  |  |  | 2009-01-26 | 2009-01-28 | 3d | 39d |  |  | 컨버전 및 릴리이즈 | C02-1 1.5.2 | 운영시스템 |
| 174 | 5.4.3.1 | 운영시스템작성 | 3d | 2009-01-26 | 2009-01-28 |  |  |  | 2009-01-26 | 2009-01-28 | 3d | 39d |  | start no earlier than 2009-01-25 | 컨버전 및 릴리이즈 | C02-1 1.5.2 |  |
| 175 | 5.5 | **영업점테스트단계관리활동** | 172d | 2008-07-21 | 2009-03-13 |  |  |  | 2008-07-21 | 2009-03-13 | 172d | 7d |  |  | 품질활동수행 | C02-1 1.6.2 |  |
| 176 | 5.5.1 | 영업점테스트 단계 계획 검토 및 수정 | 5d | 2008-07-21 | 2008-07-25 |  |  |  | 2008-07-21 | 2008-07-25 | 5d | 174d |  | start no earlier than 2008-07-21 | 품질활동수행 | C02-1 1.6.2 |  |
| 177 | 5.5.2 | 영업점테스트 SPM 검토 및 수정 | 5d | 2008-07-21 | 2008-07-25 |  |  |  | 2008-07-21 | 2008-07-25 | 5d | 169d | 0d | start no earlier than 2008-07-21 | 품질활동수행 | C02-1 1.6.2 |  |
| 178 | 5.5.3 | 오리엔테이션(5차) 실시 | 5d | 2008-07-28 | 2008-08-01 | 177 |  |  | 2008-07-28 | 2008-08-01 | 5d | 169d |  |  | 품질활동수행 | C02-1 1.6.2 |  |
| 179 | 5.5.4 | QAO심사(5차) 조치 | 10d | 2008-12-01 | 2008-12-11 |  |  |  | 2008-12-01 | 2008-12-11 | 10d | 71d |  | start no earlier than 2008-12-01 | 품질활동수행 | C02-1 1.6.2 |  |
| 180 | 5.5.5 | Inspection(5차) 실시 및 조치 | 9d | 2008-12-15 | 2008-12-26 |  |  |  | 2008-12-15 | 2008-12-26 | 9d | 61d |  | finish no earlier than 2008-12-26 | 품질활동수행 | C02-1 1.6.2 |  |
| 181 | 5.5.6 | 예비제품검사 조치 | 10d | 2009-01-05 | 2009-01-16 |  |  |  | 2009-01-05 | 2009-01-16 | 10d | 47d |  | finish no earlier than 2009-01-16 | 품질활동수행 | C02-1 1.6.2 |  |
| 182 | 5.5.7 | 제품검사 조치 | 8d | 2009-01-16 | 2009-01-27 |  |  |  | 2009-01-16 | 2009-01-27 | 8d | 40d |  | finish no earlier than 2009-01-27 | 품질활동수행 | C02-1 1.6.2 |  |
| 183 | 5.5.8 | 최종 요구사항추적표 매핑 | 4d | 2008-12-29 | 2009-01-02 |  |  |  | 2008-12-29 | 2009-01-02 | 4d | 57d |  | finish no earlier than 2009-01-02 | 품질활동수행 | C02-1 1.6.2 |  |
| 184 | 5.5.9 | 고객검토(3차) 실시 및 조치 | 5d | 2009-01-05 | 2009-01-09 |  |  |  | 2009-01-05 | 2009-01-09 | 5d | 52d |  | start no earlier than 2009-01-05 | 품질활동수행 | C02-1 1.6.2 |  |
| 185 | 5.5.10 | 과업대비표 매핑 | 5d | 2009-03-09 | 2009-03-13 |  |  |  | 2009-03-09 | 2009-03-13 | 5d | 7d |  | start no earlier than 2009-03-09 | 품질활동수행 | C02-1 1.6.2 |  |

| ID | WBS | Task | Duration | Start | Finish | Baseline start | Baseline finish | Baseline duration | Total slack | Constraint | Text20 | Text26 | Text30 |
| --- | --- | --- | --- | --- | --- | --- | --- | --- | --- | --- | --- | --- | --- |
| 186 | 6 | **시스템안정화** | 486d? | 2007-04-25 | 2009-03-24 | 2007-04-25 | 2009-03-24 | 486d? | 0d |  | 구현 | C02-1 1.5 |  |
| 187 | 6.1 | **시스템운영** | 40d | 2009-01-28 | 2009-03-24 | 2009-01-28 | 2009-03-24 | 40d | 0d |  | 시범운영 | C02-1 1.5.4 |  |
| 188 | 6.1.1 | **시스템운영실시** | 40d | 2009-01-28 | 2009-03-24 | 2009-01-28 | 2009-03-24 | 40d | 0d |  | 시범운영 | C02-1 1.5.4 | 시스템운영일지 |
| 189 | 6.1.1.1 | 시스템운영일지작성 | 40d | 2009-01-28 | 2009-03-24 | 2009-01-28 | 2009-03-24 | 40d | 0d | start no earlier than 2009-01-28 | 시범운영 | C02-1 1.5.4 |  |
| 190 | 6.2 | 실적규모측정방법 교육 및 측정 | 1d? | 2007-04-25 | 2007-04-25 | 2007-04-25 | 2007-04-25 | 1d? | 485d |  | 시범운영 | C02-1 1.5.4 |  |
