# 텔레마케팅

Schedule from MS Project, 2008-04-01 to 2009-03-24, costs in ₩, A marks actual dates.
HSIC-0600001
�궪�꽦SDS

## Calendars

- 농협신용신시스템: Mon-Fri 08:00-12:00, 13:00-17:00; Sat-Sun off. Exceptions (off unless hours are given): 2008-05-01, 2008-05-05 08:00-12:00, 13:00-17:00, 2008-05-12, 2008-06-06, 2008-07-17, 2008-08-15, 2008-09-15, 2008-10-03, 2008-12-06 08:00-12:00, 13:00-17:00, 2008-12-25, 2009-01-01, 2009-01-24 to 2009-01-25.

## Resources

| Resource | Rate |
| --- | --- |
| 권용준 | 0.12 |
| 송민섭 | 0.12 |
| 김종윤 | 0.12 |
| 2 |  |
| 송민 |  |
| 이창수 |  |
| 황성수 |  |

## Schedule

| ID | WBS | Task | Duration | Start | Finish | Complete | Remaining | Baseline start | Baseline finish | Baseline duration | Total slack | Constraint | Resources | Work | Actual work | Cost | Baseline cost | Actual cost | Text20 | Text26 | Text30 |
| --- | --- | --- | --- | --- | --- | --- | --- | --- | --- | --- | --- | --- | --- | --- | --- | --- | --- | --- | --- | --- | --- |
| 1 | 1 | **개발** | 52d? | 2008-04-01 A | 2008-06-16 | 99% | 0.04d? | 2008-04-01 | 2008-06-16 | 52d? | 196d |  |  | 3320h | 3317.31h | 189 | 189 | 188.76 | 개발 | C02-1 1.4 |  |
| 2 | 1.1 | **코딩 및 단위테스트 실시** | 42d | 2008-04-01 A | 2008-05-30 | 99% | 0.06d | 2008-04-01 | 2008-05-30 | 42d | 206d |  |  | 2208h | 2205.31h | 118 | 118 | 117.76 | 코딩 및 단위테스트 실시 | C02-1 1.4.1 |  |
| 3 | 1.1.1 | 단위테스트 체크리스트 작성 | 10d | 2008-04-01 A | 2008-04-14 A | 100% |  | 2008-04-01 | 2008-04-14 | 10d |  | start no earlier than 2008-04-01 | 황성수 | 80h | 80h |  |  |  | 코딩 및 단위테스트 실시 | C02-1 1.4.1 |  |
| 4 | 1.1.2 | 프로그램 모델 및 공통프로그램 개발 | 5d | 2008-04-07 A | 2008-04-11 A | 100% |  | 2008-04-07 | 2008-04-11 | 5d |  | start no earlier than 2008-04-07 | 권용준 | 40h | 40h | 5 | 5 | 5 | 코딩 및 단위테스트 실시 | C02-1 1.4.1 | 소스코드 |
| 5 | 1.1.3 | **프로그램 코딩** | 41d | 2008-04-01 A | 2008-05-29 A | 100% |  | 2008-04-01 | 2008-05-29 | 41d |  |  | 권용준; 황성수 | 1440h | 1440h | 73 | 73 | 73 | 코딩 및 단위테스트 실시 | C02-1 1.4.1 | 소스코드 |
| 6 | 1.1.3.1 | 텔레마케팅(온라인전문) | 32d | 2008-04-01 A | 2008-05-16 A | 100% |  | 2008-04-01 | 2008-05-16 | 32d |  | finish no earlier than 2008-05-29 | 김종윤; 황성수 | 528h | 528h | 32 | 32 | 32 | 코딩 및 단위테스트 실시 | C02-1 1.4.1 |  |
| 7 | 1.1.3.2 | 텔레마케팅(배치전문) | 30d | 2008-04-18 A | 2008-05-29 A | 100% |  | 2008-04-18 | 2008-05-29 | 30d |  | finish no earlier than 2008-05-29 | 황성수 | 240h | 240h |  |  |  | 코딩 및 단위테스트 실시 | C02-1 1.4.1 |  |
| 8 | 1.1.4 | **단위테스트 실시** | 15d | 2008-05-09 A | 2008-05-30 | 99% | 0.09d | 2008-05-09 | 2008-05-30 | 15d | 206d |  | 김종윤; 황성수 | 648h | 645.31h | 40 | 40 | 39.76 | 코딩 및 단위테스트 실시 | C02-1 1.4.1 | 단위테스트결과서 |
| 9 | 1.1.4.1 | 텔레마케팅(온라인전문) | 15d | 2008-05-09 A | 2008-05-30 | 99% | 0.15d | 2008-05-09 | 2008-05-30 | 15d | 206d | finish no earlier than 2008-05-30 | 김종윤; 황성수 | 240h | 238.8h | 15 | 15 | 14.85 | 코딩 및 단위테스트 실시 | C02-1 1.4.1 |  |
| 10 | 1.1.4.2 | 텔레마케팅(배치전문) | 10d | 2008-05-19 A | 2008-05-30 A | 100% |  | 2008-05-19 | 2008-05-30 | 10d |  | finish no earlier than 2008-05-30 | 김종윤; 황성수 | 160h | 160h | 10 | 10 | 10 | 코딩 및 단위테스트 실시 | C02-1 1.4.1 |  |
| 11 | 1.2 | **개발단계 관리활동** | 52d? | 2008-04-01 A | 2008-06-16 A | 100% |  | 2008-04-01 | 2008-06-16 | 52d? |  |  |  | 1112h | 1112h | 71 | 71 | 71 | 품질활동수행 | C02-1 1.6.2 |  |
| 12 | 1.2.1 | 개발단계 산출물 보완 | 3d? | 2008-05-28 A | 2008-05-30 A | 100% |  | 2008-05-28 | 2008-05-30 | 3d? |  | finish no earlier than 2008-05-30 | 황성수 | 24h | 24h |  |  |  | 품질활동수행 | C02-1 1.6.2 |  |
| 13 | 1.2.2 | 개발 SPM 검토 및 보완 | 6d? | 2008-04-01 A | 2008-04-08 A | 100% |  | 2008-04-01 | 2008-04-08 | 6d? |  | finish no earlier than 2008-04-08 | 권용준 | 48h | 48h | 6 | 6 | 6 | 품질활동수행 | C02-1 1.6.2 |  |
| 14 | 1.2.3 | QAO심사 조치 | 32d | 2008-05-02 A | 2008-06-16 A | 100% |  | 2008-05-02 | 2008-06-16 | 32d |  | start no earlier than 2008-05-05 | 황성수; 김종윤 | 480h | 480h | 30 | 30 | 30 | 품질활동수행 | C02-1 1.6.2 |  |
| 15 | 1.2.4 | Inspection 실시 및 조치 | 32d | 2008-05-02 A | 2008-06-16 A | 100% |  | 2008-05-02 | 2008-06-16 | 32d |  | start no earlier than 2008-05-05 | 황성수; 김종윤 | 480h | 480h | 30 | 30 | 30 | 품질활동수행 | C02-1 1.6.2 |  |
| 16 | 1.2.5 | 개발 요구사항추적표 매핑 | 5d | 2008-05-26 A | 2008-05-30 A | 100% |  | 2008-05-26 | 2008-05-30 | 5d |  | start no earlier than 2008-05-26 | 황성수; 김종윤 | 80h | 80h | 5 | 5 | 5 | 품질활동수행 | C02-1 1.6.2 |  |
| 17 | 2 | **통합테스트** | 62d? | 2008-06-02 A | 2008-08-29 | 93% | 4.34d? | 2008-06-02 | 2008-08-29 | 62d? | 144d |  |  | 1696h | 1644h | 93 | 93 | 90.5 | 개발 | C02-1 1.4 |  |
| 18 | 2.1 | **통합테스트** | 29d | 2008-06-02 A | 2008-07-11 A | 100% |  | 2008-06-02 | 2008-07-11 | 29d |  |  | 김종윤; 황성수 | 992h | 992h | 57 | 57 | 57 | 테스트 실시 | C02-1 1.4.2 |  |
| 19 | 2.1.1 | 통합테스트계획 수립 | 5d | 2008-06-02 A | 2008-06-09 A | 100% |  | 2008-06-02 | 2008-06-09 | 5d |  | start no earlier than 2008-06-02 | 김종윤; 황성수 | 80h | 80h | 5 | 5 | 5 | 테스트 실시 | C02-1 1.4.2 | 통합테스트계획서 |
| 20 | 2.1.2 | 통합테스트 시나리오 작성 | 5d | 2008-06-09 A | 2008-06-13 A | 100% |  | 2008-06-09 | 2008-06-13 | 5d |  | start no earlier than 2008-06-09 | 김종윤; 황성수 | 80h | 80h | 5 | 5 | 5 | 테스트 실시 | C02-1 1.4.2 | 통합테스트시나리오 |
| 21 | 2.1.3 | **통합테스트 실시** | 29d | 2008-06-02 A | 2008-07-11 A | 100% |  | 2008-06-02 | 2008-07-11 | 29d |  |  |  | 360h | 360h | 18 | 18 | 18 | 테스트 실시 | C02-1 1.4.2 |  |
| 22 | 2.1.3.1 | 1차통합테스트(신용신3차) | 12d | 2008-06-02 A | 2008-06-17 A | 100% |  | 2008-06-02 | 2008-06-17 | 12d |  | finish no earlier than 2008-06-17 | 김종윤; 황성수 | 120h | 120h | 3 | 3 | 3 | 테스트 실시 | C02-1 1.4.2 |  |
| 23 | 2.1.3.2 | 2차통합테스트(신용신4차) | 5d | 2008-06-19 A | 2008-06-25 A | 100% |  | 2008-06-19 | 2008-06-25 | 5d |  | start no earlier than 2008-06-19 | 김종윤; 황성수 | 80h | 80h | 5 | 5 | 5 | 테스트 실시 | C02-1 1.4.2 |  |
| 24 | 2.1.3.3 | 3차통합테스트 | 5d | 2008-06-27 A | 2008-07-03 A | 100% |  | 2008-06-27 | 2008-07-03 | 5d |  | start no earlier than 2008-06-27 | 김종윤; 황성수 | 80h | 80h | 5 | 5 | 5 | 테스트 실시 | C02-1 1.4.2 |  |
| 25 | 2.1.3.4 | 4차통합테스트 | 5d | 2008-07-07 A | 2008-07-11 A | 100% |  | 2008-07-07 | 2008-07-11 | 5d |  | start no earlier than 2008-07-07 | 김종윤; 황성수 | 80h | 80h | 5 | 5 | 5 | 테스트 실시 | C02-1 1.4.2 |  |

| ID | WBS | Task | Duration | Start | Finish | Complete | Remaining | Baseline start | Baseline finish | Baseline duration | Total slack | Constraint | Resources | Work | Actual work | Cost | Baseline cost | Actual cost | Text20 | Text26 | Text30 |
| --- | --- | --- | --- | --- | --- | --- | --- | --- | --- | --- | --- | --- | --- | --- | --- | --- | --- | --- | --- | --- | --- |
| 26 | 2.2 | **통합테스트단계 관리활동** | 57d? | 2008-06-02 A | 2008-08-22 A | 100% |  | 2008-06-02 | 2008-08-22 | 57d? |  |  |  | 504h | 504h | 31 | 31 | 31 | 품질활동수행 | C02-1 1.6.2 |  |
| 27 | 2.2.1 | 통합테스트 SPM 검토 및 보완 | 1d? | 2008-06-02 A | 2008-06-02 A | 100% |  | 2008-06-02 | 2008-06-02 | 1d? |  | start no earlier than 2008-06-02 |  |  |  |  |  |  | 품질활동수행 | C02-1 1.6.2 |  |
| 28 | 2.2.2 | 통합테스트 산출물 보완 | 2d | 2008-07-14 A | 2008-07-15 A | 100% |  | 2008-07-14 | 2008-07-15 | 2d |  | start no earlier than 2008-07-14 | 김종윤; 황성수 | 32h | 32h | 2 | 2 | 2 | 품질활동수행 | C02-1 1.6.2 |  |
| 29 | 2.2.3 | QAO심사 조치 | 10d | 2008-07-14 A | 2008-07-25 A | 100% |  | 2008-07-14 | 2008-07-25 | 10d |  | finish no earlier than 2008-07-25 | 황성수; 김종윤 | 144h | 144h | 9 | 9 | 9 | 품질활동수행 | C02-1 1.6.2 |  |
| 30 | 2.2.4 | Inspection 실시 및 조치 | 10d | 2008-07-28 A | 2008-08-08 A | 100% |  | 2008-07-28 | 2008-08-08 | 10d |  | start no earlier than 2008-07-28 | 황성수; 김종윤 | 160h | 160h | 10 | 10 | 10 | 품질활동수행 | C02-1 1.6.2 |  |
| 31 | 2.2.5 | 통합테스트 요구사항추적표 매핑(실적규모 측정 포함) | 10d | 2008-08-08 A | 2008-08-22 A | 100% |  | 2008-08-08 | 2008-08-22 | 10d |  | finish no earlier than 2008-08-22 | 황성수; 김종윤 | 168h | 168h | 10 | 10 | 10 | 품질활동수행 | C02-1 1.6.2 |  |
| 32 | 2.3 | **검수** | 5d? | 2008-08-25 A | 2008-08-29 | 77% | 1.17d? | 2008-08-25 | 2008-08-29 | 5d? | 144d |  |  | 200h | 148h | 5 | 5 | 2.5 | 품질활동수행 | C02-1 1.6.2 |  |
| 33 | 2.3.1 | **개발내용인수인계(부뜰 개발자->농협IT)** | 5d? | 2008-08-25 A | 2008-08-29 | 50% | 2.5d? | 2008-08-25 | 2008-08-29 | 5d? | 144d |  | 황성수; 김종윤 | 80h | 40h | 5 | 5 | 2.5 | 품질활동수행 | C02-1 1.6.2 |  |
| 34 | 2.3.1.1 | 개발내역 최종인계 준비 | 5d? | 2008-08-25 A | 2008-08-29 | 50% | 2.5d? | 2008-08-25 | 2008-08-29 | 5d? | 144d | start no earlier than 2008-08-25 |  |  |  |  |  |  | 품질활동수행 | C02-1 1.6.2 |  |
| 35 | 2.3.1.2 | 개발내역 최종인계 확인 | 5d? | 2008-08-25 A | 2008-08-29 | 50% | 2.5d? | 2008-08-25 | 2008-08-29 | 5d? | 144d | start no earlier than 2008-08-25 |  |  |  |  |  |  | 품질활동수행 | C02-1 1.6.2 |  |
| 36 | 2.3.2 | 최종 요구사항추적표 매핑 | 5d | 2008-08-25 A | 2008-08-29 | 90% | 0.5d | 2008-08-25 | 2008-08-29 | 5d | 144d | start no earlier than 2008-08-25 | 황성수 | 40h | 36h |  |  |  | 품질활동수행 | C02-1 1.6.2 |  |
| 37 | 2.3.3 | 고객검토 실시 및 조치 | 5d | 2008-08-25 A | 2008-08-29 | 90% | 0.5d | 2008-08-25 | 2008-08-29 | 5d | 144d | start no earlier than 2008-08-25 | 황성수 | 40h | 36h |  |  |  | 품질활동수행 | C02-1 1.6.2 |  |
| 38 | 2.3.4 | 과업대비표 맵핑 | 5d? | 2008-08-25 A | 2008-08-29 | 90% | 0.5d? | 2008-08-25 | 2008-08-29 | 5d? | 144d | start no earlier than 2008-08-25 |  |  |  |  |  |  | 품질활동수행 | C02-1 1.6.2 |  |
| 39 | 2.3.5 | 산출물보완(최종) | 5d | 2008-08-25 A | 2008-08-29 | 90% | 0.5d | 2008-08-25 | 2008-08-29 | 5d | 144d | start no earlier than 2008-08-25 | 황성수 | 40h | 36h |  |  |  | 품질활동수행 | C02-1 1.6.2 |  |
| 40 | 3 | **영업점테스트 및 안정화(농협 IT)** | 173d? | 2008-07-21 A | 2009-03-24 | 56% | 75.27d? | 2008-07-21 | 2009-03-24 | 172d? | 0d |  |  | 1520h | 865.6h |  |  |  | 구현 | C02-1 1.5 |  |
| 41 | 3.1 | **영업점테스트** | 134d? | 2008-07-21 A | 2009-01-28 | 72% | 37.85d? | 2008-07-21 | 2009-01-28 | 133d? | 39d |  |  | 1200h | 865.6h |  |  |  | 테스트 실시 | C02-1 1.4.2 |  |
| 42 | 3.1.1 | **단계착수** | 10d? | 2008-07-21 A | 2008-08-01 A | 100% |  | 2008-07-21 | 2008-08-01 | 10d? |  |  |  | 120h | 120h |  |  |  | 단계착수 | C02-1 1.6.1 |  |
| 43 | 3.1.1.1 | 영업점테스트 단계 계획 검토 및 수정 | 5d | 2008-07-21 A | 2008-07-25 A | 100% |  | 2008-07-21 | 2008-07-25 | 5d |  | start no earlier than 2008-07-21 | 이창수 | 40h | 40h |  |  |  | 단계착수 | C02-1 1.6.1 |  |
| 44 | 3.1.1.2 | 영업점테스트 SPM 검토 및 보완 | 5d? | 2008-07-21 A | 2008-07-25 A | 100% |  | 2008-07-21 | 2008-07-25 | 5d? |  | start no earlier than 2008-07-21 | 이창수 | 40h | 40h |  |  |  | 단계착수 | C02-1 1.6.1 |  |
| 45 | 3.1.1.3 | 영업점테스트 단계착수 오리엔테이션 | 5d? | 2008-07-28 A | 2008-08-01 A | 100% |  | 2008-07-28 | 2008-08-01 | 5d? |  | start no earlier than 2008-07-28 | 이창수 | 40h | 40h |  |  |  | 단계착수 | C02-1 1.6.1 |  |
| 46 | 3.1.2 | **영업점테스트** | 93d | 2008-08-11 A | 2008-12-19 | 89% | 10.22d | 2008-08-11 | 2008-12-19 | 92d | 65d |  |  | 744h | 664h |  |  |  | 테스트 실시 | C02-1 1.4.2 |  |
| 47 | 3.1.2.1 | 영업점테스트계획 수립 | 7d | 2008-10-01 A | 2008-10-10 A | 100% |  | 2008-10-01 | 2008-10-10 | 7d |  | start no earlier than 2008-10-01 | 이창수 | 64h | 64h |  |  |  | 테스트 실시 | C02-1 1.4.2 | 영업점테스트계획서 |
| 48 | 3.1.2.2 | 영업점테스트 시나리오 작성 | 7d | 2008-10-01 A | 2008-10-10 A | 100% |  | 2008-10-01 | 2008-10-10 | 7d |  | start no earlier than 2008-10-01 | 이창수 | 64h | 64h |  |  |  | 테스트 실시 | C02-1 1.4.2 |  |
| 49 | 3.1.2.3 | 1차 시범점테스트 실시 및 보완 | 15d | 2008-08-11 A | 2008-08-29 A | 100% |  | 2008-08-11 | 2008-08-29 | 15d |  | finish no earlier than 2008-08-29 | 이창수 | 120h | 120h |  |  |  | 테스트 실시 | C02-1 1.4.2 |  |
| 50 | 3.1.2.4 | 2차 시범점테스트 실시 및 보완 | 15d | 2008-09-01 A | 2008-09-19 A | 100% |  | 2008-09-01 | 2008-09-19 | 15d |  | finish no earlier than 2008-09-19 | 이창수 | 120h | 120h |  |  |  | 테스트 실시 | C02-1 1.4.2 |  |
| 51 | 3.1.2.5 | 1차 영업점테스트 실시 및 보완 | 7d | 2008-09-22 A | 2008-09-30 A | 100% |  | 2008-09-22 | 2008-09-30 | 7d |  | start no earlier than 2008-09-22 | 이창수 | 56h | 56h |  |  |  | 테스트 실시 | C02-1 1.4.2 |  |
| 52 | 3.1.2.6 | 2차 영업점테스트 실시 및 보완 | 14d | 2008-10-13 A | 2008-10-30 A | 100% |  | 2008-10-13 | 2008-10-30 | 14d |  | start no earlier than 2008-10-13 | 이창수 | 112h | 112h |  |  |  | 테스트 실시 | C02-1 1.4.2 |  |
| 53 | 3.1.2.7 | 3차 영업점테스트 실시 및 보완 | 6d | 2008-11-03 A | 2008-11-10 A | 100% |  | 2008-11-03 | 2008-11-10 | 6d |  | start no earlier than 2008-11-03 | 이창수 | 48h | 48h |  |  |  | 테스트 실시 | C02-1 1.4.2 |  |
| 54 | 3.1.2.8 | 4차 영업점테스트 실시 및 보완 | 10d | 2008-11-17 A | 2008-11-28 A | 100% |  | 2008-11-17 | 2008-11-28 | 10d |  | start no earlier than 2008-11-17 | 이창수 | 80h | 80h |  |  |  | 테스트 실시 | C02-1 1.4.2 |  |
| 55 | 3.1.2.9 | 5차 영업점테스트 실시 및 보완 | 10d | 2008-12-06 A | 2008-12-19 |  | 10d | 2008-12-08 | 2008-12-19 | 10d | 65d | start no earlier than 2008-12-06 | 이창수 | 80h |  |  |  |  | 테스트 실시 | C02-1 1.4.2 |  |

| ID | WBS | Task | Duration | Start | Finish | Complete | Remaining | Baseline start | Baseline finish | Baseline duration | Total slack | Constraint | Resources | Work | Actual work | Text20 | Text26 | Text30 |
| --- | --- | --- | --- | --- | --- | --- | --- | --- | --- | --- | --- | --- | --- | --- | --- | --- | --- | --- |
| 56 | 3.1.3 | **이행** | 19d | 2009-01-02 A | 2009-01-28 | 28% | 13.76d | 2009-01-02 | 2009-01-28 | 19d | 39d |  |  | 296h | 81.6h | 컨버전 및 릴리이즈 | C02-1 1.5.2 |  |
| 57 | 3.1.3.1 | 이행계획 수립 | 17d | 2009-01-02 A | 2009-01-26 | 30% | 11.9d | 2009-01-02 | 2009-01-26 | 17d | 41d | start no earlier than 2009-01-02 | 이창수 | 136h | 40.8h | 컨버전 및 릴리이즈 | C02-1 1.5.2 | 이행계획서 |
| 58 | 3.1.3.2 | 이행시나리오작성 | 17d | 2009-01-02 A | 2009-01-26 | 30% | 11.9d | 2009-01-02 | 2009-01-26 | 17d | 41d | start no earlier than 2009-01-02 | 이창수 | 136h | 40.8h | 컨버전 및 릴리이즈 | C02-1 1.5.2 | 이행시나리오 |
| 59 | 3.1.3.3 | 이행실시 | 3d | 2009-01-26 | 2009-01-28 |  |  | 2009-01-26 | 2009-01-28 | 3d | 39d | start no earlier than 2009-01-25 | 이창수 | 24h |  | 컨버전 및 릴리이즈 | C02-1 1.5.2 |  |
| 60 | 3.1.4 | 영업점테스트 산출물 보완 | 5d? | 2009-01-05 | 2009-01-09 |  |  | 2009-01-05 | 2009-01-09 | 5d? | 52d | start no earlier than 2009-01-05 | 이창수 | 40h |  | 테스트 실시 | C02-1 1.4.2 |  |
| 61 | 3.2 | **시스템안정화** | 40d | 2009-01-28 | 2009-03-24 |  |  | 2009-01-28 | 2009-03-24 | 40d | 0d |  |  | 320h |  | 시범운영 | C02-1 1.5.4 |  |
| 62 | 3.2.1 | **시스템운영** | 40d | 2009-01-28 | 2009-03-24 |  |  | 2009-01-28 | 2009-03-24 | 40d | 0d |  |  | 320h |  | 시범운영 | C02-1 1.5.4 |  |
| 63 | 3.2.1.1 | 시스템운영실시 | 40d | 2009-01-28 | 2009-03-24 |  |  | 2009-01-28 | 2009-03-24 | 40d | 0d | start no earlier than 2009-01-28 | 이창수 | 320h |  | 시범운영 | C02-1 1.5.4 |  |
