# 텔레뱅킹-컨텍센터

Schedule from MS Project, 2008-03-13 to 2009-03-24, costs in ₩, A marks actual dates.
HSIC-0600001
�궪�꽦SDS

## Calendars

- 농협신용신시스템: Mon-Fri 08:00-12:00, 13:00-17:00; Sat-Sun off. Exceptions (off unless hours are given): 2008-05-01, 2008-05-05, 2008-05-12, 2008-06-06, 2008-07-17, 2008-08-10 08:00-12:00, 13:00-17:00, 2008-08-15, 2008-08-30 to 2008-08-31 08:00-12:00, 13:00-17:00, 2008-09-15, 2008-09-21 08:00-12:00, 13:00-17:00, 2008-10-03, 2008-10-12 08:00-12:00, 13:00-17:00, 2008-11-02 08:00-12:00, 13:00-17:00, 2008-11-15 08:00-12:00, 13:00-17:00, 2008-12-07 08:00-12:00, 13:00-17:00, 2008-12-20 08:00-12:00, 13:00-17:00, 2008-12-25, 2009-01-01, 2009-01-24 to 2009-01-25.

## Resources

| Resource | Rate |
| --- | --- |
| 최윤석 | 0.12 |
| 박창준 | 0.12 |
| 김규완 | 0.12 |
| 정정우 | 0.12 |

## Schedule

| ID | WBS | Task | Duration | Start | Finish | Complete | Remaining | Baseline start | Baseline finish | Baseline duration | Total slack | Constraint | Resources | Work | Actual work | Cost | Baseline cost | Actual cost | Text20 | Text26 | Text30 |
| --- | --- | --- | --- | --- | --- | --- | --- | --- | --- | --- | --- | --- | --- | --- | --- | --- | --- | --- | --- | --- | --- |
| 1 | 1 | **개발** | 74d | 2008-03-13 A | 2008-06-30 | 99% | 0.56d | 2008-03-13 | 2008-06-30 | 74d | 194d |  |  | 1880h | 1869.06h | 235 | 235 | 233.63 | 개발 | C02-1 1.4 |  |
| 2 | 1.1 | **코딩 및 단위테스트 실시** | 74d | 2008-03-13 A | 2008-06-30 | 99% | 0.78d | 2008-03-13 | 2008-06-30 | 74d | 194d |  |  | 1368h | 1357.06h | 171 | 171 | 169.63 | 코딩 및 단위테스트 실시 | C02-1 1.4.1 |  |
| 3 | 1.1.1 | **단위테스트 체크리스트 작성** | 7d | 2008-03-13 A | 2008-03-21 A | 100% |  | 2008-03-13 | 2008-03-21 | 7d |  |  |  | 168h | 168h | 21 | 21 | 21 | 코딩 및 단위테스트 실시 | C02-1 1.4.1 |  |
| 4 | 1.1.1.1 | 텔레뱅킹 | 7d | 2008-03-13 A | 2008-03-21 A | 100% |  | 2008-03-13 | 2008-03-21 | 7d |  | start no earlier than 2008-03-13 | 김규완 | 56h | 56h | 7 | 7 | 7 | 코딩 및 단위테스트 실시 | C02-1 1.4.1 |  |
| 5 | 1.1.1.2 | 컨택센터 | 7d | 2008-03-13 A | 2008-03-21 A | 100% |  | 2008-03-13 | 2008-03-21 | 7d |  | start no earlier than 2008-03-13 | 최윤석; 박창준 | 112h | 112h | 14 | 14 | 14 | 코딩 및 단위테스트 실시 | C02-1 1.4.1 |  |
| 6 | 1.1.2 | **프로그램 모델 및 공통프로그램 개발** | 10d | 2008-03-24 A | 2008-04-04 A | 100% |  | 2008-03-24 | 2008-04-04 | 10d |  |  |  | 160h | 160h | 20 | 20 | 20 | 코딩 및 단위테스트 실시 | C02-1 1.4.1 | 소스코드 |
| 7 | 1.1.2.1 | 텔레뱅킹 | 10d | 2008-03-24 A | 2008-04-04 A | 100% |  | 2008-03-24 | 2008-04-04 | 10d |  | start no earlier than 2008-03-24 | 김규완 | 80h | 80h | 10 | 10 | 10 | 코딩 및 단위테스트 실시 | C02-1 1.4.1 |  |
| 8 | 1.1.2.2 | 컨택센터 | 10d | 2008-03-24 A | 2008-04-04 A | 100% |  | 2008-03-24 | 2008-04-04 | 10d |  | start no earlier than 2008-03-24 | 박창준 | 80h | 80h | 10 | 10 | 10 | 코딩 및 단위테스트 실시 | C02-1 1.4.1 |  |
| 9 | 1.1.3 | **프로그램 코딩** | 57d | 2008-04-07 A | 2008-06-30 A | 100% |  | 2008-04-07 | 2008-06-30 | 57d |  |  |  | 624h | 624h | 78 | 78 | 78 | 코딩 및 단위테스트 실시 | C02-1 1.4.1 | 소스코드 |
| 10 | 1.1.3.1 | 텔레뱅킹 | 57d | 2008-04-07 A | 2008-06-30 A | 100% |  | 2008-04-07 | 2008-06-30 | 57d |  | start no earlier than 2008-04-07 | 김규완 [60%] | 273.6h | 273.6h | 34.2 | 34.2 | 34.2 | 코딩 및 단위테스트 실시 | C02-1 1.4.1 |  |
| 11 | 1.1.3.2 | 컨택센터 | 57d | 2008-04-07 A | 2008-06-30 A | 100% |  | 2008-04-07 | 2008-06-30 | 57d |  | start no earlier than 2008-04-07 | 박창준 [60%] | 273.6h | 273.6h | 34.2 | 34.2 | 34.2 | 코딩 및 단위테스트 실시 | C02-1 1.4.1 |  |
| 12 | 1.1.3.3 | 팩스 | 32d | 2008-05-15 A | 2008-06-30 A | 100% |  | 2008-05-15 | 2008-06-30 | 32d |  | start no earlier than 2008-05-15 | 정정우 [30%] | 76.8h | 76.8h | 9.6 | 9.6 | 9.6 | 코딩 및 단위테스트 실시 | C02-1 1.4.1 |  |
| 13 | 1.1.4 | **단위테스트 실시** | 57d | 2008-04-07 A | 2008-06-30 | 98% | 1.34d | 2008-04-07 | 2008-06-30 | 57d | 194d |  |  | 416h | 405.06h | 52 | 52 | 50.63 | 코딩 및 단위테스트 실시 | C02-1 1.4.1 | 단위테스트결과서 |
| 14 | 1.1.4.1 | 텔레뱅킹 | 57d | 2008-04-07 A | 2008-06-30 | 95% | 2.85d | 2008-04-07 | 2008-06-30 | 57d | 194d | start no earlier than 2008-04-07 | 김규완 [40%] | 182.4h | 173.28h | 22.8 | 22.8 | 21.66 | 코딩 및 단위테스트 실시 | C02-1 1.4.1 |  |
| 15 | 1.1.4.2 | 컨택센터 | 57d | 2008-04-07 A | 2008-06-30 | 99% | 0.57d | 2008-04-07 | 2008-06-30 | 57d | 194d | start no earlier than 2008-04-07 | 박창준 [40%] | 182.4h | 180.58h | 22.8 | 22.8 | 22.57 | 코딩 및 단위테스트 실시 | C02-1 1.4.1 |  |
| 16 | 1.1.4.3 | 팩스 | 32d | 2008-05-15 A | 2008-06-30 A | 100% |  | 2008-05-15 | 2008-06-30 | 32d |  | start no earlier than 2008-05-15 | 정정우 [20%] | 51.2h | 51.2h | 6.4 | 6.4 | 6.4 | 코딩 및 단위테스트 실시 | C02-1 1.4.1 |  |
| 17 | 1.2 | **개발단계 관리활동** | 64d | 2008-03-24 A | 2008-06-25 A | 100% |  | 2008-03-24 | 2008-06-25 | 64d |  |  |  | 512h | 512h | 64 | 64 | 64 | 품질활동수행 | C02-1 1.6.2 |  |
| 18 | 1.2.1 | 개발 SPM 검토 및 수정 | 10d | 2008-03-24 A | 2008-04-04 A | 100% |  | 2008-03-24 | 2008-04-04 | 10d |  | start no earlier than 2008-03-24 | 최윤석 [50%] | 40h | 40h | 5 | 5 | 5 | 품질활동수행 | C02-1 1.6.2 |  |
| 19 | 1.2.2 | 설계 감리 조치 | 10d | 2008-03-24 A | 2008-04-04 A | 100% |  | 2008-03-24 | 2008-04-04 | 10d |  | start no earlier than 2008-03-24 | 최윤석 [50%] | 40h | 40h | 5 | 5 | 5 | 품질활동수행 | C02-1 1.6.2 |  |
| 20 | 1.2.3 | QAO심사 조치 | 52d | 2008-04-07 A | 2008-06-23 A | 100% |  | 2008-04-07 | 2008-06-23 | 52d |  | finish no earlier than 2008-06-23 | 최윤석 [50%] | 208h | 208h | 26 | 26 | 26 | 품질활동수행 | C02-1 1.6.2 |  |
| 21 | 1.2.4 | Inspection 실시 및 조치 | 52d | 2008-04-07 A | 2008-06-23 A | 100% |  | 2008-04-07 | 2008-06-23 | 52d |  | finish no earlier than 2008-06-23 | 최윤석 [50%] | 208h | 208h | 26 | 26 | 26 | 품질활동수행 | C02-1 1.6.2 |  |
| 22 | 1.2.5 | 개발 요구사항추적표 매핑 | 2d | 2008-06-24 A | 2008-06-25 A | 100% |  | 2008-06-24 | 2008-06-25 | 2d |  | start no earlier than 2008-06-24 | 최윤석 | 16h | 16h | 2 | 2 | 2 | 품질활동수행 | C02-1 1.6.2 |  |
| 23 | 2 | **통합테스트** | 62d | 2008-06-26 A | 2008-09-19 A | 100% |  | 2008-06-26 | 2008-09-19 | 62d |  |  |  | 500h | 500h | 62.5 | 62.5 | 62.5 | 개발 | C02-1 1.4 |  |
| 24 | 2.1 | **통합테스트** | 21d | 2008-06-26 A | 2008-07-25 A | 100% |  | 2008-06-26 | 2008-07-25 | 21d |  |  |  | 360h | 360h | 45 | 45 | 45 | 테스트 실시 | C02-1 1.4.2 |  |
| 25 | 2.1.1 | 통합테스트계획 수립 | 3d | 2008-06-26 A | 2008-06-30 A | 100% |  | 2008-06-26 | 2008-06-30 | 3d |  | start no earlier than 2008-06-26 | 최윤석 | 24h | 24h | 3 | 3 | 3 | 테스트 실시 | C02-1 1.4.2 | 통합테스트계획서 |

| ID | WBS | Task | Duration | Start | Finish | Complete | Remaining | Baseline start | Baseline finish | Baseline duration | Total slack | Constraint | Resources | Work | Actual work | Cost | Baseline cost | Actual cost | Text20 | Text26 | Text30 |
| --- | --- | --- | --- | --- | --- | --- | --- | --- | --- | --- | --- | --- | --- | --- | --- | --- | --- | --- | --- | --- | --- |
| 26 | 2.1.2 | **통합테스트 시나리오 작성** | 4d | 2008-07-01 A | 2008-07-04 A | 100% |  | 2008-07-01 | 2008-07-04 | 4d |  |  |  | 64h | 64h | 8 | 8 | 8 | 테스트 실시 | C02-1 1.4.2 |  |
| 27 | 2.1.2.1 | 텔레뱅킹 | 4d | 2008-07-01 A | 2008-07-04 A | 100% |  | 2008-07-01 | 2008-07-04 | 4d |  | start no earlier than 2008-07-01 | 김규완 | 32h | 32h | 4 | 4 | 4 | 테스트 실시 | C02-1 1.4.2 |  |
| 28 | 2.1.2.2 | 컨택센터 | 4d | 2008-07-01 A | 2008-07-04 A | 100% |  | 2008-07-01 | 2008-07-04 | 4d |  | start no earlier than 2008-07-01 | 박창준 | 32h | 32h | 4 | 4 | 4 | 테스트 실시 | C02-1 1.4.2 |  |
| 29 | 2.1.3 | **통합테스트 실시** | 14d | 2008-07-07 A | 2008-07-25 A | 100% |  | 2008-07-07 | 2008-07-25 | 14d |  |  |  | 272h | 272h | 34 | 34 | 34 | 테스트 실시 | C02-1 1.4.2 |  |
| 30 | 2.1.3.1 | **3차통합테스트** | 9d | 2008-07-07 A | 2008-07-18 A | 100% |  | 2008-07-07 | 2008-07-18 | 9d |  |  |  | 168h | 168h | 21 | 21 | 21 | 테스트 실시 | C02-1 1.4.2 |  |
| 31 | 2.1.3.1.1 | 텔레뱅킹 | 9d | 2008-07-07 A | 2008-07-18 A | 100% |  | 2008-07-07 | 2008-07-18 | 9d |  | start no earlier than 2008-07-07 | 김규완 | 72h | 72h | 9 | 9 | 9 | 테스트 실시 | C02-1 1.4.2 |  |
| 32 | 2.1.3.1.2 | 컨택센터 | 9d | 2008-07-07 A | 2008-07-18 A | 100% |  | 2008-07-07 | 2008-07-18 | 9d |  | start no earlier than 2008-07-07 | 박창준 | 72h | 72h | 9 | 9 | 9 | 테스트 실시 | C02-1 1.4.2 |  |
| 33 | 2.1.3.1.3 | 팩스 | 5d | 2008-07-07 A | 2008-07-11 A | 100% |  | 2008-07-07 | 2008-07-11 | 5d |  | start no earlier than 2008-07-07 | 정정우 [60%] | 24h | 24h | 3 | 3 | 3 | 테스트 실시 | C02-1 1.4.2 |  |
| 34 | 2.1.3.2 | **4차통합테스트** | 5d | 2008-07-21 A | 2008-07-25 A | 100% |  | 2008-07-21 | 2008-07-25 | 5d |  |  |  | 104h | 104h | 13 | 13 | 13 | 테스트 실시 | C02-1 1.4.2 |  |
| 35 | 2.1.3.2.1 | 텔레뱅킹 | 5d | 2008-07-21 A | 2008-07-25 A | 100% |  | 2008-07-21 | 2008-07-25 | 5d |  | finish no earlier than 2008-07-25 | 김규완 | 40h | 40h | 5 | 5 | 5 | 테스트 실시 | C02-1 1.4.2 |  |
| 36 | 2.1.3.2.2 | 컨택센터 | 5d | 2008-07-21 A | 2008-07-25 A | 100% |  | 2008-07-21 | 2008-07-25 | 5d |  | finish no earlier than 2008-07-25 | 박창준 | 40h | 40h | 5 | 5 | 5 | 테스트 실시 | C02-1 1.4.2 |  |
| 37 | 2.1.3.2.3 | 팩스 | 5d | 2008-07-21 A | 2008-07-25 A | 100% |  | 2008-07-21 | 2008-07-25 | 5d |  | finish no earlier than 2008-07-25 | 정정우 [60%] | 24h | 24h | 3 | 3 | 3 | 테스트 실시 | C02-1 1.4.2 |  |
| 38 | 2.2 | **통합테스트단계 관리활동** | 59d | 2008-07-01 A | 2008-09-19 A | 100% |  | 2008-07-01 | 2008-09-19 | 59d |  |  |  | 140h | 140h | 17.5 | 17.5 | 17.5 | 품질활동수행 | C02-1 1.6.2 |  |
| 39 | 2.2.1 | 통합테스트 단계 계획 검토 및 수정 | 4d | 2008-07-01 A | 2008-07-04 A | 100% |  | 2008-07-01 | 2008-07-04 | 4d |  | start no earlier than 2008-07-01 | 최윤석 [50%] | 16h | 16h | 2 | 2 | 2 | 품질활동수행 | C02-1 1.6.2 |  |
| 40 | 2.2.2 | 통합테스트 SPM 검토 및 수정 | 4d | 2008-07-01 A | 2008-07-04 A | 100% |  | 2008-07-01 | 2008-07-04 | 4d |  | start no earlier than 2008-07-01 | 최윤석 [50%] | 16h | 16h | 2 | 2 | 2 | 품질활동수행 | C02-1 1.6.2 |  |
| 41 | 2.2.3 | QAO심사 조치 | 9d | 2008-07-07 A | 2008-07-18 A | 100% |  | 2008-07-07 | 2008-07-18 | 9d |  | start no earlier than 2008-07-07 | 최윤석 [50%] | 36h | 36h | 4.5 | 4.5 | 4.5 | 품질활동수행 | C02-1 1.6.2 |  |
| 42 | 2.2.4 | Inspection 실시 및 조치 | 9d | 2008-07-07 A | 2008-07-18 A | 100% |  | 2008-07-07 | 2008-07-18 | 9d |  | finish no earlier than 2008-07-18 | 최윤석 [50%] | 36h | 36h | 4.5 | 4.5 | 4.5 | 품질활동수행 | C02-1 1.6.2 |  |
| 43 | 2.2.5 | 통합테스트 요구사항추적표 매핑(실적규모 측정 포함) | 9d | 2008-09-08 A | 2008-09-19 A | 100% |  | 2008-09-08 | 2008-09-19 | 9d |  | start no earlier than 2008-09-08 | 최윤석 [50%] | 36h | 36h | 4.5 | 4.5 | 4.5 | 품질활동수행 | C02-1 1.6.2 |  |
| 44 | 3 | **영업점테스트** | 150d | 2008-07-07 A | 2009-01-27 | 50% | 74.64d | 2008-07-07 | 2009-01-27 | 150d | 40d |  |  | 2573.2h | 1326h | 321.65 | 321.65 | 165.75 | 개발 | C02-1 1.4 |  |
| 45 | 3.1 | **시스템사용 교육** | 83d | 2008-09-01 A | 2008-12-19 | 57% | 35.57d | 2008-09-01 | 2008-12-19 | 83d | 66d |  |  | 272h | 160h | 34 | 34 | 20 | 시스템 사용교육 | C02-1 1.5.3 |  |
| 46 | 3.1.1 | 교육계획수립 | 14d | 2008-09-01 A | 2008-09-19 A | 100% |  | 2008-09-01 | 2008-09-19 | 14d |  | start no earlier than 2008-09-01 | 최윤석 [50%] | 56h | 56h | 7 | 7 | 7 | 시스템 사용교육 | C02-1 1.5.3 | 교육계획서 |
| 47 | 3.1.2 | 사용자매뉴얼작성 | 8d | 2008-09-01 A | 2008-09-10 A | 100% |  | 2008-09-01 | 2008-09-10 | 8d |  | start no earlier than 2008-09-01 | 김규완 [50%]; 박창준 [50%] | 64h | 64h | 8 | 8 | 8 | 시스템 사용교육 | C02-1 1.5.3 | 사용자매뉴얼 |
| 48 | 3.1.3 | **운영매뉴얼작성** | 5d | 2008-09-11 A | 2008-09-18 A | 100% |  | 2008-09-11 | 2008-09-18 | 5d |  |  |  | 40h | 40h | 5 | 5 | 5 | 시스템 사용교육 | C02-1 1.5.3 | 운영자매뉴얼 |
| 49 | 3.1.3.1 | 텔레뱅킹 | 5d | 2008-09-11 A | 2008-09-18 A | 100% |  | 2008-09-11 | 2008-09-18 | 5d |  | start no earlier than 2008-09-11 | 김규완 [50%] | 20h | 20h | 2.5 | 2.5 | 2.5 | 시스템 사용교육 | C02-1 1.5.3 |  |
| 50 | 3.1.3.2 | 컨택센터 | 5d | 2008-09-11 A | 2008-09-18 A | 100% |  | 2008-09-11 | 2008-09-18 | 5d |  | start no earlier than 2008-09-11 | 박창준 [50%] | 20h | 20h | 2.5 | 2.5 | 2.5 | 시스템 사용교육 | C02-1 1.5.3 |  |

| ID | WBS | Task | Duration | Start | Finish | Complete | Remaining | Baseline start | Baseline finish | Baseline duration | Total slack | Constraint | Resources | Work | Actual work | Cost | Baseline cost | Actual cost | Text20 | Text26 | Text30 |
| --- | --- | --- | --- | --- | --- | --- | --- | --- | --- | --- | --- | --- | --- | --- | --- | --- | --- | --- | --- | --- | --- |
| 51 | 3.1.4 | **사용자교육실시** | 4d | 2008-09-19 | 2008-09-23 |  |  | 2008-09-19 | 2008-09-23 | 4d | 132d |  |  | 32h |  | 4 | 4 |  | 시스템 사용교육 | C02-1 1.5.3 | 교육결과서 |
| 52 | 3.1.4.1 | 상담원교육 | 4d | 2008-09-19 | 2008-09-23 |  |  | 2008-09-19 | 2008-09-23 | 4d | 132d | start no earlier than 2008-09-19 | 박창준 [50%]; 김규완 [50%] | 32h |  | 4 | 4 |  | 시스템 사용교육 | C02-1 1.5.3 |  |
| 53 | 3.1.5 | **운영자교육실시** | 16d | 2008-12-01 | 2008-12-19 |  |  | 2008-12-01 | 2008-12-19 | 16d | 66d |  |  | 80h |  | 10 | 10 |  | 시스템 사용교육 | C02-1 1.5.3 | 교육결과서 |
| 54 | 3.1.5.1 | 텔레뱅킹 | 16d | 2008-12-01 | 2008-12-19 |  |  | 2008-12-01 | 2008-12-19 | 16d | 66d | start no earlier than 2008-12-01 | 김규완 [50%] | 64h |  | 8 | 8 |  | 시스템 사용교육 | C02-1 1.5.3 |  |
| 55 | 3.1.5.2 | 컨택센터 | 4d | 2008-12-01 | 2008-12-04 |  |  | 2008-12-01 | 2008-12-04 | 4d | 78d | start no earlier than 2008-12-01 | 박창준 [50%] | 16h |  | 2 | 2 |  | 시스템 사용교육 | C02-1 1.5.3 |  |
| 56 | 3.2 | **영업점테스트** | 116d | 2008-07-21 A | 2008-12-20 | 87% | 14.97d | 2008-07-21 | 2008-12-20 | 116d | 65d |  |  | 1259.6h | 1106h | 157.45 | 157.45 | 138.25 | 테스트 실시 | C02-1 1.4.2 |  |
| 57 | 3.2.1 | 영업점테스트계획 수립 | 9d | 2008-07-21 A | 2008-07-31 A | 100% |  | 2008-07-21 | 2008-07-31 | 9d |  | start no earlier than 2008-07-21 | 최윤석 | 72h | 72h | 9 | 9 | 9 | 테스트 실시 | C02-1 1.4.2 | 영업점테스트계획서 |
| 58 | 3.2.2 | 영업점테스트 시나리오 작성 | 9d | 2008-07-21 A | 2008-07-31 A | 100% |  | 2008-07-21 | 2008-07-31 | 9d |  | start no earlier than 2008-07-21 | 김규완; 박창준 | 144h | 144h | 18 | 18 | 18 | 테스트 실시 | C02-1 1.4.2 |  |
| 59 | 3.2.3 | **1차 시범점테스트 실시 및 보완** | 16d | 2008-08-10 A | 2008-08-30 A | 100% |  | 2008-08-10 | 2008-08-30 | 16d |  |  |  | 384h | 384h | 48 | 48 | 48 | 테스트 실시 | C02-1 1.4.2 |  |
| 60 | 3.2.3.1 | 텔레뱅킹 | 16d | 2008-08-10 A | 2008-08-30 A | 100% |  | 2008-08-10 | 2008-08-30 | 16d |  | start no earlier than 2008-08-10 | 김규완 | 128h | 128h | 16 | 16 | 16 | 테스트 실시 | C02-1 1.4.2 |  |
| 61 | 3.2.3.2 | 컨택센터 | 16d | 2008-08-10 A | 2008-08-30 A | 100% |  | 2008-08-10 | 2008-08-30 | 16d |  | start no earlier than 2008-08-10 | 박창준; 최윤석 | 256h | 256h | 32 | 32 | 32 | 테스트 실시 | C02-1 1.4.2 |  |
| 62 | 3.2.4 | **2차 시범점테스트 실시 및 보완** | 15d | 2008-08-31 A | 2008-09-19 A | 100% |  | 2008-08-31 | 2008-09-19 | 15d |  |  |  | 180h | 180h | 22.5 | 22.5 | 22.5 | 테스트 실시 | C02-1 1.4.2 |  |
| 63 | 3.2.4.1 | 텔레뱅킹 | 15d | 2008-08-31 A | 2008-09-19 A | 100% |  | 2008-08-31 | 2008-09-19 | 15d |  | finish no earlier than 2008-09-19 | 김규완 [50%] | 60h | 60h | 7.5 | 7.5 | 7.5 | 테스트 실시 | C02-1 1.4.2 |  |
| 64 | 3.2.4.2 | 컨택센터 | 15d | 2008-08-31 A | 2008-09-19 A | 100% |  | 2008-08-31 | 2008-09-19 | 15d |  | start no earlier than 2008-08-31 | 박창준 [50%]; 최윤석 [50%] | 120h | 120h | 15 | 15 | 15 | 테스트 실시 | C02-1 1.4.2 |  |
| 65 | 3.2.5 | **1차 영업점테스트 실시 및 보완** | 8d | 2008-09-21 A | 2008-09-30 A | 100% |  | 2008-09-21 | 2008-09-30 | 8d |  |  |  | 128h | 128h | 16 | 16 | 16 | 테스트 실시 | C02-1 1.4.2 |  |
| 66 | 3.2.5.1 | 텔레뱅킹 | 8d | 2008-09-21 A | 2008-09-30 A | 100% |  | 2008-09-21 | 2008-09-30 | 8d |  | finish no earlier than 2008-09-30 | 김규완 [50%] | 32h | 32h | 4 | 4 | 4 | 테스트 실시 | C02-1 1.4.2 |  |
| 67 | 3.2.5.2 | 컨택센터 | 8d | 2008-09-21 A | 2008-09-30 A | 100% |  | 2008-09-21 | 2008-09-30 | 8d |  | start no earlier than 2008-09-21 | 박창준 [50%]; 최윤석 | 96h | 96h | 12 | 12 | 12 | 테스트 실시 | C02-1 1.4.2 |  |
| 68 | 3.2.6 | **2차 영업점테스트 실시 및 보완** | 15d | 2008-10-12 A | 2008-10-30 A | 100% |  | 2008-10-12 | 2008-10-30 | 15d |  |  |  | 90h | 90h | 11.25 | 11.25 | 11.25 | 테스트 실시 | C02-1 1.4.2 |  |
| 69 | 3.2.6.1 | 텔레뱅킹 | 15d | 2008-10-12 A | 2008-10-30 A | 100% |  | 2008-10-12 | 2008-10-30 | 15d |  | finish no earlier than 2008-10-30 | 김규완 [25%] | 30h | 30h | 3.75 | 3.75 | 3.75 | 테스트 실시 | C02-1 1.4.2 |  |
| 70 | 3.2.6.2 | 컨택센터 | 15d | 2008-10-12 A | 2008-10-30 A | 100% |  | 2008-10-12 | 2008-10-30 | 15d |  | start no earlier than 2008-10-12 | 박창준 [25%]; 최윤석 [25%] | 60h | 60h | 7.5 | 7.5 | 7.5 | 테스트 실시 | C02-1 1.4.2 |  |
| 71 | 3.2.7 | **3차 영업점테스트 실시 및 보완** | 7d | 2008-11-02 A | 2008-11-10 A | 100% |  | 2008-11-02 | 2008-11-10 | 7d |  |  |  | 42h | 42h | 5.25 | 5.25 | 5.25 | 테스트 실시 | C02-1 1.4.2 |  |
| 72 | 3.2.7.1 | 텔레뱅킹 | 7d | 2008-11-02 A | 2008-11-10 A | 100% |  | 2008-11-02 | 2008-11-10 | 7d |  | finish no earlier than 2008-11-10 | 김규완 [25%] | 14h | 14h | 1.75 | 1.75 | 1.75 | 테스트 실시 | C02-1 1.4.2 |  |
| 73 | 3.2.7.2 | 컨택센터 | 7d | 2008-11-02 A | 2008-11-10 A | 100% |  | 2008-11-02 | 2008-11-10 | 7d |  | start no earlier than 2008-11-02 | 박창준 [25%]; 최윤석 [25%] | 28h | 28h | 3.5 | 3.5 | 3.5 | 테스트 실시 | C02-1 1.4.2 |  |
| 74 | 3.2.8 | **4차 영업점테스트 실시 및 보완** | 11d | 2008-11-15 A | 2008-11-28 A | 100% |  | 2008-11-15 | 2008-11-28 | 11d |  |  |  | 66h | 66h | 8.25 | 8.25 | 8.25 | 테스트 실시 | C02-1 1.4.2 |  |
| 75 | 3.2.8.1 | 텔레뱅킹 | 11d | 2008-11-15 A | 2008-11-28 A | 100% |  | 2008-11-15 | 2008-11-28 | 11d |  | finish no earlier than 2008-11-28 | 김규완 [25%] | 22h | 22h | 2.75 | 2.75 | 2.75 | 테스트 실시 | C02-1 1.4.2 |  |
| 76 | 3.2.8.2 | 컨택센터 | 11d | 2008-11-15 A | 2008-11-28 A | 100% |  | 2008-11-15 | 2008-11-28 | 11d |  | start no earlier than 2008-11-15 | 박창준 [25%]; 최윤석 [25%] | 44h | 44h | 5.5 | 5.5 | 5.5 | 테스트 실시 | C02-1 1.4.2 |  |

| ID | WBS | Task | Duration | Start | Finish | Complete | Remaining | Baseline start | Baseline finish | Baseline duration | Total slack | Constraint | Resources | Work | Actual work | Cost | Baseline cost | Actual cost | Text20 | Text26 | Text30 |
| --- | --- | --- | --- | --- | --- | --- | --- | --- | --- | --- | --- | --- | --- | --- | --- | --- | --- | --- | --- | --- | --- |
| 77 | 3.2.9 | **5차 영업점테스트 실시 및 보완** | 12d | 2008-12-07 | 2008-12-20 |  |  | 2008-12-07 | 2008-12-20 | 12d | 65d |  |  | 153.6h |  | 19.2 | 19.2 |  | 테스트 실시 | C02-1 1.4.2 |  |
| 78 | 3.2.9.1 | 텔레뱅킹 | 12d | 2008-12-07 | 2008-12-20 |  |  | 2008-12-07 | 2008-12-20 | 12d | 65d | start no earlier than 2008-12-07 | 김규완 [80%] | 76.8h |  | 9.6 | 9.6 |  | 테스트 실시 | C02-1 1.4.2 |  |
| 79 | 3.2.9.2 | 컨택센터 | 12d | 2008-12-07 | 2008-12-20 |  |  | 2008-12-07 | 2008-12-20 | 12d | 65d | start no earlier than 2008-12-07 | 박창준 [80%] | 76.8h |  | 9.6 | 9.6 |  | 테스트 실시 | C02-1 1.4.2 |  |
| 80 | 3.3 | **인수테스트실시** | 13d | 2008-12-22 | 2009-01-09 |  |  | 2008-12-22 | 2009-01-09 | 13d | 52d |  |  | 208h |  | 26 | 26 |  | 테스트 실시 | C02-1 1.4.2 | 인수테스트기준서(결과),결함보고서(인수) |
| 81 | 3.3.1 | 텔레뱅킹 | 13d | 2008-12-22 | 2009-01-09 |  |  | 2008-12-22 | 2009-01-09 | 13d | 52d | start no earlier than 2008-12-22 | 김규완 | 104h |  | 13 | 13 |  | 테스트 실시 | C02-1 1.4.2 |  |
| 82 | 3.3.2 | 컨택센터 | 13d | 2008-12-22 | 2009-01-09 |  |  | 2008-12-22 | 2009-01-09 | 13d | 52d | start no earlier than 2008-12-22 | 박창준 | 104h |  | 13 | 13 |  | 테스트 실시 | C02-1 1.4.2 |  |
| 83 | 3.4 | **이행** | 17d | 2009-01-05 | 2009-01-27 |  |  | 2009-01-05 | 2009-01-27 | 17d | 40d |  |  | 300h |  | 37.5 | 37.5 |  | 컨버전 및 릴리이즈 | C02-1 1.5.2 |  |
| 84 | 3.4.1 | 이행계획 수립 | 5d | 2009-01-05 | 2009-01-09 |  |  | 2009-01-05 | 2009-01-09 | 5d | 52d | start no earlier than 2009-01-05 | 최윤석 | 40h |  | 5 | 5 |  | 컨버전 및 릴리이즈 | C02-1 1.5.2 | 이행계획서 |
| 85 | 3.4.2 | **이행시나리오작성** | 5d | 2009-01-12 | 2009-01-16 |  |  | 2009-01-12 | 2009-01-16 | 5d | 47d |  |  | 100h |  | 12.5 | 12.5 |  | 컨버전 및 릴리이즈 | C02-1 1.5.2 | 이행시나리오 |
| 86 | 3.4.2.1 | 텔레뱅킹 | 5d | 2009-01-12 | 2009-01-16 |  |  | 2009-01-12 | 2009-01-16 | 5d | 47d | start no earlier than 2009-01-12 | 김규완 | 40h |  | 5 | 5 |  | 컨버전 및 릴리이즈 | C02-1 1.5.2 |  |
| 87 | 3.4.2.2 | 컨택센터 | 5d | 2009-01-12 | 2009-01-16 |  |  | 2009-01-12 | 2009-01-16 | 5d | 47d | start no earlier than 2009-01-12 | 박창준 | 40h |  | 5 | 5 |  | 컨버전 및 릴리이즈 | C02-1 1.5.2 |  |
| 88 | 3.4.2.3 | 팩스 | 5d | 2009-01-12 | 2009-01-16 |  |  | 2009-01-12 | 2009-01-16 | 5d | 47d | start no earlier than 2009-01-12 | 정정우 [50%] | 20h |  | 2.5 | 2.5 |  | 컨버전 및 릴리이즈 | C02-1 1.5.2 |  |
| 89 | 3.4.3 | 이행실시 | 5d | 2009-01-21 | 2009-01-27 |  |  | 2009-01-21 | 2009-01-27 | 5d | 40d | start no earlier than 2009-01-21 | 최윤석; 박창준; 정정우; 김규완 | 160h |  | 20 | 20 |  | 컨버전 및 릴리이즈 | C02-1 1.5.2 |  |
| 90 | 3.5 | **영업점테스트단계 관리활동** | 148d | 2008-07-07 A | 2009-01-23 | 12% | 129.95d | 2008-07-07 | 2009-01-23 | 148d | 42d |  |  | 533.6h | 60h | 66.7 | 66.7 | 7.5 | 품질활동수행 | C02-1 1.6.2 |  |
| 91 | 3.5.1 | 영업점테스트 단계 계획 검토 및 수정 | 5d | 2008-07-07 A | 2008-07-11 A | 100% |  | 2008-07-07 | 2008-07-11 | 5d |  | start no earlier than 2008-07-07 | 최윤석 [50%] | 20h | 20h | 2.5 | 2.5 | 2.5 | 품질활동수행 | C02-1 1.6.2 |  |
| 92 | 3.5.2 | 영업점테스트 SPM 검토 및 수정 | 4d | 2008-07-14 A | 2008-07-18 A | 100% |  | 2008-07-14 | 2008-07-18 | 4d |  | start no earlier than 2008-07-14 | 최윤석 [50%] | 16h | 16h | 2 | 2 | 2 | 품질활동수행 | C02-1 1.6.2 |  |
| 93 | 3.5.3 | QAO심사 조치 | 48d | 2008-09-11 | 2008-11-14 |  |  | 2008-09-11 | 2008-11-14 | 48d | 93d | finish no earlier than 2008-11-14 | 최윤석 [40%] | 153.6h |  | 19.2 | 19.2 |  | 품질활동수행 | C02-1 1.6.2 |  |
| 94 | 3.5.4 | Inspection 실시 및 조치 | 10d | 2008-12-01 | 2008-12-11 |  |  | 2008-12-01 | 2008-12-11 | 10d | 72d | start no earlier than 2008-12-01 | 최윤석 [40%] | 32h |  | 4 | 4 |  | 품질활동수행 | C02-1 1.6.2 |  |
| 95 | 3.5.5 | 오리엔테이션(5차) 실시 | 6d | 2008-08-01 A | 2008-08-08 A | 100% |  | 2008-08-01 | 2008-08-08 | 6d |  | finish no earlier than 2008-08-08 | 최윤석 [50%] | 24h | 24h | 3 | 3 | 3 | 품질활동수행 | C02-1 1.6.2 |  |
| 96 | 3.5.6 | 제품검사 조치 | 28d | 2008-12-15 | 2009-01-22 |  |  | 2008-12-15 | 2009-01-22 | 28d | 43d | start no earlier than 2008-12-15 | 최윤석 [50%] | 112h |  | 14 | 14 |  | 품질활동수행 | C02-1 1.6.2 |  |
| 97 | 3.5.7 | 최종 요구사항추적표 매핑 | 10d | 2009-01-05 | 2009-01-16 |  |  | 2009-01-05 | 2009-01-16 | 10d | 47d | start no earlier than 2009-01-05 | 최윤석 | 80h |  | 10 | 10 |  | 품질활동수행 | C02-1 1.6.2 |  |
| 98 | 3.5.8 | 고객검토 실시 및 조치 | 8d | 2008-12-22 | 2009-01-02 |  |  | 2008-12-22 | 2009-01-02 | 8d | 57d | start no earlier than 2008-12-22 | 최윤석 | 64h |  | 8 | 8 |  | 품질활동수행 | C02-1 1.6.2 |  |
| 99 | 3.5.9 | 과업대비표 매핑 | 4d | 2009-01-20 | 2009-01-23 |  |  | 2009-01-20 | 2009-01-23 | 4d | 42d | start no earlier than 2009-01-20 | 최윤석 | 32h |  | 4 | 4 |  | 품질활동수행 | C02-1 1.6.2 |  |
| 100 | 4 | **시스템안정화** | 40d | 2009-01-28 | 2009-03-24 |  |  | 2009-01-28 | 2009-03-24 | 40d | 0d |  |  |  |  |  |  |  | 구현 | C02-1 1.5 |  |
| 101 | 4.1 | **시스템운영** | 40d | 2009-01-28 | 2009-03-24 |  |  | 2009-01-28 | 2009-03-24 | 40d | 0d |  |  |  |  |  |  |  | 시범운영 | C02-1 1.5.4 |  |
| 102 | 4.1.1 | 시스템운영실시 | 40d | 2009-01-28 | 2009-03-24 |  |  | 2009-01-28 | 2009-03-24 | 40d | 0d | start no earlier than 2009-01-28 |  |  |  |  |  |  | 시범운영 | C02-1 1.5.4 |  |
