# 품질관리

Schedule from MS Project, 2007-04-25 to 2009-03-24, costs in ₩, A marks actual dates.
HSIC-0600001
�궪�꽦SDS

## Calendars

- 농협신용신시스템: Mon-Fri 08:00-12:00, 13:00-17:00; Sat-Sun off. Exceptions (off unless hours are given): 2007-05-01, 2007-05-24, 2007-06-06, 2007-07-17, 2007-08-15, 2007-09-24 to 2007-09-26, 2007-10-03, 2007-12-25, 2008-01-01, 2008-02-06 to 2008-02-08, 2008-05-01, 2008-05-05, 2008-05-12, 2008-06-06, 2008-07-17, 2008-08-15, 2008-09-15, 2008-10-03, 2008-12-25, 2009-01-01.

## Resources

| Resource | Rate |
| --- | --- |
| 문승연 | 0.12 |
| 이세원 | 0.12 |
| QAO1 | 0.12 |
| QAO2 | 0.12 |
| 김승화 | 0.12 |

## Schedule

| ID | WBS | Task | Duration | Start | Finish | Predecessors | Complete | Baseline start | Baseline finish | Baseline duration | Constraint | Resources | Work | Actual work | Cost | Baseline cost | Actual cost | Text20 | Text26 | Text30 |
| --- | --- | --- | --- | --- | --- | --- | --- | --- | --- | --- | --- | --- | --- | --- | --- | --- | --- | --- | --- | --- |
| 1 | 1 | **착수** | 25d | 2007-04-25 A | 2007-05-31 A |  | 100% | 2007-04-25 | 2007-05-31 | 25d |  |  | 504h | 504h | 63 | 63 | 63 | 프로젝트 착수 | M02-1 1.1 |  |
| 2 | 1.1 | **착수준비** | 12d | 2007-04-25 A | 2007-05-11 A |  | 100% | 2007-04-25 | 2007-05-11 | 12d |  |  | 208h | 208h | 26 | 26 | 26 | 착수준비 | M02-1 1.1.1 |  |
| 3 | 1.1.1 | **표준 및 절차 정의** | 7d | 2007-04-25 A | 2007-05-04 A |  | 100% | 2007-04-25 | 2007-05-04 | 7d |  |  | 128h | 128h | 16 | 16 | 16 | 착수준비 | M02-1 1.1.1 |  |
| 4 | 1.1.1.1 | **관리 표준 및 절차 정의** | 7d | 2007-04-25 A | 2007-05-04 A |  | 100% | 2007-04-25 | 2007-05-04 | 7d |  |  | 64h | 64h | 8 | 8 | 8 | 착수준비 | M02-1 1.1.1 |  |
| 5 | 1.1.1.1.1 | 관리/통제 절차 정의 | 3d | 2007-04-25 A | 2007-04-27 A |  | 100% | 2007-04-25 | 2007-04-27 | 3d |  | 문승연 [50%]; 이세원 [50%] | 24h | 24h | 3 | 3 | 3 | 착수준비 | M02-1 1.1.1 | 표준 및 절차매뉴얼(관리) |
| 6 | 1.1.1.1.2 | 관리/통제 양식 표준 작성 | 3d | 2007-04-25 A | 2007-04-27 A |  | 100% | 2007-04-25 | 2007-04-27 | 3d |  | 문승연 [50%]; 이세원 [50%] | 24h | 24h | 3 | 3 | 3 | 착수준비 | M02-1 1.1.1 | 표준 및 절차매뉴얼(관리) |
| 7 | 1.1.1.1.3 | 관리 표준 검토 및 수정 | 2d | 2007-05-03 A | 2007-05-04 A |  | 100% | 2007-05-03 | 2007-05-04 | 2d | start no earlier than 2007-05-03 | 문승연 [50%]; 이세원 [50%] | 16h | 16h | 2 | 2 | 2 | 착수준비 | M02-1 1.1.1 | 표준 및 절차매뉴얼(관리) |
| 8 | 1.1.1.2 | **공정 표준 및 절차 정의** | 7d | 2007-04-25 A | 2007-05-04 A |  | 100% | 2007-04-25 | 2007-05-04 | 7d |  |  | 64h | 64h | 8 | 8 | 8 | 착수준비 | M02-1 1.1.1 |  |
| 9 | 1.1.1.2.1 | 공정 절차 정의 | 3d | 2007-04-25 A | 2007-04-27 A |  | 100% | 2007-04-25 | 2007-04-27 | 3d | start no earlier than 2007-04-25 | 문승연 [50%]; 이세원 [50%] | 24h | 24h | 3 | 3 | 3 | 착수준비 | M02-1 1.1.1 | 표준 및 절차매뉴얼(공정) |
| 10 | 1.1.1.2.2 | 공정 양식 표준 작성 | 3d | 2007-04-25 A | 2007-04-27 A |  | 100% | 2007-04-25 | 2007-04-27 | 3d | start no earlier than 2007-04-25 | 문승연 [50%]; 이세원 [50%] | 24h | 24h | 3 | 3 | 3 | 착수준비 | M02-1 1.1.1 | 표준 및 절차매뉴얼(공정) |
| 11 | 1.1.1.2.3 | 공정 표준 검토 및 수정 | 2d | 2007-05-03 A | 2007-05-04 A |  | 100% | 2007-05-03 | 2007-05-04 | 2d | start no earlier than 2007-05-03 | 문승연 [50%]; 이세원 [50%] | 16h | 16h | 2 | 2 | 2 | 착수준비 | M02-1 1.1.1 | 표준 및 절차매뉴얼(공정) |
| 12 | 1.1.2 | **업무범위정의** | 5d | 2007-05-07 A | 2007-05-11 A |  | 100% | 2007-05-07 | 2007-05-11 | 5d |  |  | 80h | 80h | 10 | 10 | 10 | 착수준비 | M02-1 1.1.1 |  |
| 13 | 1.1.2.1 | 과업대비표 매핑 확인 | 3d | 2007-05-07 A | 2007-05-09 A |  | 100% | 2007-05-07 | 2007-05-09 | 3d | start no earlier than 2007-05-07 | 문승연; 이세원 | 48h | 48h | 6 | 6 | 6 | 착수준비 | M02-1 1.1.1 | 과업대비표 |
| 14 | 1.1.2.2 | 과업대비차이분석 | 2d | 2007-05-10 A | 2007-05-11 A | 13 | 100% | 2007-05-10 | 2007-05-11 | 2d |  | 문승연; 이세원 | 32h | 32h | 4 | 4 | 4 | 착수준비 | M02-1 1.1.1 | 과업대비표 |
| 15 | 1.2 | **프로젝트계획수립** | 13d | 2007-04-30 A | 2007-05-17 A |  | 100% | 2007-04-30 | 2007-05-17 | 13d |  |  | 160h | 160h | 20 | 20 | 20 | 프로젝트 계획수립 | M02-1 1.1.2 |  |
| 16 | 1.2.1 | **일정계획수립** | 7d | 2007-04-30 A | 2007-05-09 A |  | 100% | 2007-04-30 | 2007-05-09 | 7d |  |  | 56h | 56h | 7 | 7 | 7 | 프로젝트 계획수립 | M02-1 1.1.2 |  |
| 17 | 1.2.1.1 | 품질활동 정의 | 2d | 2007-04-30 A | 2007-05-02 A |  | 100% | 2007-04-30 | 2007-05-02 | 2d | start no earlier than 2007-04-30 | 문승연 | 16h | 16h | 2 | 2 | 2 | 프로젝트 계획수립 | M02-1 1.1.2 | WBS |
| 18 | 1.2.1.2 | 품질활동 일정 수립 | 2d | 2007-04-30 A | 2007-05-02 A |  | 100% | 2007-04-30 | 2007-05-02 | 2d | start no earlier than 2007-04-30 | 문승연 | 16h | 16h | 2 | 2 | 2 | 프로젝트 계획수립 | M02-1 1.1.2 | WBS |
| 19 | 1.2.1.3 | 일정관리 Tool 적용 준비 | 3d | 2007-05-07 A | 2007-05-09 A |  | 100% | 2007-05-07 | 2007-05-09 | 3d | start no earlier than 2007-05-07 | 이세원 | 24h | 24h | 3 | 3 | 3 | 프로젝트 계획수립 | M02-1 1.1.2 | 진척관리가이드 |
| 20 | 1.2.2 | **품질활동계획수립** | 4d | 2007-04-30 A | 2007-05-04 A |  | 100% | 2007-04-30 | 2007-05-04 | 4d |  |  | 32h | 32h | 4 | 4 | 4 | 프로젝트 계획수립 | M02-1 1.1.2 |  |
| 21 | 1.2.2.1 | 품질활동계획서 작성 | 2d | 2007-04-30 A | 2007-05-02 A |  | 100% | 2007-04-30 | 2007-05-02 | 2d | start no earlier than 2007-04-30 | 문승연 | 16h | 16h | 2 | 2 | 2 | 프로젝트 계획수립 | M02-1 1.1.2 | 품질활동계획서 |
| 22 | 1.2.2.2 | 품질활동계획서 검토 및 수정 | 2d | 2007-05-03 A | 2007-05-04 A | 21 | 100% | 2007-05-03 | 2007-05-04 | 2d |  | 문승연 | 16h | 16h | 2 | 2 | 2 | 프로젝트 계획수립 | M02-1 1.1.2 | 품질활동계획서 |
| 23 | 1.2.3 | **형상관리계획수립** | 13d | 2007-04-30 A | 2007-05-17 A |  | 100% | 2007-04-30 | 2007-05-17 | 13d |  |  | 56h | 56h | 7 | 7 | 7 | 프로젝트 계획수립 | M02-1 1.1.2 |  |
| 24 | 1.2.3.1 | 형상관리계획서 작성 | 2d | 2007-04-30 A | 2007-05-02 A |  | 100% | 2007-04-30 | 2007-05-02 | 2d | start no earlier than 2007-04-30 | 문승연 [50%]; 이세원 [50%] | 16h | 16h | 2 | 2 | 2 | 프로젝트 계획수립 | M02-1 1.1.2 | 형상관리계획서 |
| 25 | 1.2.3.2 | 형상관리계획서 검토 및 수정 | 2d | 2007-05-03 A | 2007-05-04 A | 24 | 100% | 2007-05-03 | 2007-05-04 | 2d |  | 문승연 [50%]; 이세원 [50%] | 16h | 16h | 2 | 2 | 2 | 프로젝트 계획수립 | M02-1 1.1.2 | 형상관리계획서 |
| 26 | 1.2.3.3 | 문서형상관리 Tool 적용 준비 | 3d | 2007-05-15 A | 2007-05-17 A |  | 100% | 2007-05-15 | 2007-05-17 | 3d | start no earlier than 2007-05-07 | 이세원 | 24h | 24h | 3 | 3 | 3 | 프로젝트 계획수립 | M02-1 1.1.2 | 형상관리가이드 |

| ID | WBS | Task | Duration | Start | Finish | Predecessors | Complete | Baseline start | Baseline finish | Baseline duration | Constraint | Resources | Work | Actual work | Cost | Baseline cost | Actual cost | Text20 | Text26 | Text30 |
| --- | --- | --- | --- | --- | --- | --- | --- | --- | --- | --- | --- | --- | --- | --- | --- | --- | --- | --- | --- | --- |
| 27 | 1.2.4 | **프로젝트계획통합 및 검토** | 2d | 2007-05-03 A | 2007-05-04 A |  | 100% | 2007-05-03 | 2007-05-04 | 2d |  |  | 16h | 16h | 2 | 2 | 2 | 프로젝트 계획수립 | M02-1 1.1.2 |  |
| 28 | 1.2.4.1 | 프로젝트계획서 검토 및 수정 | 2d | 2007-05-03 A | 2007-05-04 A |  | 100% | 2007-05-03 | 2007-05-04 | 2d | start no earlier than 2007-05-03 | 문승연 | 16h | 16h | 2 | 2 | 2 | 프로젝트 계획수립 | M02-1 1.1.2 | 프로젝트계획서 |
| 29 | 1.3 | **프로젝트계획확정** | 13d | 2007-05-14 A | 2007-05-31 A |  | 100% | 2007-05-14 | 2007-05-31 | 13d |  |  | 136h | 136h | 17 | 17 | 17 | 프로젝트 계획확정 | M02-1 1.1.3 |  |
| 30 | 1.3.1 | **착수점검실시** | 8d | 2007-05-21 A | 2007-05-31 A |  | 100% | 2007-05-21 | 2007-05-31 | 8d |  |  | 80h | 80h | 10 | 10 | 10 | 프로젝트 계획확정 | M02-1 1.1.3 |  |
| 31 | 1.3.1.1 | 착수점검회의 실시 | 3d | 2007-05-21 A | 2007-05-23 A |  | 100% | 2007-05-21 | 2007-05-23 | 3d | start no earlier than 2007-05-21 | 문승연 | 24h | 24h | 3 | 3 | 3 | 프로젝트 계획확정 | M02-1 1.1.3 | 착수점검결과서 |
| 32 | 1.3.1.2 | 시정 조치 계획 수립 및 수행 | 4d | 2007-05-25 A | 2007-05-30 A | 31 | 100% | 2007-05-25 | 2007-05-30 | 4d |  | 문승연 [50%]; 이세원 [50%] | 32h | 32h | 4 | 4 | 4 | 프로젝트 계획확정 | M02-1 1.1.3 | 시정조치서 |
| 33 | 1.3.1.3 | 시정 조치 결과 점검 | 3d | 2007-05-29 A | 2007-05-31 A | 32 | 100% | 2007-05-29 | 2007-05-31 | 3d |  | 문승연 [50%]; 이세원 [50%] | 24h | 24h | 3 | 3 | 3 | 프로젝트 계획확정 | M02-1 1.1.3 | 시정조치서 |
| 34 | 1.3.2 | **프로세스심사(1차)실시** | 12d | 2007-05-14 A | 2007-05-30 A |  | 100% | 2007-05-14 | 2007-05-30 | 12d |  |  | 56h | 56h | 7 | 7 | 7 | 프로젝트 계획확정 | M02-1 1.1.3 |  |
| 35 | 1.3.2.1 | 프로세스심사(1차) 준비 | 5d | 2007-05-14 A | 2007-05-18 A |  | 100% | 2007-05-14 | 2007-05-18 | 5d | start no earlier than 2007-05-14 | 문승연 [20%]; 이세원 [20%] | 16h | 16h | 2 | 2 | 2 | 프로젝트 계획확정 | M02-1 1.1.3 | 프로세스심사(1차)계획서, GB활동보고서(Define) |
| 36 | 1.3.2.2 | 프로세스심사(1차) 대응 및 결과 통보 | 1d | 2007-05-23 A | 2007-05-23 A |  | 100% | 2007-05-23 | 2007-05-23 | 1d | start no earlier than 2007-05-21 | 문승연 [25%]; 이세원 [25%] | 4h | 4h | 0.5 | 0.5 | 0.5 | 프로젝트 계획확정 | M02-1 1.1.3 | GB활동체크리스트(Define) |
| 37 | 1.3.2.3 | 프로세스심사(1차) 조치 계획 수립 및 수행 | 3d | 2007-05-25 A | 2007-05-29 A | 36 | 100% | 2007-05-25 | 2007-05-29 | 3d |  | 문승연 [50%]; 이세원 [50%] | 24h | 24h | 3 | 3 | 3 | 프로젝트 계획확정 | M02-1 1.1.3 | GB활동체크리스트(Define) |
| 38 | 1.3.2.4 | 프로세스심사(1차) 조치 결과 확인 및 보고 | 3d | 2007-05-28 A | 2007-05-30 A | 37 | 100% | 2007-05-28 | 2007-05-30 | 3d |  | 문승연 [25%]; 이세원 [25%] | 12h | 12h | 1.5 | 1.5 | 1.5 | 프로젝트 계획확정 | M02-1 1.1.3 | 프로세스심사(1차)결과서, GB활동보고서(Define) |
| 39 | 2 | **분석** | 63d | 2007-04-30 A | 2007-07-31 A |  | 100% | 2007-04-30 | 2007-07-31 | 63d |  |  | 1139.2h | 1139.2h | 142.4 | 142.4 | 142.4 | 프로젝트수행/통제 | M02-1 1.2 |  |
| 40 | 2.1 | **분석단계착수** | 4d | 2007-04-30 A | 2007-05-04 A |  | 100% | 2007-04-30 | 2007-05-04 | 4d |  |  | 48h | 48h | 6 | 6 | 6 | 단계착수 | M02-1 1.2.1 |  |
| 41 | 2.1.1 | 분석 단계 계획 검토 및 수정 | 4d | 2007-04-30 A | 2007-05-04 A |  | 100% | 2007-04-30 | 2007-05-04 | 4d | start no earlier than 2007-04-30 | 문승연 [50%] | 16h | 16h | 2 | 2 | 2 | 단계착수 | M02-1 1.2.1 | WBS(수정) |
| 42 | 2.1.2 | 분석 SPM 검토 및 수정 | 2d | 2007-05-03 A | 2007-05-04 A |  | 100% | 2007-05-03 | 2007-05-04 | 2d | start no earlier than 2007-05-07 | 문승연 [50%]; 이세원 [50%] | 16h | 16h | 2 | 2 | 2 | 단계착수 | M02-1 1.2.1 | 표준 및 절차매뉴얼(공정) |
| 43 | 2.1.3 | **오리엔테이션(1차)** | 2d | 2007-05-01 A | 2007-05-03 A |  | 100% | 2007-05-01 | 2007-05-03 | 2d |  |  | 16h | 16h | 2 | 2 | 2 | 단계착수 | M02-1 1.2.1 |  |
| 44 | 2.1.3.1 | 오리엔테이션(1차) 자료 작성 | 1d | 2007-05-01 A | 2007-05-02 A |  | 100% | 2007-05-01 | 2007-05-02 | 1d | start no earlier than 2007-05-02 | 문승연 | 8h | 8h | 1 | 1 | 1 | 단계착수 | M02-1 1.2.1 | 오리엔테이션(1차) 자료 |
| 45 | 2.1.3.2 | 오리엔테이션(1차) 실시 | 1d | 2007-05-03 A | 2007-05-03 A |  | 100% | 2007-05-03 | 2007-05-03 | 1d | start no earlier than 2007-05-09 | 문승연 | 8h | 8h | 1 | 1 | 1 | 단계착수 | M02-1 1.2.1 | 교육결과서, 참석자명단 |
| 46 | 2.2 | **분석단계품질활동수행** | 45d | 2007-05-28 A | 2007-07-31 A |  | 100% | 2007-05-28 | 2007-07-31 | 45d |  |  | 796.8h | 796.8h | 99.6 | 99.6 | 99.6 | 품질활동수행 | M02-1 1.2.2 |  |
| 47 | 2.2.1 | **QAO심사(1차)실시** | 19d | 2007-05-28 A | 2007-06-22 A |  | 100% | 2007-05-28 | 2007-06-22 | 19d |  | 문승연 [50%]; 이세원 [50%] | 409.6h | 409.6h | 51.2 | 51.2 | 51.2 | 품질활동수행 | M02-1 1.2.2 |  |
| 48 | 2.2.1.1 | QAO심사(1차) 계획 수립 및 공지 | 3d | 2007-05-28 A | 2007-05-30 A |  | 100% | 2007-05-28 | 2007-05-30 | 3d | start no earlier than 2007-05-28 | 문승연 [40%] | 9.6h | 9.6h | 1.2 | 1.2 | 1.2 | 품질활동수행 | M02-1 1.2.2 | QAO심사(1차)계획서 |
| 49 | 2.2.1.2 | QAO심사(1차) 실시 및 결과 통보 | 9d | 2007-06-04 A | 2007-06-15 A |  | 100% | 2007-06-04 | 2007-06-15 | 9d | start no earlier than 2007-06-04 | 문승연; 이세원 | 144h | 144h | 18 | 18 | 18 | 품질활동수행 | M02-1 1.2.2 | 시정조치서 |
| 50 | 2.2.1.3 | QAO심사(1차) 조치 계획 취합 | 3d | 2007-06-18 A | 2007-06-20 A | 49 | 100% | 2007-06-18 | 2007-06-20 | 3d |  | 문승연; 이세원 | 48h | 48h | 6 | 6 | 6 | 품질활동수행 | M02-1 1.2.2 | 시정조치서 |
| 51 | 2.2.1.4 | QAO심사(1차) 조치 결과 확인 및 보고 | 3.5d | 2007-06-19 A | 2007-06-22 A | 50 | 100% | 2007-06-19 | 2007-06-22 | 3.5d |  | 문승연; 이세원 | 56h | 56h | 7 | 7 | 7 | 품질활동수행 | M02-1 1.2.2 | QAO심사(1차)결과서 |

| ID | WBS | Task | Duration | Start | Finish | Predecessors | Complete | Baseline start | Baseline finish | Baseline duration | Constraint | Resources | Work | Actual work | Cost | Baseline cost | Actual cost | Text20 | Text26 | Text30 |
| --- | --- | --- | --- | --- | --- | --- | --- | --- | --- | --- | --- | --- | --- | --- | --- | --- | --- | --- | --- | --- |
| 52 | 2.2.2 | **Inspection(1차)실시** | 15d | 2007-06-25 A | 2007-07-13 A |  | 100% | 2007-06-25 | 2007-07-13 | 15d |  |  | 299.2h | 299.2h | 37.4 | 37.4 | 37.4 | 품질활동수행 | M02-1 1.2.2 |  |
| 53 | 2.2.2.1 | Inspection(1차) 계획 수립 및 공지 | 1d | 2007-06-25 A | 2007-06-25 A |  | 100% | 2007-06-25 | 2007-06-25 | 1d | start no earlier than 2007-06-25 | 문승연 | 8h | 8h | 1 | 1 | 1 | 품질활동수행 | M02-1 1.2.2 | Inspection(1차)계획서 |
| 54 | 2.2.2.2 | Inspection(1차) 실시 및 결과 통보 | 6d | 2007-06-29 A | 2007-07-06 A |  | 100% | 2007-06-29 | 2007-07-06 | 6d | start no earlier than 2007-07-02 | 문승연; 이세원; QAO1; QAO2 | 192h | 192h | 24 | 24 | 24 | 품질활동수행 | M02-1 1.2.2 | 개별검토Log, 시정조치서 |
| 55 | 2.2.2.3 | Inspection(1차) 조치 계획 취합 | 1.2d | 2007-07-02 A | 2007-07-03 A | 54 | 100% | 2007-07-02 | 2007-07-03 | 1.2d |  | 문승연; 이세원 | 19.2h | 19.2h | 2.4 | 2.4 | 2.4 | 품질활동수행 | M02-1 1.2.2 | 시정조치서 |
| 56 | 2.2.2.4 | Inspection(1차) 조치 결과 확인 및 보고 | 5d | 2007-07-09 A | 2007-07-13 A | 55 | 100% | 2007-07-09 | 2007-07-13 | 5d |  | 문승연; 이세원 | 80h | 80h | 10 | 10 | 10 | 품질활동수행 | M02-1 1.2.2 | Inspection(1차)결과서 |
| 57 | 2.2.3 | **프로세스심사(2차)실시** | 9d | 2007-07-19 A | 2007-07-31 A |  | 100% | 2007-07-19 | 2007-07-31 | 9d |  |  | 88h | 88h | 11 | 11 | 11 | 품질활동수행 | M02-1 1.2.2 |  |
| 58 | 2.2.3.1 | 프로세스심사(2차) 준비 | 2d | 2007-07-19 A | 2007-07-20 A |  | 100% | 2007-07-19 | 2007-07-20 | 2d | start no earlier than 2007-07-19 | 문승연; 이세원 | 32h | 32h | 4 | 4 | 4 | 품질활동수행 | M02-1 1.2.2 | 프로세스심사(2차)계획서, GB활동보고서(Measure/Analyze) |
| 59 | 2.2.3.2 | 프로세스심사(2차) 대응 및 결과 통보 | 1d | 2007-07-26 A | 2007-07-26 A |  | 100% | 2007-07-26 | 2007-07-26 | 1d | start no earlier than 2007-07-23 | 문승연 [50%]; 이세원 [50%] | 8h | 8h | 1 | 1 | 1 | 품질활동수행 | M02-1 1.2.2 | GB활동체크리스트(Measure/Analyze) |
| 60 | 2.2.3.3 | 프로세스심사(2차) 조치 계획 수립 및 수행 | 2d | 2007-07-26 A | 2007-07-27 A | 59 | 100% | 2007-07-26 | 2007-07-27 | 2d |  | 문승연; 이세원 | 32h | 32h | 4 | 4 | 4 | 품질활동수행 | M02-1 1.2.2 | GB활동체크리스트(Measure/Analyze) |
| 61 | 2.2.3.4 | 프로세스심사(2차) 조치 결과 확인 및 보고 | 2d | 2007-07-30 A | 2007-07-31 A | 60 | 100% | 2007-07-30 | 2007-07-31 | 2d |  | 문승연 [50%]; 이세원 [50%] | 16h | 16h | 2 | 2 | 2 | 품질활동수행 | M02-1 1.2.2 | 프로세스심사(2차)결과서, GB활동보고서(Measure/Analyze) |
| 62 | 2.3 | **분석단계형상관리활동수행** | 47d | 2007-05-21 A | 2007-07-27 A |  | 100% | 2007-05-21 | 2007-07-27 | 47d |  |  | 16h | 16h | 2 | 2 | 2 | 형상관리활동수행 | M02-1 1.2.3 |  |
| 63 | 2.3.1 | 문서형상관리 Tool 교육 | 1d | 2007-05-21 A | 2007-05-21 A |  | 100% | 2007-05-21 | 2007-05-21 | 1d | start no earlier than 2007-05-14 | 이세원 | 8h | 8h | 1 | 1 | 1 | 형상관리활동수행 | M02-1 1.2.3 | 교육결과서, 참석자명단 |
| 64 | 2.3.2 | 분석 베이스라인감사 | 1d | 2007-07-27 A | 2007-07-27 A |  | 100% | 2007-07-27 | 2007-07-27 | 1d | start no earlier than 2007-07-27 | 문승연 | 8h | 8h | 1 | 1 | 1 | 형상관리활동수행 | M02-1 1.2.3 | 형상감사보고서 |
| 65 | 2.4 | **분석단계완료** | 12d | 2007-07-09 A | 2007-07-25 A |  | 100% | 2007-07-09 | 2007-07-25 | 12d |  |  | 278.4h | 278.4h | 34.8 | 34.8 | 34.8 | 단계완료 | M02-1 1.2.8 |  |
| 66 | 2.4.1 | **분석단계결과정리** | 10d | 2007-07-11 A | 2007-07-25 A |  | 100% | 2007-07-11 | 2007-07-25 | 10d |  |  | 208h | 208h | 26 | 26 | 26 | 단계완료 | M02-1 1.2.8 |  |
| 67 | 2.4.1.1 | 분석 요구사항추적표 매핑 및 결과분석 | 5d | 2007-07-11 A | 2007-07-18 A |  | 100% | 2007-07-11 | 2007-07-18 | 5d | start no earlier than 2007-07-11 | 문승연; 이세원 | 80h | 80h | 10 | 10 | 10 | 단계완료 | M02-1 1.2.8 | 요구사항추적표(분석) |
| 68 | 2.4.1.2 | 요구사항규모측정방법 교육 | 1d | 2007-07-11 A | 2007-07-11 A |  | 100% | 2007-07-11 | 2007-07-11 | 1d | start no earlier than 2007-07-09 | 문승연 | 8h | 8h | 1 | 1 | 1 | 단계완료 | M02-1 1.2.8 | 기능점수측정가이드 |
| 69 | 2.4.1.3 | 요구사항규모산정내역 검증 | 7d | 2007-07-16 A | 2007-07-25 A |  | 100% | 2007-07-16 | 2007-07-25 | 7d | start no earlier than 2007-07-16 | 문승연 | 56h | 56h | 7 | 7 | 7 | 단계완료 | M02-1 1.2.8 | 요구사항규모산정내역서 |
| 70 | 2.4.1.4 | 분석 단계 산출물 점검 | 4d | 2007-07-16 A | 2007-07-20 A |  | 100% | 2007-07-16 | 2007-07-20 | 4d | start no earlier than 2007-07-16 | 문승연; 이세원 | 64h | 64h | 8 | 8 | 8 | 단계완료 | M02-1 1.2.8 | 분석단계점검결과 |
| 71 | 2.4.2 | **고객검토(1차)실시** | 9d | 2007-07-09 A | 2007-07-20 A |  | 100% | 2007-07-09 | 2007-07-20 | 9d |  |  | 70.4h | 70.4h | 8.8 | 8.8 | 8.8 | 단계완료 | M02-1 1.2.8 |  |
| 72 | 2.4.2.1 | 고객검토(1차) 계획 공지 | 6d | 2007-07-09 A | 2007-07-16 A |  | 100% | 2007-07-09 | 2007-07-16 | 6d | start no earlier than 2007-07-09 | 문승연 [40%] | 19.2h | 19.2h | 2.4 | 2.4 | 2.4 | 단계완료 | M02-1 1.2.8 | 고객검토(1차)계획서 |
| 73 | 2.4.2.2 | 고객검토(1차) 실시 및 결과 취합 | 3d | 2007-07-18 A | 2007-07-20 A |  | 100% | 2007-07-18 | 2007-07-20 | 3d | start no earlier than 2007-07-16 | 문승연 [40%]; 이세원 [40%] | 19.2h | 19.2h | 2.4 | 2.4 | 2.4 | 단계완료 | M02-1 1.2.8 | 시정조치계획/결과서 |
| 74 | 2.4.2.3 | 고객검토(1차) 조치 계획 취합 | 2d | 2007-07-19 A | 2007-07-20 A | 73 | 100% | 2007-07-19 | 2007-07-20 | 2d |  | 이세원 | 16h | 16h | 2 | 2 | 2 | 단계완료 | M02-1 1.2.8 | 시정조치계획/결과서 |
| 75 | 2.4.2.4 | 고객검토(1차) 조치 결과 확인 및 보고 | 1d | 2007-07-20 A | 2007-07-20 A | 74 | 100% | 2007-07-20 | 2007-07-20 | 1d |  | 문승연; 이세원 | 16h | 16h | 2 | 2 | 2 | 단계완료 | M02-1 1.2.8 | 고객검토(1차)결과서 |

| ID | WBS | Task | Duration | Start | Finish | Predecessors | Complete | Baseline start | Baseline finish | Baseline duration | Constraint | Resources | Work | Actual work | Cost | Baseline cost | Actual cost | Text20 | Text26 | Text30 |
| --- | --- | --- | --- | --- | --- | --- | --- | --- | --- | --- | --- | --- | --- | --- | --- | --- | --- | --- | --- | --- |
| 76 | 3 | **설계** | 128d | 2007-06-25 A | 2007-12-28 A |  | 100% | 2007-06-25 | 2007-12-28 | 128d |  |  | 2012.8h | 2012.8h | 251.6 | 251.6 | 251.6 | 프로젝트수행/통제 | M02-1 1.2 |  |
| 77 | 3.1 | **설계단계착수** | 24d | 2007-06-25 A | 2007-07-27 A |  | 100% | 2007-06-25 | 2007-07-27 | 24d |  |  | 384h | 384h | 48 | 48 | 48 | 단계착수 | M02-1 1.2.1 |  |
| 78 | 3.1.1 | 설계 단계 계획 검토 및 수정 | 2d | 2007-07-16 A | 2007-07-18 A |  | 100% | 2007-07-16 | 2007-07-18 | 2d | start no earlier than 2007-07-16 | 문승연 | 16h | 16h | 2 | 2 | 2 | 단계착수 | M02-1 1.2.1 | WBS(수정) |
| 79 | 3.1.2 | 설계 SPM 검토 및 수정 | 21d | 2007-06-25 A | 2007-07-24 A |  | 100% | 2007-06-25 | 2007-07-24 | 21d | start no earlier than 2007-07-18 | 문승연; 이세원 | 336h | 336h | 42 | 42 | 42 | 단계착수 | M02-1 1.2.1 | 표준 및 절차매뉴얼(공정) |
| 80 | 3.1.3 | **오리엔테이션(2차)** | 5d | 2007-07-23 A | 2007-07-27 A |  | 100% | 2007-07-23 | 2007-07-27 | 5d |  |  | 32h | 32h | 4 | 4 | 4 | 단계착수 | M02-1 1.2.1 |  |
| 81 | 3.1.3.1 | 오리엔테이션(2차) 자료 작성 | 3d | 2007-07-23 A | 2007-07-25 A |  | 100% | 2007-07-23 | 2007-07-25 | 3d | start no earlier than 2007-07-25 | 문승연 | 24h | 24h | 3 | 3 | 3 | 단계착수 | M02-1 1.2.1 | 오리엔테이션(2차) 자료 |
| 82 | 3.1.3.2 | 오리엔테이션(2차) 실시 | 1d | 2007-07-27 A | 2007-07-27 A |  | 100% | 2007-07-27 | 2007-07-27 | 1d | start no earlier than 2007-07-30 | 문승연 | 8h | 8h | 1 | 1 | 1 | 단계착수 | M02-1 1.2.1 | 교육결과서, 참석자명단 |
| 83 | 3.2 | **설계단계품질활동수행** | 115d | 2007-07-09 A | 2007-12-24 A |  | 100% | 2007-07-09 | 2007-12-24 | 115d |  |  | 1372.8h | 1372.8h | 171.6 | 171.6 | 171.6 | 품질활동수행 | M02-1 1.2.2 |  |
| 84 | 3.2.1 | **분석감리실시** | 24d | 2007-07-09 A | 2007-08-10 A |  | 100% | 2007-07-09 | 2007-08-10 | 24d |  |  | 144h | 144h | 18 | 18 | 18 | 품질활동수행 | M02-1 1.2.2 |  |
| 85 | 3.2.1.1 | 분석감리 계획 공지 | 6d | 2007-07-09 A | 2007-07-16 A |  | 100% | 2007-07-09 | 2007-07-16 | 6d | start no earlier than 2007-07-30 | 문승연 [50%] | 24h | 24h | 3 | 3 | 3 | 품질활동수행 | M02-1 1.2.2 | 감리계획서 |
| 86 | 3.2.1.2 | 분석감리 대응 | 5d | 2007-07-23 A | 2007-07-27 A |  | 100% | 2007-07-23 | 2007-07-27 | 5d | start no earlier than 2007-08-06 | 문승연 [50%]; 이세원 [50%] | 40h | 40h | 5 | 5 | 5 | 품질활동수행 | M02-1 1.2.2 | 감리보고서 |
| 87 | 3.2.1.3 | 분석감리 조치 계획 수립 및 수행 | 5d | 2007-07-30 A | 2007-08-03 A | 86 | 100% | 2007-07-30 | 2007-08-03 | 5d |  | 문승연 [50%]; 이세원 [50%] | 40h | 40h | 5 | 5 | 5 | 품질활동수행 | M02-1 1.2.2 | 감리조치계획/결과서 |
| 88 | 3.2.1.4 | 분석감리 조치 결과 확인 및 보고 | 5d | 2007-08-06 A | 2007-08-10 A | 87 | 100% | 2007-08-06 | 2007-08-10 | 5d |  | 문승연 [50%]; 이세원 [50%] | 40h | 40h | 5 | 5 | 5 | 품질활동수행 | M02-1 1.2.2 | 감리조치계획/결과서 |
| 89 | 3.2.2 | **QAO심사(2차)실시** | 60d | 2007-08-13 A | 2007-11-09 A |  | 100% | 2007-08-13 | 2007-11-09 | 60d |  |  | 732.8h | 732.8h | 91.6 | 91.6 | 91.6 | 품질활동수행 | M02-1 1.2.2 |  |
| 90 | 3.2.2.1 | QAO심사(2차) 계획 수립 및 공지 - 1회 | 4d | 2007-08-13 A | 2007-08-17 A |  | 100% | 2007-08-13 | 2007-08-17 | 4d | start no earlier than 2007-08-13 | 문승연 [50%] | 16h | 16h | 2 | 2 | 2 | 품질활동수행 | M02-1 1.2.2 | QAO심사(2차)계획서 |
| 91 | 3.2.2.2 | QAO심사(2차) 실시 및 결과 통보 - 1회 | 5d | 2007-08-20 A | 2007-08-24 A |  | 100% | 2007-08-20 | 2007-08-24 | 5d | start no earlier than 2007-08-20 | 문승연; 이세원 | 80h | 80h | 10 | 10 | 10 | 품질활동수행 | M02-1 1.2.2 | 시정조치서 |
| 92 | 3.2.2.3 | QAO심사(2차) 조치 계획 취합 - 1회 | 7d | 2007-08-23 A | 2007-08-31 A | 91 | 100% | 2007-08-23 | 2007-08-31 | 7d |  | 문승연 [50%]; 이세원 [50%] | 56h | 56h | 7 | 7 | 7 | 품질활동수행 | M02-1 1.2.2 | 시정조치서 |
| 93 | 3.2.2.4 | QAO심사(2차) 조치 결과 확인 및 보고 - 1회 | 6d | 2007-08-29 A | 2007-09-07 A | 92 | 100% | 2007-08-29 | 2007-09-07 | 6d |  | 문승연; 이세원 | 96h | 96h | 12 | 12 | 12 | 품질활동수행 | M02-1 1.2.2 | QAO심사(2차)결과서 |
| 94 | 3.2.2.5 | QAO심사(2차) 계획 수립 및 공지 - 2회 | 4d | 2007-09-10 A | 2007-09-13 A |  | 100% | 2007-09-10 | 2007-09-13 | 4d | start no earlier than 2007-09-10 | 문승연 [40%] | 12.8h | 12.8h | 1.6 | 1.6 | 1.6 | 품질활동수행 | M02-1 1.2.2 | QAO심사(2차)계획서 |
| 95 | 3.2.2.6 | QAO심사(2차) 실시 및 결과 통보 - 2회 | 5d | 2007-09-17 A | 2007-09-21 A |  | 100% | 2007-09-17 | 2007-09-21 | 5d | start no earlier than 2007-09-17 | 문승연; 이세원 | 80h | 80h | 10 | 10 | 10 | 품질활동수행 | M02-1 1.2.2 | 시정조치서 |
| 96 | 3.2.2.7 | QAO심사(2차) 조치 계획 취합 - 2회 | 2d | 2007-09-27 A | 2007-09-28 A | 95 | 100% | 2007-09-27 | 2007-09-28 | 2d |  | 문승연 [50%]; 이세원 [50%] | 16h | 16h | 2 | 2 | 2 | 품질활동수행 | M02-1 1.2.2 | 시정조치서 |
| 97 | 3.2.2.8 | QAO심사(2차) 조치 결과 확인 및 보고 - 2회 | 4d | 2007-10-01 A | 2007-10-05 A | 96 | 100% | 2007-10-01 | 2007-10-05 | 4d |  | 문승연; 이세원 | 64h | 64h | 8 | 8 | 8 | 품질활동수행 | M02-1 1.2.2 | QAO심사(2차)결과서 |
| 98 | 3.2.2.9 | QAO심사(2차) 계획 수립 및 공지 - 3회 | 5d | 2007-10-08 A | 2007-10-12 A |  | 100% | 2007-10-08 | 2007-10-12 | 5d | start no earlier than 2007-10-08 | 문승연 [40%] | 16h | 16h | 2 | 2 | 2 | 품질활동수행 | M02-1 1.2.2 | QAO심사(2차)계획서 |
| 99 | 3.2.2.10 | QAO심사(2차) 실시 및 결과 통보 - 3회 | 10d | 2007-10-15 A | 2007-10-26 A |  | 100% | 2007-10-15 | 2007-10-26 | 10d | start no earlier than 2007-10-15 | 문승연; 이세원 | 160h | 160h | 20 | 20 | 20 | 품질활동수행 | M02-1 1.2.2 | 시정조치서 |
| 100 | 3.2.2.11 | QAO심사(2차) 조치 계획 취합 - 3회 | 5.5d | 2007-10-22 A | 2007-11-02 A | 99 | 100% | 2007-10-22 | 2007-11-02 | 5.5d |  | 문승연 [50%]; 이세원 [50%] | 44h | 44h | 5.5 | 5.5 | 5.5 | 품질활동수행 | M02-1 1.2.2 | 시정조치서 |
| 101 | 3.2.2.12 | QAO심사(2차) 조치 결과 확인 및 보고 - 3회 | 5.75d | 2007-10-23 A | 2007-11-09 A | 100 | 100% | 2007-10-23 | 2007-11-09 | 5.75d |  | 문승연; 이세원 | 92h | 92h | 11.5 | 11.5 | 11.5 | 품질활동수행 | M02-1 1.2.2 | QAO심사(2차)결과서 |

| ID | WBS | Task | Duration | Start | Finish | Predecessors | Complete | Baseline start | Baseline finish | Baseline duration | Constraint | Resources | Work | Actual work | Cost | Baseline cost | Actual cost | Text20 | Text26 | Text30 |
| --- | --- | --- | --- | --- | --- | --- | --- | --- | --- | --- | --- | --- | --- | --- | --- | --- | --- | --- | --- | --- |
| 102 | 3.2.3 | **Inspection(2차)실시** | 20d | 2007-11-05 A | 2007-11-30 A |  | 100% | 2007-11-05 | 2007-11-30 | 20d |  |  | 392h | 392h | 49 | 49 | 49 | 품질활동수행 | M02-1 1.2.2 |  |
| 103 | 3.2.3.1 | Inspection(2차) 계획 수립 및 공지 | 5d | 2007-11-05 A | 2007-11-09 A |  | 100% | 2007-11-05 | 2007-11-09 | 5d | start no earlier than 2007-11-12 | 문승연 | 40h | 40h | 5 | 5 | 5 | 품질활동수행 | M02-1 1.2.2 | Inspection(2차)계획서 |
| 104 | 3.2.3.2 | Inspection(2차) 실시 및 결과 통보 | 6d | 2007-11-16 A | 2007-11-23 A |  | 100% | 2007-11-16 | 2007-11-23 | 6d | start no earlier than 2007-11-19 | 문승연; 이세원; QAO1; QAO2 | 192h | 192h | 24 | 24 | 24 | 품질활동수행 | M02-1 1.2.2 | 개별검토Log, 시정조치서 |
| 105 | 3.2.3.3 | Inspection(2차) 조치 계획 수립 및 수행 | 5d | 2007-11-19 A | 2007-11-23 A | 104 | 100% | 2007-11-19 | 2007-11-23 | 5d |  | 문승연; 이세원 | 80h | 80h | 10 | 10 | 10 | 품질활동수행 | M02-1 1.2.2 | 시정조치서 |
| 106 | 3.2.3.4 | Inspection(2차) 조치 결과 확인 및 보고 | 5d | 2007-11-26 A | 2007-11-30 A | 105 | 100% | 2007-11-26 | 2007-11-30 | 5d |  | 문승연; 이세원 | 80h | 80h | 10 | 10 | 10 | 품질활동수행 | M02-1 1.2.2 | Inspection(2차)결과서 |
| 107 | 3.2.4 | **프로세스심사(3차)실시** | 7d | 2007-12-14 A | 2007-12-24 A |  | 100% | 2007-12-14 | 2007-12-24 | 7d |  |  | 104h | 104h | 13 | 13 | 13 | 품질활동수행 | M02-1 1.2.2 |  |
| 108 | 3.2.4.1 | 프로세스심사(3차) 준비 | 3d | 2007-12-14 A | 2007-12-18 A |  | 100% | 2007-12-14 | 2007-12-18 | 3d | start no earlier than 2007-12-17 | 문승연; 이세원 | 48h | 48h | 6 | 6 | 6 | 품질활동수행 | M02-1 1.2.2 | 프로세스심사(3차)계획서, GB활동보고서(Design) |
| 109 | 3.2.4.2 | 프로세스심사(3차) 대응 및 결과 통보 | 2d | 2007-12-20 A | 2007-12-21 A |  | 100% | 2007-12-20 | 2007-12-21 | 2d | start no earlier than 2007-12-19 | 문승연 [50%]; 이세원 [50%] | 16h | 16h | 2 | 2 | 2 | 품질활동수행 | M02-1 1.2.2 | GB활동체크리스트(Design) |
| 110 | 3.2.4.3 | 프로세스심사(3차) 조치 계획 수립 및 수행 | 1d | 2007-12-21 A | 2007-12-21 A | 109 | 100% | 2007-12-21 | 2007-12-21 | 1d |  | 문승연; 이세원 | 16h | 16h | 2 | 2 | 2 | 품질활동수행 | M02-1 1.2.2 | GB활동체크리스트(Design) |
| 111 | 3.2.4.4 | 프로세스심사(3차) 조치 결과 확인 및 보고 | 1d | 2007-12-24 A | 2007-12-24 A | 110 | 100% | 2007-12-24 | 2007-12-24 | 1d |  | 문승연 [150%]; 이세원 [150%] | 24h | 24h | 3 | 3 | 3 | 품질활동수행 | M02-1 1.2.2 | 프로세스심사(3차)결과서, GB활동보고서(Design) |
| 112 | 3.3 | **설계단계형상관리활동수행** | 4d | 2007-12-24 A | 2007-12-28 A |  | 100% | 2007-12-24 | 2007-12-28 | 4d |  |  | 32h | 32h | 4 | 4 | 4 | 형상관리활동수행 | M02-1 1.2.3 |  |
| 113 | 3.3.1 | 설계 베이스라인감사 | 4d | 2007-12-24 A | 2007-12-28 A |  | 100% | 2007-12-24 | 2007-12-28 | 4d | start no earlier than 2007-12-27 | 문승연 | 32h | 32h | 4 | 4 | 4 | 형상관리활동수행 | M02-1 1.2.3 | 형상감사보고서 |
| 114 | 3.4 | **설계단계완료** | 14.01d | 2007-11-26 A | 2007-12-14 A |  | 100% | 2007-11-26 | 2007-12-14 | 15d |  |  | 224h | 224h | 28 | 28 | 28 | 단계완료 | M02-1 1.2.8 |  |
| 115 | 3.4.1 | **설계단계결과정리** | 10d | 2007-11-26 A | 2007-12-07 A |  | 100% | 2007-11-26 | 2007-12-07 | 10d |  |  | 120h | 120h | 15 | 15 | 15 | 단계완료 | M02-1 1.2.8 |  |
| 116 | 3.4.1.1 | 설계 요구사항추적표 매핑 및 결과분석 | 5d | 2007-11-26 A | 2007-11-30 A |  | 100% | 2007-11-26 | 2007-11-30 | 5d | start no earlier than 2007-11-26 | 문승연; 이세원 | 80h | 80h | 10 | 10 | 10 | 단계완료 | M02-1 1.2.8 | 요구사항추적표(설계) |
| 117 | 3.4.1.2 | 설계 단계 산출물 점검 | 5d | 2007-12-03 A | 2007-12-07 A |  | 100% | 2007-12-03 | 2007-12-07 | 5d | start no earlier than 2007-12-03 | 문승연 [50%]; 이세원 [50%] | 40h | 40h | 5 | 5 | 5 | 단계완료 | M02-1 1.2.8 | 설계단계점검결과 |
| 118 | 3.4.2 | **고객검토(2차)실시** | 14.01d | 2007-11-26 A | 2007-12-14 A |  | 100% | 2007-11-26 | 2007-12-14 | 15d |  |  | 104h | 104h | 13 | 13 | 13 | 단계완료 | M02-1 1.2.8 |  |
| 119 | 3.4.2.1 | 고객검토(2차) 계획 공지 | 3d | 2007-11-26 A | 2007-11-28 A |  | 100% | 2007-11-26 | 2007-11-28 | 3d | start no earlier than 2007-11-26 | 문승연 | 24h | 24h | 3 | 3 | 3 | 단계완료 | M02-1 1.2.8 | 고객검토(2차)계획서 |
| 120 | 3.4.2.2 | 고객검토(2차) 실시 및 결과 취합 | 5d | 2007-12-03 A | 2007-12-07 A |  | 100% | 2007-12-03 | 2007-12-07 | 5d | start no earlier than 2007-12-03 | 문승연 [50%]; 이세원 [50%] | 40h | 40h | 5 | 5 | 5 | 단계완료 | M02-1 1.2.8 | 시정조치계획/결과서 |
| 121 | 3.4.2.3 | 고객검토(2차) 조치 계획 취합 | 2d | 2007-12-10 A | 2007-12-11 A | 120 | 100% | 2007-12-10 | 2007-12-11 | 2d |  | 이세원 | 16h | 16h | 2 | 2 | 2 | 단계완료 | M02-1 1.2.8 | 시정조치계획/결과서 |
| 122 | 3.4.2.4 | 고객검토(2차) 조치 결과 확인 및 보고 | 4.01d | 2007-12-10 A | 2007-12-14 A | 121 | 100% | 2007-12-10 | 2007-12-14 | 4.01d | finish no earlier than 2007-12-14 | 문승연 [50%]; 이세원 [50%] | 24h | 24h | 3 | 3 | 3 | 단계완료 | M02-1 1.2.8 | 고객검토(2차)결과서 |
| 123 | 4 | **개발** | 151d | 2007-11-20 A | 2008-06-30 A |  | 100% | 2007-11-20 | 2008-06-30 | 151d |  |  | 2395.2h | 2395.2h | 299.4 | 299.4 | 299.4 | 프로젝트수행/통제 | C02-1 1.6 |  |
| 124 | 4.1 | **개발단계착수** | 13d | 2007-12-05 A | 2007-12-21 A |  | 100% | 2007-12-05 | 2007-12-21 | 13d |  |  | 100h | 100h | 12.5 | 12.5 | 12.5 | 단계착수 | C02-1 1.6.1 |  |
| 125 | 4.1.1 | 개발 단계 계획 검토 및 수정 | 4d | 2007-12-05 A | 2007-12-10 A |  | 100% | 2007-12-05 | 2007-12-10 | 4d | start no earlier than 2007-12-10 | 문승연 | 32h | 32h | 4 | 4 | 4 | 단계착수 | C02-1 1.6.1 | WBS(수정) |
| 126 | 4.1.2 | 개발 SPM 검토 및 수정 | 3d | 2007-12-10 A | 2007-12-12 A |  | 100% | 2007-12-10 | 2007-12-12 | 3d | start no earlier than 2007-12-10 | 문승연; 이세원 | 48h | 48h | 6 | 6 | 6 | 단계착수 | C02-1 1.6.1 | 표준 및 절차매뉴얼(공정) |

| ID | WBS | Task | Duration | Start | Finish | Predecessors | Complete | Baseline start | Baseline finish | Baseline duration | Constraint | Resources | Work | Actual work | Cost | Baseline cost | Actual cost | Text20 | Text26 | Text30 |
| --- | --- | --- | --- | --- | --- | --- | --- | --- | --- | --- | --- | --- | --- | --- | --- | --- | --- | --- | --- | --- |
| 127 | 4.1.3 | **오리엔테이션(3차)** | 5d | 2007-12-17 A | 2007-12-21 A |  | 100% | 2007-12-17 | 2007-12-21 | 5d |  |  | 20h | 20h | 2.5 | 2.5 | 2.5 | 단계착수 | C02-1 1.6.1 |  |
| 128 | 4.1.3.1 | 오리엔테이션(3차) 자료 작성 | 2d | 2007-12-17 A | 2007-12-18 A |  | 100% | 2007-12-17 | 2007-12-18 | 2d | start no earlier than 2007-12-17 | 문승연 | 16h | 16h | 2 | 2 | 2 | 단계착수 | C02-1 1.6.1 | 오리엔테이션(3차) 자료 |
| 129 | 4.1.3.2 | 오리엔테이션(3차) 실시 | 1d | 2007-12-21 A | 2007-12-21 A | 128 | 100% | 2007-12-21 | 2007-12-21 | 1d |  | 문승연 [50%] | 4h | 4h | 0.5 | 0.5 | 0.5 | 단계착수 | C02-1 1.6.1 | 교육결과서, 참석자명단 |
| 130 | 4.2 | **개발단계품질활동수행** | 131d | 2007-11-20 A | 2008-05-30 A |  | 100% | 2007-11-20 | 2008-05-30 | 131d |  |  | 2123.2h | 2123.2h | 265.4 | 265.4 | 265.4 | 품질활동수행 | C02-1 1.6.2 |  |
| 131 | 4.2.1 | **설계감리실시** | 28d | 2007-11-20 A | 2007-12-28 A |  | 100% | 2007-11-20 | 2007-12-28 | 28d |  |  | 128h | 128h | 16 | 16 | 16 | 품질활동수행 | C02-1 1.6.2 |  |
| 132 | 4.2.1.1 | 설계감리 계획 공지 | 1d | 2007-11-20 A | 2007-11-20 A |  | 100% | 2007-11-20 | 2007-11-20 | 1d | start no earlier than 2007-11-19 | 문승연 [50%]; 이세원 [50%] | 8h | 8h | 1 | 1 | 1 | 품질활동수행 | C02-1 1.6.2 | 감리계획서 |
| 133 | 4.2.1.2 | 설계감리 대응 | 5d | 2007-12-10 A | 2007-12-14 A |  | 100% | 2007-12-10 | 2007-12-14 | 5d | start no earlier than 2007-12-10 | 문승연 [50%]; 이세원 [50%] | 40h | 40h | 5 | 5 | 5 | 품질활동수행 | C02-1 1.6.2 | 감리보고서 |
| 134 | 4.2.1.3 | 설계감리 조치 계획 수립 및 수행 | 6d | 2007-12-17 A | 2007-12-24 A | 133 | 100% | 2007-12-17 | 2007-12-24 | 6d |  | 문승연 [50%]; 이세원 [50%] | 48h | 48h | 6 | 6 | 6 | 품질활동수행 | C02-1 1.6.2 | 감리조치계획/결과서 |
| 135 | 4.2.1.4 | 설계감리 조치 결과 확인 및 보고 | 4d | 2007-12-24 A | 2007-12-28 A | 134 | 100% | 2007-12-24 | 2007-12-28 | 4d |  | 문승연 [50%]; 이세원 [50%] | 32h | 32h | 4 | 4 | 4 | 품질활동수행 | C02-1 1.6.2 | 감리조치계획/결과서 |
| 136 | 4.2.2 | **QAO심사(3차)실시** | 58d | 2008-02-18 A | 2008-05-09 A |  | 100% | 2008-02-18 | 2008-05-09 | 58d |  | 문승연 [50%]; 이세원 [50%] | 1027.2h | 1027.2h | 128.4 | 128.4 | 128.4 | 품질활동수행 | C02-1 1.6.2 |  |
| 137 | 4.2.2.1 | QAO심사(3차) 계획 수립 및 공지 - 1회 | 4d | 2008-02-18 A | 2008-02-21 A |  | 100% | 2008-02-18 | 2008-02-21 | 4d | start no earlier than 2008-02-18 | 문승연 [40%] | 12.8h | 12.8h | 1.6 | 1.6 | 1.6 | 품질활동수행 | C02-1 1.6.2 | QAO심사(3차)계획서 |
| 138 | 4.2.2.2 | QAO심사(3차) 실시 및 결과 통보 - 1회 | 5d | 2008-02-25 A | 2008-02-29 A |  | 100% | 2008-02-25 | 2008-02-29 | 5d | start no earlier than 2008-02-25 | 문승연; 이세원 | 80h | 80h | 10 | 10 | 10 | 품질활동수행 | C02-1 1.6.2 | 시정조치서 |
| 139 | 4.2.2.3 | QAO심사(3차) 조치 계획 취합 - 1회 | 5d | 2008-03-03 A | 2008-03-07 A | 138 | 100% | 2008-03-03 | 2008-03-07 | 5d |  | 문승연 [50%]; 이세원 [50%] | 40h | 40h | 5 | 5 | 5 | 품질활동수행 | C02-1 1.6.2 | 시정조치서 |
| 140 | 4.2.2.4 | QAO심사(3차) 조치 결과 확인 및 보고 - 1회 | 5d | 2008-03-10 A | 2008-03-14 A | 139 | 100% | 2008-03-10 | 2008-03-14 | 5d |  | 문승연; 이세원 | 80h | 80h | 10 | 10 | 10 | 품질활동수행 | C02-1 1.6.2 | QAO심사(3차)결과서 |
| 141 | 4.2.2.5 | QAO심사(3차) 계획 수립 및 공지 - 2회 | 6d | 2008-03-17 A | 2008-03-24 A |  | 100% | 2008-03-17 | 2008-03-24 | 6d | start no earlier than 2008-03-17 | 문승연 [40%] | 19.2h | 19.2h | 2.4 | 2.4 | 2.4 | 품질활동수행 | C02-1 1.6.2 | QAO심사(3차)계획서 |
| 142 | 4.2.2.6 | QAO심사(3차) 실시 및 결과 통보 - 2회 | 3d | 2008-03-26 A | 2008-03-28 A |  | 100% | 2008-03-26 | 2008-03-28 | 3d | start no earlier than 2008-03-24 | 문승연; 이세원 | 48h | 48h | 6 | 6 | 6 | 품질활동수행 | C02-1 1.6.2 | 시정조치서 |
| 143 | 4.2.2.7 | QAO심사(3차) 조치 계획 취합 - 2회 | 5d | 2008-03-31 A | 2008-04-04 A | 142 | 100% | 2008-03-31 | 2008-04-04 | 5d |  | 문승연 [50%]; 이세원 [50%] | 40h | 40h | 5 | 5 | 5 | 품질활동수행 | C02-1 1.6.2 | 시정조치서 |
| 144 | 4.2.2.8 | QAO심사(3차) 조치 결과 확인 및 보고 - 2회 | 5d | 2008-04-07 A | 2008-04-11 A | 143 | 100% | 2008-04-07 | 2008-04-11 | 5d |  | 문승연; 이세원 | 80h | 80h | 10 | 10 | 10 | 품질활동수행 | C02-1 1.6.2 | QAO심사(3차)결과서 |
| 145 | 4.2.2.9 | QAO심사(3차) 계획 수립 및 공지 - 3회 | 6d | 2008-04-14 A | 2008-04-21 A |  | 100% | 2008-04-14 | 2008-04-21 | 6d | start no earlier than 2008-04-14 | 문승연 [40%] | 19.2h | 19.2h | 2.4 | 2.4 | 2.4 | 품질활동수행 | C02-1 1.6.2 | QAO심사(3차)계획서 |
| 146 | 4.2.2.10 | QAO심사(3차) 실시 및 결과 통보 - 3회 | 3d | 2008-04-23 A | 2008-04-25 A |  | 100% | 2008-04-23 | 2008-04-25 | 3d | start no earlier than 2008-04-21 | 문승연; 이세원 | 48h | 48h | 6 | 6 | 6 | 품질활동수행 | C02-1 1.6.2 | 시정조치서 |
| 147 | 4.2.2.11 | QAO심사(3차) 조치 계획 취합 - 3회 | 4d | 2008-04-28 A | 2008-05-02 A | 146 | 100% | 2008-04-28 | 2008-05-02 | 4d |  | 문승연 [50%]; 이세원 [50%] | 32h | 32h | 4 | 4 | 4 | 품질활동수행 | C02-1 1.6.2 | 시정조치서 |
| 148 | 4.2.2.12 | QAO심사(3차) 조치 결과 확인 및 보고 - 3회 | 4d | 2008-05-06 A | 2008-05-09 A | 147 | 100% | 2008-05-06 | 2008-05-09 | 4d |  | 문승연; 이세원 | 64h | 64h | 8 | 8 | 8 | 품질활동수행 | C02-1 1.6.2 | QAO심사(3차)결과서 |
| 149 | 4.2.3 | **Inspection(3차)실시** | 102d | 2008-01-02 A | 2008-05-30 A |  | 100% | 2008-01-02 | 2008-05-30 | 102d |  |  | 968h | 968h | 121 | 121 | 121 | 품질활동수행 | C02-1 1.6.2 |  |
| 150 | 4.2.3.1 | Inspection(3차) 계획 수립 및 공지 - 1회 | 13d | 2008-01-02 A | 2008-01-18 A |  | 100% | 2008-01-02 | 2008-01-18 | 13d | start no earlier than 2008-01-02 | 문승연 [50%] | 52h | 52h | 6.5 | 6.5 | 6.5 | 품질활동수행 | C02-1 1.6.2 | Inspection(3차)계획서 |
| 151 | 4.2.3.2 | Inspection(3차) 실시 및 결과 통보 - 1회 | 5d | 2008-01-21 A | 2008-01-25 A |  | 100% | 2008-01-21 | 2008-01-25 | 5d | start no earlier than 2008-01-21 | 문승연; 이세원 | 80h | 80h | 10 | 10 | 10 | 품질활동수행 | C02-1 1.6.2 | 개별검토Log, 시정조치서 |
| 152 | 4.2.3.3 | Inspection(3차) 조치 계획 수립 및 수행 - 1회 | 5d | 2008-01-28 A | 2008-02-01 A | 151 | 100% | 2008-01-28 | 2008-02-01 | 5d |  | 문승연 [20%]; 이세원 [20%] | 16h | 16h | 2 | 2 | 2 | 품질활동수행 | C02-1 1.6.2 | 시정조치서 |
| 153 | 4.2.3.4 | Inspection(3차) 조치 결과 확인 및 보고 - 1회 | 5d | 2008-02-04 A | 2008-02-13 A | 152 | 100% | 2008-02-04 | 2008-02-13 | 5d |  | 문승연; 이세원 | 80h | 80h | 10 | 10 | 10 | 품질활동수행 | C02-1 1.6.2 | Inspection(3차)결과서 |
| 154 | 4.2.3.5 | Inspection(3차) 계획 수립 및 공지 - 2회 | 3d | 2008-02-11 A | 2008-02-13 A |  | 100% | 2008-02-11 | 2008-02-13 | 3d | start no earlier than 2008-02-14 | 문승연 | 24h | 24h | 3 | 3 | 3 | 품질활동수행 | C02-1 1.6.2 | Inspection(3차)계획서 |
| 155 | 4.2.3.6 | Inspection(3차) 실시 및 결과 통보 - 2회 | 5d | 2008-02-18 A | 2008-02-22 A |  | 100% | 2008-02-18 | 2008-02-22 | 5d | start no earlier than 2008-02-18 | 문승연; 이세원 | 80h | 80h | 10 | 10 | 10 | 품질활동수행 | C02-1 1.6.2 | 개별검토Log, 시정조치서 |
| 156 | 4.2.3.7 | Inspection(3차) 조치 계획 수립 및 수행 - 2회 | 5d | 2008-02-25 A | 2008-02-29 A | 155 | 100% | 2008-02-25 | 2008-02-29 | 5d |  | 문승연 [20%]; 이세원 [20%] | 16h | 16h | 2 | 2 | 2 | 품질활동수행 | C02-1 1.6.2 | 시정조치서 |
| 157 | 4.2.3.8 | Inspection(3차) 조치 결과 확인 및 보고 - 2회 | 5d | 2008-03-03 A | 2008-03-07 A | 156 | 100% | 2008-03-03 | 2008-03-07 | 5d |  | 문승연; 이세원 | 80h | 80h | 10 | 10 | 10 | 품질활동수행 | C02-1 1.6.2 | Inspection(3차)결과서 |
| 158 | 4.2.3.9 | Inspection(3차) 계획 수립 및 공지 - 3회 | 8d | 2008-03-10 A | 2008-03-19 A |  | 100% | 2008-03-10 | 2008-03-19 | 8d | start no earlier than 2008-03-10 | 문승연 [20%]; 이세원 [20%] | 25.6h | 25.6h | 3.2 | 3.2 | 3.2 | 품질활동수행 | C02-1 1.6.2 | Inspection(3차)계획서 |
| 159 | 4.2.3.10 | Inspection(3회) 실시 및 결과 통보 - 3회 | 5d | 2008-03-17 A | 2008-03-21 A |  | 100% | 2008-03-17 | 2008-03-21 | 5d | start no earlier than 2008-03-17 | 문승연; 이세원 | 80h | 80h | 10 | 10 | 10 | 품질활동수행 | C02-1 1.6.2 | 개별검토Log, 시정조치서 |
| 160 | 4.2.3.11 | Inspection(3회) 조치 계획 수립 및 수행 - 3회 | 3d | 2008-03-21 A | 2008-03-25 A | 159 | 100% | 2008-03-21 | 2008-03-25 | 3d |  | 문승연 [20%]; 이세원 [20%] | 9.6h | 9.6h | 1.2 | 1.2 | 1.2 | 품질활동수행 | C02-1 1.6.2 | 시정조치서 |
| 161 | 4.2.3.12 | Inspection(3회) 조치 결과 확인 및 보고 - 3회 | 5d | 2008-03-31 A | 2008-04-04 A | 160 | 100% | 2008-03-31 | 2008-04-04 | 5d |  | 문승연; 이세원 | 80h | 80h | 10 | 10 | 10 | 품질활동수행 | C02-1 1.6.2 | Inspection(3차)결과서 |
| 162 | 4.2.3.13 | Inspection(3회) 계획 수립 및 공지 - 4회 | 4d | 2008-04-07 A | 2008-04-10 A |  | 100% | 2008-04-07 | 2008-04-10 | 4d | start no earlier than 2008-04-07 | 문승연 [40%] | 12.8h | 12.8h | 1.6 | 1.6 | 1.6 | 품질활동수행 | C02-1 1.6.2 | Inspection(3차)계획서 |
| 163 | 4.2.3.14 | Inspection(3회) 실시 및 결과 통보 - 4회 | 5d | 2008-04-14 A | 2008-04-18 A |  | 100% | 2008-04-14 | 2008-04-18 | 5d | start no earlier than 2008-04-14 | 문승연; 이세원 | 80h | 80h | 10 | 10 | 10 | 품질활동수행 | C02-1 1.6.2 | 개별검토Log, 시정조치서 |
| 164 | 4.2.3.15 | Inspection(3회) 조치 계획 수립 및 수행 - 4회 | 5d | 2008-04-21 A | 2008-04-25 A | 163 | 100% | 2008-04-21 | 2008-04-25 | 5d |  | 문승연 [20%]; 이세원 [20%] | 16h | 16h | 2 | 2 | 2 | 품질활동수행 | C02-1 1.6.2 | 시정조치서 |
| 165 | 4.2.3.16 | Inspection(3회) 조치 결과 확인 및 보고 - 4회 | 4d | 2008-04-28 A | 2008-05-02 A | 164 | 100% | 2008-04-28 | 2008-05-02 | 4d |  | 문승연; 이세원 | 64h | 64h | 8 | 8 | 8 | 품질활동수행 | C02-1 1.6.2 | Inspection(3차)결과서 |
| 166 | 4.2.3.17 | Inspection(3회) 계획 수립 및 공지 - 5회 | 3d | 2008-05-06 A | 2008-05-08 A |  | 100% | 2008-05-06 | 2008-05-08 | 3d | start no earlier than 2008-05-06 | 문승연 [50%] | 12h | 12h | 1.5 | 1.5 | 1.5 | 품질활동수행 | C02-1 1.6.2 | Inspection(3차)계획서 |
| 167 | 4.2.3.18 | Inspection(3회) 실시 및 결과 통보 - 5회 | 4d | 2008-05-13 A | 2008-05-16 A |  | 100% | 2008-05-13 | 2008-05-16 | 4d | start no earlier than 2008-05-13 | 문승연; 이세원 | 64h | 64h | 8 | 8 | 8 | 품질활동수행 | C02-1 1.6.2 | 개별검토Log, 시정조치서 |
| 168 | 4.2.3.19 | Inspection(3회) 조치 계획 수립 및 수행 - 5회 | 5d | 2008-05-19 A | 2008-05-23 A | 167 | 100% | 2008-05-19 | 2008-05-23 | 5d |  | 문승연 [20%]; 이세원 [20%] | 16h | 16h | 2 | 2 | 2 | 품질활동수행 | C02-1 1.6.2 | 시정조치서 |
| 169 | 4.2.3.20 | Inspection(3회) 조치 결과 확인 및 보고 - 5회 | 5d | 2008-05-26 A | 2008-05-30 A | 168 | 100% | 2008-05-26 | 2008-05-30 | 5d |  | 문승연; 이세원 | 80h | 80h | 10 | 10 | 10 | 품질활동수행 | C02-1 1.6.2 | Inspection(3차)결과서 |

| ID | WBS | Task | Duration | Start | Finish | Predecessors | Complete | Remaining | Baseline start | Baseline finish | Baseline duration | Total slack | Constraint | Resources | Work | Actual work | Cost | Baseline cost | Actual cost | Text20 | Text26 | Text30 |
| --- | --- | --- | --- | --- | --- | --- | --- | --- | --- | --- | --- | --- | --- | --- | --- | --- | --- | --- | --- | --- | --- | --- |
| 170 | 4.3 | **개발단계형상관리활동수행** | 3d | 2008-06-26 A | 2008-06-30 A |  | 100% |  | 2008-06-26 | 2008-06-30 | 3d |  |  |  | 12h | 12h | 1.5 | 1.5 | 1.5 | 형상관리활동수행 | C02-1 1.6.3 |  |
| 171 | 4.3.1 | 단위테스트 베이스라인감사 | 3d | 2008-06-26 A | 2008-06-30 A |  | 100% |  | 2008-06-26 | 2008-06-30 | 3d |  | start no earlier than 2008-06-26 | 문승연 [50%] | 12h | 12h | 1.5 | 1.5 | 1.5 | 형상관리활동수행 | C02-1 1.6.3 | 형상감사보고서 |
| 172 | 4.4 | **개발단계완료** | 17d | 2008-06-02 A | 2008-06-25 A |  | 100% |  | 2008-06-02 | 2008-06-25 | 17d |  |  |  | 160h | 160h | 20 | 20 | 20 | 단계완료 | C02-1 1.6.8 |  |
| 173 | 4.4.1 | **개발단계결과정리** | 17d | 2008-06-02 A | 2008-06-25 A |  | 100% |  | 2008-06-02 | 2008-06-25 | 17d |  |  |  | 160h | 160h | 20 | 20 | 20 | 단계완료 | C02-1 1.6.8 |  |
| 174 | 4.4.1.1 | 개발 요구사항추적표 매핑 및 결과 분석 | 17d | 2008-06-02 A | 2008-06-25 A |  | 100% |  | 2008-06-02 | 2008-06-25 | 17d |  | start no earlier than 2008-06-02 | 문승연 [50%]; 이세원 [50%] | 136h | 136h | 17 | 17 | 17 | 단계완료 | C02-1 1.6.8 | 요구사항추적표(개발) |
| 175 | 4.4.1.2 | 개발 단계 산출물 점검 | 3d | 2008-06-11 A | 2008-06-13 A |  | 100% |  | 2008-06-11 | 2008-06-13 | 3d |  | start no earlier than 2008-06-09 | 문승연 [50%]; 이세원 [50%] | 24h | 24h | 3 | 3 | 3 | 단계완료 | C02-1 1.6.8 | 개발단계점검결과 |
| 176 | 5 | **통합테스트** | 95d | 2008-05-19 A | 2008-10-02 |  | 94% | 5.41d | 2008-05-19 | 2008-10-02 | 95d | 120d |  |  | 729.6h | 701.6h | 91.2 | 91.2 | 87.7 | 개발 | C02-1 1.4 |  |
| 177 | 5.1 | **통합테스트단계착수** | 12d | 2008-05-19 A | 2008-06-03 A |  | 100% |  | 2008-05-19 | 2008-06-03 | 12d |  |  |  | 121.6h | 121.6h | 15.2 | 15.2 | 15.2 | 단계착수 | C02-1 1.6.1 |  |
| 178 | 5.1.1 | 통합테스트 단계 계획 검토 및 수정 | 5d | 2008-05-19 A | 2008-05-23 A |  | 100% |  | 2008-05-19 | 2008-05-23 | 5d |  | start no earlier than 2008-05-19 | 문승연 [40%] | 16h | 16h | 2 | 2 | 2 | 단계착수 | C02-1 1.6.1 | WBS(수정) |
| 179 | 5.1.2 | 통합테스트 SPM 검토 및 수정 | 5d | 2008-05-19 A | 2008-05-23 A |  | 100% |  | 2008-05-19 | 2008-05-23 | 5d |  | start no earlier than 2008-05-19 | 문승연; 이세원 | 80h | 80h | 10 | 10 | 10 | 단계착수 | C02-1 1.6.1 | 표준 및 절차매뉴얼(공정) |
| 180 | 5.1.3 | **오리엔테이션(4차)** | 7d | 2008-05-26 A | 2008-06-03 A |  | 100% |  | 2008-05-26 | 2008-06-03 | 7d |  |  |  | 25.6h | 25.6h | 3.2 | 3.2 | 3.2 | 단계착수 | C02-1 1.6.1 |  |
| 181 | 5.1.3.1 | 오리엔테이션(4차) 자료 작성 | 3d | 2008-05-26 A | 2008-05-28 A |  | 100% |  | 2008-05-26 | 2008-05-28 | 3d |  | start no earlier than 2008-05-26 | 문승연 | 24h | 24h | 3 | 3 | 3 | 단계착수 | C02-1 1.6.1 | 오리엔테이션(4차) 자료 |
| 182 | 5.1.3.2 | 오리엔테이션(4차) 실시 | 1d | 2008-06-03 A | 2008-06-03 A | 181 | 100% |  | 2008-06-03 | 2008-06-03 | 1d |  |  | 문승연 [20%] | 1.6h | 1.6h | 0.2 | 0.2 | 0.2 | 단계착수 | C02-1 1.6.1 | 교육결과서, 참석자명단 |
| 183 | 5.2 | **통합테스트단계품질활동수행** | 57d | 2008-06-02 A | 2008-08-22 A |  | 100% |  | 2008-06-02 | 2008-08-22 | 57d |  |  |  | 480h | 480h | 60 | 60 | 60 | 품질활동수행 | C02-1 1.6.2 |  |
| 184 | 5.2.1 | **QAO심사(4차)실시** | 19d | 2008-06-02 A | 2008-06-27 A |  | 100% |  | 2008-06-02 | 2008-06-27 | 19d |  |  |  | 152h | 152h | 19 | 19 | 19 | 품질활동수행 | C02-1 1.6.2 |  |
| 185 | 5.2.1.1 | QAO심사(4차) 계획 수립 및 공지 | 4d | 2008-06-02 A | 2008-06-05 A |  | 100% |  | 2008-06-02 | 2008-06-05 | 4d |  | start no earlier than 2008-06-02 | 문승연 [50%] | 16h | 16h | 2 | 2 | 2 | 품질활동수행 | C02-1 1.6.2 | QAO심사(4차)계획서 |
| 186 | 5.2.1.2 | QAO심사(4차) 실시 및 결과 통보 | 5d | 2008-06-09 A | 2008-06-13 A |  | 100% |  | 2008-06-09 | 2008-06-13 | 5d |  | start no earlier than 2008-06-09 | 문승연; 이세원 | 80h | 80h | 10 | 10 | 10 | 품질활동수행 | C02-1 1.6.2 | 시정조치서 |
| 187 | 5.2.1.3 | QAO심사(4차) 조치 계획 취합 | 5d | 2008-06-16 A | 2008-06-20 A | 186 | 100% |  | 2008-06-16 | 2008-06-20 | 5d |  |  | 문승연 [20%]; 이세원 [20%] | 16h | 16h | 2 | 2 | 2 | 품질활동수행 | C02-1 1.6.2 | 시정조치서 |
| 188 | 5.2.1.4 | QAO심사(4차) 조치 결과 확인 및 보고 | 5d | 2008-06-23 A | 2008-06-27 A | 187 | 100% |  | 2008-06-23 | 2008-06-27 | 5d |  |  | 문승연 [50%]; 이세원 [50%] | 40h | 40h | 5 | 5 | 5 | 품질활동수행 | C02-1 1.6.2 | QAO심사(4차)결과서 |
| 189 | 5.2.2 | **Inspection(4차)실시** | 19d | 2008-06-30 A | 2008-07-25 A |  | 100% |  | 2008-06-30 | 2008-07-25 | 19d |  |  |  | 216h | 216h | 27 | 27 | 27 | 품질활동수행 | C02-1 1.6.2 |  |
| 190 | 5.2.2.1 | Inspection(4차) 계획 수립 및 공지 | 5d | 2008-06-30 A | 2008-07-04 A |  | 100% |  | 2008-06-30 | 2008-07-04 | 5d |  | start no earlier than 2008-06-30 | 문승연 [40%] | 16h | 16h | 2 | 2 | 2 | 품질활동수행 | C02-1 1.6.2 | Inspection(4차)계획서 |
| 191 | 5.2.2.2 | Inspection(4차) 실시 및 결과 통보 | 5d | 2008-07-07 A | 2008-07-11 A |  | 100% |  | 2008-07-07 | 2008-07-11 | 5d |  | start no earlier than 2008-07-07 | 문승연 [40%]; 이세원; 김승화 | 96h | 96h | 12 | 12 | 12 | 품질활동수행 | C02-1 1.6.2 | 개별검토Log, 시정조치서 |
| 192 | 5.2.2.3 | Inspection(4차) 조치 계획 수립 및 수행 | 4d | 2008-07-14 A | 2008-07-18 A | 191 | 100% |  | 2008-07-14 | 2008-07-18 | 4d |  |  | 이세원; 김승화 | 64h | 64h | 8 | 8 | 8 | 품질활동수행 | C02-1 1.6.2 | 시정조치서 |
| 193 | 5.2.2.4 | Inspection(4차) 조치 결과 확인 및 보고 | 5d | 2008-07-21 A | 2008-07-25 A | 192 | 100% |  | 2008-07-21 | 2008-07-25 | 5d |  |  | 김승화 | 40h | 40h | 5 | 5 | 5 | 품질활동수행 | C02-1 1.6.2 | Inspection(4차)결과서 |

| ID | WBS | Task | Duration | Start | Finish | Predecessors | Complete | Remaining | Baseline start | Baseline finish | Baseline duration | Total slack | Free slack | Constraint | Resources | Work | Actual work | Cost | Baseline cost | Actual cost | Text20 | Text26 | Text30 |
| --- | --- | --- | --- | --- | --- | --- | --- | --- | --- | --- | --- | --- | --- | --- | --- | --- | --- | --- | --- | --- | --- | --- | --- |
| 194 | 5.2.3 | **프로세스심사(4차)실시** | 14d | 2008-08-04 A | 2008-08-22 A |  | 100% |  | 2008-08-04 | 2008-08-22 | 14d |  |  |  |  | 112h | 112h | 14 | 14 | 14 | 품질활동수행 | C02-1 1.6.2 |  |
| 195 | 5.2.3.1 | 프로세스심사(4차) 준비 | 5d | 2008-08-04 A | 2008-08-08 A |  | 100% |  | 2008-08-04 | 2008-08-08 | 5d |  |  | start no earlier than 2008-08-04 | 김승화 | 40h | 40h | 5 | 5 | 5 | 품질활동수행 | C02-1 1.6.2 | 프로세스심사(4차)계획서, GB활동보고서(Optimize) |
| 196 | 5.2.3.2 | 프로세스심사(4차) 대응 및 결과 통보 | 4d | 2008-08-11 A | 2008-08-14 A |  | 100% |  | 2008-08-11 | 2008-08-14 | 4d |  |  | start no earlier than 2008-08-11 | 김승화 | 32h | 32h | 4 | 4 | 4 | 품질활동수행 | C02-1 1.6.2 | GB활동체크리스트(Optimize) |
| 197 | 5.2.3.3 | 프로세스심사(4차) 조치 계획 수립 및 수행 | 2d | 2008-08-18 A | 2008-08-19 A | 196 | 100% |  | 2008-08-18 | 2008-08-19 | 2d |  |  |  | 김승화 | 16h | 16h | 2 | 2 | 2 | 품질활동수행 | C02-1 1.6.2 | GB활동체크리스트(Optimize) |
| 198 | 5.2.3.4 | 프로세스심사(4차) 조치 결과 확인 및 보고 | 3d | 2008-08-20 A | 2008-08-22 A | 197 | 100% |  | 2008-08-20 | 2008-08-22 | 3d |  |  |  | 김승화 | 24h | 24h | 3 | 3 | 3 | 품질활동수행 | C02-1 1.6.2 | 프로세스심사(4차)결과서, GB활동보고서(Optimize) |
| 199 | 5.3 | **통합테스트단계형상관리활동수행** | 4d | 2008-09-29 | 2008-10-02 |  |  |  | 2008-09-29 | 2008-10-02 | 4d | 120d |  |  |  | 24h |  | 3 | 3 |  | 품질활동수행 | C02-1 1.6.2 |  |
| 200 | 5.3.1 | 통합테스트 베이스라인감사 | 4d | 2008-09-29 | 2008-10-02 |  |  |  | 2008-09-29 | 2008-10-02 | 4d | 120d |  | start no earlier than 2008-09-29 | 김승화 [75%] | 24h |  | 3 | 3 |  | 품질활동수행 | C02-1 1.6.2 | 형상감사보고서 |
| 201 | 5.4 | **통합테스트단계완료** | 9d | 2008-09-16 A | 2008-09-26 |  | 94% | 0.5d | 2008-09-16 | 2008-09-26 | 9d | 124d |  |  |  | 104h | 100h | 13 | 13 | 12.5 | 단계완료 | C02-1 1.6.8 |  |
| 202 | 5.4.1 | **통합테스트단계결과정리** | 9d | 2008-09-16 A | 2008-09-26 |  | 94% | 0.5d | 2008-09-16 | 2008-09-26 | 9d | 124d |  |  |  | 104h | 100h | 13 | 13 | 12.5 | 단계완료 | C02-1 1.6.8 |  |
| 203 | 5.4.1.1 | 통합테스트 요구사항추적표 매핑 및 결과분석 | 4d | 2008-09-16 A | 2008-09-19 A |  | 100% |  | 2008-09-16 | 2008-09-19 | 4d |  |  | start no earlier than 2008-09-16 | 김승화; QAO1 | 64h | 64h | 8 | 8 | 8 | 단계완료 | C02-1 1.6.8 | 요구사항추적표(통합테스트) |
| 204 | 5.4.1.2 | 통합테스트 단계 산출물 점검 | 5d | 2008-09-22 A | 2008-09-26 |  | 90% | 0.5d | 2008-09-22 | 2008-09-26 | 5d | 124d |  | start no earlier than 2008-09-22 | 김승화 | 40h | 36h | 5 | 5 | 4.5 | 단계완료 | C02-1 1.6.8 | 통합테스트단계점검결과 |
| 205 | 6 | **영업점테스트** | 159d | 2008-07-07 A | 2009-02-20 |  | 37% | 100.3d | 2008-07-07 | 2009-02-20 | 159d | 22d |  |  |  | 1713.2h | 833.2h | 214.15 | 177.4 | 104.15 | 개발 | C02-1 1.4 |  |
| 206 | 6.1 | **영업점테스트단계착수** | 24d | 2008-07-07 A | 2008-08-08 A |  | 100% |  | 2008-07-07 | 2008-08-08 | 24d |  |  |  |  | 139.2h | 139.2h | 17.4 | 17.4 | 17.4 | 단계착수 | C02-1 1.6.1 |  |
| 207 | 6.1.1 | 영업점테스트 단계 계획 검토 및 수정 | 2d | 2008-07-07 A | 2008-07-08 A |  | 100% |  | 2008-07-07 | 2008-07-08 | 2d |  |  | start no earlier than 2008-07-07 | 문승연; 김승화 [20%] | 19.2h | 19.2h | 2.4 | 2.4 | 2.4 | 단계착수 | C02-1 1.6.1 | WBS(수정) |
| 208 | 6.1.2 | 영업점테스트 SPM 검토 및 수정 | 4d | 2008-07-07 A | 2008-07-10 A |  | 100% |  | 2008-07-07 | 2008-07-10 | 4d |  |  | start no earlier than 2008-07-14 | 문승연; 김승화 [50%]; 이세원 [50%] | 64h | 64h | 8 | 8 | 8 | 단계착수 | C02-1 1.6.1 | 표준 및 절차매뉴얼(공정) |
| 209 | 6.1.3 | **오리엔테이션(5차)** | 10d | 2008-07-28 A | 2008-08-08 A |  | 100% |  | 2008-07-28 | 2008-08-08 | 10d |  |  |  |  | 56h | 56h | 7 | 7 | 7 | 단계착수 | C02-1 1.6.1 |  |
| 210 | 6.1.3.1 | 오리엔테이션(5차) 자료 작성 | 4d | 2008-07-28 A | 2008-07-31 A |  | 100% |  | 2008-07-28 | 2008-07-31 | 4d |  |  | start no earlier than 2008-07-28 | 김승화 | 32h | 32h | 4 | 4 | 4 | 단계착수 | C02-1 1.6.1 | 오리엔테이션(5차) 자료 |
| 211 | 6.1.3.2 | 오리엔테이션(5차) 실시 | 6d | 2008-08-01 A | 2008-08-08 A | 210 | 100% |  | 2008-08-01 | 2008-08-08 | 6d |  |  |  | 김승화 [50%] | 24h | 24h | 3 | 3 | 3 | 단계착수 | C02-1 1.6.1 | 교육결과서, 참석자명단 |
| 212 | 6.2 | **영업점테스트단계품질활동수행** | 126d | 2008-08-25 A | 2009-02-20 |  | 39% | 76.39d | 2008-08-25 | 2009-02-20 | 126d | 22d |  |  |  | 1310h | 694h | 163.75 | 127 | 86.75 | 품질활동수행 | C02-1 1.6.2 |  |
| 213 | 6.2.1 | **QAO심사(5차)실시** | 67.5d | 2008-08-25 A | 2008-11-28 |  | 72% | 18.62d | 2008-08-25 | 2008-11-21 | 63d | 80.5d |  |  |  | 926h | 694h | 115.75 | 79 | 86.75 | 품질활동수행 | C02-1 1.6.2 |  |
| 214 | 6.2.1.1 | QAO심사(5차) 계획 수립 및 공지 - 1회 | 6d | 2008-08-25 A | 2008-09-01 A |  | 100% |  | 2008-08-25 | 2008-08-29 | 5d |  |  | finish no earlier than 2008-09-01 | 김승화 | 48h | 48h | 6 | 5 | 6 | 품질활동수행 | C02-1 1.6.2 | QAO심사(5차)계획서 |
| 215 | 6.2.1.2 | QAO심사(5차) 실시 및 결과 통보 - 1회 | 4d | 2008-09-08 A | 2008-09-12 A |  | 100% |  | 2008-09-01 | 2008-09-05 | 5d |  |  | finish no earlier than 2008-09-12 | 김승화; QAO1; QAO2 | 96h | 96h | 12 | 15 | 12 | 품질활동수행 | C02-1 1.6.2 | 시정조치서 |
| 216 | 6.2.1.3 | QAO심사(5차) 조치 계획 취합 - 1회 | 3d | 2008-09-16 A | 2008-09-19 A | 215 | 100% |  | 2008-09-08 | 2008-09-12 | 5d |  |  | finish no earlier than 2008-09-19 | 김승화 | 24h | 24h | 3 | 5 | 3 | 품질활동수행 | C02-1 1.6.2 | 시정조치서 |
| 217 | 6.2.1.4 | QAO심사(5차) 조치 결과 확인 및 보고 - 1회 | 14d | 2008-09-22 A | 2008-10-10 A | 216 | 100% |  | 2008-09-16 | 2008-09-19 | 4d |  |  | finish no earlier than 2008-10-10 | 김승화 [50%]; QAO1 | 168h | 168h | 21 | 6 | 21 | 품질활동수행 | C02-1 1.6.2 | QAO심사(5차)결과서 |
| 218 | 6.2.1.5 | QAO심사(5차) 계획 수립 및 공지 - 2회 | 5d | 2008-10-06 A | 2008-10-10 A |  | 100% |  | 2008-09-29 | 2008-10-02 | 4d |  |  | start no earlier than 2008-10-06 | 김승화 [75%] | 30h | 30h | 3.75 | 3 | 3.75 | 품질활동수행 | C02-1 1.6.2 | QAO심사(5차)계획서 |
| 219 | 6.2.1.6 | QAO심사(5차) 실시 및 결과 통보 - 2회 | 10d | 2008-10-13 A | 2008-10-24 A |  | 100% |  | 2008-10-06 | 2008-10-10 | 5d |  |  | start no earlier than 2008-10-13 | 김승화; QAO1 | 160h | 160h | 20 | 10 | 20 | 품질활동수행 | C02-1 1.6.2 | 시정조치서 |
| 220 | 6.2.1.7 | QAO심사(5차) 조치 계획 취합 - 2회 | 20d | 2008-10-27 A | 2008-11-21 A | 219 | 100% |  | 2008-10-13 | 2008-10-17 | 5d |  |  | finish no earlier than 2008-11-21 | 김승화 | 160h | 160h | 20 | 5 | 20 | 품질활동수행 | C02-1 1.6.2 | 시정조치서 |
| 221 | 6.2.1.8 | QAO심사(5차) 조치 결과 확인 및 보고 - 2회 | 5d | 2008-11-03 A | 2008-11-28 | 220 | 20% | 4d | 2008-10-20 | 2008-10-24 | 5d | 80.5d |  |  | 김승화 | 40h | 8h | 5 | 5 | 1 | 품질활동수행 | C02-1 1.6.2 | QAO심사(5차)결과서 |
| 222 | 6.2.1.9 | QAO심사(5차) 계획 수립 및 공지 - 3회 | 5d | 2008-10-27 | 2008-10-31 |  |  |  | 2008-10-27 | 2008-10-31 | 5d | 100d |  | start no earlier than 2008-10-27 | 김승화 | 40h |  | 5 | 5 |  | 품질활동수행 | C02-1 1.6.2 | QAO심사(5차)계획서 |
| 223 | 6.2.1.10 | QAO심사(5차) 실시 및 결과 통보 - 3회 | 5d | 2008-11-03 | 2008-11-07 |  |  |  | 2008-11-03 | 2008-11-07 | 5d | 85d | 0d | start no earlier than 2008-11-03 | 김승화; QAO1 | 80h |  | 10 | 10 |  | 품질활동수행 | C02-1 1.6.2 | 시정조치서 |
| 224 | 6.2.1.11 | QAO심사(5차) 조치 계획 취합 - 3회 | 5d | 2008-11-10 | 2008-11-14 | 223 |  |  | 2008-11-10 | 2008-11-14 | 5d | 85d | 0d | start no earlier than 2008-11-03 | 김승화 | 40h |  | 5 | 5 |  | 품질활동수행 | C02-1 1.6.2 | 시정조치서 |
| 225 | 6.2.1.12 | QAO심사(5차) 조치 결과 확인 및 보고 - 3회 | 5d | 2008-11-17 | 2008-11-21 | 224 |  |  | 2008-11-17 | 2008-11-21 | 5d | 85d |  |  | 김승화 | 40h |  | 5 | 5 |  | 품질활동수행 | C02-1 1.6.2 | QAO심사(5차)결과서 |

Notes:
- 218: Inspection(5차) - 1회로 대체함
- 219: Inspection(5차) - 1회로 대체함
- 220: Inspection(5차) - 1회로 대체함
- 221: Inspection(5차) - 1회로 대체함

| ID | WBS | Task | Duration | Start | Finish | Predecessors | Baseline start | Baseline finish | Baseline duration | Total slack | Free slack | Constraint | Resources | Work | Cost | Baseline cost | Text20 | Text26 | Text30 |
| --- | --- | --- | --- | --- | --- | --- | --- | --- | --- | --- | --- | --- | --- | --- | --- | --- | --- | --- | --- |
| 226 | 6.2.2 | **Inspection(5차)실시** | 20d | 2008-11-24 | 2008-12-19 |  | 2008-11-24 | 2008-12-19 | 20d | 65d |  |  |  | 144h | 18 | 18 | 품질활동수행 | C02-1 1.6.2 |  |
| 227 | 6.2.2.1 | Inspection(5차) 계획 수립 및 공지 | 5d | 2008-11-24 | 2008-11-28 |  | 2008-11-24 | 2008-11-28 | 5d | 80d |  | start no earlier than 2008-11-24 | 김승화 | 40h | 5 | 5 | 품질활동수행 | C02-1 1.6.2 | Inspection(5차)계획서 |
| 228 | 6.2.2.2 | Inspection(5차) 실시 및 결과 통보 | 5d | 2008-12-01 | 2008-12-05 |  | 2008-12-01 | 2008-12-05 | 5d | 65d | 0d | start no earlier than 2008-12-01 | 김승화 | 40h | 5 | 5 | 품질활동수행 | C02-1 1.6.2 | 개별검토Log, 시정조치서 |
| 229 | 6.2.2.3 | Inspection(5차) 조치 계획 수립 및 수행 | 5d | 2008-12-08 | 2008-12-12 | 228 | 2008-12-08 | 2008-12-12 | 5d | 65d | 0d |  | 김승화 [60%] | 24h | 3 | 3 | 품질활동수행 | C02-1 1.6.2 | 시정조치서 |
| 230 | 6.2.2.4 | Inspection(5차) 조치 결과 확인 및 보고 | 5d | 2008-12-15 | 2008-12-19 | 229 | 2008-12-15 | 2008-12-19 | 5d | 65d |  |  | 김승화 | 40h | 5 | 5 | 품질활동수행 | C02-1 1.6.2 | Inspection(5차)결과서 |
| 231 | 6.2.3 | **프로세스심사(5차)실시** | 20d | 2009-01-26 | 2009-02-20 |  | 2009-01-26 | 2009-02-20 | 20d | 22d |  |  |  | 88h | 11 | 11 | 품질활동수행 | C02-1 1.6.2 |  |
| 232 | 6.2.3.1 | 프로세스심사(5차) 준비 | 5d | 2009-01-26 | 2009-01-30 |  | 2009-01-26 | 2009-01-30 | 5d | 37d |  | start no earlier than 2009-01-26 | 김승화 [40%] | 16h | 2 | 2 | 품질활동수행 | C02-1 1.6.2 | 프로세스심사(5차)계획서, GB활동보고서(Verify) |
| 233 | 6.2.3.2 | 프로세스심사(5차) 대응 및 결과 통보 | 5d | 2009-02-02 | 2009-02-06 |  | 2009-02-02 | 2009-02-06 | 5d | 22d | 0d | start no earlier than 2009-02-02 | 김승화 [40%] | 16h | 2 | 2 | 품질활동수행 | C02-1 1.6.2 | GB활동체크리스트(Verify) |
| 234 | 6.2.3.3 | 프로세스심사(5차) 조치 계획 수립 및 수행 | 5d | 2009-02-09 | 2009-02-13 | 233 | 2009-02-09 | 2009-02-13 | 5d | 22d | 0d |  | 김승화 [40%] | 16h | 2 | 2 | 품질활동수행 | C02-1 1.6.2 | GB활동체크리스트(Verify) |
| 235 | 6.2.3.4 | 프로세스심사(5차) 조치 결과 확인 및 보고 | 5d | 2009-02-16 | 2009-02-20 | 234 | 2009-02-16 | 2009-02-20 | 5d | 22d |  |  | 김승화 | 40h | 5 | 5 | 품질활동수행 | C02-1 1.6.2 | 프로세스심사(5차)결과서, GB활동보고서(Verify) |
| 236 | 6.2.4 | **제품검사실시** | 38d | 2008-12-01 | 2009-01-23 |  | 2008-12-01 | 2009-01-23 | 38d | 42d |  |  |  | 152h | 19 | 19 | 품질활동수행 | C02-1 1.6.2 |  |
| 237 | 6.2.4.1 | **예비제품검사** | 19d | 2008-12-01 | 2008-12-26 |  | 2008-12-01 | 2008-12-26 | 19d | 61d |  |  |  | 80h | 10 | 10 | 품질활동수행 | C02-1 1.6.2 |  |
| 238 | 6.2.4.1.1 | 예비제품검사 계획 공지 | 5d | 2008-12-01 | 2008-12-05 |  | 2008-12-01 | 2008-12-05 | 5d | 75d |  | start no earlier than 2008-12-01 | 김승화 [40%] | 16h | 2 | 2 | 품질활동수행 | C02-1 1.6.2 | 예비제품검사계획서 |
| 239 | 6.2.4.1.2 | 예비제품검사 대응 | 5d | 2008-12-08 | 2008-12-12 |  | 2008-12-08 | 2008-12-12 | 5d | 61d | 0d | start no earlier than 2008-12-08 | 김승화 [40%] | 16h | 2 | 2 | 품질활동수행 | C02-1 1.6.2 | 예비제품검사보고서 |
| 240 | 6.2.4.1.3 | 예비제품검사 조치 계획 취합 | 5d | 2008-12-15 | 2008-12-19 | 239 | 2008-12-15 | 2008-12-19 | 5d | 61d | 0d |  | 김승화 [40%] | 16h | 2 | 2 | 품질활동수행 | C02-1 1.6.2 | 결함조치계획/결과서 |
| 241 | 6.2.4.1.4 | 예비제품검사 조치 결과 확인 및 보고 | 4d | 2008-12-22 | 2008-12-26 | 240 | 2008-12-22 | 2008-12-26 | 4d | 61d |  |  | 김승화 | 32h | 4 | 4 | 품질활동수행 | C02-1 1.6.2 | 결함조치계획/결과서 |
| 242 | 6.2.4.2 | **제품검사** | 19d | 2008-12-29 | 2009-01-23 |  | 2008-12-29 | 2009-01-23 | 19d | 42d |  |  |  | 72h | 9 | 9 | 품질활동수행 | C02-1 1.6.2 |  |
| 243 | 6.2.4.2.1 | 제품검사 계획 공지 | 4d | 2008-12-29 | 2009-01-02 |  | 2008-12-29 | 2009-01-02 | 4d | 57d |  | start no earlier than 2008-12-29 | 김승화 [50%] | 16h | 2 | 2 | 품질활동수행 | C02-1 1.6.2 | 제품검사계획서 |
| 244 | 6.2.4.2.2 | 제품검사 대응 | 5d | 2009-01-12 | 2009-01-16 |  | 2009-01-12 | 2009-01-16 | 5d | 42d | 0d | start no earlier than 2009-01-12 | 김승화 [40%] | 16h | 2 | 2 | 품질활동수행 | C02-1 1.6.2 | 제품검사보고서 |
| 245 | 6.2.4.2.3 | 제품검사 조치 계획 취합 | 2d | 2009-01-19 | 2009-01-20 | 244 | 2009-01-19 | 2009-01-20 | 2d | 42d | 0d |  | 김승화 | 16h | 2 | 2 | 품질활동수행 | C02-1 1.6.2 | 결함조치계획/결과서 |
| 246 | 6.2.4.2.4 | 제품검사 조치 결과 확인 및 보고 | 3d | 2009-01-21 | 2009-01-23 | 245 | 2009-01-21 | 2009-01-23 | 3d | 42d |  |  | 김승화 | 24h | 3 | 3 | 품질활동수행 | C02-1 1.6.2 | 결함조치계획/결과서 |
| 247 | 6.3 | **영업점테스트단계형상관리활동수행** | 5d | 2009-02-02 | 2009-02-06 |  | 2009-02-02 | 2009-02-06 | 5d | 32d |  |  |  | 40h | 5 | 5 | 품질활동수행 | C02-1 1.6.2 |  |
| 248 | 6.3.1 | 영업점테스트 베이스라인감사 | 5d | 2009-02-02 | 2009-02-06 |  | 2009-02-02 | 2009-02-06 | 5d | 32d |  | start no earlier than 2009-02-02 | 김승화 | 40h | 5 | 5 | 품질활동수행 | C02-1 1.6.2 | 형상감사보고서 |
| 249 | 6.4 | **영업점테스트단계완료** | 38d | 2008-12-08 | 2009-01-30 |  | 2008-12-08 | 2009-01-30 | 38d | 37d |  |  |  | 224h | 28 | 28 | 단계완료 | C02-1 1.6.8 |  |
| 250 | 6.4.1 | **영업점테스트단계결과정리** | 20d | 2009-01-05 | 2009-01-30 |  | 2009-01-05 | 2009-01-30 | 20d | 37d |  |  |  | 160h | 20 | 20 | 단계완료 | C02-1 1.6.8 |  |
| 251 | 6.4.1.1 | 최종 요구사항추적표 매핑 및 결과분석 | 10d | 2009-01-05 | 2009-01-16 |  | 2009-01-05 | 2009-01-16 | 10d | 47d |  | start no earlier than 2009-01-05 | 김승화 | 80h | 10 | 10 | 단계완료 | C02-1 1.6.8 | 요구사항추적표 |
| 252 | 6.4.1.2 | 영업점테스트 단계 산출물 점검 | 5d | 2009-01-26 | 2009-01-30 |  | 2009-01-26 | 2009-01-30 | 5d | 37d |  | start no earlier than 2009-01-26 | 김승화; QAO1 | 80h | 10 | 10 | 단계완료 | C02-1 1.6.8 | 영업점테스트단계점검결과 |

Notes:
- 238: 예비제품검사 없이 제품검사를 3주로 늘려 실시함
- 239: 예비제품검사 없이 제품검사를 3주로 늘려 실시함
- 240: 예비제품검사 없이 제품검사를 3주로 늘려 실시함
- 241: 예비제품검사 없이 제품검사를 3주로 늘려 실시함

| ID | WBS | Task | Duration | Start | Finish | Predecessors | Baseline start | Baseline finish | Baseline duration | Total slack | Free slack | Constraint | Resources | Work | Cost | Baseline cost | Text20 | Text26 | Text30 |
| --- | --- | --- | --- | --- | --- | --- | --- | --- | --- | --- | --- | --- | --- | --- | --- | --- | --- | --- | --- |
| 253 | 6.4.2 | **고객검토(3차)실시** | 23d | 2008-12-08 | 2009-01-09 |  | 2008-12-08 | 2009-01-09 | 23d | 52d |  |  |  | 64h | 8 | 8 | 단계완료 | C02-1 1.6.8 |  |
| 254 | 6.4.2.1 | 고객검토(3차) 계획 공지 | 5d | 2008-12-08 | 2008-12-12 |  | 2008-12-08 | 2008-12-12 | 5d | 70d |  | start no earlier than 2008-12-08 | 김승화 [40%] | 16h | 2 | 2 | 단계완료 | C02-1 1.6.8 | 고객검토(3차)계획서 |
| 255 | 6.4.2.2 | 고객검토(3차) 실시 및 결과 취합 | 4d | 2008-12-22 | 2008-12-26 |  | 2008-12-22 | 2008-12-26 | 4d | 52d | 0d | start no earlier than 2008-12-22 | 김승화 [50%] | 16h | 2 | 2 | 단계완료 | C02-1 1.6.8 | 시정조치계획/결과서 |
| 256 | 6.4.2.3 | 고객검토(3차) 조치 계획 취합 | 4d | 2008-12-29 | 2009-01-02 | 255 | 2008-12-29 | 2009-01-02 | 4d | 52d | 0d |  | 김승화 [50%] | 16h | 2 | 2 | 단계완료 | C02-1 1.6.8 | 시정조치계획/결과서 |
| 257 | 6.4.2.4 | 고객검토(3차) 조치 결과 확인 및 보고 | 5d | 2009-01-05 | 2009-01-09 | 256 | 2009-01-05 | 2009-01-09 | 5d | 52d |  |  | 김승화 [40%] | 16h | 2 | 2 | 단계완료 | C02-1 1.6.8 | 고객검토(3차)결과서 |
| 258 | 7 | **종료** | 32d | 2009-02-09 | 2009-03-24 |  | 2009-02-09 | 2009-03-24 | 32d | 0d |  |  |  | 288h | 36 | 36 | 프로젝트 종료 | C02-1 1.7 |  |
| 259 | 7.1 | **최종고객검수** | 32d | 2009-02-09 | 2009-03-24 |  | 2009-02-09 | 2009-03-24 | 32d | 0d |  |  |  | 288h | 36 | 36 | 최종고객 검수 | C02-1 1.7.3 |  |
| 260 | 7.1.1 | **최종검수준비** | 32d | 2009-02-09 | 2009-03-24 |  | 2009-02-09 | 2009-03-24 | 32d | 0d |  |  |  | 288h | 36 | 36 | 최종고객 검수 | C02-1 1.7.3 |  |
| 261 | 7.1.1.1 | 과업대비표 매핑 및 결과분석 | 5d | 2009-02-09 | 2009-02-13 |  | 2009-02-09 | 2009-02-13 | 5d | 27d |  | start no earlier than 2009-02-09 | 김승화 | 40h | 5 | 5 | 최종고객 검수 | C02-1 1.7.3 | 과업대비표 |
| 262 | 7.1.1.2 | 실적규모측정방법교육 | 5d | 2009-02-16 | 2009-02-20 |  | 2009-02-16 | 2009-02-20 | 5d | 22d |  | start no earlier than 2009-02-16 | 김승화 [40%]; QAO1 [40%] | 32h | 4 | 4 | 최종고객 검수 | C02-1 1.7.3 | 기능점수측정가이드 |
| 263 | 7.1.1.3 | 실적규모측정내역 검증 | 5d | 2009-02-23 | 2009-02-27 |  | 2009-02-23 | 2009-02-27 | 5d | 17d |  | start no earlier than 2009-02-23 | 김승화; QAO1 | 80h | 10 | 10 | 최종고객 검수 | C02-1 1.7.3 | 실적규모측정내역서 |
| 264 | 7.1.1.4 | 최종 산출물 점검 | 17d | 2009-03-02 | 2009-03-24 |  | 2009-03-02 | 2009-03-24 | 17d | 0d |  | start no earlier than 2009-03-02 | 김승화 | 136h | 17 | 17 | 최종고객 검수 | C02-1 1.7.3 | 최종 납품 산출물 |
