# 프레임웍

Schedule from MS Project, 2007-04-26 to 2009-03-24, status date 2008-12-03, costs in ₩, A marks actual dates.
HSIC-0600001
�궪�꽦SDS

## Calendars

- 농협신용신시스템: Mon-Fri 08:00-12:00, 13:00-17:00; Sat-Sun off. Exceptions (off unless hours are given): 2007-05-01, 2007-05-24, 2007-06-06, 2007-07-17, 2007-08-15, 2007-09-24 to 2007-09-26, 2007-10-03, 2007-12-25, 2008-01-01, 2008-02-06 to 2008-02-08, 2008-05-01, 2008-05-05, 2008-05-12, 2008-06-06, 2008-07-17, 2008-08-15, 2008-09-15, 2008-10-03, 2008-12-25, 2009-01-01.

## Resources

| Resource | Rate |
| --- | --- |
| 김동겸외7명 | 0.12 |
| 김수창 | 0.12 |
| 김도균 | 0.12 |
| 정현수 | 0.12 |
| 최성환 | 0.12 |
| 하상수 | 0.12 |
| 박종성 | 0.12 |
| 고윤정 | 0.12 |
| 인길식 | 0.12 |
| 김동겸 | 0.12 |
| 정세윤 | 0.12 |
| 오은경 | 0.12 |

## Schedule

| ID | WBS | Task | Duration | Start | Finish | Predecessors | Complete | Baseline start | Baseline finish | Baseline duration | Constraint | Resources | Work | Actual work | Cost | Baseline cost | Actual cost | Text20 | Text26 | Text30 |
| --- | --- | --- | --- | --- | --- | --- | --- | --- | --- | --- | --- | --- | --- | --- | --- | --- | --- | --- | --- | --- |
| 1 | 1 | **분석** | 61d | 2007-04-26 A | 2007-07-25 A |  | 100% | 2007-04-26 | 2007-07-25 | 61d |  |  | 1288h | 1288h | 161 | 161 | 161 | 분석 | C02-1 1.2 |  |
| 2 | 1.1 | **아키텍처 요구사항 정의** | 6d | 2007-04-26 A | 2007-05-04 A |  | 100% | 2007-04-26 | 2007-05-04 | 6d |  |  | 56h | 56h | 7 | 7 | 7 | 요구사항 정의 | C02-1 1.2.2 |  |
| 3 | 1.1.1 | 프레임웍 요구사항 정의 | 6d | 2007-04-26 A | 2007-05-04 A |  | 100% | 2007-04-26 | 2007-05-04 | 6d | start no earlier than 2007-04-26 | 김동겸외7명 | 56h | 56h | 7 | 7 | 7 | 요구사항 정의 | C02-1 1.2.2 | 아키텍처기능요구사항명세서 |
| 4 | 1.2 | **프레임웍 Gap/FIT분석** | 16d | 2007-05-07 A | 2007-05-29 A |  | 100% | 2007-05-07 | 2007-05-29 | 16d |  |  | 128h | 128h | 16 | 16 | 16 | 기술구조 정의 | C02-1 1.2.4 |  |
| 5 | 1.2.1 | **프레임웍 기능영역별 분석** | 16d | 2007-05-07 A | 2007-05-29 A | 2 | 100% | 2007-05-07 | 2007-05-29 | 16d |  |  | 128h | 128h | 16 | 16 | 16 | 기술구조 정의 | C02-1 1.2.4 | 프레임웍적용Gap/Fit분석서 |
| 6 | 1.2.1.1 | I/O처리프로세스 | 1d | 2007-05-07 A | 2007-05-07 A |  | 100% | 2007-05-07 | 2007-05-07 | 1d |  | 김수창 | 8h | 8h | 1 | 1 | 1 | 기술구조 정의 | C02-1 1.2.4 |  |
| 7 | 1.2.1.2 | 온라인서비스아키텍처 | 1d | 2007-05-08 A | 2007-05-08 A |  | 100% | 2007-05-08 | 2007-05-08 | 1d | start no earlier than 2007-05-08 | 김수창 | 8h | 8h | 1 | 1 | 1 | 기술구조 정의 | C02-1 1.2.4 |  |
| 8 | 1.2.1.3 | Core 어플리케이션 인터페이스 | 1d | 2007-05-09 A | 2007-05-09 A |  | 100% | 2007-05-09 | 2007-05-09 | 1d | start no earlier than 2007-05-09 | 김수창 | 8h | 8h | 1 | 1 | 1 | 기술구조 정의 | C02-1 1.2.4 |  |
| 9 | 1.2.1.4 | 개발프레임웍 | 1d | 2007-05-10 A | 2007-05-10 A |  | 100% | 2007-05-10 | 2007-05-10 | 1d | start no earlier than 2007-05-10 | 김도균 | 8h | 8h | 1 | 1 | 1 | 기술구조 정의 | C02-1 1.2.4 |  |
| 10 | 1.2.1.5 | 모니터링 및 장애처리 | 1d | 2007-05-11 A | 2007-05-11 A |  | 100% | 2007-05-11 | 2007-05-11 | 1d | start no earlier than 2007-05-11 | 정현수 | 8h | 8h | 1 | 1 | 1 | 기술구조 정의 | C02-1 1.2.4 |  |
| 11 | 1.2.1.6 | DBIO | 1d | 2007-05-14 A | 2007-05-14 A |  | 100% | 2007-05-14 | 2007-05-14 | 1d | start no earlier than 2007-05-14 | 최성환 | 8h | 8h | 1 | 1 | 1 | 기술구조 정의 | C02-1 1.2.4 |  |
| 12 | 1.2.1.7 | 센터컷 아키텍처 | 1d | 2007-05-15 A | 2007-05-15 A |  | 100% | 2007-05-15 | 2007-05-15 | 1d | start no earlier than 2007-05-15 | 하상수 | 8h | 8h | 1 | 1 | 1 | 기술구조 정의 | C02-1 1.2.4 |  |
| 13 | 1.2.1.8 | 후행아키텍처 | 1d | 2007-05-16 A | 2007-05-16 A |  | 100% | 2007-05-16 | 2007-05-16 | 1d | start no earlier than 2007-05-16 | 박종성 | 8h | 8h | 1 | 1 | 1 | 기술구조 정의 | C02-1 1.2.4 |  |
| 14 | 1.2.1.9 | 배치아키텍처 | 1d | 2007-05-17 A | 2007-05-17 A |  | 100% | 2007-05-17 | 2007-05-17 | 1d | start no earlier than 2007-05-17 | 고윤정 | 8h | 8h | 1 | 1 | 1 | 기술구조 정의 | C02-1 1.2.4 |  |
| 15 | 1.2.1.10 | 단위시스템 인터페이스 | 1d | 2007-05-18 A | 2007-05-18 A |  | 100% | 2007-05-18 | 2007-05-18 | 1d | start no earlier than 2007-05-18 | 정현수 | 8h | 8h | 1 | 1 | 1 | 기술구조 정의 | C02-1 1.2.4 |  |
| 16 | 1.2.1.11 | 거래공통처리 | 1d | 2007-05-21 A | 2007-05-21 A |  | 100% | 2007-05-21 | 2007-05-21 | 1d | start no earlier than 2007-05-21 | 하상수 | 8h | 8h | 1 | 1 | 1 | 기술구조 정의 | C02-1 1.2.4 |  |
| 17 | 1.2.1.12 | 업무로그처리 | 1d | 2007-05-22 A | 2007-05-22 A |  | 100% | 2007-05-22 | 2007-05-22 | 1d | start no earlier than 2007-05-22 | 박종성 | 8h | 8h | 1 | 1 | 1 | 기술구조 정의 | C02-1 1.2.4 |  |
| 18 | 1.2.1.13 | 24*365 | 1d | 2007-05-23 A | 2007-05-23 A |  | 100% | 2007-05-23 | 2007-05-23 | 1d | start no earlier than 2007-05-23 | 최성환 | 8h | 8h | 1 | 1 | 1 | 기술구조 정의 | C02-1 1.2.4 |  |
| 19 | 1.2.1.14 | 영업일관리 | 1d | 2007-05-25 A | 2007-05-25 A |  | 100% | 2007-05-25 | 2007-05-25 | 1d | start no earlier than 2007-05-25 | 김도균 | 8h | 8h | 1 | 1 | 1 | 기술구조 정의 | C02-1 1.2.4 |  |
| 20 | 1.2.1.15 | 공통파라메터관리 | 1d | 2007-05-28 A | 2007-05-28 A |  | 100% | 2007-05-28 | 2007-05-28 | 1d | start no earlier than 2007-05-28 | 고윤정 | 8h | 8h | 1 | 1 | 1 | 기술구조 정의 | C02-1 1.2.4 |  |
| 21 | 1.2.1.16 | Utilities | 1d | 2007-05-29 A | 2007-05-29 A |  | 100% | 2007-05-29 | 2007-05-29 | 1d | start no earlier than 2007-05-29 | 김도균 | 8h | 8h | 1 | 1 | 1 | 기술구조 정의 | C02-1 1.2.4 |  |
| 22 | 1.3 | **기술구조정의** | 26d | 2007-05-30 A | 2007-07-05 A | 21 | 100% | 2007-05-30 | 2007-07-05 | 26d |  |  | 216h | 216h | 27 | 27 | 27 | 기술구조 정의 | C02-1 1.2.4 |  |
| 23 | 1.3.1 | **코어 업무 요건 분석** | 15d | 2007-05-30 A | 2007-06-20 A |  | 100% | 2007-05-30 | 2007-06-20 | 15d |  |  | 120h | 120h | 15 | 15 | 15 | 기술구조 정의 | C02-1 1.2.4 |  |
| 24 | 1.3.1.1 | 수신 | 2d | 2007-05-30 A | 2007-05-31 A |  | 100% | 2007-05-30 | 2007-05-31 | 2d |  | 김동겸외7명 | 16h | 16h | 2 | 2 | 2 | 기술구조 정의 | C02-1 1.2.4 |  |
| 25 | 1.3.1.2 | 여신 | 1d | 2007-06-01 A | 2007-06-01 A |  | 100% | 2007-06-01 | 2007-06-01 | 1d | start no earlier than 2007-06-01 | 김동겸외7명 | 8h | 8h | 1 | 1 | 1 | 기술구조 정의 | C02-1 1.2.4 |  |
| 26 | 1.3.1.3 | 외환 | 1d | 2007-06-04 A | 2007-06-04 A |  | 100% | 2007-06-04 | 2007-06-04 | 1d | start no earlier than 2007-06-04 | 김동겸외7명 | 8h | 8h | 1 | 1 | 1 | 기술구조 정의 | C02-1 1.2.4 |  |
| 27 | 1.3.1.4 | 대외/대행 | 1d | 2007-06-05 A | 2007-06-05 A |  | 100% | 2007-06-05 | 2007-06-05 | 1d | start no earlier than 2007-06-05 | 김동겸외7명 | 8h | 8h | 1 | 1 | 1 | 기술구조 정의 | C02-1 1.2.4 |  |
| 28 | 1.3.1.5 | 기능영역별 요건 구체화 및 대응방안 수립 | 5d | 2007-06-07 A | 2007-06-13 A |  | 100% | 2007-06-07 | 2007-06-13 | 5d | start no earlier than 2007-06-07 | 김동겸외7명 | 40h | 40h | 5 | 5 | 5 | 기술구조 정의 | C02-1 1.2.4 |  |
| 29 | 1.3.1.6 | 업무요건 대비 GAP 분석/요건정의서 작성 | 5d | 2007-06-14 A | 2007-06-20 A |  | 100% | 2007-06-14 | 2007-06-20 | 5d | start no earlier than 2007-06-14 | 김동겸외7명 | 40h | 40h | 5 | 5 | 5 | 기술구조 정의 | C02-1 1.2.4 | 프레임웍적용Gap/Fit분석서 |

Notes:
- 4: 5/2~5/11
- 22: 5/14~6/1
- 29: 업무팀의 비기능 요건 취합 검토

| ID | WBS | Task | Duration | Start | Finish | Predecessors | Complete | Baseline start | Baseline finish | Baseline duration | Constraint | Resources | Work | Actual work | Cost | Baseline cost | Actual cost | Text20 | Text26 | Text30 |
| --- | --- | --- | --- | --- | --- | --- | --- | --- | --- | --- | --- | --- | --- | --- | --- | --- | --- | --- | --- | --- |
| 30 | 1.3.2 | **시스템기본요건 요구사항 정의** | 11d | 2007-06-21 A | 2007-07-05 A | 29 | 100% | 2007-06-21 | 2007-07-05 | 11d |  |  | 96h | 96h | 12 | 12 | 12 | 기술구조 정의 | C02-1 1.2.4 |  |
| 31 | 1.3.2.1 | **인터페이스 요구 사항 정의** | 11d | 2007-06-21 A | 2007-07-05 A |  | 100% | 2007-06-21 | 2007-07-05 | 11d |  |  | 96h | 96h | 12 | 12 | 12 | 기술구조 정의 | C02-1 1.2.4 |  |
| 32 | 1.3.2.1.1 | 코어시스템에 요구되는 MCA/EAI의 요건 분석 | 3d | 2007-06-21 A | 2007-06-25 A |  | 100% | 2007-06-21 | 2007-06-25 | 3d |  | 김동겸외7명 | 24h | 24h | 3 | 3 | 3 | 기술구조 정의 | C02-1 1.2.4 |  |
| 33 | 1.3.2.1.2 | 인터페이스 표준 | 8d | 2007-06-26 A | 2007-07-05 A |  | 100% | 2007-06-26 | 2007-07-05 | 8d | start no earlier than 2007-06-26 | 김동겸외7명 | 64h | 64h | 8 | 8 | 8 | 기술구조 정의 | C02-1 1.2.4 |  |
| 34 | 1.3.2.1.3 | 개발시스템 인터페이스 | 1d | 2007-06-21 A | 2007-06-21 A |  | 100% | 2007-06-21 | 2007-06-21 | 1d |  | 김동겸외7명 | 8h | 8h | 1 | 1 | 1 | 기술구조 정의 | C02-1 1.2.4 |  |
| 35 | 1.4 | **아키텍처검증** | 45d | 2007-05-07 A | 2007-07-10 A |  | 100% | 2007-05-07 | 2007-07-10 | 45d |  |  | 744h | 744h | 93 | 93 | 93 | 프로토타이핑 | C02-1 1.2.5 |  |
| 36 | 1.4.1 | **Pilot 지원** | 23d | 2007-05-07 A | 2007-06-08 A |  | 100% | 2007-05-07 | 2007-06-08 | 23d |  |  | 368h | 368h | 46 | 46 | 46 | 프로토타이핑 | C02-1 1.2.5 |  |
| 37 | 1.4.1.1 | Pilot 환경구축 | 22d | 2007-05-07 A | 2007-06-08 A |  | 100% | 2007-05-07 | 2007-06-08 | 22d | finish no earlier than 2007-06-08 | 정현수 | 184h | 184h | 23 | 23 | 23 | 프로토타이핑 | C02-1 1.2.5 |  |
| 38 | 1.4.1.2 | Pilot 관련 업무팀 지원 | 22d | 2007-05-07 A | 2007-06-08 A |  | 100% | 2007-05-07 | 2007-06-08 | 22d | finish no earlier than 2007-06-08 | 정현수 | 184h | 184h | 23 | 23 | 23 | 프로토타이핑 | C02-1 1.2.5 |  |
| 39 | 1.4.2 | **BMT 지원** | 20d | 2007-06-11 A | 2007-07-06 A |  | 100% | 2007-06-11 | 2007-07-06 | 20d |  |  | 320h | 320h | 40 | 40 | 40 | 프로토타이핑 | C02-1 1.2.5 |  |
| 40 | 1.4.2.1 | BMT용 프레임웍 설치 | 20d | 2007-06-11 A | 2007-07-06 A |  | 100% | 2007-06-11 | 2007-07-06 | 20d | finish no earlier than 2007-07-06 |  |  |  |  |  |  | 프로토타이핑 | C02-1 1.2.5 |  |
| 41 | 1.4.2.2 | BMT용 거래 개통 | 20d | 2007-06-11 A | 2007-07-06 A |  | 100% | 2007-06-11 | 2007-07-06 | 20d | finish no earlier than 2007-07-06 | 인길식 | 160h | 160h | 20 | 20 | 20 | 프로토타이핑 | C02-1 1.2.5 |  |
| 42 | 1.4.2.3 | BMT 관련 인프라팀 지원 | 20d | 2007-06-11 A | 2007-07-06 A |  | 100% | 2007-06-11 | 2007-07-06 | 20d | finish no earlier than 2007-07-06 | 인길식 | 160h | 160h | 20 | 20 | 20 | 프로토타이핑 | C02-1 1.2.5 |  |
| 43 | 1.4.3 | EMB 설계가이드 작성 | 7d | 2007-07-02 A | 2007-07-10 A |  | 100% | 2007-07-02 | 2007-07-10 | 7d | start no earlier than 2007-07-02 | 인길식 | 56h | 56h | 7 | 7 | 7 | 프로토타이핑 | C02-1 1.2.5 | 설계가이드 |
| 44 | 1.5 | **관리활동** | 57d | 2007-05-03 A | 2007-07-25 A |  | 100% | 2007-05-03 | 2007-07-25 | 57d |  |  | 144h | 144h | 18 | 18 | 18 | 단계완료 | C02-1 1.6.8 |  |
| 45 | 1.5.1 | 오리엔테이션1차 | 1d | 2007-05-03 A | 2007-05-03 A |  | 100% | 2007-05-03 | 2007-05-03 | 1d | start no earlier than 2007-05-03 | 김동겸외7명 | 8h | 8h | 1 | 1 | 1 | 단계완료 | C02-1 1.6.8 |  |
| 46 | 1.5.2 | 과업대비표매핑 | 3d | 2007-05-07 A | 2007-05-09 A |  | 100% | 2007-05-07 | 2007-05-09 | 3d | start no earlier than 2007-05-07 | 김동겸외7명 | 24h | 24h | 3 | 3 | 3 | 단계완료 | C02-1 1.6.8 |  |
| 47 | 1.5.3 | 형상관리Tool 교육 | 2d | 2007-05-17 A | 2007-05-18 A |  | 100% | 2007-05-17 | 2007-05-18 | 2d | start no earlier than 2007-05-17 | 김동겸외7명 | 16h | 16h | 2 | 2 | 2 | 단계완료 | C02-1 1.6.8 |  |
| 48 | 1.5.4 | Inspection(1차) 실시 및 조치 | 5d | 2007-07-02 A | 2007-07-06 A |  | 100% | 2007-07-02 | 2007-07-06 | 5d | start no earlier than 2007-07-02 | 김동겸외7명 | 40h | 40h | 5 | 5 | 5 | 단계완료 | C02-1 1.6.8 |  |
| 49 | 1.5.5 | 요구사항추적표 매핑 | 2d | 2007-07-09 A | 2007-07-10 A |  | 100% | 2007-07-09 | 2007-07-10 | 2d | start no earlier than 2007-07-09 | 김동겸외7명 | 16h | 16h | 2 | 2 | 2 | 단계완료 | C02-1 1.6.8 | 요구사항추적표 |
| 50 | 1.5.6 | 요구사항규모측정방법 교육 및 측정 | 5d | 2007-07-09 A | 2007-07-13 A |  | 100% | 2007-07-09 | 2007-07-13 | 5d | start no earlier than 2007-07-09 | 김동겸외7명 | 40h | 40h | 5 | 5 | 5 | 단계완료 | C02-1 1.6.8 |  |
| 51 | 1.5.7 | 고객검토(1차) 실시 및 조치 | 7d | 2007-07-16 A | 2007-07-25 A |  | 100% | 2007-07-16 | 2007-07-25 | 7d | start no earlier than 2007-07-16 |  |  |  |  |  |  | 단계완료 | C02-1 1.6.8 |  |
| 52 | 2 | **설계** | 107d? | 2007-07-26 A | 2007-12-31 A | 1 | 100% | 2007-07-26 | 2007-12-31 | 107d? |  |  | 10584h | 10584h | 1,323 | 1,323 | 1,322.88 | 설계 | C02-1 1.3 |  |
| 53 | 2.1 | **프레임웍 커스트마이징 - 설계** | 19.11d | 2007-07-26 A | 2007-08-23 A |  | 100% | 2007-07-26 | 2007-08-23 | 19.11d |  |  | 928.01h | 928.01h | 116 | 116 | 115.95 | 기본설계 | C02-1 1.3.1 |  |
| 54 | 2.1.1 | **NACF 프레임웍 아키텍처 검토** | 5.42d | 2007-07-26 A | 2007-08-02 A |  | 100% | 2007-07-26 | 2007-08-02 | 5.42d |  |  | 88h | 88h | 11 | 11 | 11 | 기본설계 | C02-1 1.3.1 |  |
| 55 | 2.1.1.1 | 구조 설계 요소 도출 | 1d | 2007-07-26 A | 2007-07-26 A |  | 100% | 2007-07-26 | 2007-07-26 | 1d | start no earlier than 2007-07-26 | 김동겸; 정현수; 박종성; 하상수; 김수창; 고윤정; 최성환; 정세윤; 오은경 | 72h | 72h | 9 | 9 | 9 | 기본설계 | C02-1 1.3.1 |  |
| 56 | 2.1.1.2 | 기술 대안 검토 및 설계 | 0.22d | 2007-08-02 A | 2007-08-02 A |  | 100% | 2007-08-02 | 2007-08-02 | 0.22d | start no earlier than 2007-08-02 | 김동겸; 정현수; 박종성; 하상수; 김수창; 고윤정; 최성환; 정세윤; 오은경 | 16h | 16h | 2 | 2 | 2 | 기본설계 | C02-1 1.3.1 |  |

| ID | WBS | Task | Duration | Start | Finish | Predecessors | Complete | Baseline start | Baseline finish | Baseline duration | Resources | Work | Actual work | Cost | Baseline cost | Actual cost | Text20 | Text26 |
| --- | --- | --- | --- | --- | --- | --- | --- | --- | --- | --- | --- | --- | --- | --- | --- | --- | --- | --- |
| 57 | 2.1.2 | **NACF 프레임웍 기본 설계 (구조/기능 확정)** | 2d | 2007-08-02 A | 2007-08-06 A | 54 | 100% | 2007-08-02 | 2007-08-06 | 2d |  | 256h | 256h | 32 | 32 | 32 | 기본설계 | C02-1 1.3.1 |
| 58 | 2.1.2.1 | I/O처리프로세스 | 2d | 2007-08-02 A | 2007-08-06 A |  | 100% | 2007-08-02 | 2007-08-06 | 2d | 김수창 | 16h | 16h | 2 | 2 | 2 | 기본설계 | C02-1 1.3.1 |
| 59 | 2.1.2.2 | 온라인서비스아키텍처 | 2d | 2007-08-02 A | 2007-08-06 A |  | 100% | 2007-08-02 | 2007-08-06 | 2d | 김수창 | 16h | 16h | 2 | 2 | 2 | 기본설계 | C02-1 1.3.1 |
| 60 | 2.1.2.3 | Core 어플리케이션 인터페이스 | 2d | 2007-08-02 A | 2007-08-06 A |  | 100% | 2007-08-02 | 2007-08-06 | 2d | 김수창 | 16h | 16h | 2 | 2 | 2 | 기본설계 | C02-1 1.3.1 |
| 61 | 2.1.2.4 | 개발프레임웍 | 2d | 2007-08-02 A | 2007-08-06 A |  | 100% | 2007-08-02 | 2007-08-06 | 2d | 김도균 | 16h | 16h | 2 | 2 | 2 | 기본설계 | C02-1 1.3.1 |
| 62 | 2.1.2.5 | 모니터링 및 장애처리 | 2d | 2007-08-02 A | 2007-08-06 A |  | 100% | 2007-08-02 | 2007-08-06 | 2d | 정현수 | 16h | 16h | 2 | 2 | 2 | 기본설계 | C02-1 1.3.1 |
| 63 | 2.1.2.6 | DBIO | 2d | 2007-08-02 A | 2007-08-06 A |  | 100% | 2007-08-02 | 2007-08-06 | 2d | 최성환 | 16h | 16h | 2 | 2 | 2 | 기본설계 | C02-1 1.3.1 |
| 64 | 2.1.2.7 | 센터컷 아키텍처 | 2d | 2007-08-02 A | 2007-08-06 A |  | 100% | 2007-08-02 | 2007-08-06 | 2d | 하상수 | 16h | 16h | 2 | 2 | 2 | 기본설계 | C02-1 1.3.1 |
| 65 | 2.1.2.8 | 후행아키텍처 | 2d | 2007-08-02 A | 2007-08-06 A |  | 100% | 2007-08-02 | 2007-08-06 | 2d | 박종성 | 16h | 16h | 2 | 2 | 2 | 기본설계 | C02-1 1.3.1 |
| 66 | 2.1.2.9 | 배치아키텍처 | 2d | 2007-08-02 A | 2007-08-06 A |  | 100% | 2007-08-02 | 2007-08-06 | 2d | 고윤정 | 16h | 16h | 2 | 2 | 2 | 기본설계 | C02-1 1.3.1 |
| 67 | 2.1.2.10 | 단위시스템 인터페이스 | 2d | 2007-08-02 A | 2007-08-06 A |  | 100% | 2007-08-02 | 2007-08-06 | 2d | 정현수 | 16h | 16h | 2 | 2 | 2 | 기본설계 | C02-1 1.3.1 |
| 68 | 2.1.2.11 | 거래공통처리 | 2d | 2007-08-02 A | 2007-08-06 A |  | 100% | 2007-08-02 | 2007-08-06 | 2d | 하상수 | 16h | 16h | 2 | 2 | 2 | 기본설계 | C02-1 1.3.1 |
| 69 | 2.1.2.12 | 업무로그처리 | 2d | 2007-08-02 A | 2007-08-06 A |  | 100% | 2007-08-02 | 2007-08-06 | 2d | 박종성 | 16h | 16h | 2 | 2 | 2 | 기본설계 | C02-1 1.3.1 |
| 70 | 2.1.2.13 | 24*365 | 2d | 2007-08-02 A | 2007-08-06 A |  | 100% | 2007-08-02 | 2007-08-06 | 2d | 최성환 | 16h | 16h | 2 | 2 | 2 | 기본설계 | C02-1 1.3.1 |
| 71 | 2.1.2.14 | 영업일관리 | 2d | 2007-08-02 A | 2007-08-06 A |  | 100% | 2007-08-02 | 2007-08-06 | 2d | 김도균 | 16h | 16h | 2 | 2 | 2 | 기본설계 | C02-1 1.3.1 |
| 72 | 2.1.2.15 | 공통파라메터관리 | 2d | 2007-08-02 A | 2007-08-06 A |  | 100% | 2007-08-02 | 2007-08-06 | 2d | 고윤정 | 16h | 16h | 2 | 2 | 2 | 기본설계 | C02-1 1.3.1 |
| 73 | 2.1.2.16 | Utilities | 2d | 2007-08-02 A | 2007-08-06 A |  | 100% | 2007-08-02 | 2007-08-06 | 2d | 김도균 | 16h | 16h | 2 | 2 | 2 | 기본설계 | C02-1 1.3.1 |
| 74 | 2.1.3 | **프레임웍 주요 Spec 정의** | 0.33d | 2007-08-06 A | 2007-08-06 A | 57 | 100% | 2007-08-06 | 2007-08-06 | 0.33d |  | 240h | 240h | 30 | 30 | 30 | 기본설계 | C02-1 1.3.1 |
| 75 | 2.1.3.1 | 거래유형 표준 | 0.33d | 2007-08-06 A | 2007-08-06 A |  | 100% | 2007-08-06 | 2007-08-06 | 0.33d | 김동겸; 정현수; 박종성; 하상수; 김수창; 고윤정; 최성환; 정세윤; 오은경 | 24h | 24h | 3 | 3 | 3 | 기본설계 | C02-1 1.3.1 |
| 76 | 2.1.3.2 | C/C 처리 표준 (코드표준, 처리절차 - 공통서비스팀 협업) | 0.33d | 2007-08-06 A | 2007-08-06 A |  | 100% | 2007-08-06 | 2007-08-06 | 0.33d | 김동겸; 정현수; 박종성; 하상수; 김수창; 고윤정; 최성환; 정세윤; 오은경 | 24h | 24h | 3 | 3 | 3 | 기본설계 | C02-1 1.3.1 |
| 77 | 2.1.3.3 | 전문 표준 | 0.33d | 2007-08-06 A | 2007-08-06 A |  | 100% | 2007-08-06 | 2007-08-06 | 0.33d | 김동겸; 정현수; 박종성; 하상수; 김수창; 고윤정; 최성환; 정세윤; 오은경 | 24h | 24h | 3 | 3 | 3 | 기본설계 | C02-1 1.3.1 |
| 78 | 2.1.3.4 | 공통 입출력 데이터 | 0.33d | 2007-08-06 A | 2007-08-06 A |  | 100% | 2007-08-06 | 2007-08-06 | 0.33d | 김동겸; 정현수; 박종성; 하상수; 김수창; 고윤정; 최성환; 정세윤; 오은경 | 24h | 24h | 3 | 3 | 3 | 기본설계 | C02-1 1.3.1 |
| 79 | 2.1.3.5 | 업무로그 (번호체계, 데이터 레이아웃) | 0.33d | 2007-08-06 A | 2007-08-06 A |  | 100% | 2007-08-06 | 2007-08-06 | 0.33d | 김동겸; 정현수; 박종성; 하상수; 김수창; 고윤정; 최성환; 정세윤; 오은경 | 24h | 24h | 3 | 3 | 3 | 기본설계 | C02-1 1.3.1 |
| 80 | 2.1.3.6 | 메시지 표준 (에러, 입출력, 승인, 안내 메시지) | 0.33d | 2007-08-06 A | 2007-08-06 A |  | 100% | 2007-08-06 | 2007-08-06 | 0.33d | 김동겸; 정현수; 박종성; 하상수; 김수창; 고윤정; 최성환; 정세윤; 오은경 | 24h | 24h | 3 | 3 | 3 | 기본설계 | C02-1 1.3.1 |
| 81 | 2.1.3.7 | 거래코드 표준 | 0.33d | 2007-08-06 A | 2007-08-06 A |  | 100% | 2007-08-06 | 2007-08-06 | 0.33d | 김동겸; 정현수; 박종성; 하상수; 김수창; 고윤정; 최성환; 정세윤; 오은경 | 24h | 24h | 3 | 3 | 3 | 기본설계 | C02-1 1.3.1 |
| 82 | 2.1.3.8 | Naming Rule (프레임웍 소스) | 0.33d | 2007-08-06 A | 2007-08-06 A |  | 100% | 2007-08-06 | 2007-08-06 | 0.33d | 김동겸; 정현수; 박종성; 하상수; 김수창; 고윤정; 최성환; 정세윤; 오은경 | 24h | 24h | 3 | 3 | 3 | 기본설계 | C02-1 1.3.1 |
| 83 | 2.1.3.9 | 코딩 표준 (프레임웍 소스) | 0.33d | 2007-08-06 A | 2007-08-06 A |  | 100% | 2007-08-06 | 2007-08-06 | 0.33d | 김동겸; 정현수; 박종성; 하상수; 김수창; 고윤정; 최성환; 정세윤; 오은경 | 24h | 24h | 3 | 3 | 3 | 기본설계 | C02-1 1.3.1 |
| 84 | 2.1.3.10 | DBIO 사용 정책 | 0.33d | 2007-08-06 A | 2007-08-06 A |  | 100% | 2007-08-06 | 2007-08-06 | 0.33d | 김동겸; 정현수; 박종성; 하상수; 김수창; 고윤정; 최성환; 정세윤; 오은경 | 24h | 24h | 3 | 3 | 3 | 기본설계 | C02-1 1.3.1 |

| ID | WBS | Task | Duration | Start | Finish | Predecessors | Complete | Baseline start | Baseline finish | Baseline duration | Constraint | Resources | Work | Actual work | Cost | Baseline cost | Actual cost | Text20 | Text26 | Text30 |
| --- | --- | --- | --- | --- | --- | --- | --- | --- | --- | --- | --- | --- | --- | --- | --- | --- | --- | --- | --- | --- |
| 85 | 2.1.4 | **프레임웍 커스트마이징 상세 설계** | 11.36d | 2007-08-06 A | 2007-08-23 A | 74 | 100% | 2007-08-06 | 2007-08-23 | 11.36d |  |  | 200.01h | 200.01h | 25 | 25 | 24.95 | 기본설계 | C02-1 1.3.1 |  |
| 86 | 2.1.4.1 | 반복적 요건정의 및 설계 반영 | 0.22d | 2007-08-06 A | 2007-08-06 A |  | 100% | 2007-08-06 | 2007-08-06 | 0.22d |  | 김동겸; 정현수; 박종성; 하상수; 김수창; 고윤정; 최성환; 정세윤; 오은경 | 16h | 16h | 2 | 2 | 2 | 기본설계 | C02-1 1.3.1 |  |
| 87 | 2.1.4.2 | 파라미터(거래, 제어, 장애처리 등) 초안 설계 | 0.22d | 2007-08-06 A | 2007-08-06 A |  | 100% | 2007-08-06 | 2007-08-06 | 0.22d |  | 김동겸; 정현수; 박종성; 하상수; 김수창; 고윤정; 최성환; 정세윤; 오은경 | 16h | 16h | 2 | 2 | 2 | 기본설계 | C02-1 1.3.1 |  |
| 88 | 2.1.4.3 | 프로그램 모듈화 (목록 정의) | 0.22d | 2007-08-06 A | 2007-08-06 A |  | 100% | 2007-08-06 | 2007-08-06 | 0.22d |  | 김동겸; 정현수; 박종성; 하상수; 김수창; 고윤정; 최성환; 정세윤; 오은경 | 16h | 16h | 2 | 2 | 2 | 기본설계 | C02-1 1.3.1 |  |
| 89 | 2.1.4.4 | UI 설계 (센터컷 제어, 후행 제어, 영업일관리) | 0.22d | 2007-08-06 A | 2007-08-06 A |  | 100% | 2007-08-06 | 2007-08-06 | 0.22d |  | 김동겸; 정현수; 박종성; 하상수; 김수창; 고윤정; 최성환; 정세윤; 오은경 | 16h | 16h | 2 | 2 | 2 | 기본설계 | C02-1 1.3.1 |  |
| 90 | 2.1.4.5 | **데이터 설계** | 0.33d | 2007-08-06 A | 2007-08-07 A |  | 100% | 2007-08-06 | 2007-08-07 | 0.33d |  |  | 72h | 72h | 9 | 9 | 9 | 기본설계 | C02-1 1.3.1 |  |
| 91 | 2.1.4.5.1 | 코드 설계 | 0.33d | 2007-08-06 A | 2007-08-07 A |  | 100% | 2007-08-06 | 2007-08-07 | 0.33d |  | 김동겸; 정현수; 박종성; 하상수; 김수창; 고윤정; 최성환; 정세윤; 오은경 | 24h | 24h | 3 | 3 | 3 | 기본설계 | C02-1 1.3.1 |  |
| 92 | 2.1.4.5.2 | 테이블 설계 | 0.33d | 2007-08-06 A | 2007-08-07 A |  | 100% | 2007-08-06 | 2007-08-07 | 0.33d |  | 김동겸; 정현수; 박종성; 하상수; 김수창; 고윤정; 최성환; 정세윤; 오은경 | 24h | 24h | 3 | 3 | 3 | 기본설계 | C02-1 1.3.1 |  |
| 93 | 2.1.4.5.3 | 표준전문 설계 | 0.33d | 2007-08-06 A | 2007-08-07 A |  | 100% | 2007-08-06 | 2007-08-07 | 0.33d |  | 김동겸; 정현수; 박종성; 하상수; 김수창; 고윤정; 최성환; 정세윤; 오은경 | 24h | 24h | 3 | 3 | 3 | 기본설계 | C02-1 1.3.1 |  |
| 94 | 2.1.4.6 | 프로그램 Specification | 0.33d | 2007-08-06 A | 2007-08-07 A |  | 100% | 2007-08-06 | 2007-08-07 | 0.33d |  | 김동겸; 정현수; 박종성; 하상수; 김수창; 고윤정; 최성환; 정세윤; 오은경 | 24h | 24h | 3 | 3 | 3 | 기본설계 | C02-1 1.3.1 |  |
| 95 | 2.1.4.7 | 프레임웍 설계서 통합 및 보완 | 0.44d | 2007-08-17 A | 2007-08-17 A |  | 100% | 2007-08-17 | 2007-08-17 | 0.44d | start no earlier than 2007-08-17 | 김동겸; 정현수; 박종성; 하상수; 김수창; 고윤정; 최성환; 정세윤; 오은경 | 32h | 32h | 4 | 4 | 4 | 기본설계 | C02-1 1.3.1 | 프레임웍 설계서 |
| 96 | 2.1.4.8 | NACF 프레임웍 설계 완료 | 0.11d | 2007-08-23 A | 2007-08-23 A |  | 100% | 2007-08-23 | 2007-08-23 | 0.11d | start no earlier than 2007-08-23 | 김동겸; 정현수; 박종성; 하상수; 김수창; 고윤정; 최성환; 정세윤; 오은경 | 8.01h | 8.01h | 1 | 1 | 0.95 | 기본설계 | C02-1 1.3.1 |  |
| 97 | 2.1.5 | **Application 개발 아키텍쳐** | 5.22d | 2007-08-13 A | 2007-08-21 A |  | 100% | 2007-08-13 | 2007-08-21 | 5.22d |  |  | 136h | 136h | 17 | 17 | 17 | 기본설계 | C02-1 1.3.1 |  |
| 98 | 2.1.5.1 | **개발환경 정의** | 1.11d | 2007-08-13 A | 2007-08-14 A |  | 100% | 2007-08-13 | 2007-08-14 | 1.11d |  |  | 24h | 24h | 3 | 3 | 3 | 기본설계 | C02-1 1.3.1 |  |
| 99 | 2.1.5.1.1 | 개발시스템 구성 정의 | 0.11d | 2007-08-13 A | 2007-08-13 A |  | 100% | 2007-08-13 | 2007-08-13 | 0.11d | start no earlier than 2007-08-13 | 김동겸; 정현수; 박종성; 하상수; 김수창; 고윤정; 최성환; 정세윤; 오은경 | 8h | 8h | 1 | 1 | 1 | 기본설계 | C02-1 1.3.1 |  |
| 100 | 2.1.5.1.2 | 디렉토리 구조 (DEV/QA/REL) | 0.11d | 2007-08-13 A | 2007-08-13 A |  | 100% | 2007-08-13 | 2007-08-13 | 0.11d | start no earlier than 2007-08-13 | 김동겸; 정현수; 박종성; 하상수; 김수창; 고윤정; 최성환; 정세윤; 오은경 | 8h | 8h | 1 | 1 | 1 | 기본설계 | C02-1 1.3.1 |  |
| 101 | 2.1.5.1.3 | 환경변수 정의 | 0.11d | 2007-08-14 A | 2007-08-14 A |  | 100% | 2007-08-14 | 2007-08-14 | 0.11d | start no earlier than 2007-08-14 | 김동겸; 정현수; 박종성; 하상수; 김수창; 고윤정; 최성환; 정세윤; 오은경 | 8h | 8h | 1 | 1 | 1 | 기본설계 | C02-1 1.3.1 |  |
| 102 | 2.1.5.2 | **개발절차 정의** | 0.22d | 2007-08-16 A | 2007-08-16 A |  | 100% | 2007-08-16 | 2007-08-16 | 0.22d |  |  | 32h | 32h | 4 | 4 | 4 | 기본설계 | C02-1 1.3.1 |  |
| 103 | 2.1.5.2.1 | 개발/단위테스트 절차 정의 | 0.22d | 2007-08-16 A | 2007-08-16 A |  | 100% | 2007-08-16 | 2007-08-16 | 0.22d | start no earlier than 2007-08-15 | 김동겸; 정현수; 박종성; 하상수; 김수창; 고윤정; 최성환; 정세윤; 오은경 | 16h | 16h | 2 | 2 | 2 | 기본설계 | C02-1 1.3.1 |  |
| 104 | 2.1.5.2.2 | 형상관리 절차 정의 | 0.22d | 2007-08-16 A | 2007-08-16 A |  | 100% | 2007-08-16 | 2007-08-16 | 0.22d | start no earlier than 2007-08-15 | 김동겸; 정현수; 박종성; 하상수; 김수창; 고윤정; 최성환; 정세윤; 오은경 | 16h | 16h | 2 | 2 | 2 | 기본설계 | C02-1 1.3.1 |  |
| 105 | 2.1.5.3 | **개발표준 정의** | 2.22d | 2007-08-17 A | 2007-08-21 A |  | 100% | 2007-08-17 | 2007-08-21 | 2.22d |  |  | 80h | 80h | 10 | 10 | 10 | 기본설계 | C02-1 1.3.1 | 개발표준 |
| 106 | 2.1.5.3.1 | 명명 규칙 정의 (업무 Application 프로그램, 구조체, 변수) | 0.22d | 2007-08-17 A | 2007-08-17 A |  | 100% | 2007-08-17 | 2007-08-17 | 0.22d | start no earlier than 2007-08-17 | 김동겸; 정현수; 박종성; 하상수; 김수창; 고윤정; 최성환; 정세윤; 오은경 | 16h | 16h | 2 | 2 | 2 | 기본설계 | C02-1 1.3.1 |  |
| 107 | 2.1.5.3.2 | C coding 표준 정의 (업무 Application 관련) | 0.22d | 2007-08-17 A | 2007-08-17 A |  | 100% | 2007-08-17 | 2007-08-17 | 0.22d | start no earlier than 2007-08-17 | 김동겸; 정현수; 박종성; 하상수; 김수창; 고윤정; 최성환; 정세윤; 오은경 | 16h | 16h | 2 | 2 | 2 | 기본설계 | C02-1 1.3.1 |  |
| 108 | 2.1.5.3.3 | DB Access 표준 | 0.22d | 2007-08-21 A | 2007-08-21 A |  | 100% | 2007-08-21 | 2007-08-21 | 0.22d | start no earlier than 2007-08-21 | 김동겸; 정현수; 박종성; 하상수; 김수창; 고윤정; 최성환; 정세윤; 오은경 | 16h | 16h | 2 | 2 | 2 | 기본설계 | C02-1 1.3.1 |  |
| 109 | 2.1.5.3.4 | 프로그램 메타데이타 표준 | 0.22d | 2007-08-21 A | 2007-08-21 A |  | 100% | 2007-08-21 | 2007-08-21 | 0.22d | start no earlier than 2007-08-21 | 김동겸; 정현수; 박종성; 하상수; 김수창; 고윤정; 최성환; 정세윤; 오은경 | 16h | 16h | 2 | 2 | 2 | 기본설계 | C02-1 1.3.1 |  |
| 110 | 2.1.5.3.5 | 개발표준 검증 방안 작성 | 0.22d | 2007-08-21 A | 2007-08-21 A |  | 100% | 2007-08-21 | 2007-08-21 | 0.22d | start no earlier than 2007-08-21 | 김동겸; 정현수; 박종성; 하상수; 김수창; 고윤정; 최성환; 정세윤; 오은경 | 16h | 16h | 2 | 2 | 2 | 기본설계 | C02-1 1.3.1 |  |

| ID | WBS | Task | Duration | Start | Finish | Predecessors | Complete | Baseline start | Baseline finish | Baseline duration | Constraint | Resources | Work | Actual work | Cost | Baseline cost | Actual cost | Text20 | Text26 |
| --- | --- | --- | --- | --- | --- | --- | --- | --- | --- | --- | --- | --- | --- | --- | --- | --- | --- | --- | --- |
| 111 | 2.1.6 | **실행 아키텍처 설계** | 0.11d | 2007-08-23 A | 2007-08-23 A |  | 100% | 2007-08-23 | 2007-08-23 | 0.11d |  |  | 8h | 8h | 1 | 1 | 1 | 기본설계 | C02-1 1.3.1 |
| 112 | 2.1.6.1 | **프레임웍 운영환경 정의** | 0.11d | 2007-08-23 A | 2007-08-23 A |  | 100% | 2007-08-23 | 2007-08-23 | 0.11d |  |  | 8h | 8h | 1 | 1 | 1 | 기본설계 | C02-1 1.3.1 |
| 113 | 2.1.6.1.1 | 물리적 실행 환경 구성 (Draft) | 0.11d | 2007-08-23 A | 2007-08-23 A |  | 100% | 2007-08-23 | 2007-08-23 | 0.11d | start no earlier than 2007-08-23 | 김동겸; 정현수; 박종성; 하상수; 김수창; 고윤정; 최성환; 정세윤; 오은경 | 8h | 8h | 1 | 1 | 1 | 기본설계 | C02-1 1.3.1 |
| 114 | 2.2 | **프레임웍 커스트마이징 - 구현** | 54.11d | 2007-08-23 A | 2007-11-13 A | 53 | 100% | 2007-08-23 | 2007-11-13 | 54.11d |  |  | 3496h | 3496h | 437 | 437 | 437 | 상세설계 | C02-1 1.3.3 |
| 115 | 2.2.1 | **서비스 프레임웍** | 31.56d | 2007-08-23 A | 2007-10-11 A |  | 100% | 2007-08-23 | 2007-10-11 | 31.56d |  |  | 3376h | 3376h | 422 | 422 | 422 | 상세설계 | C02-1 1.3.3 |
| 116 | 2.2.1.1 | **프레임웍 개발환경 구축** | 1d | 2007-08-23 A | 2007-08-24 A |  | 100% | 2007-08-23 | 2007-08-24 | 1d |  |  | 8h | 8h | 1 | 1 | 1 | 상세설계 | C02-1 1.3.3 |
| 117 | 2.2.1.1.1 | 기반 소프트웨어 설치 | 1d | 2007-08-23 A | 2007-08-24 A |  | 100% | 2007-08-23 | 2007-08-24 | 1d |  | 정현수 | 8h | 8h | 1 | 1 | 1 | 상세설계 | C02-1 1.3.3 |
| 118 | 2.2.1.2 | **프레임웍 개발** | 25d | 2007-08-24 A | 2007-10-04 A | 116 | 100% | 2007-08-24 | 2007-10-04 | 25d |  |  | 3200h | 3200h | 400 | 400 | 400 | 상세설계 | C02-1 1.3.3 |
| 119 | 2.2.1.2.1 | I/O 처리 구조 | 25d | 2007-08-24 A | 2007-10-04 A |  | 100% | 2007-08-24 | 2007-10-04 | 25d |  | 김수창 | 200h | 200h | 25 | 25 | 25 | 상세설계 | C02-1 1.3.3 |
| 120 | 2.2.1.2.2 | **서비스 처리구조** | 25d | 2007-08-24 A | 2007-10-04 A |  | 100% | 2007-08-24 | 2007-10-04 | 25d |  |  | 1600h | 1600h | 200 | 200 | 200 | 상세설계 | C02-1 1.3.3 |
| 121 | 2.2.1.2.2.1 | Core 어플리케이션간 인터페이스 | 25d | 2007-08-24 A | 2007-10-04 A |  | 100% | 2007-08-24 | 2007-10-04 | 25d |  | 김수창 | 200h | 200h | 25 | 25 | 25 | 상세설계 | C02-1 1.3.3 |
| 122 | 2.2.1.2.2.2 | 온라인 서비스 아키텍처 | 25d | 2007-08-24 A | 2007-10-04 A |  | 100% | 2007-08-24 | 2007-10-04 | 25d |  | 김수창 | 200h | 200h | 25 | 25 | 25 | 상세설계 | C02-1 1.3.3 |
| 123 | 2.2.1.2.2.3 | Utilities | 25d | 2007-08-24 A | 2007-10-04 A |  | 100% | 2007-08-24 | 2007-10-04 | 25d |  | 정세윤 | 200h | 200h | 25 | 25 | 25 | 상세설계 | C02-1 1.3.3 |
| 124 | 2.2.1.2.2.4 | 모니터링 및 장애처리 | 25d | 2007-08-24 A | 2007-10-04 A |  | 100% | 2007-08-24 | 2007-10-04 | 25d |  | 정현수 | 200h | 200h | 25 | 25 | 25 | 상세설계 | C02-1 1.3.3 |
| 125 | 2.2.1.2.2.5 | 리디노미네이션 | 25d | 2007-08-24 A | 2007-10-04 A |  | 100% | 2007-08-24 | 2007-10-04 | 25d |  | 김동겸 | 200h | 200h | 25 | 25 | 25 | 상세설계 | C02-1 1.3.3 |
| 126 | 2.2.1.2.2.6 | 거래공통처리 | 25d | 2007-08-24 A | 2007-10-04 A |  | 100% | 2007-08-24 | 2007-10-04 | 25d |  | 하상수 | 200h | 200h | 25 | 25 | 25 | 상세설계 | C02-1 1.3.3 |
| 127 | 2.2.1.2.2.7 | 공통 파라미터 관리 | 25d | 2007-08-24 A | 2007-10-04 A |  | 100% | 2007-08-24 | 2007-10-04 | 25d |  | 고윤정 | 200h | 200h | 25 | 25 | 25 | 상세설계 | C02-1 1.3.3 |
| 128 | 2.2.1.2.2.8 | 업무로그처리 | 25d | 2007-08-24 A | 2007-10-04 A |  | 100% | 2007-08-24 | 2007-10-04 | 25d |  | 박종성 | 200h | 200h | 25 | 25 | 25 | 상세설계 | C02-1 1.3.3 |
| 129 | 2.2.1.2.3 | DBIO (관리기능 포함) | 25d | 2007-08-24 A | 2007-10-04 A |  | 100% | 2007-08-24 | 2007-10-04 | 25d |  | 최성환 | 200h | 200h | 25 | 25 | 25 | 상세설계 | C02-1 1.3.3 |
| 130 | 2.2.1.2.4 | 센터컷 아키텍처 | 25d | 2007-08-24 A | 2007-10-04 A |  | 100% | 2007-08-24 | 2007-10-04 | 25d |  | 하상수 | 200h | 200h | 25 | 25 | 25 | 상세설계 | C02-1 1.3.3 |
| 131 | 2.2.1.2.5 | 후행 아키텍처 | 25d | 2007-08-24 A | 2007-10-04 A |  | 100% | 2007-08-24 | 2007-10-04 | 25d |  | 박종성 | 200h | 200h | 25 | 25 | 25 | 상세설계 | C02-1 1.3.3 |
| 132 | 2.2.1.2.6 | 배치 아키텍처 | 25d | 2007-08-24 A | 2007-10-04 A |  | 100% | 2007-08-24 | 2007-10-04 | 25d |  | 고윤정 | 200h | 200h | 25 | 25 | 25 | 상세설계 | C02-1 1.3.3 |
| 133 | 2.2.1.2.7 | 단위시스템 인터페이스 | 25d | 2007-08-24 A | 2007-10-04 A |  | 100% | 2007-08-24 | 2007-10-04 | 25d |  | 정현수 | 200h | 200h | 25 | 25 | 25 | 상세설계 | C02-1 1.3.3 |
| 134 | 2.2.1.2.8 | 24*365 | 25d | 2007-08-24 A | 2007-10-04 A |  | 100% | 2007-08-24 | 2007-10-04 | 25d |  | 최성환 | 200h | 200h | 25 | 25 | 25 | 상세설계 | C02-1 1.3.3 |
| 135 | 2.2.1.2.9 | 영업일 관리 | 25d | 2007-08-24 A | 2007-10-04 A |  | 100% | 2007-08-24 | 2007-10-04 | 25d |  | 김도균 | 200h | 200h | 25 | 25 | 25 | 상세설계 | C02-1 1.3.3 |

| ID | WBS | Task | Duration | Start | Finish | Predecessors | Complete | Baseline start | Baseline finish | Baseline duration | Constraint | Resources | Work | Actual work | Cost | Baseline cost | Actual cost | Text20 | Text26 | Text30 |
| --- | --- | --- | --- | --- | --- | --- | --- | --- | --- | --- | --- | --- | --- | --- | --- | --- | --- | --- | --- | --- |
| 136 | 2.2.1.3 | **Framework 테스트 계획 수립** | 0.22d | 2007-10-04 A | 2007-10-04 A | 118 | 100% | 2007-10-04 | 2007-10-04 | 0.22d |  |  | 32h | 32h | 4 | 4 | 4 | 상세설계 | C02-1 1.3.3 |  |
| 137 | 2.2.1.3.1 | Framework Quality 기준 작성 | 0.22d | 2007-10-04 A | 2007-10-04 A |  | 100% | 2007-10-04 | 2007-10-04 | 0.22d |  | 김동겸; 정현수; 박종성; 하상수; 김수창; 고윤정; 최성환; 정세윤; 오은경 | 16h | 16h | 2 | 2 | 2 | 상세설계 | C02-1 1.3.3 |  |
| 138 | 2.2.1.3.2 | 기능 단위테스트 계획 수립 | 0.22d | 2007-10-04 A | 2007-10-04 A |  | 100% | 2007-10-04 | 2007-10-04 | 0.22d |  | 김동겸; 정현수; 박종성; 하상수; 김수창; 고윤정; 최성환; 정세윤; 오은경 | 16h | 16h | 2 | 2 | 2 | 상세설계 | C02-1 1.3.3 |  |
| 139 | 2.2.1.4 | **단위테스트 (DVT)** | 5.33d | 2007-10-04 A | 2007-10-11 A | 136 | 100% | 2007-10-04 | 2007-10-11 | 5.33d |  |  | 136h | 136h | 17 | 17 | 17 | 상세설계 | C02-1 1.3.3 |  |
| 140 | 2.2.1.4.1 | 온라인 거래 개통 | 0.22d | 2007-10-04 A | 2007-10-04 A |  | 100% | 2007-10-04 | 2007-10-04 | 0.22d |  | 김동겸; 정현수; 박종성; 하상수; 김수창; 고윤정; 최성환; 정세윤; 오은경 | 16h | 16h | 2 | 2 | 2 | 상세설계 | C02-1 1.3.3 |  |
| 141 | 2.2.1.4.2 | 기능 모듈별 단위테스트 | 1.67d | 2007-10-10 A | 2007-10-11 A |  | 100% | 2007-10-10 | 2007-10-11 | 1.67d | start no earlier than 2007-10-10 | 김동겸; 정현수; 박종성; 하상수; 김수창; 고윤정; 최성환; 정세윤; 오은경 | 120h | 120h | 15 | 15 | 15 | 상세설계 | C02-1 1.3.3 |  |
| 142 | 2.2.2 | **Application 개발 아키텍쳐 정의** | 0.78d | 2007-10-11 A | 2007-10-12 A | 115 | 100% | 2007-10-11 | 2007-10-12 | 0.78d |  |  | 88h | 88h | 11 | 11 | 11 | 상세설계 | C02-1 1.3.3 |  |
| 143 | 2.2.2.1 | **표준 어플리케이션 Template 개발** | 0.78d | 2007-10-11 A | 2007-10-12 A |  | 100% | 2007-10-11 | 2007-10-12 | 0.78d |  |  | 88h | 88h | 11 | 11 | 11 | 상세설계 | C02-1 1.3.3 |  |
| 144 | 2.2.2.1.1 | 핵심 거래 유형 정의 | 0.11d | 2007-10-11 A | 2007-10-11 A |  | 100% | 2007-10-11 | 2007-10-11 | 0.11d |  | 김동겸; 정현수; 박종성; 하상수; 김수창; 고윤정; 최성환; 정세윤; 오은경 | 8h | 8h | 1 | 1 | 1 | 상세설계 | C02-1 1.3.3 |  |
| 145 | 2.2.2.1.2 | 거래 유형별 Template (Draft) 설계 | 0.33d | 2007-10-11 A | 2007-10-11 A |  | 100% | 2007-10-11 | 2007-10-11 | 0.33d |  | 김동겸; 정현수; 박종성; 하상수; 김수창; 고윤정; 최성환; 정세윤; 오은경 | 24h | 24h | 3 | 3 | 3 | 상세설계 | C02-1 1.3.3 |  |
| 146 | 2.2.2.1.3 | 거래 유형별 Template (Draft) 개발 | 0.78d | 2007-10-11 A | 2007-10-12 A |  | 100% | 2007-10-11 | 2007-10-12 | 0.78d |  | 김동겸; 정현수; 박종성; 하상수; 김수창; 고윤정; 최성환; 정세윤; 오은경 | 56h | 56h | 7 | 7 | 7 | 상세설계 | C02-1 1.3.3 | 거래유형별템플릿 |
| 147 | 2.2.3 | **프레임웍 운영환경 정의** | 21.78d | 2007-10-12 A | 2007-11-13 A | 142 | 100% | 2007-10-12 | 2007-11-13 | 21.78d |  |  | 32h | 32h | 4 | 4 | 4 | 상세설계 | C02-1 1.3.3 |  |
| 148 | 2.2.3.1 | 시스템 운영요건 분석 | 0.22d | 2007-10-12 A | 2007-10-12 A |  | 100% | 2007-10-12 | 2007-10-12 | 0.22d |  | 김동겸; 정현수; 박종성; 하상수; 김수창; 고윤정; 최성환; 정세윤; 오은경 | 16h | 16h | 2 | 2 | 2 | 상세설계 | C02-1 1.3.3 |  |
| 149 | 2.2.3.2 | 서비스 Grouping 정책 수립 (Deployment 정책 -인프라협의) | 0.22d | 2007-11-13 A | 2007-11-13 A |  | 100% | 2007-11-13 | 2007-11-13 | 0.22d | start no earlier than 2007-11-13 | 김동겸; 정현수; 박종성; 하상수; 김수창; 고윤정; 최성환; 정세윤; 오은경 | 16h | 16h | 2 | 2 | 2 | 상세설계 | C02-1 1.3.3 |  |
| 150 | 2.3 | **프레임웍 커스트마이징 - 테스트** | 8.11d | 2007-11-13 A | 2007-11-23 A | 114 | 100% | 2007-11-13 | 2007-11-23 | 8.11d |  |  | 72h | 72h | 9 | 9 | 8.93 | 테스트 설계 | C02-1 1.3.6 |  |
| 151 | 2.3.1 | 서비스 유형별 성능 테스트 (처리 Throughput Check) | 0.22d | 2007-11-13 A | 2007-11-13 A |  | 100% | 2007-11-13 | 2007-11-13 | 0.22d |  | 김동겸; 정현수; 박종성; 하상수; 김수창; 고윤정; 최성환; 정세윤; 오은경 | 16h | 16h | 2 | 2 | 2 | 테스트 설계 | C02-1 1.3.6 | 성능튜닝결과서 1차 |
| 152 | 2.3.2 | 스트레스 테스트 (Concurrency Check, Scalability Check, Deterministric Check) | 0.22d | 2007-11-19 A | 2007-11-19 A |  | 100% | 2007-11-19 | 2007-11-19 | 0.22d | start no earlier than 2007-11-19 | 김동겸; 정현수; 박종성; 하상수; 김수창; 고윤정; 최성환; 정세윤; 오은경 | 16h | 16h | 2 | 2 | 1.98 | 테스트 설계 | C02-1 1.3.6 | 테스트결과서 |
| 153 | 2.3.3 | 장애처리 테스트 (가용성테스트) | 0.22d | 2007-11-21 A | 2007-11-21 A |  | 100% | 2007-11-21 | 2007-11-21 | 0.22d | start no earlier than 2007-11-21 | 김동겸; 정현수; 박종성; 하상수; 김수창; 고윤정; 최성환; 정세윤; 오은경 | 16h | 16h | 2 | 2 | 1.98 | 테스트 설계 | C02-1 1.3.6 | 테스트결과서 |
| 154 | 2.3.4 | 아키텍쳐테스트 | 0.33d | 2007-11-23 A | 2007-11-23 A |  | 100% | 2007-11-23 | 2007-11-23 | 0.33d | start no earlier than 2007-11-23 | 김동겸; 정현수; 박종성; 하상수; 김수창; 고윤정; 최성환; 정세윤; 오은경 | 24h | 24h | 3 | 3 | 2.97 | 테스트 설계 | C02-1 1.3.6 | 아키텍처검증결과서 |
| 155 | 2.4 | **프레임웍 커스트마이징 - 이행** | 7.67d | 2007-11-23 A | 2007-12-04 A | 150 | 100% | 2007-11-23 | 2007-12-04 | 7.67d |  |  | 176h | 176h | 22 | 22 | 22 | 테스트 설계 | C02-1 1.3.6 |  |
| 156 | 2.4.1 | **메뉴얼작성** | 6.22d | 2007-11-23 A | 2007-12-03 A |  | 100% | 2007-11-23 | 2007-12-03 | 6.22d |  |  | 128h | 128h | 16 | 16 | 16 | 테스트 설계 | C02-1 1.3.6 |  |
| 157 | 2.4.1.1 | NACF 프레임웍 Release 절차 수립 | 0.22d | 2007-11-23 A | 2007-11-23 A |  | 100% | 2007-11-23 | 2007-11-23 | 0.22d |  | 김동겸; 정현수; 박종성; 하상수; 김수창; 고윤정; 최성환; 정세윤; 오은경 | 16h | 16h | 2 | 2 | 2 | 테스트 설계 | C02-1 1.3.6 |  |
| 158 | 2.4.1.2 | NACF 프레임웍 Release 구성항목 정의 | 0.22d | 2007-11-30 A | 2007-11-30 A |  | 100% | 2007-11-30 | 2007-11-30 | 0.22d | start no earlier than 2007-11-30 | 김동겸; 정현수; 박종성; 하상수; 김수창; 고윤정; 최성환; 정세윤; 오은경 | 16h | 16h | 2 | 2 | 2 | 테스트 설계 | C02-1 1.3.6 |  |
| 159 | 2.4.1.3 | NACF 프레임웍 Release Script 작성 | 0.22d | 2007-11-30 A | 2007-11-30 A |  | 100% | 2007-11-30 | 2007-11-30 | 0.22d | start no earlier than 2007-11-30 | 김동겸; 정현수; 박종성; 하상수; 김수창; 고윤정; 최성환; 정세윤; 오은경 | 16h | 16h | 2 | 2 | 2 | 테스트 설계 | C02-1 1.3.6 |  |
| 160 | 2.4.1.4 | 프레임웍 개발자매뉴얼 작성 | 0.56d | 2007-12-03 A | 2007-12-03 A |  | 100% | 2007-12-03 | 2007-12-03 | 0.56d | start no earlier than 2007-12-03 | 김동겸; 정현수; 박종성; 하상수; 김수창; 고윤정; 최성환; 정세윤; 오은경 | 40h | 40h | 5 | 5 | 5 | 테스트 설계 | C02-1 1.3.6 | 개발자가이드 |
| 161 | 2.4.1.5 | 프레임웍 개발표준지침서 작성 | 0.56d | 2007-12-03 A | 2007-12-03 A |  | 100% | 2007-12-03 | 2007-12-03 | 0.56d | start no earlier than 2007-12-03 | 김동겸; 정현수; 박종성; 하상수; 김수창; 고윤정; 최성환; 정세윤; 오은경 | 40h | 40h | 5 | 5 | 5 | 테스트 설계 | C02-1 1.3.6 | 개발표준지침서 |

| ID | WBS | Task | Duration | Start | Finish | Predecessors | Complete | Remaining | Baseline start | Baseline finish | Baseline duration | Total slack | Constraint | Resources | Work | Actual work | Cost | Baseline cost | Actual cost | Text20 | Text26 | Text30 |
| --- | --- | --- | --- | --- | --- | --- | --- | --- | --- | --- | --- | --- | --- | --- | --- | --- | --- | --- | --- | --- | --- | --- |
| 162 | 2.4.2 | **NACF 프레임웍 Release** | 7.67d | 2007-11-23 A | 2007-12-04 A |  | 100% |  | 2007-11-23 | 2007-12-04 | 7.67d |  |  |  | 48h | 48h | 6 | 6 | 6 | 테스트 설계 | C02-1 1.3.6 |  |
| 163 | 2.4.2.1 | Release | 4d | 2007-11-23 A | 2007-11-29 A |  | 100% |  | 2007-11-23 | 2007-11-29 | 4d |  |  | 정현수 | 32h | 32h | 4 | 4 | 4 | 테스트 설계 | C02-1 1.3.6 |  |
| 164 | 2.4.2.2 | Packaging | 2d | 2007-12-03 A | 2007-12-04 A |  | 100% |  | 2007-12-03 | 2007-12-04 | 2d |  | start no earlier than 2007-12-03 | 정현수 | 16h | 16h | 2 | 2 | 2 | 테스트 설계 | C02-1 1.3.6 |  |
| 165 | 2.5 | **설계단계완료 품질검토** | 81d? | 2007-09-03 A | 2007-12-31 A |  | 100% |  | 2007-09-03 | 2007-12-31 | 81d? |  |  |  | 5912h | 5912h | 739 | 739 | 739 | 단계완료 | C02-1 1.6.8 |  |
| 166 | 2.5.1 | QAO심사(2차) 및 조치 | 51d | 2007-09-03 A | 2007-11-16 A |  | 100% |  | 2007-09-03 | 2007-11-16 | 51d |  | start no earlier than 2007-09-03 | 김동겸; 정현수; 박종성; 하상수; 김수창; 고윤정; 최성환; 정세윤; 오은경 | 3672h | 3672h | 459 | 459 | 459 | 단계완료 | C02-1 1.6.8 |  |
| 167 | 2.5.2 | **산출물 Inspection** | 10d | 2007-11-19 A | 2007-11-30 A |  | 100% |  | 2007-11-19 | 2007-11-30 | 10d |  |  |  | 800h | 800h | 100 | 100 | 100 | 단계완료 | C02-1 1.6.8 |  |
| 168 | 2.5.2.1 | Inspection실시 | 1.11d | 2007-11-29 A | 2007-11-30 A |  | 100% |  | 2007-11-29 | 2007-11-30 | 1.11d |  | finish no earlier than 2007-11-30 | 김동겸; 정현수; 박종성; 하상수; 김수창; 고윤정; 최성환; 정세윤; 오은경 | 80h | 80h | 10 | 10 | 10 | 단계완료 | C02-1 1.6.8 |  |
| 169 | 2.5.2.2 | 시정조치 | 10d | 2007-11-19 A | 2007-11-30 A |  | 100% |  | 2007-11-19 | 2007-11-30 | 10d |  | finish no earlier than 2007-11-30 | 김동겸; 정현수; 박종성; 하상수; 김수창; 고윤정; 최성환; 정세윤; 오은경 | 720h | 720h | 90 | 90 | 90 | 단계완료 | C02-1 1.6.8 |  |
| 170 | 2.5.3 | 요구사항추적표 매핑 | 5d | 2007-11-26 A | 2007-11-30 A |  | 100% |  | 2007-11-26 | 2007-11-30 | 5d |  | finish no earlier than 2007-11-30 | 김동겸; 정현수; 박종성; 하상수; 김수창; 고윤정; 최성환; 정세윤; 오은경 | 360h | 360h | 45 | 45 | 45 | 단계완료 | C02-1 1.6.8 | 요구사항추적표 |
| 171 | 2.5.4 | 고객검토(2차) 실시 및 조치 | 5d? | 2007-12-03 A | 2007-12-07 A |  | 100% |  | 2007-12-03 | 2007-12-07 | 5d? |  | finish no earlier than 2007-12-07 | 김동겸; 정현수; 박종성; 하상수; 김수창; 고윤정; 최성환; 정세윤; 오은경 | 360h | 360h | 45 | 45 | 45 | 단계완료 | C02-1 1.6.8 |  |
| 172 | 2.5.5 | 프레임웍 검수 | 10d | 2007-12-17 A | 2007-12-31 A |  | 100% |  | 2007-12-17 | 2007-12-31 | 10d |  | finish no earlier than 2007-12-31 | 김동겸; 정현수; 박종성; 하상수; 김수창; 고윤정; 최성환; 정세윤; 오은경 | 720h | 720h | 90 | 90 | 90 | 단계완료 | C02-1 1.6.8 |  |
| 173 | 3 | **개발** | 102d | 2008-01-02 A | 2008-05-30 | 52 | 88% | 12d | 2008-01-02 | 2008-05-30 | 102d | 205d |  |  | 7344h | 6480h | 918 | 918 | 810 | 개발 | C02-1 1.4 |  |
| 174 | 3.1 | **개발 지원** | 88d | 2008-01-02 A | 2008-05-09 A |  | 100% |  | 2008-01-02 | 2008-05-09 | 88d |  |  |  | 6336h | 6336h | 792 | 792 | 792 | 코딩 및 단위테스트 실시 | C02-1 1.4.1 |  |
| 175 | 3.1.1 | 업무팀 코딩 및 단위테스트 지원 | 88d | 2008-01-02 A | 2008-05-09 A |  | 100% |  | 2008-01-02 | 2008-05-09 | 88d |  | finish no earlier than 2008-05-09 | 김동겸; 정현수; 박종성; 하상수; 김수창; 고윤정; 최성환; 정세윤; 오은경 | 6336h | 6336h | 792 | 792 | 792 | 코딩 및 단위테스트 실시 | C02-1 1.4.1 | 개발지원결과서 |
| 176 | 3.2 | **개발단계완료 품질검토** | 14d | 2008-05-13 A | 2008-05-30 |  | 14% | 12d | 2008-05-13 | 2008-05-30 | 14d | 205d |  |  | 1008h | 144h | 126 | 126 | 18 | 품질활동수행 | C02-1 1.6.2 |  |
| 177 | 3.2.1 | **산출물 Inspection** | 2d | 2008-05-13 A | 2008-05-14 A |  | 100% |  | 2008-05-13 | 2008-05-14 | 2d |  |  |  | 144h | 144h | 18 | 18 | 18 | 품질활동수행 | C02-1 1.6.2 |  |
| 178 | 3.2.1.1 | Inspection실시 | 1d | 2008-05-13 A | 2008-05-13 A |  | 100% |  | 2008-05-13 | 2008-05-13 | 1d |  | finish no earlier than 2008-05-13 | 김동겸; 정현수; 박종성; 하상수; 김수창; 고윤정; 최성환; 정세윤; 오은경 | 72h | 72h | 9 | 9 | 9 | 품질활동수행 | C02-1 1.6.2 |  |
| 179 | 3.2.1.2 | 조치계획수립 및 수행 | 1d | 2008-05-14 A | 2008-05-14 A |  | 100% |  | 2008-05-14 | 2008-05-14 | 1d |  | finish no earlier than 2008-05-14 | 김동겸; 정현수; 박종성; 하상수; 김수창; 고윤정; 최성환; 정세윤; 오은경 | 72h | 72h | 9 | 9 | 9 | 품질활동수행 | C02-1 1.6.2 |  |
| 180 | 3.2.2 | 고객검토 | 12d | 2008-05-15 | 2008-05-30 |  |  |  | 2008-05-15 | 2008-05-30 | 12d | 205d | finish no earlier than 2008-05-30 | 김동겸; 정현수; 박종성; 하상수; 김수창; 고윤정; 최성환; 정세윤; 오은경 | 864h |  | 108 | 108 |  | 품질활동수행 | C02-1 1.6.2 |  |
| 181 | 4 | **통합 테스트** | 43d? | 2008-06-02 A | 2008-08-01 A | 173 | 100% |  | 2008-06-02 | 2008-08-01 | 43d? |  |  |  | 3544h | 3544h | 443 | 443 | 443 | 개발 | C02-1 1.4 | 아키텍처검증결과서 |
| 182 | 4.1 | **통합 테스트 1차** | 15d | 2008-06-02 A | 2008-06-23 A |  | 100% |  | 2008-06-02 | 2008-06-23 | 15d |  |  |  | 472h | 472h | 59 | 59 | 59 | 테스트 실시 | C02-1 1.4.2 |  |
| 183 | 4.1.1 | 통합테스트환경구축 | 5d | 2008-06-02 A | 2008-06-09 A |  | 100% |  | 2008-06-02 | 2008-06-09 | 5d |  | finish no earlier than 2008-06-09 | 정현수 | 40h | 40h | 5 | 5 | 5 | 테스트 실시 | C02-1 1.4.2 |  |
| 184 | 4.1.2 | 통합테스트 실시 | 5d | 2008-06-09 A | 2008-06-13 A |  | 100% |  | 2008-06-09 | 2008-06-13 | 5d |  | finish no earlier than 2008-06-13 |  |  |  |  |  |  | 테스트 실시 | C02-1 1.4.2 |  |
| 185 | 4.1.3 | 시스템튜닝 | 6d | 2008-06-16 A | 2008-06-23 A | 184 | 100% |  | 2008-06-16 | 2008-06-23 | 6d |  | finish no earlier than 2008-06-23 | 김동겸; 정현수; 박종성; 하상수; 김수창; 고윤정; 최성환; 정세윤; 오은경 | 432h | 432h | 54 | 54 | 54 | 테스트 실시 | C02-1 1.4.2 |  |

| ID | WBS | Task | Duration | Start | Finish | Predecessors | Complete | Remaining | Baseline start | Baseline finish | Baseline duration | Total slack | Constraint | Resources | Work | Actual work | Cost | Baseline cost | Actual cost | Text20 | Text26 |
| --- | --- | --- | --- | --- | --- | --- | --- | --- | --- | --- | --- | --- | --- | --- | --- | --- | --- | --- | --- | --- | --- |
| 186 | 4.2 | **통합 테스트 2차** | 15d | 2008-06-16 A | 2008-07-04 A |  | 100% |  | 2008-06-16 | 2008-07-04 | 15d |  |  |  | 408h | 408h | 51 | 51 | 51 | 테스트 실시 | C02-1 1.4.2 |
| 187 | 4.2.1 | 통합테스트환경구축 | 6d | 2008-06-16 A | 2008-06-23 A |  | 100% |  | 2008-06-16 | 2008-06-23 | 6d |  | finish no earlier than 2008-06-23 | 정현수 | 48h | 48h | 6 | 6 | 6 | 테스트 실시 | C02-1 1.4.2 |
| 188 | 4.2.2 | 통합테스트 실시 | 4d | 2008-06-24 A | 2008-06-27 A |  | 100% |  | 2008-06-24 | 2008-06-27 | 4d |  | finish no earlier than 2008-06-27 |  |  |  |  |  |  | 테스트 실시 | C02-1 1.4.2 |
| 189 | 4.2.3 | 시스템튜닝 | 5d | 2008-06-30 A | 2008-07-04 A | 188 | 100% |  | 2008-06-30 | 2008-07-04 | 5d |  | finish no earlier than 2008-07-04 | 김동겸; 정현수; 박종성; 하상수; 김수창; 고윤정; 최성환; 정세윤; 오은경 | 360h | 360h | 45 | 45 | 45 | 테스트 실시 | C02-1 1.4.2 |
| 190 | 4.3 | **통합 테스트 3차** | 14d | 2008-06-30 A | 2008-07-18 A |  | 100% |  | 2008-06-30 | 2008-07-18 | 14d |  |  |  | 328h | 328h | 41 | 41 | 41 | 테스트 실시 | C02-1 1.4.2 |
| 191 | 4.3.1 | 통합테스트환경구축 | 5d | 2008-06-30 A | 2008-07-04 A |  | 100% |  | 2008-06-30 | 2008-07-04 | 5d |  | start no earlier than 2008-06-30 | 정현수 | 40h | 40h | 5 | 5 | 5 | 테스트 실시 | C02-1 1.4.2 |
| 192 | 4.3.2 | 통합테스트 실시 | 5d | 2008-07-07 A | 2008-07-11 A |  | 100% |  | 2008-07-07 | 2008-07-11 | 5d |  | finish no earlier than 2008-07-11 |  |  |  |  |  |  | 테스트 실시 | C02-1 1.4.2 |
| 193 | 4.3.3 | 시스템튜닝 | 4d | 2008-07-14 A | 2008-07-18 A | 192 | 100% |  | 2008-07-14 | 2008-07-18 | 4d |  | finish no earlier than 2008-07-18 | 김동겸; 정현수; 박종성; 하상수; 김수창; 고윤정; 최성환; 정세윤; 오은경 | 288h | 288h | 36 | 36 | 36 | 테스트 실시 | C02-1 1.4.2 |
| 194 | 4.4 | **통합 테스트 4차** | 13d | 2008-07-14 A | 2008-07-31 A |  | 100% |  | 2008-07-14 | 2008-07-31 | 13d |  |  |  | 320h | 320h | 40 | 40 | 40 | 테스트 실시 | C02-1 1.4.2 |
| 195 | 4.4.1 | 통합테스트환경구축 | 4d | 2008-07-14 A | 2008-07-18 A |  | 100% |  | 2008-07-14 | 2008-07-18 | 4d |  | finish no earlier than 2008-07-18 | 정현수 | 32h | 32h | 4 | 4 | 4 | 테스트 실시 | C02-1 1.4.2 |
| 196 | 4.4.2 | 통합테스트 실시 | 5d | 2008-07-21 A | 2008-07-25 A |  | 100% |  | 2008-07-21 | 2008-07-25 | 5d |  | start no earlier than 2008-07-21 |  |  |  |  |  |  | 테스트 실시 | C02-1 1.4.2 |
| 197 | 4.4.3 | 시스템튜닝 | 4d | 2008-07-28 A | 2008-07-31 A | 196 | 100% |  | 2008-07-28 | 2008-07-31 | 4d |  | finish no earlier than 2008-07-18 | 김동겸; 정현수; 박종성; 하상수; 김수창; 고윤정; 최성환; 정세윤; 오은경 | 288h | 288h | 36 | 36 | 36 | 테스트 실시 | C02-1 1.4.2 |
| 198 | 4.5 | **통합테스트단계완료 품질검토** | 34d? | 2008-06-16 A | 2008-08-01 A |  | 100% |  | 2008-06-16 | 2008-08-01 | 34d? |  |  |  | 2016h | 2016h | 252 | 252 | 252 | 품질활동수행 | C02-1 1.6.2 |
| 199 | 4.5.1 | QAO심사(4차) | 10d? | 2008-06-16 A | 2008-06-27 A |  | 100% |  | 2008-06-16 | 2008-06-27 | 10d? |  | finish no earlier than 2008-06-27 |  |  |  |  |  |  | 품질활동수행 | C02-1 1.6.2 |
| 200 | 4.5.2 | **산출물 Inspection** | 14d | 2008-07-07 A | 2008-07-25 A |  | 100% |  | 2008-07-07 | 2008-07-25 | 14d |  |  |  | 2016h | 2016h | 252 | 252 | 252 | 품질활동수행 | C02-1 1.6.2 |
| 201 | 4.5.2.1 | Inspection실시 | 14d | 2008-07-07 A | 2008-07-25 A |  | 100% |  | 2008-07-07 | 2008-07-25 | 14d |  | finish no earlier than 2008-07-25 | 김동겸; 정현수; 박종성; 하상수; 김수창; 고윤정; 최성환; 정세윤; 오은경 | 1008h | 1008h | 126 | 126 | 126 | 품질활동수행 | C02-1 1.6.2 |
| 202 | 4.5.2.2 | 조치계획수립 및 수행 | 14d | 2008-07-07 A | 2008-07-25 A |  | 100% |  | 2008-07-07 | 2008-07-25 | 14d |  | finish no earlier than 2008-07-25 | 김동겸; 정현수; 박종성; 하상수; 김수창; 고윤정; 최성환; 정세윤; 오은경 | 1008h | 1008h | 126 | 126 | 126 | 품질활동수행 | C02-1 1.6.2 |
| 203 | 4.5.3 | 요구사항추적표 매핑 | 5d? | 2008-07-28 A | 2008-08-01 A |  | 100% |  | 2008-07-28 | 2008-08-01 | 5d? |  | finish no earlier than 2008-08-01 |  |  |  |  |  |  | 품질활동수행 | C02-1 1.6.2 |
| 204 | 5 | **영업점 테스트** | 125d? | 2008-08-04 A | 2009-01-30 | 181 | 52% | 60.26d? | 2008-08-04 | 2009-01-30 | 125d? | 37d |  |  | 8824.02h | 5856.02h | 1,103 | 1,103 | 732 | 개발 | C02-1 1.4 |
| 205 | 5.1 | **1차 시범점테스트 실시** | 14d | 2008-08-11 A | 2008-08-29 A |  | 100% |  | 2008-08-11 | 2008-08-29 | 14d |  |  |  | 1120h | 1120h | 140 | 140 | 140 | 테스트 실시 | C02-1 1.4.2 |
| 206 | 5.1.1 | 시범점테스트 실시 | 14d | 2008-08-11 A | 2008-08-29 A |  | 100% |  | 2008-08-11 | 2008-08-29 | 14d |  | finish no earlier than 2008-08-29 | 정현수 | 112h | 112h | 14 | 14 | 14 | 테스트 실시 | C02-1 1.4.2 |
| 207 | 5.1.2 | 보완 | 14d | 2008-08-11 A | 2008-08-29 A |  | 100% |  | 2008-08-11 | 2008-08-29 | 14d |  | start no earlier than 2008-08-11 | 김동겸; 정현수; 박종성; 하상수; 김수창; 고윤정; 최성환; 정세윤; 오은경 | 1008h | 1008h | 126 | 126 | 126 | 테스트 실시 | C02-1 1.4.2 |
| 208 | 5.2 | **2차 시범점테스트 실시** | 15d | 2008-08-29 A | 2008-09-19 A |  | 100% |  | 2008-08-29 | 2008-09-19 | 15d |  |  |  | 1200h | 1200h | 150 | 150 | 150 | 테스트 실시 | C02-1 1.4.2 |
| 209 | 5.2.1 | 시범점테스트 실시 | 15d | 2008-08-29 A | 2008-09-19 A |  | 100% |  | 2008-08-29 | 2008-09-19 | 15d |  | finish no earlier than 2008-09-19 | 정현수 | 120h | 120h | 15 | 15 | 15 | 테스트 실시 | C02-1 1.4.2 |
| 210 | 5.2.2 | 보완 | 15d | 2008-08-29 A | 2008-09-19 A |  | 100% |  | 2008-08-29 | 2008-09-19 | 15d |  | start no earlier than 2008-08-29 | 김동겸; 정현수; 박종성; 하상수; 김수창; 고윤정; 최성환; 정세윤; 오은경 | 1080h | 1080h | 135 | 135 | 135 | 테스트 실시 | C02-1 1.4.2 |

| ID | WBS | Task | Duration | Start | Finish | Predecessors | Complete | Baseline start | Baseline finish | Baseline duration | Total slack | Constraint | Resources | Work | Actual work | Cost | Baseline cost | Actual cost | Text20 | Text26 | Text30 |
| --- | --- | --- | --- | --- | --- | --- | --- | --- | --- | --- | --- | --- | --- | --- | --- | --- | --- | --- | --- | --- | --- |
| 211 | 5.3 | **1차 영업점테스트 실시** | 7d | 2008-09-22 A | 2008-09-30 A |  | 100% | 2008-09-22 | 2008-09-30 | 7d |  |  |  | 560h | 560h | 70 | 70 | 70 | 테스트 실시 | C02-1 1.4.2 |  |
| 212 | 5.3.1 | 영업점테스트 실시 | 7d | 2008-09-22 A | 2008-09-30 A |  | 100% | 2008-09-22 | 2008-09-30 | 7d |  | start no earlier than 2008-09-22 | 정현수 | 56h | 56h | 7 | 7 | 7 | 테스트 실시 | C02-1 1.4.2 |  |
| 213 | 5.3.2 | 보완 | 7d | 2008-09-22 A | 2008-09-30 A |  | 100% | 2008-09-22 | 2008-09-30 | 7d |  | start no earlier than 2008-09-22 | 김동겸; 정현수; 박종성; 하상수; 김수창; 고윤정; 최성환; 정세윤; 오은경 | 504h | 504h | 63 | 63 | 63 | 테스트 실시 | C02-1 1.4.2 |  |
| 214 | 5.4 | **2차 영업점테스트 실시** | 15d | 2008-10-13 A | 2008-10-31 A |  | 100% | 2008-10-13 | 2008-10-31 | 15d |  |  |  | 1200h | 1200h | 150 | 150 | 150 | 테스트 실시 | C02-1 1.4.2 |  |
| 215 | 5.4.1 | 영업점테스트 실시 | 15d | 2008-10-13 A | 2008-10-31 A |  | 100% | 2008-10-13 | 2008-10-31 | 15d |  | finish no earlier than 2008-10-31 | 정현수 | 120h | 120h | 15 | 15 | 15 | 테스트 실시 | C02-1 1.4.2 |  |
| 216 | 5.4.2 | 보완 | 15d | 2008-10-13 A | 2008-10-31 A |  | 100% | 2008-10-13 | 2008-10-31 | 15d |  | start no earlier than 2008-10-13 | 김동겸; 정현수; 박종성; 하상수; 김수창; 고윤정; 최성환; 정세윤; 오은경 | 1080h | 1080h | 135 | 135 | 135 | 테스트 실시 | C02-1 1.4.2 |  |
| 217 | 5.5 | **3차 영업점테스트 실시** | 6d | 2008-11-03 A | 2008-11-10 A |  | 100% | 2008-11-03 | 2008-11-10 | 6d |  |  |  | 480h | 480h | 60 | 60 | 60 | 테스트 실시 | C02-1 1.4.2 |  |
| 218 | 5.5.1 | 영업점테스트 실시 | 6d | 2008-11-03 A | 2008-11-10 A |  | 100% | 2008-11-03 | 2008-11-10 | 6d |  | finish no earlier than 2008-11-10 | 정현수 | 48h | 48h | 6 | 6 | 6 | 테스트 실시 | C02-1 1.4.2 |  |
| 219 | 5.5.2 | 보완 | 6d | 2008-11-03 A | 2008-11-10 A |  | 100% | 2008-11-03 | 2008-11-10 | 6d |  | finish no earlier than 2008-11-10 | 김동겸; 정현수; 박종성; 하상수; 김수창; 고윤정; 최성환; 정세윤; 오은경 | 432h | 432h | 54 | 54 | 54 | 테스트 실시 | C02-1 1.4.2 |  |
| 220 | 5.6 | **4차 영업점테스트 실시** | 11d | 2008-11-14 A | 2008-11-28 A |  | 100% | 2008-11-14 | 2008-11-28 | 11d |  |  |  | 880h | 880h | 110 | 110 | 110 | 테스트 실시 | C02-1 1.4.2 |  |
| 221 | 5.6.1 | 영업점테스트 실시 | 11d | 2008-11-14 A | 2008-11-28 A |  | 100% | 2008-11-14 | 2008-11-28 | 11d |  | finish no earlier than 2008-11-28 | 정현수 | 88h | 88h | 11 | 11 | 11 | 테스트 실시 | C02-1 1.4.2 |  |
| 222 | 5.6.2 | 보완 | 11d | 2008-11-14 A | 2008-11-28 A |  | 100% | 2008-11-14 | 2008-11-28 | 11d |  | start no earlier than 2008-11-14 | 김동겸; 정현수; 박종성; 하상수; 김수창; 고윤정; 최성환; 정세윤; 오은경 | 792h | 792h | 99 | 99 | 99 | 테스트 실시 | C02-1 1.4.2 |  |
| 223 | 5.7 | **5차 영업점테스트 실시** | 10d | 2008-12-08 | 2008-12-19 |  |  | 2008-12-08 | 2008-12-19 | 10d | 65d |  |  | 800h |  | 100 | 100 |  | 테스트 실시 | C02-1 1.4.2 |  |
| 224 | 5.7.1 | 영업점테스트 실시 | 10d | 2008-12-08 | 2008-12-19 |  |  | 2008-12-08 | 2008-12-19 | 10d | 65d | finish no earlier than 2008-12-19 | 정현수 | 80h |  | 10 | 10 |  | 테스트 실시 | C02-1 1.4.2 |  |
| 225 | 5.7.2 | 보완 | 10d | 2008-12-08 | 2008-12-19 |  |  | 2008-12-08 | 2008-12-19 | 10d | 65d | start no earlier than 2008-12-08 | 김동겸; 정현수; 박종성; 하상수; 김수창; 고윤정; 최성환; 정세윤; 오은경 | 720h |  | 90 | 90 |  | 테스트 실시 | C02-1 1.4.2 |  |
| 226 | 5.8 | 인수테스트 | 2d | 2009-01-08 | 2009-01-09 |  |  | 2009-01-08 | 2009-01-09 | 2d | 52d | finish no earlier than 2009-01-09 | 김동겸; 정현수; 박종성; 하상수; 김수창; 고윤정; 최성환; 정세윤; 오은경 | 144h |  | 18 | 18 |  | 테스트 실시 | C02-1 1.4.2 |  |
| 227 | 5.9 | **시스템 운영자 교육** | 2.44d | 2008-08-04 A | 2008-08-06 A |  | 100% | 2008-08-04 | 2008-08-06 | 2.44d |  |  |  | 296.02h | 296.02h | 37 | 37 | 37 | 시스템 사용교육 | C02-1 1.5.3 |  |
| 228 | 5.9.1 | **시스템 운영자 교육 계획** | 0.56d | 2008-08-04 A | 2008-08-04 A |  | 100% | 2008-08-04 | 2008-08-04 | 0.56d |  |  |  | 80h | 80h | 10 | 10 | 10 | 시스템 사용교육 | C02-1 1.5.3 |  |
| 229 | 5.9.1.1 | 부문별 운영자 지정 및 역할 지정 | 0.56d | 2008-08-04 A | 2008-08-04 A |  | 100% | 2008-08-04 | 2008-08-04 | 0.56d |  |  | 김동겸; 정현수; 박종성; 하상수; 김수창; 고윤정; 최성환; 정세윤; 오은경 | 40h | 40h | 5 | 5 | 5 | 시스템 사용교육 | C02-1 1.5.3 |  |
| 230 | 5.9.1.2 | 인수 인계 대상 방법 및 일정 수립 | 0.56d | 2008-08-04 A | 2008-08-04 A |  | 100% | 2008-08-04 | 2008-08-04 | 0.56d |  |  | 김동겸; 정현수; 박종성; 하상수; 김수창; 고윤정; 최성환; 정세윤; 오은경 | 40h | 40h | 5 | 5 | 5 | 시스템 사용교육 | C02-1 1.5.3 |  |
| 231 | 5.9.2 | **시스템 운영자 매뉴얼 작성** | 1.11d | 2008-08-04 A | 2008-08-05 A | 230 | 100% | 2008-08-04 | 2008-08-05 | 1.11d |  |  |  | 160.01h | 160.01h | 20 | 20 | 20 | 시스템 사용교육 | C02-1 1.5.3 |  |
| 232 | 5.9.2.1 | 운영 매뉴얼 | 1.11d | 2008-08-04 A | 2008-08-05 A |  | 100% | 2008-08-04 | 2008-08-05 | 1.11d |  |  | 김동겸; 정현수; 박종성; 하상수; 김수창; 고윤정; 최성환; 정세윤; 오은경 | 80.01h | 80.01h | 10 | 10 | 10 | 시스템 사용교육 | C02-1 1.5.3 | 운영메뉴얼 |
| 233 | 5.9.2.2 | 형상관리 가이드 | 1.11d | 2008-08-04 A | 2008-08-05 A |  | 100% | 2008-08-04 | 2008-08-05 | 1.11d |  |  | 김동겸; 정현수; 박종성; 하상수; 김수창; 고윤정; 최성환; 정세윤; 오은경 | 80h | 80h | 10 | 10 | 10 | 시스템 사용교육 | C02-1 1.5.3 |  |
| 234 | 5.9.3 | 시스템 운영자 교육 및 인수인계 | 0.78d | 2008-08-05 A | 2008-08-06 A | 231 | 100% | 2008-08-05 | 2008-08-06 | 0.78d |  |  | 김동겸; 정현수; 박종성; 하상수; 김수창; 고윤정; 최성환; 정세윤; 오은경 | 56.01h | 56.01h | 7 | 7 | 7 | 시스템 사용교육 | C02-1 1.5.3 |  |

| ID | WBS | Task | Duration | Start | Finish | Predecessors | Complete | Remaining | Baseline start | Baseline finish | Baseline duration | Total slack | Constraint | Resources | Work | Actual work | Cost | Baseline cost | Actual cost | Text20 | Text26 |
| --- | --- | --- | --- | --- | --- | --- | --- | --- | --- | --- | --- | --- | --- | --- | --- | --- | --- | --- | --- | --- | --- |
| 235 | 5.10 | **이행준비** | 119.67d | 2008-08-06 A | 2009-01-28 | 227 | 94% | 7.47d | 2008-08-06 | 2009-01-28 | 119.67d | 39.89d |  |  | 128h | 120h | 16 | 16 | 15 | 컨버전 및 릴리이즈 | C02-1 1.5.2 |
| 236 | 5.10.1 | **이행 계획 수립** | 1.11d | 2008-08-06 A | 2008-08-07 A |  | 100% |  | 2008-08-06 | 2008-08-07 | 1.11d |  |  |  | 120h | 120h | 15 | 15 | 15 | 컨버전 및 릴리이즈 | C02-1 1.5.2 |
| 237 | 5.10.1.1 | Check List 작성 | 0.56d | 2008-08-06 A | 2008-08-06 A |  | 100% |  | 2008-08-06 | 2008-08-06 | 0.56d |  |  | 김동겸; 정현수; 박종성; 하상수; 김수창; 고윤정; 최성환; 정세윤; 오은경 | 40h | 40h | 5 | 5 | 5 | 컨버전 및 릴리이즈 | C02-1 1.5.2 |
| 238 | 5.10.1.2 | 비상 복구방안 수립 | 0.56d | 2008-08-07 A | 2008-08-07 A | 237 | 100% |  | 2008-08-07 | 2008-08-07 | 0.56d |  |  | 김동겸; 정현수; 박종성; 하상수; 김수창; 고윤정; 최성환; 정세윤; 오은경 | 40h | 40h | 5 | 5 | 5 | 컨버전 및 릴리이즈 | C02-1 1.5.2 |
| 239 | 5.10.1.3 | OPEN 방안 수립 | 0.56d | 2008-08-07 A | 2008-08-07 A | 237 | 100% |  | 2008-08-07 | 2008-08-07 | 0.56d |  |  | 김동겸; 정현수; 박종성; 하상수; 김수창; 고윤정; 최성환; 정세윤; 오은경 | 40h | 40h | 5 | 5 | 5 | 컨버전 및 릴리이즈 | C02-1 1.5.2 |
| 240 | 5.10.2 | **이행실시** | 0.11d | 2009-01-28 | 2009-01-28 |  |  |  | 2009-01-28 | 2009-01-28 | 0.11d | 39.89d |  |  | 8h |  | 1 | 1 |  | 컨버전 및 릴리이즈 | C02-1 1.5.2 |
| 241 | 5.10.2.1 | 운영 시스템 OPEN | 0.11d | 2009-01-28 | 2009-01-28 |  |  |  | 2009-01-28 | 2009-01-28 | 0.11d | 39.89d | start no earlier than 2009-01-28 | 김동겸; 정현수; 박종성; 하상수; 김수창; 고윤정; 최성환; 정세윤; 오은경 | 8h |  | 1 | 1 |  | 컨버전 및 릴리이즈 | C02-1 1.5.2 |
| 242 | 5.11 | **영업점테스트단계완료 품질검토** | 111d? | 2008-08-25 A | 2009-01-30 |  | 6% | 104.86d? | 2008-08-25 | 2009-01-30 | 111d? | 37d |  |  | 2016h |  | 252 | 252 |  | 품질활동수행 | C02-1 1.6.2 |
| 243 | 5.11.1 | QAO심사(5차) | 68d? | 2008-08-25 A | 2008-11-28 |  | 10% | 61.2d? | 2008-08-25 | 2008-11-28 | 68d? | 80d | finish no earlier than 2008-11-28 |  |  |  |  |  |  | 품질활동수행 | C02-1 1.6.2 |
| 244 | 5.11.2 | 예비제품검사 | 7d? | 2008-12-22 | 2008-12-31 |  |  |  | 2008-12-22 | 2008-12-31 | 7d? | 58d | finish no earlier than 2008-12-31 |  |  |  |  |  |  | 품질활동수행 | C02-1 1.6.2 |
| 245 | 5.11.3 | 제품검사 | 10d? | 2009-01-19 | 2009-01-30 |  |  |  | 2009-01-19 | 2009-01-30 | 10d? | 37d | finish no earlier than 2009-01-30 |  |  |  |  |  |  | 품질활동수행 | C02-1 1.6.2 |
| 246 | 5.11.4 | **산출물 Inspection** | 17d? | 2008-12-08 | 2008-12-31 |  |  |  | 2008-12-08 | 2008-12-31 | 17d? | 58d |  |  | 2016h |  | 252 | 252 |  | 품질활동수행 | C02-1 1.6.2 |
| 247 | 5.11.4.1 | Inspection실시 | 14d | 2008-12-08 | 2008-12-26 |  |  |  | 2008-12-08 | 2008-12-26 | 14d | 61d | start no earlier than 2008-12-08 | 김동겸; 정현수; 박종성; 하상수; 김수창; 고윤정; 최성환; 정세윤; 오은경 | 1008h |  | 126 | 126 |  | 품질활동수행 | C02-1 1.6.2 |
| 248 | 5.11.4.2 | 조치계획수립 및 수행 | 14d | 2008-12-08 | 2008-12-26 |  |  |  | 2008-12-08 | 2008-12-26 | 14d | 61d | start no earlier than 2008-12-08 | 김동겸; 정현수; 박종성; 하상수; 김수창; 고윤정; 최성환; 정세윤; 오은경 | 1008h |  | 126 | 126 |  | 품질활동수행 | C02-1 1.6.2 |
| 249 | 5.11.4.3 | 고객검토(3차) | 7d? | 2008-12-22 | 2008-12-31 |  |  |  | 2008-12-22 | 2008-12-31 | 7d? | 58d | finish no earlier than 2008-12-31 |  |  |  |  |  |  | 품질활동수행 | C02-1 1.6.2 |
| 250 | 5.11.5 | 요구사항추적표 매핑 | 3d? | 2008-12-29 | 2008-12-31 |  |  |  | 2008-12-29 | 2008-12-31 | 3d? | 58d | finish no earlier than 2008-12-31 |  |  |  |  |  |  | 품질활동수행 | C02-1 1.6.2 |
| 251 | 6 | **시스템 안정화** | 39d | 2009-01-29 | 2009-03-24 |  |  |  | 2009-01-29 | 2009-03-24 | 39d | 0d |  |  | 384h |  | 48 | 48 |  | 구현 | C02-1 1.5 |
| 252 | 6.1 | 운영관리 및 장애대응 지원 | 4.33d | 2009-01-29 | 2009-02-04 |  |  |  | 2009-01-29 | 2009-02-04 | 4.33d | 34.67d | start no earlier than 2009-01-29 | 김동겸; 정현수; 박종성; 하상수; 김수창; 고윤정; 최성환; 정세윤; 오은경 | 312h |  | 39 | 39 |  | 시범운영 | C02-1 1.5.4 |
| 253 | 6.2 | 프로젝트 종료 | 1d | 2009-03-24 | 2009-03-24 |  |  |  | 2009-03-24 | 2009-03-24 | 1d | 0d | start no earlier than 2009-03-24 | 김동겸; 정현수; 박종성; 하상수; 김수창; 고윤정; 최성환; 정세윤; 오은경 | 72h |  | 9 | 9 |  | 단계완료 | C02-1 1.6.8 |
