# 00.PMO

Schedule from MS Project, 2008-07-23 to 2009-10-23, status date 2008-12-19, A marks actual dates.
HSIC-0820606

## Calendars

- 한국: Mon-Fri 08:00-12:00, 13:00-17:00; Sat-Sun off. Exceptions (off unless hours are given): 2008-08-15, 2008-09-13 to 2008-09-15, 2008-10-03, 2008-12-25, 2009-01-01, 2009-01-25 to 2009-01-27, 2009-03-01, 2009-05-01 to 2009-05-02, 2009-05-05, 2009-06-06, 2009-08-15, 2009-10-02 to 2009-10-03.

## Resources

| Resource | Group |
| --- | --- |
| PMO | 사업관리 |
| QAO | 사업관리 |
| TM | 사업관리 |
| CMO | 사업관리 |
| PPQA | PPQA |
| SI Process | SI Process |
| PL | PL |
| SA |  |

## Schedule

| ID | WBS | Task | Duration | Start | Finish | Predecessors | Complete | Baseline start | Baseline finish | Baseline duration | Constraint | Resources | Work | Actual work | Text20 | Text22 | Text25 | Text26 | Text27 | Text28 | Text30 |
| --- | --- | --- | --- | --- | --- | --- | --- | --- | --- | --- | --- | --- | --- | --- | --- | --- | --- | --- | --- | --- | --- |
| 1 | 1 | **Inception** | 36d | 2008-07-23 A | 2008-09-11 A |  | 100% | 2008-07-23 | 2008-08-27 | 25d |  |  | 776h | 776h | 프로젝트 착수 | 477B57AC0EF102390000000046140A10 | 07061114O410023 | C02-1 1.1 | 00000000000000646627 | DEFAULT |  |
| 2 | 1.1 | **착수준비** | 16d | 2008-07-23 A | 2008-08-13 A |  | 100% | 2008-07-23 | 2008-08-13 | 16d |  |  | 144h | 144h | 착수준비 | 477B57AE0EF102390000000046140A10 | 07061114O410024 | C02-1 1.1.1 | 00000000000000646628 | DEFAULT |  |
| 3 | 1.1.1 | 업무범위 정의 | 5d | 2008-07-23 A | 2008-07-29 A |  | 100% | 2008-07-23 | 2008-07-29 | 5d | start no earlier than 2008-07-23 | PMO | 40h | 40h | 업무범위 정의 | 477B57B00EF102390000000046140A10 | 07061114O410024 | C02-1 1.1.1.1 | 00000000000000646629 | DEFAULT | 실무고객협의체 명단,업무범위 |
| 4 | 1.1.2 | 개발전략 수립 | 5d | 2008-07-23 A | 2008-07-29 A |  | 100% | 2008-07-23 | 2008-07-29 | 5d | start no earlier than 2008-07-23 | PMO | 40h | 40h | 개발전략 수립 | 477B57B20EF102390000000046140A10 | 07061114O410024 | C02-1 1.1.1.2 | 00000000000000646630 | DEFAULT | 개발전략 |
| 5 | 1.1.3 | SPM 정의 | 3d | 2008-08-11 A | 2008-08-13 A |  | 100% | 2008-08-11 | 2008-08-13 | 3d | start no earlier than 2008-08-11 | QAO | 24h | 24h | SPM 정의 | 477B57B40EF102390000000046140A10 | 07061114O410024 | C02-1 1.1.1.3 | 00000000000000646631 | DEFAULT | 표준 및 절차매뉴얼(SPM)(핵심) |
| 6 | 1.1.4 | 수행환경 구축 | 5d | 2008-07-23 A | 2008-07-29 A |  | 100% | 2008-07-23 | 2008-07-29 | 5d | start no earlier than 2008-07-23 | PMO | 40h | 40h | 수행환경 구축 | 477B57B60EF102390000000046140A10 | 07061114O410024 | C02-1 1.1.1.4 | 00000000000000646632 | DEFAULT | 수행환경 |
| 7 | 1.2 | **프로젝트 계획확정** | 26d | 2008-08-06 A | 2008-09-11 A |  | 100% | 2008-08-06 | 2008-08-14 | 7d |  |  | 56h | 56h | 프로젝트 계획확정 | 477B57D80EF102390000000046140A10 | 07060716O410050 | C02-1 1.1.3 | 00000000000000646649 | DEFAULT |  |
| 8 | 1.2.1 | 착수워크샵 | 1d | 2008-08-06 A | 2008-08-06 A |  | 100% | 2008-08-06 | 2008-08-06 | 1d | start no earlier than 2008-08-06 | PMO | 8h | 8h | 프로젝트계획 통합 및 검토 | 477B57DA0EF102390000000046140A10 | 07060716O410034 | C02-1 1.1.2.15 | 00000000000000646648 | DEFAULT | 사업수행계획서 |
| 9 | 1.2.2 | 프로젝트계획 승인획득 | 1d | 2008-08-06 A | 2008-08-06 A |  | 100% | 2008-08-06 | 2008-08-06 | 1d | start no earlier than 2008-08-06 | PMO | 8h | 8h | 프로젝트계획 승인획득 | 477B57DC0EF102390000000046140A10 | 07060716O410050 | C02-1 1.1.3.1 | 00000000000000646650 | DEFAULT | 사업수행계획서(핵심),과업대비표 |
| 10 | 1.2.3 | 프로젝트 착수보고 | 1d | 2008-08-06 A | 2008-08-06 A |  | 100% | 2008-08-06 | 2008-08-06 | 1d | start no earlier than 2008-08-06 | PMO | 8h | 8h | 프로젝트 착수보고 | 477B57E00EF102390000000046140A10 | 07060716O410050 | C02-1 1.1.3.3 | 00000000000000646652 | DEFAULT | 착수보고결과,착수보고서(핵심) |
| 11 | 1.2.4 | 착수점검 실시 | 4d | 2008-09-08 A | 2008-09-11 A |  | 100% | 2008-09-08 | 2008-09-11 | 4d | start no earlier than 2008-09-08 | PPQA | 32h | 32h | 착수점검 실시 | 477B57DE0EF102390000000046140A10 | 07060716O410050 | C02-1 1.1.3.2 | 00000000000000646651 | DEFAULT | 시정조치서,착수점검결과 |
| 12 | 1.3 | **프로젝트 계획** | 25d | 2008-07-23 A | 2008-08-27 A |  | 100% | 2008-07-23 | 2008-08-27 | 25d |  |  | 576h | 576h | 프로젝트 계획수립 | 477B57B80EF102390000000046140A10 | 07060716O410034 | C02-1 1.1.2 | 00000000000000646633 | DEFAULT |  |
| 13 | 1.3.1 | 프로젝트계획수립 준비 | 8d | 2008-07-30 A | 2008-08-08 A |  | 100% | 2008-07-30 | 2008-08-08 | 8d | start no earlier than 2008-07-30 | PMO | 64h | 64h | 프로젝트계획수립 준비 | 477B57BA0EF102390000000046140A10 | 07060716O410034 | C02-1 1.1.2.1 | 00000000000000646634 | DEFAULT | 프로젝트계획수립 계획 |
| 14 | 1.3.2 | 일정계획 수립 | 8d | 2008-08-04 A | 2008-08-13 A |  | 100% | 2008-08-04 | 2008-08-13 | 8d | start no earlier than 2008-08-04 | PMO | 64h | 64h | 일정계획 수립 | 477B57BC0EF102390000000046140A10 | 07060716O410034 | C02-1 1.1.2.2 | 00000000000000646635 | DEFAULT | 일정계획(i-PM)(핵심),일정관리계획 |
| 15 | 1.3.3 | 인력계획 수립 | 10d | 2008-07-23 A | 2008-08-05 A |  | 100% | 2008-07-23 | 2008-08-05 | 10d | start no earlier than 2008-07-23 | PMO | 80h | 80h | 인력계획 수립 | 477B57BE0EF102390000000046140A10 | 07060716O410034 | C02-1 1.1.2.3 | 00000000000000646636 | DEFAULT | 인력계획 |
| 16 | 1.3.4 | 의사소통관리계획 수립 | 8d | 2008-08-11 A | 2008-08-21 A | 13 | 100% | 2008-08-11 | 2008-08-21 | 8d |  | PMO | 64h | 64h | 의사소통관리계획 수립 | 477B57C00EF102390000000046140A10 | 07060716O410034 | C02-1 1.1.2.5 | 00000000000000646638 | DEFAULT | 의사소통관리계획 |
| 17 | 1.3.5 | 품질활동계획 수립 | 3d | 2008-08-11 A | 2008-08-13 A |  | 100% | 2008-08-11 | 2008-08-13 | 3d | start no earlier than 2008-08-11 | QAO | 24h | 24h | 품질활동계획 수립 | 477B57C20EF102390000000046140A10 | 07060716O410034 | C02-1 1.1.2.7 | 00000000000000646640 | DEFAULT | 품질활동계획서 |
| 18 | 1.3.6 | 협력업체협업계획 수립 | 8d | 2008-08-07 A | 2008-08-19 A |  | 100% | 2008-08-07 | 2008-08-19 | 8d | start no earlier than 2008-08-07 | PMO | 64h | 64h | 협력업체협업계획 수립 | 477B57C80EF102390000000046140A10 | 07060716O410034 | C02-1 1.1.2.10 | 00000000000000646643 | DEFAULT | 위탁업무내역서 |
| 19 | 1.3.7 | 프로젝트교육계획 수립 | 8d | 2008-08-18 A | 2008-08-27 A |  | 100% | 2008-08-18 | 2008-08-27 | 8d | start no earlier than 2008-08-18 | PMO | 64h | 64h | 프로젝트교육계획 수립 | 477B57CE0EF102390000000046140A10 | 07060716O410034 | C02-1 1.1.2.4 | 00000000000000646637 | DEFAULT | 프로젝트 교육계획 |
| 20 | 1.3.8 | 변경관리 계획수립 | 3d | 2008-08-11 A | 2008-08-13 A |  | 100% | 2008-08-11 | 2008-08-13 | 3d | start no earlier than 2008-08-11 | QAO | 24h | 24h | 변경관리 계획수립 | 477B57D00EF102390000000046140A10 | 07060716O410034 | C02-1 1.1.2.12 | 00000000000000646645 | DEFAULT | 변경관리계획 |
| 21 | 1.3.9 | 이슈 및 위험관리계획 수립 | 8d | 2008-08-04 A | 2008-08-13 A |  | 100% | 2008-08-04 | 2008-08-13 | 8d | start no earlier than 2008-08-04 | PMO | 64h | 64h | 이슈 및 위험관리계획 수립 | 477B57D20EF102390000000046140A10 | 07060716O410034 | C02-1 1.1.2.13 | 00000000000000646646 | DEFAULT | 이슈 및 위험관리계획,이슈 및 위험목록 |
| 22 | 1.3.10 | 프로젝트계획 통합 및 검토 | 8d | 2008-08-04 A | 2008-08-13 A |  | 100% | 2008-08-04 | 2008-08-13 | 8d | start no earlier than 2008-08-04 | PMO | 64h | 64h | 프로젝트계획 통합 및 검토 | 477B57D60EF102390000000046140A10 | 07060716O410034 | C02-1 1.1.2.15 | 00000000000000646648 | DEFAULT | 시정조치서,실행품의,과업수행계획서 |
| 23 | 2 | **Analysis/Design** | 42d | 2008-10-09 A | 2008-12-05 A |  | 100% | 2008-10-01 | 2008-12-05 | 47d |  |  | 24h | 24h | 설계 | 477B57FE0EF102390000000046140A10 | 07060716O410151 | C02-1 1.3 | 00000000000000646677 | DEFAULT |  |
| 24 | 2.1 | **분석단계 결과보고** | 2d | 2008-10-09 A | 2008-10-10 A |  | 100% | 2008-10-01 | 2008-10-07 | 4d |  |  | 16h | 16h | 단계완료 | 477B58160EF102390000000046140A10 |  | C02-1 1.6.8 |  |  |  |
| 25 | 2.1.1 | 분석단계워크샵 | 2d | 2008-10-09 A | 2008-10-10 A |  | 100% | 2008-10-09 | 2008-10-10 | 2d | start no earlier than 2008-10-09 | PMO | 16h | 16h | 프로젝트계획 단계검토 | 477B58020EF102390000000046140A10 |  | C02-1 1.6.1.1 |  |  |  |

| ID | WBS | Task | Duration | Start | Finish | Predecessors | Complete | Remaining | Baseline start | Baseline finish | Baseline duration | Total slack | Free slack | Constraint | Resources | Work | Actual work | Text20 | Text22 | Text26 | Text25 | Text27 | Text28 | Text30 |
| --- | --- | --- | --- | --- | --- | --- | --- | --- | --- | --- | --- | --- | --- | --- | --- | --- | --- | --- | --- | --- | --- | --- | --- | --- |
| 26 | 2.2 | **설계단계 결과보고** | 1d | 2008-12-05 A | 2008-12-05 A |  | 100% |  | 2008-12-05 | 2008-12-05 | 1d |  |  |  |  | 8h | 8h | 단계완료 | 477B58160EF102390000000046140A10 | C02-1 1.6.8 |  |  |  |  |
| 27 | 2.2.1 | 설계단계워크샵 | 1d | 2008-12-05 A | 2008-12-05 A |  | 100% |  | 2008-12-05 | 2008-12-05 | 1d |  |  | start no earlier than 2008-12-05 | PMO | 8h | 8h | 프로젝트계획 단계검토 | 477B58020EF102390000000046140A10 | C02-1 1.6.1.1 |  |  |  |  |
| 28 | 3 | **Build/Unit Test** | 71d | 2008-12-01 A | 2009-03-13 |  | 21% | 56.09d | 2008-12-01 | 2009-03-13 | 71d | 157d |  |  |  | 568h | 119.28h | 개발 | 477B581E0EF102390000000046140A10 | C02-1 1.4 | 07060716O410157 | 00000000000000646703 | DEFAULT |  |
| 29 | 3.1 | 개발 및 테스트 설계 지원/테스트 계획 수립 | 71d | 2008-12-01 A | 2009-03-13 |  | 21% | 56.09d | 2008-12-01 | 2009-03-13 | 71d | 157d |  | start no earlier than 2008-12-01 | TM | 568h | 119.28h | 테스트계획 수립 | 477B58260EF102390000000046140A10 | C02-1 1.3.6.1 | 07060716O410156 | 00000000000000646700 | DEFAULT | 테스트계획서, UAT시나리오 |
| 30 | 4 | **UAT(User Acceptance Test)** | 38d | 2009-04-13 | 2009-06-05 |  |  |  | 2009-04-13 | 2009-06-05 | 38d | 99d |  |  |  |  |  | 테스트실시 | 48648F580F9201F8E100800046140A10 | P02-1 1.4.2 | 07060716O410179 | 00000000000001277310 | DEFAULT |  |
| 31 | 4.1 | 사용자테스트 실시 지원 | 38d | 2009-04-13 | 2009-06-05 |  |  |  | 2009-04-13 | 2009-06-05 | 38d | 99d |  | start no earlier than 2009-04-13 |  |  |  | 테스트실시 | 48648F5A0F9201F8E100800046140A10 | P02-1 1.4.2 | 07060716O410179 | 00000000000001277311 | DEFAULT | 사용자테스트결과 |
| 32 | 4.2 | 사용자매뉴얼 작성 지원 | 10d | 2009-04-23 | 2009-05-08 |  |  |  | 2009-04-23 | 2009-05-08 | 10d | 119d |  | start no earlier than 2009-04-23 |  |  |  |  |  |  |  |  |  | 사용자매뉴얼 |
| 33 | 4.3 | 사용자교육 실시 지원 | 20d | 2009-05-11 | 2009-06-05 |  |  |  | 2009-05-11 | 2009-06-05 | 20d | 99d |  | start no earlier than 2009-05-11 |  |  |  |  |  |  |  |  |  | 교육교재 |
| 34 | 5 | **ORT(Operation Readiness Test)** | 25d | 2009-06-08 | 2009-07-10 |  |  |  | 2009-06-08 | 2009-07-10 | 25d | 74d |  |  |  |  |  | 구현 | 48648F5E0F9201F8E100800046140A10 | P02-1 1.5 | 07060716O410180 | 00000000000001277313 | DEFAULT |  |
| 35 | 5.1 | **구현계획수립** | 10d | 2009-06-08 | 2009-06-19 |  |  |  | 2009-06-08 | 2009-06-19 | 10d | 79d |  |  |  |  |  | 구현계획수립 | 48648F600F9201F8E100800046140A10 | P02-1 1.5.1 | 07060716O410181 | 00000000000001277314 | DEFAULT |  |
| 36 | 5.1.1 | 릴리이즈및비상계획수립 | 5d | 2009-06-08 | 2009-06-12 |  |  |  | 2009-06-08 | 2009-06-12 | 5d | 94d |  | start no earlier than 2009-06-08 |  |  |  | 구현계획수립 | 48648F620F9201F8E100800046140A10 | P02-1 1.5.1 | 07060716O410181 | 00000000000001277315 | DEFAULT | 구현계획서 |
| 37 | 5.1.2 | 교육훈련계획수립 | 5d | 2009-06-15 | 2009-06-19 |  |  |  | 2009-06-15 | 2009-06-19 | 5d | 74d | 0d | start no earlier than 2009-06-15 |  |  |  | 구현계획수립 | 48648F640F9201F8E100800046140A10 | P02-1 1.5.1 | 07060716O410181 | 00000000000001277316 | DEFAULT | 교육계획서 |
| 38 | 5.2 | **시범운영** | 25d | 2009-06-08 | 2009-07-10 |  |  |  | 2009-06-08 | 2009-07-10 | 25d | 74d |  |  |  |  |  | 시범운영 | 48648F7A0F9201F8E100800046140A10 | P02-1 1.5.4 | 07060716O410184 | 00000000000001277327 | DEFAULT |  |
| 39 | 5.2.1 | 시범운영계획 수립 | 5d | 2009-06-08 | 2009-06-12 |  |  |  | 2009-06-08 | 2009-06-12 | 5d | 94d |  | start no earlier than 2009-06-08 |  |  |  | 시범운영 | 48648F7C0F9201F8E100800046140A10 | P02-1 1.5.4 | 07060716O410184 | 00000000000001277328 | DEFAULT | 시범운영계획서 |
| 40 | 5.2.2 | 시범운영 지원 | 25d | 2009-06-08 | 2009-07-10 |  |  |  | 2009-06-08 | 2009-07-10 | 25d | 74d |  | start no earlier than 2009-06-08 |  |  |  | 시범운영 | 48648F7E0F9201F8E100800046140A10 | P02-1 1.5.4 | 07060716O410184 | 00000000000001277329 | DEFAULT | 시범운영일지 |
| 41 | 5.3 | **시스템사용교육** | 15d | 2009-06-22 | 2009-07-10 |  |  |  | 2009-06-22 | 2009-07-10 | 15d | 74d |  |  |  |  |  | 시스템사용교육 | 48648F720F9201F8E100800046140A10 | P02-1 1.5.3 | 07060716O410183 | 00000000000001277323 | DEFAULT |  |
| 42 | 5.3.1 | 운영매뉴얼 작성 지원 | 10d | 2009-06-22 | 2009-07-03 | 37 |  |  | 2009-06-22 | 2009-07-03 | 10d | 74d | 0d | start no earlier than 2009-06-15 |  |  |  | 시스템사용교육 | 48648F760F9201F8E100800046140A10 | P02-1 1.5.3 | 07060716O410183 | 00000000000001277325 | DEFAULT | 운영매뉴얼 |
| 43 | 5.3.2 | 운영자교육 지원 | 5d | 2009-07-06 | 2009-07-10 | 42 |  |  | 2009-07-06 | 2009-07-10 | 5d | 74d |  |  |  |  |  | 시스템사용교육 | 48648F780F9201F8E100800046140A10 | P02-1 1.5.3 | 07060716O410183 | 00000000000001277326 | DEFAULT | 교육교재 |
| 44 | 5.4 | **시스템 인수인계** | 20d | 2009-06-08 | 2009-07-03 |  |  |  | 2009-06-08 | 2009-07-03 | 20d | 79d |  |  |  |  |  | 시스템 인수인계 | 48648F7A0F9201F8E100800046140A10 | P02-1 1.7.2 | 07060716O410184 | 00000000000001277327 | DEFAULT |  |
| 45 | 5.4.1 | 인수인계계획 수립 | 5d | 2009-06-08 | 2009-06-12 |  |  |  | 2009-06-08 | 2009-06-12 | 5d | 79d | 0d | start no earlier than 2009-06-08 |  |  |  | 시스템 인수인계 | 48648F7C0F9201F8E100800046140A10 | P02-1 1.7.2 | 07060716O410184 | 00000000000001277328 | DEFAULT | 인수인계계획서 |
| 46 | 5.4.2 | 인수인계 지원 | 15d | 2009-06-15 | 2009-07-03 | 45 |  |  | 2009-06-15 | 2009-07-03 | 15d | 79d |  | start no earlier than 2009-06-15 |  |  |  | 시스템 인수인계 | 48648F7E0F9201F8E100800046140A10 | P02-1 1.7.2 | 07060716O410184 | 00000000000001277329 | DEFAULT | 인수인계확인서 |
| 47 | 5.5 | **오픈 준비** | 5d | 2009-07-06 | 2009-07-10 |  |  |  | 2009-07-06 | 2009-07-10 | 5d | 74d |  |  |  |  |  | 컨버젼 및 릴리이즈 | 48648F660F9201F8E100800046140A10 | P02-1 1.5.2 | 07060716O410182 | 00000000000001277317 | DEFAULT |  |
| 48 | 5.5.1 | 데이터베이스 구축 | 5d | 2009-07-06 | 2009-07-10 |  |  |  | 2009-07-06 | 2009-07-10 | 5d | 74d |  | start no earlier than 2009-07-06 |  |  |  | 컨버젼 및 릴리이즈 | 48648F680F9201F8E100800046140A10 | P02-1 1.5.2 | 07060716O410182 | 00000000000001277318 | DEFAULT |  |
| 49 | 5.5.2 | 소프트웨어 설치 | 5d | 2009-07-06 | 2009-07-10 |  |  |  | 2009-07-06 | 2009-07-10 | 5d | 74d |  | start no earlier than 2009-07-06 |  |  |  | 컨버젼 및 릴리이즈 | 48648F6A0F9201F8E100800046140A10 | P02-1 1.5.2 | 07060716O410182 | 00000000000001277319 | DEFAULT |  |
| 50 | 5.5.3 | 데이터컨버전 | 5d | 2009-07-06 | 2009-07-10 |  |  |  | 2009-07-06 | 2009-07-10 | 5d | 74d |  | start no earlier than 2009-07-06 |  |  |  | 컨버젼 및 릴리이즈 | 48648F6C0F9201F8E100800046140A10 | P02-1 1.5.2 | 07060716O410182 | 00000000000001277320 | DEFAULT |  |
| 51 | 5.5.4 | 시스템 릴리이즈 | 1d | 2009-07-10 | 2009-07-10 |  |  |  | 2009-07-10 | 2009-07-10 | 1d | 74d |  | start no earlier than 2009-07-10 |  |  |  | 컨버젼 및 릴리이즈 | 48648F700F9201F8E100800046140A10 | P02-1 1.5.2 | 07060716O410182 | 00000000000001277322 | DEFAULT |  |

| ID | WBS | Task | Duration | Start | Finish | Predecessors | Complete | Remaining | Baseline start | Baseline finish | Baseline duration | Total slack | Free slack | Constraint | Resources | Work | Actual work | Text20 | Text22 | Text25 | Text26 | Text27 | Text28 | Text30 |
| --- | --- | --- | --- | --- | --- | --- | --- | --- | --- | --- | --- | --- | --- | --- | --- | --- | --- | --- | --- | --- | --- | --- | --- | --- |
| 52 | 6 | **Project Implementation/Control** | 245d | 2008-07-23 A | 2009-07-13 |  | 49% | 123.88d | 2008-07-23 | 2009-07-13 | 245d | 73d |  |  |  | 1528h | 928h | 프로젝트수행/통제 | 477B585E0EF102390000000046140A10 | 07060716O410054 | C02-1 1.6 | 00000000000000646729 | DEFAULT |  |
| 53 | 6.1 | **단계착수** | 219d | 2008-07-23 A | 2009-06-05 |  | 63% | 80.39d | 2008-07-23 | 2009-06-05 | 219d | 99d |  |  |  | 1320h | 808h | 단계착수 | 477B58600EF102390000000046140A10 | 07060716O410055 | C02-1 1.6.1 | 00000000000000646730 | DEFAULT |  |
| 54 | 6.1.1 | **분석단계** | 15d | 2008-07-23 A | 2008-08-12 A |  | 100% |  | 2008-07-23 | 2008-08-12 | 15d |  |  |  |  | 256h | 256h | 단계교육 실시 | 477B58620EF102390000000046140A10 | 07060716O410055 | C02-1 1.6.1.3 | 00000000000000646730 | DEFAULT |  |
| 55 | 6.1.1.1 | 프로젝트계획검토 | 5d | 2008-07-23 A | 2008-07-29 A |  | 100% |  | 2008-07-23 | 2008-07-29 | 5d |  |  |  | PMO; QAO; PL | 120h | 120h | 프로젝트계획 단계검토 | 475F72585F5A02060000000046140A1A | 07060716O410055 | C02-1 1.6.1.1 | 00000000000000646731 | DEFAULT | 프로젝트수행계획서 |
| 56 | 6.1.1.2 | 검수기준 수립 | 5d | 2008-07-23 A | 2008-07-29 A |  | 100% |  | 2008-07-23 | 2008-07-29 | 5d |  |  | start no earlier than 2008-07-23 |  |  |  |  |  |  |  |  |  | 검수기준서 |
| 57 | 6.1.1.3 | SPM 작성 및 검토 | 5d | 2008-08-04 A | 2008-08-08 A |  | 100% |  | 2008-08-04 | 2008-08-08 | 5d |  |  | start no earlier than 2008-08-04 | PMO; QAO; PL | 120h | 120h | SPM 검토 | 475F725A5F5A02060000000046140A1A | 07060716O410055 | C02-1 1.6.1.2 | 00000000000000646732 | DEFAULT | 표준 및 절차매뉴얼(SPM), 공정산출물 표준 |
| 58 | 6.1.1.4 | 단계착수 오리엔테이션 | 2d | 2008-08-11 A | 2008-08-12 A |  | 100% |  | 2008-08-11 | 2008-08-12 | 2d |  |  | start no earlier than 2008-08-08 | QAO | 16h | 16h | 단계교육 실시 | 475F725C5F5A02060000000046140A1A | 07060716O410055 | C02-1 1.6.1.3 | 00000000000000646733 | DEFAULT | 교육참석자명단 |
| 59 | 6.1.2 | **설계단계** | 7d | 2008-09-22 A | 2008-09-30 A |  | 100% |  | 2008-09-22 | 2008-09-30 | 7d |  |  |  |  | 256h | 256h | 단계교육 실시 | 477B58640EF102390000000046140A10 | 07060716O410055 | C02-1 1.6.1.3 | 00000000000000646730 | DEFAULT |  |
| 60 | 6.1.2.1 | 프로젝트계획검토 | 5d | 2008-09-22 A | 2008-09-26 A |  | 100% |  | 2008-09-22 | 2008-09-26 | 5d |  |  | start no earlier than 2008-09-22 | PMO; QAO; PL | 120h | 120h | 프로젝트계획 단계검토 | 475F72585F5A02060000000046140A1A | 07060716O410055 | C02-1 1.6.1.1 | 00000000000000646731 | DEFAULT | 프로젝트수행계획서 |
| 61 | 6.1.2.2 | 검수기준 검토 | 5d | 2008-09-22 A | 2008-09-26 A |  | 100% |  | 2008-09-22 | 2008-09-26 | 5d |  |  | start no earlier than 2008-09-22 |  |  |  |  |  |  |  |  |  | 검수기준서 |
| 62 | 6.1.2.3 | SPM 작성 및 검토 | 5d | 2008-09-22 A | 2008-09-26 A |  | 100% |  | 2008-09-22 | 2008-09-26 | 5d |  |  | start no earlier than 2008-09-22 | PMO; QAO; PL | 120h | 120h | SPM 검토 | 475F725A5F5A02060000000046140A1A | 07060716O410055 | C02-1 1.6.1.2 | 00000000000000646732 | DEFAULT | 표준 및 절차매뉴얼(SPM), 공정산출물 표준 |
| 63 | 6.1.2.4 | 단계착수 오리엔테이션 | 2d | 2008-09-29 A | 2008-09-30 A |  | 100% |  | 2008-09-29 | 2008-09-30 | 2d |  |  | start no earlier than 2008-09-26 | QAO | 16h | 16h | 단계교육 실시 | 475F725C5F5A02060000000046140A1A | 07060716O410055 | C02-1 1.6.1.3 | 00000000000000646733 | DEFAULT | 교육참석자명단 |
| 64 | 6.1.3 | **개발단계** | 7d | 2008-11-24 A | 2008-12-02 A |  | 100% |  | 2008-11-24 | 2008-12-02 | 7d |  |  |  |  | 296h | 296h | 단계교육 실시 | 477B58660EF102390000000046140A10 | 07060716O410055 | C02-1 1.6.1.3 | 00000000000000646730 | DEFAULT |  |
| 65 | 6.1.3.1 | 프로젝트계획검토 | 5d | 2008-11-24 A | 2008-11-28 A |  | 100% |  | 2008-11-24 | 2008-11-28 | 5d |  |  | start no earlier than 2008-11-24 | PMO; QAO; PL | 120h | 120h | 프로젝트계획 단계검토 | 475F72585F5A02060000000046140A1A | 07060716O410055 | C02-1 1.6.1.1 | 00000000000000646731 | DEFAULT | 프로젝트수행계획서 |
| 66 | 6.1.3.2 | 검수기준 검토 | 5d | 2008-11-24 A | 2008-11-28 A |  | 100% |  | 2008-11-24 | 2008-11-28 | 5d |  |  | start no earlier than 2008-11-24 |  |  |  |  |  |  |  |  |  | 검수기준서 |
| 67 | 6.1.3.3 | SPM 작성 및 검토 | 4d | 2008-11-25 A | 2008-11-28 A |  | 100% |  | 2008-11-25 | 2008-11-28 | 4d |  |  | finish no earlier than 2008-11-28 | PMO; QAO; PL; SA | 128h | 128h | SPM 검토 | 475F725A5F5A02060000000046140A1A | 07060716O410055 | C02-1 1.6.1.2 | 00000000000000646732 | DEFAULT | 표준 및 절차매뉴얼(SPM), 공정산출물 표준 |
| 68 | 6.1.3.4 | 단계착수 오리엔테이션 | 2d | 2008-12-01 A | 2008-12-02 A |  | 100% |  | 2008-12-01 | 2008-12-02 | 2d |  |  | start no earlier than 2008-11-28 | QAO; PL; SA | 48h | 48h | 단계교육 실시 | 475F725C5F5A02060000000046140A1A | 07060716O410055 | C02-1 1.6.1.3 | 00000000000000646733 | DEFAULT | 교육참석자명단 |
| 69 | 6.1.4 | **테스트단계** | 5d | 2009-02-23 | 2009-02-27 |  |  |  | 2009-02-23 | 2009-02-27 | 5d | 167d |  |  |  | 256h |  | 단계교육 실시 | 477B58680EF102390000000046140A10 | 07060716O410055 | C02-1 1.6.1.3 | 00000000000000646730 | DEFAULT |  |
| 70 | 6.1.4.1 | 프로젝트계획검토 | 5d | 2009-02-23 | 2009-02-27 |  |  |  | 2009-02-23 | 2009-02-27 | 5d | 167d |  | start no earlier than 2009-02-23 | PMO; QAO; PL | 120h |  | 프로젝트계획 단계검토 | 475F72585F5A02060000000046140A1A | 07060716O410055 | C02-1 1.6.1.1 | 00000000000000646731 | DEFAULT | 프로젝트수행계획서 |
| 71 | 6.1.4.2 | SPM 작성 및 검토 | 5d | 2009-02-23 | 2009-02-27 |  |  |  | 2009-02-23 | 2009-02-27 | 5d | 167d |  | start no earlier than 2009-02-23 | PMO; QAO; PL | 120h |  | SPM 검토 | 475F725A5F5A02060000000046140A1A | 07060716O410055 | C02-1 1.6.1.2 | 00000000000000646732 | DEFAULT | 표준 및 절차매뉴얼(SPM), 공정산출물 표준 |
| 72 | 6.1.4.3 | 단계착수 오리엔테이션 | 2d | 2009-02-26 | 2009-02-27 |  |  |  | 2009-02-26 | 2009-02-27 | 2d | 167d |  | start no earlier than 2009-02-26 | QAO | 16h |  | 단계교육 실시 | 475F725C5F5A02060000000046140A1A | 07060716O410055 | C02-1 1.6.1.3 | 00000000000000646733 | DEFAULT | 교육참석자명단 |
| 73 | 6.1.5 | **구현단계** | 10d | 2009-05-25 | 2009-06-05 |  |  |  | 2009-05-25 | 2009-06-05 | 10d | 99d |  |  |  | 256h |  | 단계교육 실시 | 477B58680EF102390000000046140A10 | 07060716O410055 | C02-1 1.6.1.3 | 00000000000000646730 | DEFAULT |  |
| 74 | 6.1.5.1 | 프로젝트계획검토 | 5d | 2009-05-25 | 2009-05-29 |  |  |  | 2009-05-25 | 2009-05-29 | 5d | 104d |  | start no earlier than 2009-05-25 | PMO; QAO; PL | 120h |  | 프로젝트계획 단계검토 | 475F72585F5A02060000000046140A1A | 07060716O410055 | C02-1 1.6.1.1 | 00000000000000646731 | DEFAULT | 프로젝트수행계획서 |
| 75 | 6.1.5.2 | 검수기준 검토 | 5d | 2009-05-25 | 2009-05-29 |  |  |  | 2009-05-25 | 2009-05-29 | 5d | 99d | 0d | start no earlier than 2009-05-25 |  |  |  |  |  |  |  |  |  | 검수기준서 |
| 76 | 6.1.5.3 | SPM 작성 및 검토 | 5d | 2009-06-01 | 2009-06-05 | 75 |  |  | 2009-06-01 | 2009-06-05 | 5d | 99d |  | start no earlier than 2009-05-18 | PMO; QAO; PL | 120h |  | SPM 검토 | 475F725A5F5A02060000000046140A1A | 07060716O410055 | C02-1 1.6.1.2 | 00000000000000646732 | DEFAULT | 표준 및 절차매뉴얼(SPM), 공정산출물 표준 |
| 77 | 6.1.5.4 | 단계착수 오리엔테이션 | 2d | 2009-06-04 | 2009-06-05 |  |  |  | 2009-06-04 | 2009-06-05 | 2d | 99d |  | start no earlier than 2009-06-04 | QAO | 16h |  | 단계교육 실시 | 475F725C5F5A02060000000046140A1A | 07060716O410055 | C02-1 1.6.1.3 | 00000000000000646733 | DEFAULT | 교육참석자명단 |

Notes:
- 68: QAO는 표준및절차 교육 담당 / 개발표준 및 개발툴에 대한 사항은 공통 담당

| ID | WBS | Task | Duration | Start | Finish | Predecessors | Complete | Remaining | Baseline start | Baseline finish | Baseline duration | Total slack | Free slack | Constraint | Resources | Work | Actual work | Text20 | Text22 | Text25 | Text26 | Text27 | Text28 | Text30 |
| --- | --- | --- | --- | --- | --- | --- | --- | --- | --- | --- | --- | --- | --- | --- | --- | --- | --- | --- | --- | --- | --- | --- | --- | --- |
| 78 | 6.2 | **단계완료** | 204d | 2008-09-22 A | 2009-07-13 |  | 38% | 127.5d | 2008-09-22 | 2009-07-13 | 204d | 73d |  |  |  | 208h | 120h | 단계완료 | 477B58BC0EF102390000000046140A10 | 07060716O410080 | P02-1 1.6.8 | 00000000000000646755 | DEFAULT |  |
| 79 | 6.2.1 | **분석단계** | 5d | 2008-09-22 A | 2008-09-26 A |  | 100% |  | 2008-09-22 | 2008-09-26 | 5d |  |  |  | QAO | 40h | 40h | 단계완료 | 477B58BE0EF102390000000046140A10 | 07060716O410080 | P02-1 1.6.8 | 00000000000000646756 | DEFAULT | 단계점검결과 |
| 80 | 6.2.1.1 | 요구사항추적표 검토 | 1d | 2008-09-22 A | 2008-09-22 A |  | 100% |  | 2008-09-22 | 2008-09-22 | 1d |  |  | start no earlier than 2008-09-22 |  |  |  | 단계완료 |  |  | P02-1 1.6.8 |  |  | 요구사항추적표 |
| 81 | 6.2.1.2 | 인스펙션 실시 | 1d | 2008-09-23 A | 2008-09-23 A |  | 100% |  | 2008-09-23 | 2008-09-23 | 1d |  |  | start no earlier than 2008-09-23 |  |  |  | 단계완료 |  |  | P02-1 1.6.8 |  |  | 인스펙션계획서 |
| 82 | 6.2.1.3 | 고객검토 지원 | 2d | 2008-09-24 A | 2008-09-25 A |  | 100% |  | 2008-09-24 | 2008-09-25 | 2d |  |  | start no earlier than 2008-09-24 |  |  |  | 단계완료 |  |  | P02-1 1.6.8 |  |  | 고객검토결과서 |
| 83 | 6.2.1.4 | 고객승인 획득 | 1d | 2008-09-26 A | 2008-09-26 A |  | 100% |  | 2008-09-26 | 2008-09-26 | 1d |  |  | start no earlier than 2008-09-26 |  |  |  | 단계완료 |  |  | P02-1 1.6.8 |  |  | 고객인수확인서(PAD) |
| 84 | 6.2.2 | **설계단계** | 10d | 2008-11-17 A | 2008-11-28 A |  | 100% |  | 2008-11-17 | 2008-11-28 | 10d |  |  |  | QAO | 80h | 80h | 단계완료 | 477B58BE0EF102390000000046140A10 | 07060716O410080 | P02-1 1.6.8 | 00000000000000646756 | DEFAULT | 단계점검결과 |
| 85 | 6.2.2.1 | 요구사항추적표 검토 | 2d | 2008-11-17 A | 2008-11-18 A |  | 100% |  | 2008-11-17 | 2008-11-18 | 2d |  |  | start no earlier than 2008-11-17 |  |  |  | 단계완료 |  |  | P02-1 1.6.8 |  |  | 요구사항추적표 |
| 86 | 6.2.2.2 | 인스펙션 실시 | 3d | 2008-11-18 A | 2008-11-20 A |  | 100% |  | 2008-11-18 | 2008-11-20 | 3d |  |  | start no earlier than 2008-11-18 |  |  |  | 단계완료 |  |  | P02-1 1.6.8 |  |  | 인스펙션계획서 |
| 87 | 6.2.2.3 | 고객검토 지원 | 3d | 2008-11-24 A | 2008-11-26 A |  | 100% |  | 2008-11-24 | 2008-11-26 | 3d |  |  | start no earlier than 2008-11-24 |  |  |  | 단계완료 |  |  | P02-1 1.6.8 |  |  | 고객검토결과서 |
| 88 | 6.2.2.4 | 고객승인 획득 | 2d | 2008-11-27 A | 2008-11-28 A |  | 100% |  | 2008-11-27 | 2008-11-28 | 2d |  |  | start no earlier than 2008-11-27 |  |  |  | 단계완료 |  |  | P02-1 1.6.8 |  |  | 고객인수확인서(PAD) |
| 89 | 6.2.3 | **개발 및 테스트 단계** | 30d | 2009-03-16 | 2009-04-24 |  |  |  | 2009-03-16 | 2009-04-24 | 30d | 127d |  |  |  |  |  | 단계완료 | 48648FB40F9201F8E100800046140A10 | 07060716O410080 | P02-1 1.6.8 | 00000000000001277356 | DEFAULT |  |
| 90 | 6.2.3.1 | 요구사항추적표 검토 | 3d | 2009-03-16 | 2009-03-18 |  |  |  | 2009-03-16 | 2009-03-18 | 3d | 154d |  | start no earlier than 2009-03-16 |  |  |  | 단계완료 | 48648FB60F9201F8E100800046140A10 | 07060716O410080 | P02-1 1.6.8 | 00000000000001277357 | DEFAULT | 요구사항추적표 |
| 91 | 6.2.3.2 | 테스트결과제출 | 5d | 2009-04-13 | 2009-04-17 |  |  |  | 2009-04-13 | 2009-04-17 | 5d | 127d | 0d | start no earlier than 2009-04-13 |  |  |  |  |  |  |  |  |  | E2E테스트결과, 시스템테스트결과서 |
| 92 | 6.2.3.3 | 고객 테스트결과 확인 | 3d | 2009-04-20 | 2009-04-22 | 91 |  |  | 2009-04-20 | 2009-04-22 | 3d | 127d | 0d |  |  |  |  |  |  |  |  |  |  | 고객검토결과서 |
| 93 | 6.2.3.4 | 고객승인 획득 | 2d | 2009-04-23 | 2009-04-24 | 92 |  |  | 2009-04-23 | 2009-04-24 | 2d | 127d |  |  |  |  |  |  |  |  |  |  |  | 고객인수확인서(PAD) |
| 94 | 6.2.4 | **구현단계** | 11d | 2009-06-29 | 2009-07-13 |  |  |  | 2009-06-29 | 2009-07-13 | 11d | 73d |  |  | QAO | 88h |  | 단계완료 | 477B58BE0EF102390000000046140A10 | 07060716O410080 | P02-1 1.6.8 | 00000000000000646756 | DEFAULT | 단계점검결과 |
| 95 | 6.2.4.1 | 인스펙션 실시 | 1d | 2009-06-29 | 2009-06-29 |  |  |  | 2009-06-29 | 2009-06-29 | 1d | 83d |  | start no earlier than 2009-06-29 |  |  |  | 단계완료 |  |  | P02-1 1.6.8 |  |  | 인스펙션계획서 |
| 96 | 6.2.4.2 | 고객검토 지원 | 10d | 2009-06-29 | 2009-07-10 |  |  |  | 2009-06-29 | 2009-07-10 | 10d | 74d |  | start no earlier than 2009-06-29 |  |  |  | 단계완료 |  |  | P02-1 1.6.8 |  |  | 고객검토결과서 |
| 97 | 6.2.4.3 | 고객승인 획득 | 1d | 2009-07-13 | 2009-07-13 |  |  |  | 2009-07-13 | 2009-07-13 | 1d | 73d |  | start no earlier than 2009-07-10 |  |  |  | 단계완료 |  |  | P02-1 1.6.8 |  |  | 고객인수확인서(PAD) |
| 98 | 6.3 | **주월간보고** | 227d | 2008-08-14 A | 2009-07-09 |  | 39% | 138.51d | 2008-08-14 | 2009-07-09 | 227d | 75d |  |  |  |  |  | 성과통제 |  |  | P02-1 1.6.7 |  |  |  |
| 99 | 6.3.1 | **주간보고** | 227d | 2008-08-14 A | 2009-07-09 |  | 40% | 137.15d | 2008-08-14 | 2009-07-09 | 227d | 75d |  |  |  |  |  | 성과통제 |  |  | P02-1 1.6.7 |  |  |  |
| 100 | 6.3.1.1 | 주간보고 1 | 1d | 2008-08-14 A | 2008-08-14 A |  | 100% |  | 2008-08-14 | 2008-08-14 | 1d |  |  | start no earlier than 2008-08-14 |  |  |  | 성과통제 |  |  | P02-1 1.6.7 |  |  |  |
| 101 | 6.3.1.2 | 주간보고 2 | 1d | 2008-08-21 A | 2008-08-21 A |  | 100% |  | 2008-08-21 | 2008-08-21 | 1d |  |  | start no earlier than 2008-08-21 |  |  |  | 성과통제 |  |  | P02-1 1.6.7 |  |  |  |
| 102 | 6.3.1.3 | 주간보고 3 | 1d | 2008-08-28 A | 2008-08-28 A |  | 100% |  | 2008-08-28 | 2008-08-28 | 1d |  |  | start no earlier than 2008-08-28 |  |  |  | 성과통제 |  |  | P02-1 1.6.7 |  |  |  |
| 103 | 6.3.1.4 | 주간보고 4 | 1d | 2008-09-04 A | 2008-09-04 A |  | 100% |  | 2008-09-04 | 2008-09-04 | 1d |  |  | start no earlier than 2008-09-04 |  |  |  | 성과통제 |  |  | P02-1 1.6.7 |  |  |  |
| 104 | 6.3.1.5 | 주간보고 5 | 1d | 2008-09-11 A | 2008-09-11 A |  | 100% |  | 2008-09-11 | 2008-09-11 | 1d |  |  | start no earlier than 2008-09-11 |  |  |  | 성과통제 |  |  | P02-1 1.6.7 |  |  |  |
| 105 | 6.3.1.6 | 주간보고 6 | 1d | 2008-09-18 A | 2008-09-18 A |  | 100% |  | 2008-09-18 | 2008-09-18 | 1d |  |  | start no earlier than 2008-09-18 |  |  |  | 성과통제 |  |  | P02-1 1.6.7 |  |  |  |
| 106 | 6.3.1.7 | 주간보고 7 | 1d | 2008-09-25 A | 2008-09-25 A |  | 100% |  | 2008-09-25 | 2008-09-25 | 1d |  |  | start no earlier than 2008-09-25 |  |  |  | 성과통제 |  |  | P02-1 1.6.7 |  |  |  |
| 107 | 6.3.1.8 | 주간보고 8 | 1d | 2008-10-02 A | 2008-10-02 A |  | 100% |  | 2008-10-02 | 2008-10-02 | 1d |  |  | start no earlier than 2008-10-02 |  |  |  | 성과통제 |  |  | P02-1 1.6.7 |  |  |  |
| 108 | 6.3.1.9 | 주간보고 9 | 1d | 2008-10-09 A | 2008-10-09 A |  | 100% |  | 2008-10-09 | 2008-10-09 | 1d |  |  | start no earlier than 2008-10-09 |  |  |  | 성과통제 |  |  | P02-1 1.6.7 |  |  |  |
| 109 | 6.3.1.10 | 주간보고 10 | 1d | 2008-10-16 A | 2008-10-16 A |  | 100% |  | 2008-10-16 | 2008-10-16 | 1d |  |  | start no earlier than 2008-10-16 |  |  |  | 성과통제 |  |  | P02-1 1.6.7 |  |  |  |
| 110 | 6.3.1.11 | 주간보고 11 | 1d | 2008-10-23 A | 2008-10-23 A |  | 100% |  | 2008-10-23 | 2008-10-23 | 1d |  |  | start no earlier than 2008-10-23 |  |  |  | 성과통제 |  |  | P02-1 1.6.7 |  |  |  |
| 111 | 6.3.1.12 | 주간보고 12 | 1d | 2008-10-30 A | 2008-10-30 A |  | 100% |  | 2008-10-30 | 2008-10-30 | 1d |  |  | start no earlier than 2008-10-30 |  |  |  | 성과통제 |  |  | P02-1 1.6.7 |  |  |  |
| 112 | 6.3.1.13 | 주간보고 13 | 1d | 2008-11-06 A | 2008-11-06 A |  | 100% |  | 2008-11-06 | 2008-11-06 | 1d |  |  | start no earlier than 2008-11-06 |  |  |  | 성과통제 |  |  | P02-1 1.6.7 |  |  |  |
| 113 | 6.3.1.14 | 주간보고 14 | 1d | 2008-11-13 A | 2008-11-13 A |  | 100% |  | 2008-11-13 | 2008-11-13 | 1d |  |  | start no earlier than 2008-11-13 |  |  |  | 성과통제 |  |  | P02-1 1.6.7 |  |  |  |
| 114 | 6.3.1.15 | 주간보고 15 | 1d | 2008-11-20 A | 2008-11-20 A |  | 100% |  | 2008-11-20 | 2008-11-20 | 1d |  |  | start no earlier than 2008-11-20 |  |  |  | 성과통제 |  |  | P02-1 1.6.7 |  |  |  |
| 115 | 6.3.1.16 | 주간보고 16 | 1d | 2008-11-27 A | 2008-11-27 A |  | 100% |  | 2008-11-27 | 2008-11-27 | 1d |  |  | start no earlier than 2008-11-27 |  |  |  | 성과통제 |  |  | P02-1 1.6.7 |  |  |  |
| 116 | 6.3.1.17 | 주간보고 17 | 1d | 2008-12-04 A | 2008-12-04 A |  | 100% |  | 2008-12-04 | 2008-12-04 | 1d |  |  | start no earlier than 2008-12-04 |  |  |  | 성과통제 |  |  | P02-1 1.6.7 |  |  |  |
| 117 | 6.3.1.18 | 주간보고 18 | 1d | 2008-12-11 A | 2008-12-11 A |  | 100% |  | 2008-12-11 | 2008-12-11 | 1d |  |  | start no earlier than 2008-12-11 |  |  |  | 성과통제 |  |  | P02-1 1.6.7 |  |  |  |
| 118 | 6.3.1.19 | 주간보고 19 | 1d | 2008-12-18 A | 2008-12-18 A |  | 100% |  | 2008-12-18 | 2008-12-18 | 1d |  |  | start no earlier than 2008-12-18 |  |  |  | 성과통제 |  |  | P02-1 1.6.7 |  |  |  |
| 119 | 6.3.1.20 | 주간보고 20 | 1d | 2008-12-26 | 2008-12-26 |  |  |  | 2008-12-26 | 2008-12-26 | 1d | 209d |  | start no earlier than 2008-12-25 |  |  |  | 성과통제 |  |  | P02-1 1.6.7 |  |  |  |
| 120 | 6.3.1.21 | 주간보고 21 | 1d | 2009-01-02 | 2009-01-02 |  |  |  | 2009-01-02 | 2009-01-02 | 1d | 205d |  | start no earlier than 2009-01-01 |  |  |  | 성과통제 |  |  | P02-1 1.6.7 |  |  |  |
| 121 | 6.3.1.22 | 주간보고 22 | 1d | 2009-01-08 | 2009-01-08 |  |  |  | 2009-01-08 | 2009-01-08 | 1d | 201d |  | start no earlier than 2009-01-08 |  |  |  | 성과통제 |  |  | P02-1 1.6.7 |  |  |  |
| 122 | 6.3.1.23 | 주간보고 23 | 1d | 2009-01-15 | 2009-01-15 |  |  |  | 2009-01-15 | 2009-01-15 | 1d | 196d |  | start no earlier than 2009-01-15 |  |  |  | 성과통제 |  |  | P02-1 1.6.7 |  |  |  |
| 123 | 6.3.1.24 | 주간보고 24 | 1d | 2009-01-22 | 2009-01-22 |  |  |  | 2009-01-22 | 2009-01-22 | 1d | 191d |  | start no earlier than 2009-01-22 |  |  |  | 성과통제 |  |  | P02-1 1.6.7 |  |  |  |
| 124 | 6.3.1.25 | 주간보고 25 | 1d | 2009-01-29 | 2009-01-29 |  |  |  | 2009-01-29 | 2009-01-29 | 1d | 188d |  | start no earlier than 2009-01-29 |  |  |  | 성과통제 |  |  | P02-1 1.6.7 |  |  |  |
| 125 | 6.3.1.26 | 주간보고 26 | 1d | 2009-02-05 | 2009-02-05 |  |  |  | 2009-02-05 | 2009-02-05 | 1d | 183d |  | start no earlier than 2009-02-05 |  |  |  | 성과통제 |  |  | P02-1 1.6.7 |  |  |  |
| 126 | 6.3.1.27 | 주간보고 27 | 1d | 2009-02-12 | 2009-02-12 |  |  |  | 2009-02-12 | 2009-02-12 | 1d | 178d |  | start no earlier than 2009-02-12 |  |  |  | 성과통제 |  |  | P02-1 1.6.7 |  |  |  |
| 127 | 6.3.1.28 | 주간보고 28 | 1d | 2009-02-19 | 2009-02-19 |  |  |  | 2009-02-19 | 2009-02-19 | 1d | 173d |  | start no earlier than 2009-02-19 |  |  |  | 성과통제 |  |  | P02-1 1.6.7 |  |  |  |
| 128 | 6.3.1.29 | 주간보고 29 | 1d | 2009-02-26 | 2009-02-26 |  |  |  | 2009-02-26 | 2009-02-26 | 1d | 168d |  | start no earlier than 2009-02-26 |  |  |  | 성과통제 |  |  | P02-1 1.6.7 |  |  |  |
| 129 | 6.3.1.30 | 주간보고 30 | 1d | 2009-03-05 | 2009-03-05 |  |  |  | 2009-03-05 | 2009-03-05 | 1d | 163d |  | start no earlier than 2009-03-05 |  |  |  | 성과통제 |  |  | P02-1 1.6.7 |  |  |  |
| 130 | 6.3.1.31 | 주간보고 31 | 1d | 2009-03-12 | 2009-03-12 |  |  |  | 2009-03-12 | 2009-03-12 | 1d | 158d |  | start no earlier than 2009-03-12 |  |  |  | 성과통제 |  |  | P02-1 1.6.7 |  |  |  |
| 131 | 6.3.1.32 | 주간보고 32 | 1d | 2009-03-19 | 2009-03-19 |  |  |  | 2009-03-19 | 2009-03-19 | 1d | 153d |  | start no earlier than 2009-03-19 |  |  |  | 성과통제 |  |  | P02-1 1.6.7 |  |  |  |
| 132 | 6.3.1.33 | 주간보고 33 | 1d | 2009-03-26 | 2009-03-26 |  |  |  | 2009-03-26 | 2009-03-26 | 1d | 148d |  | start no earlier than 2009-03-26 |  |  |  | 성과통제 |  |  | P02-1 1.6.7 |  |  |  |
| 133 | 6.3.1.34 | 주간보고 34 | 1d | 2009-04-02 | 2009-04-02 |  |  |  | 2009-04-02 | 2009-04-02 | 1d | 143d |  | start no earlier than 2009-04-02 |  |  |  | 성과통제 |  |  | P02-1 1.6.7 |  |  |  |
| 134 | 6.3.1.35 | 주간보고 35 | 1d | 2009-04-09 | 2009-04-09 |  |  |  | 2009-04-09 | 2009-04-09 | 1d | 138d |  | start no earlier than 2009-04-09 |  |  |  | 성과통제 |  |  | P02-1 1.6.7 |  |  |  |
| 135 | 6.3.1.36 | 주간보고 36 | 1d | 2009-04-16 | 2009-04-16 |  |  |  | 2009-04-16 | 2009-04-16 | 1d | 133d |  | start no earlier than 2009-04-16 |  |  |  | 성과통제 |  |  | P02-1 1.6.7 |  |  |  |
| 136 | 6.3.1.37 | 주간보고 37 | 1d | 2009-04-23 | 2009-04-23 |  |  |  | 2009-04-23 | 2009-04-23 | 1d | 128d |  | start no earlier than 2009-04-23 |  |  |  | 성과통제 |  |  | P02-1 1.6.7 |  |  |  |
| 137 | 6.3.1.38 | 주간보고 38 | 1d | 2009-04-30 | 2009-04-30 |  |  |  | 2009-04-30 | 2009-04-30 | 1d | 123d |  | start no earlier than 2009-04-30 |  |  |  | 성과통제 |  |  | P02-1 1.6.7 |  |  |  |
| 138 | 6.3.1.39 | 주간보고 39 | 1d | 2009-05-07 | 2009-05-07 |  |  |  | 2009-05-07 | 2009-05-07 | 1d | 120d |  | start no earlier than 2009-05-07 |  |  |  | 성과통제 |  |  | P02-1 1.6.7 |  |  |  |
| 139 | 6.3.1.40 | 주간보고 40 | 1d | 2009-05-14 | 2009-05-14 |  |  |  | 2009-05-14 | 2009-05-14 | 1d | 115d |  | start no earlier than 2009-05-14 |  |  |  | 성과통제 |  |  | P02-1 1.6.7 |  |  |  |
| 140 | 6.3.1.41 | 주간보고 41 | 1d | 2009-05-21 | 2009-05-21 |  |  |  | 2009-05-21 | 2009-05-21 | 1d | 110d |  | start no earlier than 2009-05-21 |  |  |  | 성과통제 |  |  | P02-1 1.6.7 |  |  |  |
| 141 | 6.3.1.42 | 주간보고 42 | 1d | 2009-05-28 | 2009-05-28 |  |  |  | 2009-05-28 | 2009-05-28 | 1d | 105d |  | start no earlier than 2009-05-28 |  |  |  | 성과통제 |  |  | P02-1 1.6.7 |  |  |  |
| 142 | 6.3.1.43 | 주간보고 43 | 1d | 2009-06-04 | 2009-06-04 |  |  |  | 2009-06-04 | 2009-06-04 | 1d | 100d |  | start no earlier than 2009-06-04 |  |  |  | 성과통제 |  |  | P02-1 1.6.7 |  |  |  |
| 143 | 6.3.1.44 | 주간보고 44 | 1d | 2009-06-11 | 2009-06-11 |  |  |  | 2009-06-11 | 2009-06-11 | 1d | 95d |  | start no earlier than 2009-06-11 |  |  |  | 성과통제 |  |  | P02-1 1.6.7 |  |  |  |
| 144 | 6.3.1.45 | 주간보고 45 | 1d | 2009-06-18 | 2009-06-18 |  |  |  | 2009-06-18 | 2009-06-18 | 1d | 90d |  | start no earlier than 2009-06-18 |  |  |  | 성과통제 |  |  | P02-1 1.6.7 |  |  |  |
| 145 | 6.3.1.46 | 주간보고 46 | 1d | 2009-06-25 | 2009-06-25 |  |  |  | 2009-06-25 | 2009-06-25 | 1d | 85d |  | start no earlier than 2009-06-25 |  |  |  | 성과통제 |  |  | P02-1 1.6.7 |  |  |  |
| 146 | 6.3.1.47 | 주간보고 47 | 1d | 2009-07-02 | 2009-07-02 |  |  |  | 2009-07-02 | 2009-07-02 | 1d | 80d |  | start no earlier than 2009-07-02 |  |  |  | 성과통제 |  |  | P02-1 1.6.7 |  |  |  |
| 147 | 6.3.1.48 | 주간보고 48 | 1d | 2009-07-09 | 2009-07-09 |  |  |  | 2009-07-09 | 2009-07-09 | 1d | 75d |  | start no earlier than 2009-07-09 |  |  |  | 성과통제 |  |  | P02-1 1.6.7 |  |  |  |

| ID | WBS | Task | Duration | Start | Finish | Complete | Remaining | Baseline start | Baseline finish | Baseline duration | Total slack | Constraint | Text20 | Text26 | Text30 | Text22 | Text25 | Text27 | Text28 |
| --- | --- | --- | --- | --- | --- | --- | --- | --- | --- | --- | --- | --- | --- | --- | --- | --- | --- | --- | --- |
| 148 | 6.3.2 | **월간보고** | 208d | 2008-08-28 A | 2009-06-25 | 36% | 132.36d | 2008-08-28 | 2009-06-25 | 208d | 85d |  | 성과통제 | P02-1 1.6.7 |  |  |  |  |  |
| 149 | 6.3.2.1 | 월간보고 1 | 1d | 2008-08-28 A | 2008-08-28 A | 100% |  | 2008-08-28 | 2008-08-28 | 1d |  | start no earlier than 2008-08-28 | 성과통제 | P02-1 1.6.7 |  |  |  |  |  |
| 150 | 6.3.2.2 | 월간보고 2 | 1d | 2008-09-25 A | 2008-09-25 A | 100% |  | 2008-09-25 | 2008-09-25 | 1d |  | start no earlier than 2008-09-25 | 성과통제 | P02-1 1.6.7 |  |  |  |  |  |
| 151 | 6.3.2.3 | 월간보고 3 | 1d | 2008-10-30 A | 2008-10-30 A | 100% |  | 2008-10-30 | 2008-10-30 | 1d |  | start no earlier than 2008-10-30 | 성과통제 | P02-1 1.6.7 |  |  |  |  |  |
| 152 | 6.3.2.4 | 월간보고 4 | 1d | 2008-11-27 A | 2008-11-27 A | 100% |  | 2008-11-27 | 2008-11-27 | 1d |  | start no earlier than 2008-11-27 | 성과통제 | P02-1 1.6.7 |  |  |  |  |  |
| 153 | 6.3.2.5 | 월간보고 5 | 1d | 2008-12-26 | 2008-12-26 |  |  | 2008-12-26 | 2008-12-26 | 1d | 209d | start no earlier than 2008-12-25 | 성과통제 | P02-1 1.6.7 |  |  |  |  |  |
| 154 | 6.3.2.6 | 월간보고 6 | 1d | 2009-01-29 | 2009-01-29 |  |  | 2009-01-29 | 2009-01-29 | 1d | 188d | start no earlier than 2009-01-29 | 성과통제 | P02-1 1.6.7 |  |  |  |  |  |
| 155 | 6.3.2.7 | 월간보고 7 | 1d | 2009-02-26 | 2009-02-26 |  |  | 2009-02-26 | 2009-02-26 | 1d | 168d | start no earlier than 2009-02-26 | 성과통제 | P02-1 1.6.7 |  |  |  |  |  |
| 156 | 6.3.2.8 | 월간보고 8 | 1d | 2009-03-26 | 2009-03-26 |  |  | 2009-03-26 | 2009-03-26 | 1d | 148d | start no earlier than 2009-03-26 | 성과통제 | P02-1 1.6.7 |  |  |  |  |  |
| 157 | 6.3.2.9 | 월간보고 9 | 1d | 2009-04-30 | 2009-04-30 |  |  | 2009-04-30 | 2009-04-30 | 1d | 123d | start no earlier than 2009-04-30 | 성과통제 | P02-1 1.6.7 |  |  |  |  |  |
| 158 | 6.3.2.10 | 월간보고 10 | 1d | 2009-05-28 | 2009-05-28 |  |  | 2009-05-28 | 2009-05-28 | 1d | 105d | start no earlier than 2009-05-28 | 성과통제 | P02-1 1.6.7 |  |  |  |  |  |
| 159 | 6.3.2.11 | 월간보고 11 | 1d | 2009-06-25 | 2009-06-25 |  |  | 2009-06-25 | 2009-06-25 | 1d | 85d | start no earlier than 2009-06-25 | 성과통제 | P02-1 1.6.7 |  |  |  |  |  |
| 160 | 7 | **QA** | 227d | 2008-08-11 A | 2009-07-06 | 44% | 127.89d | 2008-08-11 | 2009-07-06 | 227d | 78d |  | 프로젝트수행/통제 | P02-1 1.6 |  |  |  |  |  |
| 161 | 7.1 | **인스펙션** | 197d | 2008-09-16 A | 2009-06-26 | 45% | 107.45d | 2008-09-16 | 2009-06-26 | 197d | 84d |  | 품질활동수행 | P02-1 1.6.2 |  |  |  |  |  |
| 162 | 7.1.1 | 분석단계 | 5d | 2008-09-16 A | 2008-09-22 A | 100% |  | 2008-09-16 | 2008-09-22 | 5d |  | start no earlier than 2008-09-16 | 품질활동수행 | P02-1 1.6.2 | 인스펙션계획, 인스펙션결과서 |  |  |  |  |
| 163 | 7.1.2 | 설계단계 | 5d | 2008-11-17 A | 2008-11-21 A | 100% |  | 2008-11-17 | 2008-11-21 | 5d |  | start no earlier than 2008-11-17 | 품질활동수행 | P02-1 1.6.2 | 인스펙션계획, 인스펙션결과서 |  |  |  |  |
| 164 | 7.1.3 | **Code Inspection 실시 및 보완** | 52d | 2008-12-19 | 2009-03-06 |  |  | 2008-12-19 | 2009-03-06 | 52d | 162d |  |  |  | Code Inspection 결과서 |  |  |  |  |
| 165 | 7.1.3.1 | Code Inspection 1차 | 1d | 2008-12-19 | 2008-12-19 |  |  | 2008-12-19 | 2008-12-19 | 1d | 213d | start no earlier than 2008-12-19 | 단계완료 | P02-1 1.6.8 |  | 48648FB60F9201F8E100800046140A10 | 07060716O410080 | 00000000000001277357 | DEFAULT |
| 166 | 7.1.3.2 | Code Inspection 2차 | 1d | 2009-01-02 | 2009-01-02 |  |  | 2009-01-02 | 2009-01-02 | 1d | 205d | start no earlier than 2009-01-02 | 단계완료 | P02-1 1.6.8 |  | 48648FB60F9201F8E100800046140A10 | 07060716O410080 | 00000000000001277357 | DEFAULT |
| 167 | 7.1.3.3 | Code Inspection 3차 | 1d | 2009-01-16 | 2009-01-16 |  |  | 2009-01-16 | 2009-01-16 | 1d | 195d | start no earlier than 2009-01-16 | 단계완료 | P02-1 1.6.8 |  | 48648FB60F9201F8E100800046140A10 | 07060716O410080 | 00000000000001277357 | DEFAULT |
| 168 | 7.1.3.4 | Code Inspection 4차 | 1d | 2009-01-30 | 2009-01-30 |  |  | 2009-01-30 | 2009-01-30 | 1d | 187d | start no earlier than 2009-01-30 | 단계완료 | P02-1 1.6.8 |  | 48648FB60F9201F8E100800046140A10 | 07060716O410080 | 00000000000001277357 | DEFAULT |
| 169 | 7.1.3.5 | Code Inspection 5차 | 1d | 2009-02-13 | 2009-02-13 |  |  | 2009-02-13 | 2009-02-13 | 1d | 177d | start no earlier than 2009-02-13 | 단계완료 | P02-1 1.6.8 |  | 48648FB60F9201F8E100800046140A10 | 07060716O410080 | 00000000000001277357 | DEFAULT |
| 170 | 7.1.3.6 | Code Inspection 6차 | 1d | 2009-02-20 | 2009-02-20 |  |  | 2009-02-20 | 2009-02-20 | 1d | 172d | start no earlier than 2009-02-20 | 단계완료 | P02-1 1.6.8 |  | 48648FB60F9201F8E100800046140A10 | 07060716O410080 | 00000000000001277357 | DEFAULT |
| 171 | 7.1.3.7 | Code Inspection 7차 | 1d | 2009-03-06 | 2009-03-06 |  |  | 2009-03-06 | 2009-03-06 | 1d | 162d | start no earlier than 2009-03-06 |  |  |  |  |  |  |  |
| 172 | 7.1.4 | 구현단계 | 5d | 2009-06-22 | 2009-06-26 |  |  | 2009-06-22 | 2009-06-26 | 5d | 84d | start no earlier than 2009-06-22 | 품질활동수행 | P02-1 1.6.2 | 인스펙션계획, 인스펙션결과서 |  |  |  |  |

| ID | WBS | Task | Duration | Start | Finish | Predecessors | Complete | Remaining | Baseline start | Baseline finish | Baseline duration | Total slack | Constraint | Resources | Work | Text20 | Text26 | Text30 | Text22 | Text25 | Text27 | Text28 |
| --- | --- | --- | --- | --- | --- | --- | --- | --- | --- | --- | --- | --- | --- | --- | --- | --- | --- | --- | --- | --- | --- | --- |
| 173 | 7.2 | **품질지원** | 226d | 2008-08-11 A | 2009-07-03 |  | 42% | 130.31d | 2008-08-11 | 2009-07-03 | 226d | 79d |  |  |  | 품질활동수행 | P02-1 1.6.2 |  |  |  |  |  |
| 174 | 7.2.1 | 분석단계 산출물 점검 | 28d | 2008-08-11 A | 2008-09-19 A |  | 100% |  | 2008-08-11 | 2008-09-19 | 28d |  | start no earlier than 2008-08-11 |  |  | 품질활동수행 | P02-1 1.6.2 | 품질활동계획서, 산출물 점검결과 |  |  |  |  |
| 175 | 7.2.2 | 설계단계 산출물 점검 | 35d | 2008-10-06 A | 2008-11-21 A |  | 100% |  | 2008-10-06 | 2008-11-21 | 35d |  | start no earlier than 2008-10-06 |  |  | 품질활동수행 | P02-1 1.6.2 | 품질활동계획서, 산출물 점검결과 |  |  |  |  |
| 176 | 7.2.3 | 개발단계 산출물 점검 | 71d | 2008-12-01 A | 2009-03-13 |  | 21% | 56.09d | 2008-12-01 | 2009-03-13 | 71d | 157d | start no earlier than 2008-12-01 |  |  | 품질활동수행 | P02-1 1.6.2 | 품질활동계획서, 산출물 점검결과 |  |  |  |  |
| 177 | 7.2.4 | 테스트단계 테스트 지원 | 20d | 2009-03-16 | 2009-04-10 |  |  |  | 2009-03-16 | 2009-04-10 | 20d | 137d | start no earlier than 2009-03-16 |  |  | 품질활동수행 | P02-1 1.6.2 | 테스트계획서, 테스트결과 점검 |  |  |  |  |
| 178 | 7.2.5 | 구현단계 산출물 점검 | 30d | 2009-05-25 | 2009-07-03 |  |  |  | 2009-05-25 | 2009-07-03 | 30d | 79d | start no earlier than 2009-05-25 |  |  | 품질활동수행 | P02-1 1.6.2 | 품질활동계획서, 산출물 점검결과 |  |  |  |  |
| 179 | 7.3 | **감리** | 15d | 2008-11-17 A | 2008-12-05 A |  | 100% |  | 2008-11-17 | 2008-12-05 | 15d |  |  |  |  | 품질활동수행 | P02-1 1.6.2 |  |  |  |  |  |
| 180 | 7.3.1 | **분석/설계감리** | 15d | 2008-11-17 A | 2008-12-05 A |  | 100% |  | 2008-11-17 | 2008-12-05 | 15d |  |  |  |  | 품질활동수행 | P02-1 1.6.2 |  |  |  |  |  |
| 181 | 7.3.1.1 | 감리준비 | 5d | 2008-11-17 A | 2008-11-21 A |  | 100% |  | 2008-11-17 | 2008-11-21 | 5d |  | start no earlier than 2008-11-17 |  |  | 품질활동수행 | P02-1 1.6.2 | 감리계획서 |  |  |  |  |
| 182 | 7.3.1.2 | 감리실시 | 5d | 2008-11-24 A | 2008-11-28 A | 181 | 100% |  | 2008-11-24 | 2008-11-28 | 5d |  |  |  |  | 품질활동수행 | P02-1 1.6.2 | 감리보고서 |  |  |  |  |
| 183 | 7.3.1.3 | 감리결과시정조치 | 5d | 2008-12-01 A | 2008-12-05 A | 182 | 100% |  | 2008-12-01 | 2008-12-05 | 5d |  |  |  |  | 품질활동수행 | P02-1 1.6.2 | 시정조치계획및결과서 |  |  |  |  |
| 184 | 7.3.1.4 | 감리결과보고 | 1d | 2008-12-05 A | 2008-12-05 A |  | 100% |  | 2008-12-05 | 2008-12-05 | 1d |  | start no earlier than 2008-12-05 |  |  | 품질활동수행 | P02-1 1.6.2 | 시정조치계획및결과서 |  |  |  |  |
| 185 | 7.4 | **출하검사** | 16d | 2009-06-15 | 2009-07-06 |  |  |  | 2009-06-15 | 2009-07-06 | 16d | 78d |  |  |  | 품질활동수행 | P02-1 1.6.2 |  |  |  |  |  |
| 186 | 7.4.1 | 출하검사계획및준비 | 5d | 2009-06-15 | 2009-06-19 |  |  |  | 2009-06-15 | 2009-06-19 | 5d | 89d | start no earlier than 2009-06-12 |  |  | 품질활동수행 | P02-1 1.6.2 |  |  |  |  |  |
| 187 | 7.4.2 | 출하검사수행 | 5d | 2009-06-22 | 2009-06-26 |  |  |  | 2009-06-22 | 2009-06-26 | 5d | 84d | start no earlier than 2009-06-19 |  |  | 품질활동수행 | P02-1 1.6.2 |  |  |  |  |  |
| 188 | 7.4.3 | 출하검사결함시정조치 | 5d | 2009-06-29 | 2009-07-03 |  |  |  | 2009-06-29 | 2009-07-03 | 5d | 79d | start no earlier than 2009-06-26 |  |  | 품질활동수행 | P02-1 1.6.2 |  |  |  |  |  |
| 189 | 7.4.4 | 출하검사결과보고 | 1d | 2009-07-06 | 2009-07-06 |  |  |  | 2009-07-06 | 2009-07-06 | 1d | 78d | start no earlier than 2009-07-03 |  |  | 품질활동수행 | P02-1 1.6.2 |  |  |  |  |  |
| 190 | 8 | **Project Close** | 26d | 2009-06-08 | 2009-07-13 |  |  |  | 2009-06-08 | 2009-07-13 | 26d | 73d |  |  | 536h | 프로젝트 종료 |  |  | 477B58D20EF102390000000046140A10 | 07060716O410086 | 00000000000000646761 | DEFAULT |
| 191 | 8.1 | **종료계획 수립** | 10d | 2009-06-15 | 2009-06-26 |  |  |  | 2009-06-15 | 2009-06-26 | 10d | 84d |  |  | 80h | 종료계획 수립 | P02-1 1.7.1 |  | 477B58D40EF102390000000046140A10 | 07060716O410087 | 00000000000000646762 | DEFAULT |
| 192 | 8.1.1 | 종료계획 수립 | 10d | 2009-06-15 | 2009-06-26 |  |  |  | 2009-06-15 | 2009-06-26 | 10d | 84d | start no earlier than 2009-06-15 | PMO | 80h | 종료계획 수립 | P02-1 1.7.1 | 종료계획서 | 477B58D60EF102390000000046140A10 | 07060716O410087 | 00000000000000646763 | DEFAULT |
| 193 | 8.2 | **과업이행여부 확인** | 5d | 2009-06-29 | 2009-07-03 |  |  |  | 2009-06-29 | 2009-07-03 | 5d | 79d |  |  | 80h | 종료계획 수립 | P02-1 1.7.1 |  | 477B58D80EF102390000000046140A10 |  |  |  |
| 194 | 8.2.1 | 요구사항추적표 최종본 작성 | 2d | 2009-06-29 | 2009-06-30 |  |  |  | 2009-06-29 | 2009-06-30 | 2d | 82d | start no earlier than 2009-06-29 | PL | 16h | 종료계획 수립 | P02-1 1.7.1 | 요구사항추적표 | 477B58DA0EF102390000000046140A10 |  |  |  |
| 195 | 8.2.2 | 요구사항추적표 최종본 매핑 결과 확인 | 2d | 2009-07-01 | 2009-07-02 |  |  |  | 2009-07-01 | 2009-07-02 | 2d | 80d | start no earlier than 2009-07-01 | QAO; PMO | 32h | 종료계획 수립 | P02-1 1.7.1 |  | 477B58DC0EF102390000000046140A10 |  |  |  |
| 196 | 8.2.3 | 과업대비표 최종본 확인 | 2d | 2009-07-02 | 2009-07-03 |  |  |  | 2009-07-02 | 2009-07-03 | 2d | 79d | start no earlier than 2009-07-02 | QAO; PMO | 32h | 종료계획 수립 | P02-1 1.7.1 | 과업대비표 | 477B58DE0EF102390000000046140A10 |  |  |  |

| ID | WBS | Task | Duration | Start | Finish | Predecessors | Baseline start | Baseline finish | Baseline duration | Total slack | Free slack | Constraint | Resources | Work | Text20 | Text22 | Text25 | Text26 | Text27 | Text28 | Text30 |
| --- | --- | --- | --- | --- | --- | --- | --- | --- | --- | --- | --- | --- | --- | --- | --- | --- | --- | --- | --- | --- | --- |
| 197 | 8.3 | **시스템 인수인계** | 20d | 2009-06-08 | 2009-07-03 |  | 2009-06-08 | 2009-07-03 | 20d | 79d |  |  |  | 280h | 시스템 인수인계 | 477B58E00EF102390000000046140A10 | 07060716O410089 | P02-1 1.7.2 | 00000000000000646764 | DEFAULT |  |
| 198 | 8.3.1 | 시스템인수인계계획 수립 | 5d | 2009-06-08 | 2009-06-12 |  | 2009-06-08 | 2009-06-12 | 5d | 94d |  | start no earlier than 2009-06-08 | PMO | 40h | 시스템 인수인계 | 477B58E20EF102390000000046140A10 | 07060716O410089 | P02-1 1.7.2 | 00000000000000646765 | DEFAULT | 시스템인수인계계획서 |
| 199 | 8.3.2 | 시스템인수인계 실시 | 15d | 2009-06-15 | 2009-07-03 |  | 2009-06-15 | 2009-07-03 | 15d | 79d |  | start no earlier than 2009-06-15 | PMO; PL | 240h | 시스템 인수인계 | 477B58E40EF102390000000046140A10 | 07060716O410089 | P02-1 1.7.2 | 00000000000000646766 | DEFAULT | 시스템인수인계서 |
| 200 | 8.4 | **최종고객 검수** | 6d | 2009-07-06 | 2009-07-13 |  | 2009-07-06 | 2009-07-13 | 6d | 73d |  |  |  | 48h | 최종고객 검수 | 477B58E60EF102390000000046140A10 | 07060716O410092 | P02-1 1.7.3 | 00000000000000646767 | DEFAULT |  |
| 201 | 8.4.1 | 최종검수 준비 | 5d | 2009-07-06 | 2009-07-10 |  | 2009-07-06 | 2009-07-10 | 5d | 74d |  | start no earlier than 2009-07-06 | PMO | 40h | 최종고객 검수 | 477B58E80EF102390000000046140A10 | 07060716O410092 | P02-1 1.7.3 | 00000000000000646768 | DEFAULT | 검수요청서,최종납품결과 |
| 202 | 8.4.2 | 최종검수 확인 | 1d | 2009-07-13 | 2009-07-13 |  | 2009-07-13 | 2009-07-13 | 1d | 73d |  | start no earlier than 2009-07-13 | PMO | 8h | 최종고객 검수 | 477B58EA0EF102390000000046140A10 | 07060716O410092 | P02-1 1.7.3 | 00000000000000646770 | DEFAULT | 최종검수확인서 |
| 203 | 8.5 | **프로젝트 정보보고** | 6d | 2009-07-06 | 2009-07-13 |  | 2009-07-06 | 2009-07-13 | 6d | 73d |  |  |  | 48h | 프로젝트 정보보고 | 477B58EC0EF102390000000046140A10 | 07060716O410096 | P02-1 1.7.4 | 00000000000000646771 | DEFAULT |  |
| 204 | 8.5.1 | 프로젝트 정보등록 | 5d | 2009-07-06 | 2009-07-10 |  | 2009-07-06 | 2009-07-10 | 5d | 73d | 0d | start no earlier than 2009-07-06 | PMO | 40h | 프로젝트 정보보고 | 477B58F00EF102390000000046140A10 | 07060716O410096 | P02-1 1.7.4 | 00000000000000646773 | DEFAULT | 산출물CD(입고),프로젝트정보보고 |
| 205 | 8.5.2 | 프로젝트 완료보고 | 1d | 2009-07-13 | 2009-07-13 | 204 | 2009-07-13 | 2009-07-13 | 1d | 73d |  |  | PMO | 8h | 프로젝트 정보보고 | 477B58F20EF102390000000046140A10 | 07060716O410096 | P02-1 1.7.4 | 00000000000000646774 | DEFAULT | 프로젝트완료보고 |
| 206 | 9 | PSR Stabilization | 73d | 2009-07-14 | 2009-10-23 |  | 2009-07-14 | 2009-10-23 | 73d | 0d |  | start no earlier than 2009-07-13 |  |  | 프로젝트 종료 |  |  | P02-1 1.7 |  |  |  |
