# 03.신계약

Schedule from MS Project, 2008-07-23 to 2009-07-13, status date 2008-12-12, A marks actual dates.
HSIC-0820606

## Calendars

- All Working Day Calendar: Mon-Fri 08:00-12:00, 13:00-17:00; Sat-Sun off. Exceptions (off unless hours are given): 2008-08-15, 2008-09-15, 2008-10-03, 2008-12-25, 2009-01-01, 2009-01-26 to 2009-01-27, 2009-05-05.
- 한국: Mon-Fri 08:00-12:00, 13:00-17:00; Sat-Sun off. Exceptions (off unless hours are given): 2008-08-15, 2008-09-13 to 2008-09-15, 2008-10-03, 2008-12-25, 2009-01-01, 2009-01-25 to 2009-01-27, 2009-03-01, 2009-05-01 to 2009-05-02, 2009-05-05, 2009-06-06.

## Schedule

| ID | WBS | Task | Duration | Start | Finish | Complete | Baseline start | Baseline finish | Baseline duration | Constraint | Calendar | Text20 | Text22 | Text25 | Text26 | Text27 | Text28 | Text30 |
| --- | --- | --- | --- | --- | --- | --- | --- | --- | --- | --- | --- | --- | --- | --- | --- | --- | --- | --- |
| 1 | 1 | **Inception** | 3d | 2008-07-23 A | 2008-07-25 A | 100% | 2008-07-23 | 2008-07-25 | 3d |  | All Working Day Calendar | 프로젝트 착수 | 48648EC80F9201F8E100800046140A10 | 07061114O410023 | P02-1 1.1 | 00000000000001277238 | DEFAULT |  |
| 2 | 1.1 | **착수준비** | 3d | 2008-07-23 A | 2008-07-25 A | 100% | 2008-07-23 | 2008-07-25 | 3d |  | All Working Day Calendar | 착수준비 | 48648ECA0F9201F8E100800046140A10 | 07061114O410024 | P02-1 1.1.1 | 00000000000001277239 | DEFAULT |  |
| 3 | 1.1.1 | 업무범위 정의 | 3d | 2008-07-23 A | 2008-07-25 A | 100% | 2008-07-23 | 2008-07-25 | 3d | start no earlier than 2008-07-23 | All Working Day Calendar | 착수준비 | 48648ECC0F9201F8E100800046140A10 | 07061114O410024 | P02-1 1.1.1 | 00000000000001277240 | DEFAULT |  |
| 4 | 1.1.2 | 업무파트 WBS 작성 | 3d | 2008-07-23 A | 2008-07-25 A | 100% | 2008-07-23 | 2008-07-25 | 3d | start no earlier than 2008-07-23 | All Working Day Calendar | 착수준비 | 48648ECE0F9201F8E100800046140A10 | 07061114O410024 | P02-1 1.1.1 | 00000000000001277241 | DEFAULT | WBS |
| 5 | 2 | **Analysis** | 43d | 2008-07-28 A | 2008-09-26 A | 100% | 2008-07-28 | 2008-09-26 | 43d |  | All Working Day Calendar | 분석 | 48648EFC0F9201F8E100800046140A10 | 07060716O410166 | P02-1 1.2 | 00000000000001277264 | DEFAULT |  |
| 6 | 2.1 | **현황평가** | 7d | 2008-07-28 A | 2008-08-05 A | 100% | 2008-07-28 | 2008-08-05 | 7d |  | All Working Day Calendar | 현황평가 | 48648F080F9201F8E100800046140A10 | 07060716O410168 | P02-1 1.2.2 | 00000000000001277270 | DEFAULT |  |
| 7 | 2.1.1 | **현행업무분석** | 5d | 2008-07-28 A | 2008-08-01 A | 100% | 2008-07-28 | 2008-08-01 | 5d |  | All Working Day Calendar | 현황평가 | 48648F0A0F9201F8E100800046140A10 | 07060716O410168 | P02-1 1.2.2 | 00000000000001277271 | DEFAULT |  |
| 8 | 2.1.1.1 | 현행업무분석서 수집 | 5d | 2008-07-28 A | 2008-08-01 A | 100% | 2008-07-28 | 2008-08-01 | 5d | start no earlier than 2008-07-28 | All Working Day Calendar | 현황평가 | 48648F0A0F9201F8E100800046140A10 | 07060716O410168 | P02-1 1.2.2 | 00000000000001277271 | DEFAULT | 현행업무분석서 |
| 9 | 2.1.2 | **현행시스템분석** | 5d | 2008-07-28 A | 2008-08-01 A | 100% | 2008-07-28 | 2008-08-01 | 5d |  | All Working Day Calendar | 현황평가 | 48648F0C0F9201F8E100800046140A10 | 07060716O410168 | P02-1 1.2.2 | 00000000000001277272 | DEFAULT |  |
| 10 | 2.1.2.1 | 현행시스템분석서 수집 | 5d | 2008-07-28 A | 2008-08-01 A | 100% | 2008-07-28 | 2008-08-01 | 5d | start no earlier than 2008-07-28 | All Working Day Calendar | 현황평가 | 48648F0A0F9201F8E100800046140A10 | 07060716O410168 | P02-1 1.2.2 | 00000000000001277271 | DEFAULT | 현행시스템분석서 |
| 11 | 2.1.2.2 | **현행시스템 화면 및 보고서 설명** | 5d | 2008-07-28 A | 2008-08-01 A | 100% | 2008-07-28 | 2008-08-01 | 5d |  | All Working Day Calendar | 현황평가 | 48648F0A0F9201F8E100800046140A10 | 07060716O410168 | P02-1 1.2.2 | 00000000000001277271 | DEFAULT |  |
| 12 | 2.1.2.2.1 | **청약** | 5d | 2008-07-28 A | 2008-08-01 A | 100% | 2008-07-28 | 2008-08-01 | 5d |  | All Working Day Calendar | 현황평가 | 48648F0A0F9201F8E100800046140A10 | 07060716O410168 | P02-1 1.2.2 | 00000000000001277271 | DEFAULT |  |
| 13 | 2.1.2.2.1.1 | 개인청약 | 5d | 2008-07-28 A | 2008-08-01 A | 100% | 2008-07-28 | 2008-08-01 | 5d | start no earlier than 2008-07-28 | All Working Day Calendar | 현황평가 | 48648F0A0F9201F8E100800046140A10 | 07060716O410168 | P02-1 1.2.2 | 00000000000001277271 | DEFAULT |  |
| 14 | 2.1.2.2.1.2 | 단체청약 | 5d | 2008-07-28 A | 2008-08-01 A | 100% | 2008-07-28 | 2008-08-01 | 5d | start no earlier than 2008-07-28 | All Working Day Calendar | 현황평가 | 48648F0A0F9201F8E100800046140A10 | 07060716O410168 | P02-1 1.2.2 | 00000000000001277271 | DEFAULT |  |
| 15 | 2.1.2.2.1.3 | 부활청약 | 5d | 2008-07-28 A | 2008-08-01 A | 100% | 2008-07-28 | 2008-08-01 | 5d | start no earlier than 2008-07-28 | All Working Day Calendar | 현황평가 | 48648F0A0F9201F8E100800046140A10 | 07060716O410168 | P02-1 1.2.2 | 00000000000001277271 | DEFAULT |  |
| 16 | 2.1.2.2.2 | **청약보험료** | 5d | 2008-07-28 A | 2008-08-01 A | 100% | 2008-07-28 | 2008-08-01 | 5d |  | All Working Day Calendar | 현황평가 | 48648F0A0F9201F8E100800046140A10 | 07060716O410168 | P02-1 1.2.2 | 00000000000001277271 | DEFAULT |  |
| 17 | 2.1.2.2.2.1 | 청약보험료수납 | 5d | 2008-07-28 A | 2008-08-01 A | 100% | 2008-07-28 | 2008-08-01 | 5d | start no earlier than 2008-07-28 | All Working Day Calendar | 현황평가 | 48648F0A0F9201F8E100800046140A10 | 07060716O410168 | P02-1 1.2.2 | 00000000000001277271 | DEFAULT |  |
| 18 | 2.1.2.2.2.2 | 납입서조회 | 5d | 2008-07-28 A | 2008-08-01 A | 100% | 2008-07-28 | 2008-08-01 | 5d | start no earlier than 2008-07-28 | All Working Day Calendar | 현황평가 | 48648F0A0F9201F8E100800046140A10 | 07060716O410168 | P02-1 1.2.2 | 00000000000001277271 | DEFAULT |  |
| 19 | 2.1.2.2.3 | **신계약일반조회** | 5d | 2008-07-28 A | 2008-08-01 A | 100% | 2008-07-28 | 2008-08-01 | 5d |  | All Working Day Calendar | 현황평가 | 48648F0A0F9201F8E100800046140A10 | 07060716O410168 | P02-1 1.2.2 | 00000000000001277271 | DEFAULT |  |
| 20 | 2.1.2.2.3.1 | 계약정보조회 | 5d | 2008-07-28 A | 2008-08-01 A | 100% | 2008-07-28 | 2008-08-01 | 5d | start no earlier than 2008-07-28 | All Working Day Calendar | 현황평가 | 48648F0A0F9201F8E100800046140A10 | 07060716O410168 | P02-1 1.2.2 | 00000000000001277271 | DEFAULT |  |
| 21 | 2.1.2.2.3.2 | 심사대상조회 | 5d | 2008-07-28 A | 2008-08-01 A | 100% | 2008-07-28 | 2008-08-01 | 5d | start no earlier than 2008-07-28 | All Working Day Calendar | 현황평가 | 48648F0A0F9201F8E100800046140A10 | 07060716O410168 | P02-1 1.2.2 | 00000000000001277271 | DEFAULT |  |
| 22 | 2.1.2.2.3.3 | 심사목록조회 | 5d | 2008-07-28 A | 2008-08-01 A | 100% | 2008-07-28 | 2008-08-01 | 5d | start no earlier than 2008-07-28 | All Working Day Calendar | 현황평가 | 48648F0A0F9201F8E100800046140A10 | 07060716O410168 | P02-1 1.2.2 | 00000000000001277271 | DEFAULT |  |
| 23 | 2.1.2.2.4 | **청약서/영수증관리** | 5d | 2008-07-28 A | 2008-08-01 A | 100% | 2008-07-28 | 2008-08-01 | 5d |  | All Working Day Calendar | 현황평가 | 48648F0A0F9201F8E100800046140A10 | 07060716O410168 | P02-1 1.2.2 | 00000000000001277271 | DEFAULT |  |
| 24 | 2.1.2.2.4.1 | 신계약양식관리 | 5d | 2008-07-28 A | 2008-08-01 A | 100% | 2008-07-28 | 2008-08-01 | 5d | start no earlier than 2008-07-28 | All Working Day Calendar | 현황평가 | 48648F0A0F9201F8E100800046140A10 | 07060716O410168 | P02-1 1.2.2 | 00000000000001277271 | DEFAULT |  |
| 25 | 2.1.2.2.4.2 | 청약서사용관리 | 5d | 2008-07-28 A | 2008-08-01 A | 100% | 2008-07-28 | 2008-08-01 | 5d | start no earlier than 2008-07-28 | All Working Day Calendar | 현황평가 | 48648F0A0F9201F8E100800046140A10 | 07060716O410168 | P02-1 1.2.2 | 00000000000001277271 | DEFAULT |  |
| 26 | 2.1.2.2.4.3 | 영수증사용관리 | 5d | 2008-07-28 A | 2008-08-01 A | 100% | 2008-07-28 | 2008-08-01 | 5d | start no earlier than 2008-07-28 | All Working Day Calendar | 현황평가 | 48648F0A0F9201F8E100800046140A10 | 07060716O410168 | P02-1 1.2.2 | 00000000000001277271 | DEFAULT |  |

| ID | WBS | Task | Duration | Start | Finish | Predecessors | Complete | Baseline start | Baseline finish | Baseline duration | Constraint | Calendar | Text20 | Text22 | Text25 | Text26 | Text27 | Text28 | Text30 |
| --- | --- | --- | --- | --- | --- | --- | --- | --- | --- | --- | --- | --- | --- | --- | --- | --- | --- | --- | --- |
| 27 | 2.1.2.2.5 | **반환보험료관리** | 5d | 2008-07-28 A | 2008-08-01 A |  | 100% | 2008-07-28 | 2008-08-01 | 5d |  | All Working Day Calendar | 현황평가 | 48648F0A0F9201F8E100800046140A10 | 07060716O410168 | P02-1 1.2.2 | 00000000000001277271 | DEFAULT |  |
| 28 | 2.1.2.2.5.1 | 반송/청약철회 | 5d | 2008-07-28 A | 2008-08-01 A |  | 100% | 2008-07-28 | 2008-08-01 | 5d | start no earlier than 2008-07-28 | All Working Day Calendar | 현황평가 | 48648F0A0F9201F8E100800046140A10 | 07060716O410168 | P02-1 1.2.2 | 00000000000001277271 | DEFAULT |  |
| 29 | 2.1.2.2.5.2 | 해지 | 5d | 2008-07-28 A | 2008-08-01 A |  | 100% | 2008-07-28 | 2008-08-01 | 5d | start no earlier than 2008-07-28 | All Working Day Calendar | 현황평가 | 48648F0A0F9201F8E100800046140A10 | 07060716O410168 | P02-1 1.2.2 | 00000000000001277271 | DEFAULT |  |
| 30 | 2.1.2.2.6 | **계약심사** | 5d | 2008-07-28 A | 2008-08-01 A |  | 100% | 2008-07-28 | 2008-08-01 | 5d |  | All Working Day Calendar | 현황평가 | 48648F0A0F9201F8E100800046140A10 | 07060716O410168 | P02-1 1.2.2 | 00000000000001277271 | DEFAULT |  |
| 31 | 2.1.2.2.6.1 | 개인신계약심사 | 5d | 2008-07-28 A | 2008-08-01 A |  | 100% | 2008-07-28 | 2008-08-01 | 5d | start no earlier than 2008-07-28 | All Working Day Calendar | 현황평가 | 48648F0A0F9201F8E100800046140A10 | 07060716O410168 | P02-1 1.2.2 | 00000000000001277271 | DEFAULT |  |
| 32 | 2.1.2.2.6.2 | 단체신계약심사 | 5d | 2008-07-28 A | 2008-08-01 A |  | 100% | 2008-07-28 | 2008-08-01 | 5d | start no earlier than 2008-07-28 | All Working Day Calendar | 현황평가 | 48648F0A0F9201F8E100800046140A10 | 07060716O410168 | P02-1 1.2.2 | 00000000000001277271 | DEFAULT |  |
| 33 | 2.1.2.2.6.3 | 부활심사 | 5d | 2008-07-28 A | 2008-08-01 A |  | 100% | 2008-07-28 | 2008-08-01 | 5d | start no earlier than 2008-07-28 | All Working Day Calendar | 현황평가 | 48648F0A0F9201F8E100800046140A10 | 07060716O410168 | P02-1 1.2.2 | 00000000000001277271 | DEFAULT |  |
| 34 | 2.1.2.2.6.4 | 심사공통조회 | 5d | 2008-07-28 A | 2008-08-01 A |  | 100% | 2008-07-28 | 2008-08-01 | 5d | start no earlier than 2008-07-28 | All Working Day Calendar | 현황평가 | 48648F0A0F9201F8E100800046140A10 | 07060716O410168 | P02-1 1.2.2 | 00000000000001277271 | DEFAULT |  |
| 35 | 2.1.2.2.6.5 | 심사(U/W)관리 | 5d | 2008-07-28 A | 2008-08-01 A |  | 100% | 2008-07-28 | 2008-08-01 | 5d | start no earlier than 2008-07-28 | All Working Day Calendar | 현황평가 | 48648F0A0F9201F8E100800046140A10 | 07060716O410168 | P02-1 1.2.2 | 00000000000001277271 | DEFAULT |  |
| 36 | 2.1.2.2.7 | 적부조사 | 5d | 2008-07-28 A | 2008-08-01 A |  | 100% | 2008-07-28 | 2008-08-01 | 5d | start no earlier than 2008-07-28 | All Working Day Calendar | 현황평가 | 48648F0A0F9201F8E100800046140A10 | 07060716O410168 | P02-1 1.2.2 | 00000000000001277271 | DEFAULT |  |
| 37 | 2.1.2.2.8 | 진단 | 5d | 2008-07-28 A | 2008-08-01 A |  | 100% | 2008-07-28 | 2008-08-01 | 5d | start no earlier than 2008-07-28 | All Working Day Calendar | 현황평가 | 48648F0A0F9201F8E100800046140A10 | 07060716O410168 | P02-1 1.2.2 | 00000000000001277271 | DEFAULT |  |
| 38 | 2.1.2.2.9 | 증권관리 | 5d | 2008-07-28 A | 2008-08-01 A |  | 100% | 2008-07-28 | 2008-08-01 | 5d | start no earlier than 2008-07-28 | All Working Day Calendar | 현황평가 | 48648F0A0F9201F8E100800046140A10 | 07060716O410168 | P02-1 1.2.2 | 00000000000001277271 | DEFAULT |  |
| 39 | 2.1.2.2.10 | 마감 | 5d | 2008-07-28 A | 2008-08-01 A |  | 100% | 2008-07-28 | 2008-08-01 | 5d | start no earlier than 2008-07-28 | All Working Day Calendar | 현황평가 | 48648F0A0F9201F8E100800046140A10 | 07060716O410168 | P02-1 1.2.2 | 00000000000001277271 | DEFAULT |  |
| 40 | 2.1.2.2.11 | 통계 | 5d | 2008-07-28 A | 2008-08-01 A |  | 100% | 2008-07-28 | 2008-08-01 | 5d | start no earlier than 2008-07-28 | All Working Day Calendar | 현황평가 | 48648F0A0F9201F8E100800046140A10 | 07060716O410168 | P02-1 1.2.2 | 00000000000001277271 | DEFAULT |  |
| 41 | 2.1.3 | 인터뷰실시 | 2d | 2008-08-04 A | 2008-08-05 A | 7 | 100% | 2008-08-04 | 2008-08-05 | 2d |  | All Working Day Calendar | 현황평가 | 48648F0E0F9201F8E100800046140A10 | 07060716O410168 | P02-1 1.2.2 | 00000000000001277273 | DEFAULT |  |
| 42 | 2.2 | 착수W/S | 3d | 2008-08-06 A | 2008-08-08 A |  | 100% | 2008-08-06 | 2008-08-08 | 3d | start no earlier than 2008-08-06 | All Working Day Calendar | 현황평가 | 48648F0A0F9201F8E100800046140A10 | 07060716O410168 | P02-1 1.2.2 | 00000000000001277271 | DEFAULT |  |
| 43 | 2.3 | **패키지 요구사항정의** | 14d | 2008-08-11 A | 2008-08-29 A |  | 100% | 2008-08-11 | 2008-08-29 | 14d |  | All Working Day Calendar | 패키지 요구사항정의 | 48648F100F9201F8E100800046140A10 | 07060716O410169 | P02-1 1.2.3 | 00000000000001277274 | DEFAULT |  |
| 44 | 2.3.1 | **패키지 사용자교육** | 4d | 2008-08-11 A | 2008-08-14 A | 42 | 100% | 2008-08-11 | 2008-08-14 | 4d |  | All Working Day Calendar | 패키지 요구사항정의 | 48648F120F9201F8E100800046140A10 | 07060716O410169 | P02-1 1.2.3 | 00000000000001277275 | DEFAULT |  |
| 45 | 2.3.1.1 | **메뉴구조 및 화면 설명** | 3d | 2008-08-11 A | 2008-08-13 A |  | 100% | 2008-08-11 | 2008-08-13 | 3d |  |  | 패키지 요구사항정의 |  |  | P02-1 1.2.3 |  |  | 패키지 화면, 패키지 설계서 |
| 46 | 2.3.1.1.1 | **청약** | 3d | 2008-08-11 A | 2008-08-13 A |  | 100% | 2008-08-11 | 2008-08-13 | 3d |  | All Working Day Calendar | 패키지 요구사항정의 | 48648F0A0F9201F8E100800046140A10 | 07060716O410168 | P02-1 1.2.3 | 00000000000001277271 | DEFAULT |  |
| 47 | 2.3.1.1.1.1 | 개인청약 | 3d | 2008-08-11 A | 2008-08-13 A |  | 100% | 2008-08-11 | 2008-08-13 | 3d | start no earlier than 2008-07-21 | All Working Day Calendar | 패키지 요구사항정의 | 48648F0A0F9201F8E100800046140A10 | 07060716O410168 | P02-1 1.2.3 | 00000000000001277271 | DEFAULT |  |
| 48 | 2.3.1.1.1.2 | 단체청약 | 3d | 2008-08-11 A | 2008-08-13 A |  | 100% | 2008-08-11 | 2008-08-13 | 3d | start no earlier than 2008-07-21 | All Working Day Calendar | 패키지 요구사항정의 | 48648F0A0F9201F8E100800046140A10 | 07060716O410168 | P02-1 1.2.3 | 00000000000001277271 | DEFAULT |  |
| 49 | 2.3.1.1.1.3 | 부활청약 | 3d | 2008-08-11 A | 2008-08-13 A |  | 100% | 2008-08-11 | 2008-08-13 | 3d | start no earlier than 2008-07-21 | All Working Day Calendar | 패키지 요구사항정의 | 48648F0A0F9201F8E100800046140A10 | 07060716O410168 | P02-1 1.2.3 | 00000000000001277271 | DEFAULT |  |
| 50 | 2.3.1.1.2 | **청약보험료** | 3d | 2008-08-11 A | 2008-08-13 A |  | 100% | 2008-08-11 | 2008-08-13 | 3d |  | All Working Day Calendar | 패키지 요구사항정의 | 48648F0A0F9201F8E100800046140A10 | 07060716O410168 | P02-1 1.2.3 | 00000000000001277271 | DEFAULT |  |
| 51 | 2.3.1.1.2.1 | 청약보험료수납 | 3d | 2008-08-11 A | 2008-08-13 A |  | 100% | 2008-08-11 | 2008-08-13 | 3d | start no earlier than 2008-07-21 | All Working Day Calendar | 패키지 요구사항정의 | 48648F0A0F9201F8E100800046140A10 | 07060716O410168 | P02-1 1.2.3 | 00000000000001277271 | DEFAULT |  |
| 52 | 2.3.1.1.2.2 | 납입서조회 | 3d | 2008-08-11 A | 2008-08-13 A |  | 100% | 2008-08-11 | 2008-08-13 | 3d | start no earlier than 2008-07-21 | All Working Day Calendar | 패키지 요구사항정의 | 48648F0A0F9201F8E100800046140A10 | 07060716O410168 | P02-1 1.2.3 | 00000000000001277271 | DEFAULT |  |

| ID | WBS | Task | Duration | Start | Finish | Complete | Baseline start | Baseline finish | Baseline duration | Constraint | Calendar | Text20 | Text22 | Text25 | Text26 | Text27 | Text28 | Text30 |
| --- | --- | --- | --- | --- | --- | --- | --- | --- | --- | --- | --- | --- | --- | --- | --- | --- | --- | --- |
| 53 | 2.3.1.1.3 | **신계약일반조회** | 3d | 2008-08-11 A | 2008-08-13 A | 100% | 2008-08-11 | 2008-08-13 | 3d |  | All Working Day Calendar | 패키지 요구사항정의 | 48648F0A0F9201F8E100800046140A10 | 07060716O410168 | P02-1 1.2.3 | 00000000000001277271 | DEFAULT |  |
| 54 | 2.3.1.1.3.1 | 계약정보조회 | 3d | 2008-08-11 A | 2008-08-13 A | 100% | 2008-08-11 | 2008-08-13 | 3d | start no earlier than 2008-07-21 | All Working Day Calendar | 패키지 요구사항정의 | 48648F0A0F9201F8E100800046140A10 | 07060716O410168 | P02-1 1.2.3 | 00000000000001277271 | DEFAULT |  |
| 55 | 2.3.1.1.3.2 | 심사대상조회 | 3d | 2008-08-11 A | 2008-08-13 A | 100% | 2008-08-11 | 2008-08-13 | 3d | start no earlier than 2008-07-21 | All Working Day Calendar | 패키지 요구사항정의 | 48648F0A0F9201F8E100800046140A10 | 07060716O410168 | P02-1 1.2.3 | 00000000000001277271 | DEFAULT |  |
| 56 | 2.3.1.1.3.3 | 심사목록조회 | 3d | 2008-08-11 A | 2008-08-13 A | 100% | 2008-08-11 | 2008-08-13 | 3d | start no earlier than 2008-07-21 | All Working Day Calendar | 패키지 요구사항정의 | 48648F0A0F9201F8E100800046140A10 | 07060716O410168 | P02-1 1.2.3 | 00000000000001277271 | DEFAULT |  |
| 57 | 2.3.1.1.4 | **청약서/영수증관리** | 3d | 2008-08-11 A | 2008-08-13 A | 100% | 2008-08-11 | 2008-08-13 | 3d |  | All Working Day Calendar | 패키지 요구사항정의 | 48648F0A0F9201F8E100800046140A10 | 07060716O410168 | P02-1 1.2.3 | 00000000000001277271 | DEFAULT |  |
| 58 | 2.3.1.1.4.1 | 신계약양식관리 | 3d | 2008-08-11 A | 2008-08-13 A | 100% | 2008-08-11 | 2008-08-13 | 3d | start no earlier than 2008-07-21 | All Working Day Calendar | 패키지 요구사항정의 | 48648F0A0F9201F8E100800046140A10 | 07060716O410168 | P02-1 1.2.3 | 00000000000001277271 | DEFAULT |  |
| 59 | 2.3.1.1.4.2 | 청약서사용관리 | 3d | 2008-08-11 A | 2008-08-13 A | 100% | 2008-08-11 | 2008-08-13 | 3d | start no earlier than 2008-07-21 | All Working Day Calendar | 패키지 요구사항정의 | 48648F0A0F9201F8E100800046140A10 | 07060716O410168 | P02-1 1.2.3 | 00000000000001277271 | DEFAULT |  |
| 60 | 2.3.1.1.4.3 | 영수증사용관리 | 3d | 2008-08-11 A | 2008-08-13 A | 100% | 2008-08-11 | 2008-08-13 | 3d | start no earlier than 2008-07-21 | All Working Day Calendar | 패키지 요구사항정의 | 48648F0A0F9201F8E100800046140A10 | 07060716O410168 | P02-1 1.2.3 | 00000000000001277271 | DEFAULT |  |
| 61 | 2.3.1.1.5 | **반환보험료관리** | 3d | 2008-08-11 A | 2008-08-13 A | 100% | 2008-08-11 | 2008-08-13 | 3d |  | All Working Day Calendar | 패키지 요구사항정의 | 48648F0A0F9201F8E100800046140A10 | 07060716O410168 | P02-1 1.2.3 | 00000000000001277271 | DEFAULT |  |
| 62 | 2.3.1.1.5.1 | 반송/청약철회 | 3d | 2008-08-11 A | 2008-08-13 A | 100% | 2008-08-11 | 2008-08-13 | 3d | start no earlier than 2008-07-21 | All Working Day Calendar | 패키지 요구사항정의 | 48648F0A0F9201F8E100800046140A10 | 07060716O410168 | P02-1 1.2.3 | 00000000000001277271 | DEFAULT |  |
| 63 | 2.3.1.1.5.2 | 해지 | 3d | 2008-08-11 A | 2008-08-13 A | 100% | 2008-08-11 | 2008-08-13 | 3d | start no earlier than 2008-07-21 | All Working Day Calendar | 패키지 요구사항정의 | 48648F0A0F9201F8E100800046140A10 | 07060716O410168 | P02-1 1.2.3 | 00000000000001277271 | DEFAULT |  |
| 64 | 2.3.1.1.6 | **계약심사** | 3d | 2008-08-11 A | 2008-08-13 A | 100% | 2008-08-11 | 2008-08-13 | 3d |  | All Working Day Calendar | 패키지 요구사항정의 | 48648F0A0F9201F8E100800046140A10 | 07060716O410168 | P02-1 1.2.3 | 00000000000001277271 | DEFAULT |  |
| 65 | 2.3.1.1.6.1 | 개인신계약심사 | 3d | 2008-08-11 A | 2008-08-13 A | 100% | 2008-08-11 | 2008-08-13 | 3d | start no earlier than 2008-07-21 | All Working Day Calendar | 패키지 요구사항정의 | 48648F0A0F9201F8E100800046140A10 | 07060716O410168 | P02-1 1.2.3 | 00000000000001277271 | DEFAULT |  |
| 66 | 2.3.1.1.6.2 | 단체신계약심사 | 3d | 2008-08-11 A | 2008-08-13 A | 100% | 2008-08-11 | 2008-08-13 | 3d | start no earlier than 2008-07-21 | All Working Day Calendar | 패키지 요구사항정의 | 48648F0A0F9201F8E100800046140A10 | 07060716O410168 | P02-1 1.2.3 | 00000000000001277271 | DEFAULT |  |
| 67 | 2.3.1.1.6.3 | 부활심사 | 3d | 2008-08-11 A | 2008-08-13 A | 100% | 2008-08-11 | 2008-08-13 | 3d | start no earlier than 2008-07-21 | All Working Day Calendar | 패키지 요구사항정의 | 48648F0A0F9201F8E100800046140A10 | 07060716O410168 | P02-1 1.2.3 | 00000000000001277271 | DEFAULT |  |
| 68 | 2.3.1.1.6.4 | 심사공통조회 | 3d | 2008-08-11 A | 2008-08-13 A | 100% | 2008-08-11 | 2008-08-13 | 3d | start no earlier than 2008-07-21 | All Working Day Calendar | 패키지 요구사항정의 | 48648F0A0F9201F8E100800046140A10 | 07060716O410168 | P02-1 1.2.3 | 00000000000001277271 | DEFAULT |  |
| 69 | 2.3.1.1.6.5 | 심사(U/W)관리 | 3d | 2008-08-11 A | 2008-08-13 A | 100% | 2008-08-11 | 2008-08-13 | 3d | start no earlier than 2008-07-21 | All Working Day Calendar | 패키지 요구사항정의 | 48648F0A0F9201F8E100800046140A10 | 07060716O410168 | P02-1 1.2.3 | 00000000000001277271 | DEFAULT |  |
| 70 | 2.3.1.1.7 | 적부조사 | 3d | 2008-08-11 A | 2008-08-13 A | 100% | 2008-08-11 | 2008-08-13 | 3d | start no earlier than 2008-07-21 | All Working Day Calendar | 패키지 요구사항정의 | 48648F0A0F9201F8E100800046140A10 | 07060716O410168 | P02-1 1.2.3 | 00000000000001277271 | DEFAULT |  |
| 71 | 2.3.1.1.8 | 진단 | 3d | 2008-08-11 A | 2008-08-13 A | 100% | 2008-08-11 | 2008-08-13 | 3d | start no earlier than 2008-07-21 | All Working Day Calendar | 패키지 요구사항정의 | 48648F0A0F9201F8E100800046140A10 | 07060716O410168 | P02-1 1.2.3 | 00000000000001277271 | DEFAULT |  |
| 72 | 2.3.1.1.9 | 증권관리 | 3d | 2008-08-11 A | 2008-08-13 A | 100% | 2008-08-11 | 2008-08-13 | 3d | start no earlier than 2008-07-21 | All Working Day Calendar | 패키지 요구사항정의 | 48648F0A0F9201F8E100800046140A10 | 07060716O410168 | P02-1 1.2.3 | 00000000000001277271 | DEFAULT |  |
| 73 | 2.3.1.1.10 | 마감 | 3d | 2008-08-11 A | 2008-08-13 A | 100% | 2008-08-11 | 2008-08-13 | 3d | start no earlier than 2008-07-21 | All Working Day Calendar | 패키지 요구사항정의 | 48648F0A0F9201F8E100800046140A10 | 07060716O410168 | P02-1 1.2.3 | 00000000000001277271 | DEFAULT |  |
| 74 | 2.3.1.1.11 | 통계 | 3d | 2008-08-11 A | 2008-08-13 A | 100% | 2008-08-11 | 2008-08-13 | 3d | start no earlier than 2008-07-21 | All Working Day Calendar | 패키지 요구사항정의 | 48648F0A0F9201F8E100800046140A10 | 07060716O410168 | P02-1 1.2.3 | 00000000000001277271 | DEFAULT |  |
| 75 | 2.3.1.2 | **데이터모델 설명** | 1d | 2008-08-14 A | 2008-08-14 A | 100% | 2008-08-14 | 2008-08-14 | 1d |  |  | 패키지 요구사항정의 |  |  | P02-1 1.2.3 |  |  | Data 모델 |
| 76 | 2.3.1.2.1 | 주요 엔티티 설명 | 1d | 2008-08-14 A | 2008-08-14 A | 100% | 2008-08-14 | 2008-08-14 | 1d | start no earlier than 2008-08-14 |  | 패키지 요구사항정의 |  |  | P02-1 1.2.3 |  |  |  |

| ID | WBS | Task | Duration | Start | Finish | Predecessors | Complete | Baseline start | Baseline finish | Baseline duration | Constraint | Calendar | Text20 | Text22 | Text25 | Text26 | Text27 | Text28 | Text30 |
| --- | --- | --- | --- | --- | --- | --- | --- | --- | --- | --- | --- | --- | --- | --- | --- | --- | --- | --- | --- |
| 77 | 2.3.2 | **기능요구사항정의** | 10d | 2008-08-18 A | 2008-08-29 A | 44 | 100% | 2008-08-18 | 2008-08-29 | 10d |  | All Working Day Calendar | 패키지 요구사항정의 | 48648F140F9201F8E100800046140A10 | 07060716O410169 | P02-1 1.2.3 | 00000000000001277276 | DEFAULT |  |
| 78 | 2.3.2.1 | **현업요구사항정의서작성** | 10d | 2008-08-18 A | 2008-08-29 A |  | 100% | 2008-08-18 | 2008-08-29 | 10d |  |  | 패키지 요구사항정의 |  |  | P02-1 1.2.3 |  |  | Business System Requirement |
| 79 | 2.3.2.1.1 | **청약** | 5d | 2008-08-18 A | 2008-08-22 A |  | 100% | 2008-08-18 | 2008-08-22 | 5d |  | All Working Day Calendar | 패키지 요구사항정의 | 48648F0A0F9201F8E100800046140A10 | 07060716O410168 | P02-1 1.2.3 | 00000000000001277271 | DEFAULT |  |
| 80 | 2.3.2.1.1.1 | 개인청약 | 5d | 2008-08-18 A | 2008-08-22 A |  | 100% | 2008-08-18 | 2008-08-22 | 5d | start no earlier than 2008-07-21 | All Working Day Calendar | 패키지 요구사항정의 | 48648F0A0F9201F8E100800046140A10 | 07060716O410168 | P02-1 1.2.3 | 00000000000001277271 | DEFAULT |  |
| 81 | 2.3.2.1.1.2 | 단체청약 | 5d | 2008-08-18 A | 2008-08-22 A |  | 100% | 2008-08-18 | 2008-08-22 | 5d | start no earlier than 2008-07-21 | All Working Day Calendar | 패키지 요구사항정의 | 48648F0A0F9201F8E100800046140A10 | 07060716O410168 | P02-1 1.2.3 | 00000000000001277271 | DEFAULT |  |
| 82 | 2.3.2.1.1.3 | 부활청약 | 5d | 2008-08-18 A | 2008-08-22 A |  | 100% | 2008-08-18 | 2008-08-22 | 5d | start no earlier than 2008-07-21 | All Working Day Calendar | 패키지 요구사항정의 | 48648F0A0F9201F8E100800046140A10 | 07060716O410168 | P02-1 1.2.3 | 00000000000001277271 | DEFAULT |  |
| 83 | 2.3.2.1.2 | **청약보험료** | 5d | 2008-08-18 A | 2008-08-22 A |  | 100% | 2008-08-18 | 2008-08-22 | 5d |  | All Working Day Calendar | 패키지 요구사항정의 | 48648F0A0F9201F8E100800046140A10 | 07060716O410168 | P02-1 1.2.3 | 00000000000001277271 | DEFAULT |  |
| 84 | 2.3.2.1.2.1 | 청약보험료수납 | 5d | 2008-08-18 A | 2008-08-22 A |  | 100% | 2008-08-18 | 2008-08-22 | 5d | start no earlier than 2008-07-21 | All Working Day Calendar | 패키지 요구사항정의 | 48648F0A0F9201F8E100800046140A10 | 07060716O410168 | P02-1 1.2.3 | 00000000000001277271 | DEFAULT |  |
| 85 | 2.3.2.1.2.2 | 납입서조회 | 5d | 2008-08-18 A | 2008-08-22 A |  | 100% | 2008-08-18 | 2008-08-22 | 5d | start no earlier than 2008-07-21 | All Working Day Calendar | 패키지 요구사항정의 | 48648F0A0F9201F8E100800046140A10 | 07060716O410168 | P02-1 1.2.3 | 00000000000001277271 | DEFAULT |  |
| 86 | 2.3.2.1.3 | **신계약일반조회** | 5d | 2008-08-18 A | 2008-08-22 A |  | 100% | 2008-08-18 | 2008-08-22 | 5d |  | All Working Day Calendar | 패키지 요구사항정의 | 48648F0A0F9201F8E100800046140A10 | 07060716O410168 | P02-1 1.2.3 | 00000000000001277271 | DEFAULT |  |
| 87 | 2.3.2.1.3.1 | 계약정보조회 | 5d | 2008-08-18 A | 2008-08-22 A |  | 100% | 2008-08-18 | 2008-08-22 | 5d | start no earlier than 2008-07-21 | All Working Day Calendar | 패키지 요구사항정의 | 48648F0A0F9201F8E100800046140A10 | 07060716O410168 | P02-1 1.2.3 | 00000000000001277271 | DEFAULT |  |
| 88 | 2.3.2.1.3.2 | 심사대상조회 | 5d | 2008-08-18 A | 2008-08-22 A |  | 100% | 2008-08-18 | 2008-08-22 | 5d | start no earlier than 2008-07-21 | All Working Day Calendar | 패키지 요구사항정의 | 48648F0A0F9201F8E100800046140A10 | 07060716O410168 | P02-1 1.2.3 | 00000000000001277271 | DEFAULT |  |
| 89 | 2.3.2.1.3.3 | 심사목록조회 | 5d | 2008-08-18 A | 2008-08-22 A |  | 100% | 2008-08-18 | 2008-08-22 | 5d | start no earlier than 2008-07-21 | All Working Day Calendar | 패키지 요구사항정의 | 48648F0A0F9201F8E100800046140A10 | 07060716O410168 | P02-1 1.2.3 | 00000000000001277271 | DEFAULT |  |
| 90 | 2.3.2.1.4 | **청약서/영수증관리** | 5d | 2008-08-18 A | 2008-08-22 A |  | 100% | 2008-08-18 | 2008-08-22 | 5d |  | All Working Day Calendar | 패키지 요구사항정의 | 48648F0A0F9201F8E100800046140A10 | 07060716O410168 | P02-1 1.2.3 | 00000000000001277271 | DEFAULT |  |
| 91 | 2.3.2.1.4.1 | 신계약양식관리 | 5d | 2008-08-18 A | 2008-08-22 A |  | 100% | 2008-08-18 | 2008-08-22 | 5d | start no earlier than 2008-07-21 | All Working Day Calendar | 패키지 요구사항정의 | 48648F0A0F9201F8E100800046140A10 | 07060716O410168 | P02-1 1.2.3 | 00000000000001277271 | DEFAULT |  |
| 92 | 2.3.2.1.4.2 | 청약서사용관리 | 5d | 2008-08-18 A | 2008-08-22 A |  | 100% | 2008-08-18 | 2008-08-22 | 5d | start no earlier than 2008-07-21 | All Working Day Calendar | 패키지 요구사항정의 | 48648F0A0F9201F8E100800046140A10 | 07060716O410168 | P02-1 1.2.3 | 00000000000001277271 | DEFAULT |  |
| 93 | 2.3.2.1.4.3 | 영수증사용관리 | 5d | 2008-08-18 A | 2008-08-22 A |  | 100% | 2008-08-18 | 2008-08-22 | 5d | start no earlier than 2008-07-21 | All Working Day Calendar | 패키지 요구사항정의 | 48648F0A0F9201F8E100800046140A10 | 07060716O410168 | P02-1 1.2.3 | 00000000000001277271 | DEFAULT |  |
| 94 | 2.3.2.1.5 | **반환보험료관리** | 5d | 2008-08-18 A | 2008-08-22 A |  | 100% | 2008-08-18 | 2008-08-22 | 5d |  | All Working Day Calendar | 패키지 요구사항정의 | 48648F0A0F9201F8E100800046140A10 | 07060716O410168 | P02-1 1.2.3 | 00000000000001277271 | DEFAULT |  |
| 95 | 2.3.2.1.5.1 | 반송/청약철회 | 5d | 2008-08-18 A | 2008-08-22 A |  | 100% | 2008-08-18 | 2008-08-22 | 5d | start no earlier than 2008-07-21 | All Working Day Calendar | 패키지 요구사항정의 | 48648F0A0F9201F8E100800046140A10 | 07060716O410168 | P02-1 1.2.3 | 00000000000001277271 | DEFAULT |  |
| 96 | 2.3.2.1.5.2 | 해지 | 5d | 2008-08-18 A | 2008-08-22 A |  | 100% | 2008-08-18 | 2008-08-22 | 5d | start no earlier than 2008-07-21 | All Working Day Calendar | 패키지 요구사항정의 | 48648F0A0F9201F8E100800046140A10 | 07060716O410168 | P02-1 1.2.3 | 00000000000001277271 | DEFAULT |  |
| 97 | 2.3.2.1.6 | **계약심사** | 5d | 2008-08-25 A | 2008-08-29 A |  | 100% | 2008-08-25 | 2008-08-29 | 5d |  | All Working Day Calendar | 패키지 요구사항정의 | 48648F0A0F9201F8E100800046140A10 | 07060716O410168 | P02-1 1.2.3 | 00000000000001277271 | DEFAULT |  |
| 98 | 2.3.2.1.6.1 | 개인신계약심사 | 5d | 2008-08-25 A | 2008-08-29 A |  | 100% | 2008-08-25 | 2008-08-29 | 5d | start no earlier than 2008-08-25 | All Working Day Calendar | 패키지 요구사항정의 | 48648F0A0F9201F8E100800046140A10 | 07060716O410168 | P02-1 1.2.3 | 00000000000001277271 | DEFAULT |  |
| 99 | 2.3.2.1.6.2 | 단체신계약심사 | 5d | 2008-08-25 A | 2008-08-29 A |  | 100% | 2008-08-25 | 2008-08-29 | 5d | start no earlier than 2008-08-25 | All Working Day Calendar | 패키지 요구사항정의 | 48648F0A0F9201F8E100800046140A10 | 07060716O410168 | P02-1 1.2.3 | 00000000000001277271 | DEFAULT |  |
| 100 | 2.3.2.1.6.3 | 부활심사 | 5d | 2008-08-25 A | 2008-08-29 A |  | 100% | 2008-08-25 | 2008-08-29 | 5d | start no earlier than 2008-08-25 | All Working Day Calendar | 패키지 요구사항정의 | 48648F0A0F9201F8E100800046140A10 | 07060716O410168 | P02-1 1.2.3 | 00000000000001277271 | DEFAULT |  |
| 101 | 2.3.2.1.6.4 | 심사공통조회 | 5d | 2008-08-25 A | 2008-08-29 A |  | 100% | 2008-08-25 | 2008-08-29 | 5d | start no earlier than 2008-08-25 | All Working Day Calendar | 패키지 요구사항정의 | 48648F0A0F9201F8E100800046140A10 | 07060716O410168 | P02-1 1.2.3 | 00000000000001277271 | DEFAULT |  |
| 102 | 2.3.2.1.6.5 | 심사(U/W)관리 | 5d | 2008-08-25 A | 2008-08-29 A |  | 100% | 2008-08-25 | 2008-08-29 | 5d | start no earlier than 2008-08-25 | All Working Day Calendar | 패키지 요구사항정의 | 48648F0A0F9201F8E100800046140A10 | 07060716O410168 | P02-1 1.2.3 | 00000000000001277271 | DEFAULT |  |
| 103 | 2.3.2.1.7 | 적부조사 | 5d | 2008-08-25 A | 2008-08-29 A |  | 100% | 2008-08-25 | 2008-08-29 | 5d | start no earlier than 2008-08-25 | All Working Day Calendar | 패키지 요구사항정의 | 48648F0A0F9201F8E100800046140A10 | 07060716O410168 | P02-1 1.2.3 | 00000000000001277271 | DEFAULT |  |
| 104 | 2.3.2.1.8 | 진단 | 5d | 2008-08-25 A | 2008-08-29 A |  | 100% | 2008-08-25 | 2008-08-29 | 5d | start no earlier than 2008-08-25 | All Working Day Calendar | 패키지 요구사항정의 | 48648F0A0F9201F8E100800046140A10 | 07060716O410168 | P02-1 1.2.3 | 00000000000001277271 | DEFAULT |  |
| 105 | 2.3.2.1.9 | 증권관리 | 5d | 2008-08-25 A | 2008-08-29 A |  | 100% | 2008-08-25 | 2008-08-29 | 5d | start no earlier than 2008-08-25 | All Working Day Calendar | 패키지 요구사항정의 | 48648F0A0F9201F8E100800046140A10 | 07060716O410168 | P02-1 1.2.3 | 00000000000001277271 | DEFAULT |  |
| 106 | 2.3.2.1.10 | 마감 | 5d | 2008-08-25 A | 2008-08-29 A |  | 100% | 2008-08-25 | 2008-08-29 | 5d | start no earlier than 2008-08-25 | All Working Day Calendar | 패키지 요구사항정의 | 48648F0A0F9201F8E100800046140A10 | 07060716O410168 | P02-1 1.2.3 | 00000000000001277271 | DEFAULT |  |
| 107 | 2.3.2.1.11 | 통계 | 5d | 2008-08-25 A | 2008-08-29 A |  | 100% | 2008-08-25 | 2008-08-29 | 5d | start no earlier than 2008-08-25 | All Working Day Calendar | 패키지 요구사항정의 | 48648F0A0F9201F8E100800046140A10 | 07060716O410168 | P02-1 1.2.3 | 00000000000001277271 | DEFAULT |  |

| ID | WBS | Task | Duration | Start | Finish | Predecessors | Complete | Baseline start | Baseline finish | Baseline duration | Constraint | Calendar | Text20 | Text22 | Text25 | Text26 | Text27 | Text28 | Text30 |
| --- | --- | --- | --- | --- | --- | --- | --- | --- | --- | --- | --- | --- | --- | --- | --- | --- | --- | --- | --- |
| 108 | 2.3.3 | **타시스템 인터페이스 요구사항정의** | 5d | 2008-08-25 A | 2008-08-29 A | 41 | 100% | 2008-08-25 | 2008-08-29 | 5d |  | All Working Day Calendar | 패키지 요구사항정의 | 48648F180F9201F8E100800046140A10 | 07060716O410169 | P02-1 1.2.3 | 00000000000001277278 | DEFAULT |  |
| 109 | 2.3.3.1 | **대내시스템 인터페이스 목록 작성** | 5d | 2008-08-25 A | 2008-08-29 A |  | 100% | 2008-08-25 | 2008-08-29 | 5d |  | All Working Day Calendar | 패키지 요구사항정의 | 48648F180F9201F8E100800046140A10 | 07060716O410169 | P02-1 1.2.3 | 00000000000001277278 | DEFAULT | Business System Requirement |
| 110 | 2.3.3.1.1 | 가입설계시스템 | 5d | 2008-08-25 A | 2008-08-29 A |  | 100% | 2008-08-25 | 2008-08-29 | 5d | finish no earlier than 2008-08-29 | All Working Day Calendar | 패키지 요구사항정의 | 48648F0A0F9201F8E100800046140A10 | 07060716O410168 | P02-1 1.2.3 | 00000000000001277271 | DEFAULT |  |
| 111 | 2.3.3.1.2 | DM시스템 | 5d | 2008-08-25 A | 2008-08-29 A |  | 100% | 2008-08-25 | 2008-08-29 | 5d | start no earlier than 2008-08-25 | All Working Day Calendar | 패키지 요구사항정의 | 48648F0A0F9201F8E100800046140A10 | 07060716O410168 | P02-1 1.2.3 | 00000000000001277271 | DEFAULT |  |
| 112 | 2.3.3.1.3 | 방카시스템 | 5d | 2008-08-25 A | 2008-08-29 A |  | 100% | 2008-08-25 | 2008-08-29 | 5d | start no earlier than 2008-08-25 | All Working Day Calendar | 패키지 요구사항정의 | 48648F0A0F9201F8E100800046140A10 | 07060716O410168 | P02-1 1.2.3 | 00000000000001277271 | DEFAULT |  |
| 113 | 2.3.3.1.4 | 이미지시스템 | 5d | 2008-08-25 A | 2008-08-29 A |  | 100% | 2008-08-25 | 2008-08-29 | 5d | start no earlier than 2008-08-25 | All Working Day Calendar | 패키지 요구사항정의 | 48648F0A0F9201F8E100800046140A10 | 07060716O410168 | P02-1 1.2.3 | 00000000000001277271 | DEFAULT |  |
| 114 | 2.3.3.1.5 | NFS시스템 | 5d | 2008-08-25 A | 2008-08-29 A |  | 100% | 2008-08-25 | 2008-08-29 | 5d | start no earlier than 2008-08-25 | All Working Day Calendar | 패키지 요구사항정의 | 48648F0A0F9201F8E100800046140A10 | 07060716O410168 | P02-1 1.2.3 | 00000000000001277271 | DEFAULT |  |
| 115 | 2.3.3.2 | **대외시스템 인터페이스 목록 작성** | 5d | 2008-08-25 A | 2008-08-29 A |  | 100% | 2008-08-25 | 2008-08-29 | 5d |  | All Working Day Calendar | 패키지 요구사항정의 | 48648F180F9201F8E100800046140A10 | 07060716O410169 | P02-1 1.2.3 | 00000000000001277278 | DEFAULT | Business System Requirement |
| 116 | 2.3.3.2.1 | 은행 리얼타임 이체 | 5d | 2008-08-25 A | 2008-08-29 A |  | 100% | 2008-08-25 | 2008-08-29 | 5d | start no earlier than 2008-08-25 | All Working Day Calendar | 패키지 요구사항정의 | 48648F0A0F9201F8E100800046140A10 | 07060716O410168 | P02-1 1.2.3 | 00000000000001277271 | DEFAULT |  |
| 117 | 2.3.3.2.2 | 카드사 실시간 승인 | 5d | 2008-08-25 A | 2008-08-29 A |  | 100% | 2008-08-25 | 2008-08-29 | 5d | start no earlier than 2008-08-25 | All Working Day Calendar | 패키지 요구사항정의 | 48648F0A0F9201F8E100800046140A10 | 07060716O410168 | P02-1 1.2.3 | 00000000000001277271 | DEFAULT |  |
| 118 | 2.3.3.2.3 | 카드사 매입요청 및 매입결과 수신 | 5d | 2008-08-25 A | 2008-08-29 A |  | 100% | 2008-08-25 | 2008-08-29 | 5d | start no earlier than 2008-08-25 | All Working Day Calendar | 패키지 요구사항정의 | 48648F0A0F9201F8E100800046140A10 | 07060716O410168 | P02-1 1.2.3 | 00000000000001277271 | DEFAULT |  |
| 119 | 2.3.3.2.4 | 세금우대정보 수신 | 5d | 2008-08-25 A | 2008-08-29 A |  | 100% | 2008-08-25 | 2008-08-29 | 5d | start no earlier than 2008-08-25 | All Working Day Calendar | 패키지 요구사항정의 | 48648F0A0F9201F8E100800046140A10 | 07060716O410168 | P02-1 1.2.3 | 00000000000001277271 | DEFAULT |  |
| 120 | 2.3.3.2.5 | 생보협회 자료 송수신 | 5d | 2008-08-25 A | 2008-08-29 A |  | 100% | 2008-08-25 | 2008-08-29 | 5d | start no earlier than 2008-08-25 | All Working Day Calendar | 패키지 요구사항정의 | 48648F0A0F9201F8E100800046140A10 | 07060716O410168 | P02-1 1.2.3 | 00000000000001277271 | DEFAULT |  |
| 121 | 2.4 | **매핑** | 24d | 2008-08-18 A | 2008-09-19 A |  | 100% | 2008-08-18 | 2008-09-19 | 24d |  | All Working Day Calendar | 매핑 | 48648F1C0F9201F8E100800046140A10 | 07060716O410170 | P02-1 1.2.4 | 00000000000001277280 | DEFAULT |  |
| 122 | 2.4.1 | **패키지GAP분석** | 10d | 2008-08-18 A | 2008-08-29 A |  | 100% | 2008-08-18 | 2008-08-29 | 10d |  |  | 매핑 |  |  | P02-1 1.2.4 |  |  | 패키지 GAP 분석서 |
| 123 | 2.4.1.1 | **청약** | 5d | 2008-08-18 A | 2008-08-22 A |  | 100% | 2008-08-18 | 2008-08-22 | 5d |  | All Working Day Calendar | 매핑 | 48648F0A0F9201F8E100800046140A10 | 07060716O410168 | P02-1 1.2.4 | 00000000000001277271 | DEFAULT |  |
| 124 | 2.4.1.1.1 | 개인청약 | 5d | 2008-08-18 A | 2008-08-22 A |  | 100% | 2008-08-18 | 2008-08-22 | 5d | start no earlier than 2008-08-18 | All Working Day Calendar | 매핑 | 48648F0A0F9201F8E100800046140A10 | 07060716O410168 | P02-1 1.2.4 | 00000000000001277271 | DEFAULT |  |
| 125 | 2.4.1.1.2 | 단체청약 | 5d | 2008-08-18 A | 2008-08-22 A |  | 100% | 2008-08-18 | 2008-08-22 | 5d | start no earlier than 2008-08-18 | All Working Day Calendar | 매핑 | 48648F0A0F9201F8E100800046140A10 | 07060716O410168 | P02-1 1.2.4 | 00000000000001277271 | DEFAULT |  |
| 126 | 2.4.1.1.3 | 부활청약 | 5d | 2008-08-18 A | 2008-08-22 A |  | 100% | 2008-08-18 | 2008-08-22 | 5d | start no earlier than 2008-08-18 | All Working Day Calendar | 매핑 | 48648F0A0F9201F8E100800046140A10 | 07060716O410168 | P02-1 1.2.4 | 00000000000001277271 | DEFAULT |  |
| 127 | 2.4.1.2 | **청약보험료** | 5d | 2008-08-18 A | 2008-08-22 A |  | 100% | 2008-08-18 | 2008-08-22 | 5d |  | All Working Day Calendar | 매핑 | 48648F0A0F9201F8E100800046140A10 | 07060716O410168 | P02-1 1.2.4 | 00000000000001277271 | DEFAULT |  |
| 128 | 2.4.1.2.1 | 청약보험료수납 | 5d | 2008-08-18 A | 2008-08-22 A |  | 100% | 2008-08-18 | 2008-08-22 | 5d | start no earlier than 2008-08-18 | All Working Day Calendar | 매핑 | 48648F0A0F9201F8E100800046140A10 | 07060716O410168 | P02-1 1.2.4 | 00000000000001277271 | DEFAULT |  |
| 129 | 2.4.1.2.2 | 납입서조회 | 5d | 2008-08-18 A | 2008-08-22 A |  | 100% | 2008-08-18 | 2008-08-22 | 5d | start no earlier than 2008-08-18 | All Working Day Calendar | 매핑 | 48648F0A0F9201F8E100800046140A10 | 07060716O410168 | P02-1 1.2.4 | 00000000000001277271 | DEFAULT |  |
| 130 | 2.4.1.3 | **신계약일반조회** | 5d | 2008-08-18 A | 2008-08-22 A |  | 100% | 2008-08-18 | 2008-08-22 | 5d |  | All Working Day Calendar | 매핑 | 48648F0A0F9201F8E100800046140A10 | 07060716O410168 | P02-1 1.2.4 | 00000000000001277271 | DEFAULT |  |
| 131 | 2.4.1.3.1 | 계약정보조회 | 5d | 2008-08-18 A | 2008-08-22 A |  | 100% | 2008-08-18 | 2008-08-22 | 5d | start no earlier than 2008-08-18 | All Working Day Calendar | 매핑 | 48648F0A0F9201F8E100800046140A10 | 07060716O410168 | P02-1 1.2.4 | 00000000000001277271 | DEFAULT |  |
| 132 | 2.4.1.3.2 | 심사대상조회 | 5d | 2008-08-18 A | 2008-08-22 A |  | 100% | 2008-08-18 | 2008-08-22 | 5d | start no earlier than 2008-08-18 | All Working Day Calendar | 매핑 | 48648F0A0F9201F8E100800046140A10 | 07060716O410168 | P02-1 1.2.4 | 00000000000001277271 | DEFAULT |  |
| 133 | 2.4.1.3.3 | 심사목록조회 | 5d | 2008-08-18 A | 2008-08-22 A |  | 100% | 2008-08-18 | 2008-08-22 | 5d | start no earlier than 2008-08-18 | All Working Day Calendar | 매핑 | 48648F0A0F9201F8E100800046140A10 | 07060716O410168 | P02-1 1.2.4 | 00000000000001277271 | DEFAULT |  |

| ID | WBS | Task | Duration | Start | Finish | Complete | Baseline start | Baseline finish | Baseline duration | Constraint | Calendar | Text20 | Text22 | Text25 | Text26 | Text27 | Text28 | Text30 |
| --- | --- | --- | --- | --- | --- | --- | --- | --- | --- | --- | --- | --- | --- | --- | --- | --- | --- | --- |
| 134 | 2.4.1.4 | **청약서/영수증관리** | 5d | 2008-08-18 A | 2008-08-22 A | 100% | 2008-08-18 | 2008-08-22 | 5d |  | All Working Day Calendar | 매핑 | 48648F0A0F9201F8E100800046140A10 | 07060716O410168 | P02-1 1.2.4 | 00000000000001277271 | DEFAULT |  |
| 135 | 2.4.1.4.1 | 신계약양식관리 | 5d | 2008-08-18 A | 2008-08-22 A | 100% | 2008-08-18 | 2008-08-22 | 5d | start no earlier than 2008-08-18 | All Working Day Calendar | 매핑 | 48648F0A0F9201F8E100800046140A10 | 07060716O410168 | P02-1 1.2.4 | 00000000000001277271 | DEFAULT |  |
| 136 | 2.4.1.4.2 | 청약서사용관리 | 5d | 2008-08-18 A | 2008-08-22 A | 100% | 2008-08-18 | 2008-08-22 | 5d | start no earlier than 2008-08-18 | All Working Day Calendar | 매핑 | 48648F0A0F9201F8E100800046140A10 | 07060716O410168 | P02-1 1.2.4 | 00000000000001277271 | DEFAULT |  |
| 137 | 2.4.1.4.3 | 영수증사용관리 | 5d | 2008-08-18 A | 2008-08-22 A | 100% | 2008-08-18 | 2008-08-22 | 5d | start no earlier than 2008-08-18 | All Working Day Calendar | 매핑 | 48648F0A0F9201F8E100800046140A10 | 07060716O410168 | P02-1 1.2.4 | 00000000000001277271 | DEFAULT |  |
| 138 | 2.4.1.5 | **반환보험료관리** | 5d | 2008-08-18 A | 2008-08-22 A | 100% | 2008-08-18 | 2008-08-22 | 5d |  | All Working Day Calendar | 매핑 | 48648F0A0F9201F8E100800046140A10 | 07060716O410168 | P02-1 1.2.4 | 00000000000001277271 | DEFAULT |  |
| 139 | 2.4.1.5.1 | 반송/청약철회 | 5d | 2008-08-18 A | 2008-08-22 A | 100% | 2008-08-18 | 2008-08-22 | 5d | start no earlier than 2008-08-18 | All Working Day Calendar | 매핑 | 48648F0A0F9201F8E100800046140A10 | 07060716O410168 | P02-1 1.2.4 | 00000000000001277271 | DEFAULT |  |
| 140 | 2.4.1.5.2 | 해지 | 5d | 2008-08-18 A | 2008-08-22 A | 100% | 2008-08-18 | 2008-08-22 | 5d | start no earlier than 2008-08-18 | All Working Day Calendar | 매핑 | 48648F0A0F9201F8E100800046140A10 | 07060716O410168 | P02-1 1.2.4 | 00000000000001277271 | DEFAULT |  |
| 141 | 2.4.1.6 | **계약심사** | 5d | 2008-08-25 A | 2008-08-29 A | 100% | 2008-08-25 | 2008-08-29 | 5d |  | All Working Day Calendar | 매핑 | 48648F0A0F9201F8E100800046140A10 | 07060716O410168 | P02-1 1.2.4 | 00000000000001277271 | DEFAULT |  |
| 142 | 2.4.1.6.1 | 개인신계약심사 | 5d | 2008-08-25 A | 2008-08-29 A | 100% | 2008-08-25 | 2008-08-29 | 5d | start no earlier than 2008-08-25 | All Working Day Calendar | 매핑 | 48648F0A0F9201F8E100800046140A10 | 07060716O410168 | P02-1 1.2.4 | 00000000000001277271 | DEFAULT |  |
| 143 | 2.4.1.6.2 | 단체신계약심사 | 5d | 2008-08-25 A | 2008-08-29 A | 100% | 2008-08-25 | 2008-08-29 | 5d | start no earlier than 2008-08-25 | All Working Day Calendar | 매핑 | 48648F0A0F9201F8E100800046140A10 | 07060716O410168 | P02-1 1.2.4 | 00000000000001277271 | DEFAULT |  |
| 144 | 2.4.1.6.3 | 부활심사 | 5d | 2008-08-25 A | 2008-08-29 A | 100% | 2008-08-25 | 2008-08-29 | 5d | start no earlier than 2008-08-25 | All Working Day Calendar | 매핑 | 48648F0A0F9201F8E100800046140A10 | 07060716O410168 | P02-1 1.2.4 | 00000000000001277271 | DEFAULT |  |
| 145 | 2.4.1.6.4 | 심사공통조회 | 5d | 2008-08-25 A | 2008-08-29 A | 100% | 2008-08-25 | 2008-08-29 | 5d | start no earlier than 2008-08-25 | All Working Day Calendar | 매핑 | 48648F0A0F9201F8E100800046140A10 | 07060716O410168 | P02-1 1.2.4 | 00000000000001277271 | DEFAULT |  |
| 146 | 2.4.1.6.5 | 심사(U/W)관리 | 5d | 2008-08-25 A | 2008-08-29 A | 100% | 2008-08-25 | 2008-08-29 | 5d | start no earlier than 2008-08-25 | All Working Day Calendar | 매핑 | 48648F0A0F9201F8E100800046140A10 | 07060716O410168 | P02-1 1.2.4 | 00000000000001277271 | DEFAULT |  |
| 147 | 2.4.1.7 | 적부조사 | 5d | 2008-08-25 A | 2008-08-29 A | 100% | 2008-08-25 | 2008-08-29 | 5d | start no earlier than 2008-08-25 | All Working Day Calendar | 매핑 | 48648F0A0F9201F8E100800046140A10 | 07060716O410168 | P02-1 1.2.4 | 00000000000001277271 | DEFAULT |  |
| 148 | 2.4.1.8 | 진단 | 5d | 2008-08-25 A | 2008-08-29 A | 100% | 2008-08-25 | 2008-08-29 | 5d | start no earlier than 2008-08-25 | All Working Day Calendar | 매핑 | 48648F0A0F9201F8E100800046140A10 | 07060716O410168 | P02-1 1.2.4 | 00000000000001277271 | DEFAULT |  |
| 149 | 2.4.1.9 | 증권관리 | 5d | 2008-08-25 A | 2008-08-29 A | 100% | 2008-08-25 | 2008-08-29 | 5d | start no earlier than 2008-08-25 | All Working Day Calendar | 매핑 | 48648F0A0F9201F8E100800046140A10 | 07060716O410168 | P02-1 1.2.4 | 00000000000001277271 | DEFAULT |  |
| 150 | 2.4.1.10 | 마감 | 5d | 2008-08-25 A | 2008-08-29 A | 100% | 2008-08-25 | 2008-08-29 | 5d | start no earlier than 2008-08-25 | All Working Day Calendar | 매핑 | 48648F0A0F9201F8E100800046140A10 | 07060716O410168 | P02-1 1.2.4 | 00000000000001277271 | DEFAULT |  |
| 151 | 2.4.1.11 | 통계 | 5d | 2008-08-25 A | 2008-08-29 A | 100% | 2008-08-25 | 2008-08-29 | 5d | start no earlier than 2008-08-25 | All Working Day Calendar | 매핑 | 48648F0A0F9201F8E100800046140A10 | 07060716O410168 | P02-1 1.2.4 | 00000000000001277271 | DEFAULT |  |
| 152 | 2.4.2 | **매핑결과 및 GAP 대응방안 수립** | 14d | 2008-09-01 A | 2008-09-19 A | 100% | 2008-09-01 | 2008-09-19 | 14d |  | All Working Day Calendar | 매핑 | 48648F220F9201F8E100800046140A10 | 07060716O410170 | P02-1 1.2.4 | 00000000000001277283 | DEFAULT | 현업요구사항정의서(매핑결과 및 GAP대응방안) |
| 153 | 2.4.2.1 | **청약** | 5d | 2008-09-01 A | 2008-09-05 A | 100% | 2008-09-01 | 2008-09-05 | 5d |  | All Working Day Calendar | 매핑 | 48648F0A0F9201F8E100800046140A10 | 07060716O410168 | P02-1 1.2.4 | 00000000000001277271 | DEFAULT |  |
| 154 | 2.4.2.1.1 | 개인청약 | 5d | 2008-09-01 A | 2008-09-05 A | 100% | 2008-09-01 | 2008-09-05 | 5d | start no earlier than 2008-09-01 | All Working Day Calendar | 매핑 | 48648F0A0F9201F8E100800046140A10 | 07060716O410168 | P02-1 1.2.4 | 00000000000001277271 | DEFAULT |  |
| 155 | 2.4.2.1.2 | 단체청약 | 5d | 2008-09-01 A | 2008-09-05 A | 100% | 2008-09-01 | 2008-09-05 | 5d | start no earlier than 2008-09-01 | All Working Day Calendar | 매핑 | 48648F0A0F9201F8E100800046140A10 | 07060716O410168 | P02-1 1.2.4 | 00000000000001277271 | DEFAULT |  |
| 156 | 2.4.2.1.3 | 부활청약 | 5d | 2008-09-01 A | 2008-09-05 A | 100% | 2008-09-01 | 2008-09-05 | 5d | start no earlier than 2008-09-01 | All Working Day Calendar | 매핑 | 48648F0A0F9201F8E100800046140A10 | 07060716O410168 | P02-1 1.2.4 | 00000000000001277271 | DEFAULT |  |
| 157 | 2.4.2.2 | **청약보험료** | 5d | 2008-09-01 A | 2008-09-05 A | 100% | 2008-09-01 | 2008-09-05 | 5d |  | All Working Day Calendar | 매핑 | 48648F0A0F9201F8E100800046140A10 | 07060716O410168 | P02-1 1.2.4 | 00000000000001277271 | DEFAULT |  |
| 158 | 2.4.2.2.1 | 청약보험료수납 | 5d | 2008-09-01 A | 2008-09-05 A | 100% | 2008-09-01 | 2008-09-05 | 5d | start no earlier than 2008-09-01 | All Working Day Calendar | 매핑 | 48648F0A0F9201F8E100800046140A10 | 07060716O410168 | P02-1 1.2.4 | 00000000000001277271 | DEFAULT |  |
| 159 | 2.4.2.2.2 | 납입서조회 | 5d | 2008-09-01 A | 2008-09-05 A | 100% | 2008-09-01 | 2008-09-05 | 5d | start no earlier than 2008-09-01 | All Working Day Calendar | 매핑 | 48648F0A0F9201F8E100800046140A10 | 07060716O410168 | P02-1 1.2.4 | 00000000000001277271 | DEFAULT |  |

| ID | WBS | Task | Duration | Start | Finish | Predecessors | Complete | Baseline start | Baseline finish | Baseline duration | Constraint | Calendar | Text20 | Text22 | Text25 | Text26 | Text27 | Text28 | Text30 |
| --- | --- | --- | --- | --- | --- | --- | --- | --- | --- | --- | --- | --- | --- | --- | --- | --- | --- | --- | --- |
| 160 | 2.4.2.3 | **신계약일반조회** | 5d | 2008-09-08 A | 2008-09-12 A |  | 100% | 2008-09-08 | 2008-09-12 | 5d |  | All Working Day Calendar | 매핑 | 48648F0A0F9201F8E100800046140A10 | 07060716O410168 | P02-1 1.2.4 | 00000000000001277271 | DEFAULT |  |
| 161 | 2.4.2.3.1 | 계약정보조회 | 5d | 2008-09-08 A | 2008-09-12 A |  | 100% | 2008-09-08 | 2008-09-12 | 5d | start no earlier than 2008-09-08 | All Working Day Calendar | 매핑 | 48648F0A0F9201F8E100800046140A10 | 07060716O410168 | P02-1 1.2.4 | 00000000000001277271 | DEFAULT |  |
| 162 | 2.4.2.3.2 | 심사대상조회 | 5d | 2008-09-08 A | 2008-09-12 A |  | 100% | 2008-09-08 | 2008-09-12 | 5d | start no earlier than 2008-09-08 | All Working Day Calendar | 매핑 | 48648F0A0F9201F8E100800046140A10 | 07060716O410168 | P02-1 1.2.4 | 00000000000001277271 | DEFAULT |  |
| 163 | 2.4.2.3.3 | 심사목록조회 | 5d | 2008-09-08 A | 2008-09-12 A |  | 100% | 2008-09-08 | 2008-09-12 | 5d | start no earlier than 2008-09-08 | All Working Day Calendar | 매핑 | 48648F0A0F9201F8E100800046140A10 | 07060716O410168 | P02-1 1.2.4 | 00000000000001277271 | DEFAULT |  |
| 164 | 2.4.2.4 | **청약서/영수증관리** | 5d | 2008-09-08 A | 2008-09-12 A |  | 100% | 2008-09-08 | 2008-09-12 | 5d |  | All Working Day Calendar | 매핑 | 48648F0A0F9201F8E100800046140A10 | 07060716O410168 | P02-1 1.2.4 | 00000000000001277271 | DEFAULT |  |
| 165 | 2.4.2.4.1 | 신계약양식관리 | 5d | 2008-09-08 A | 2008-09-12 A |  | 100% | 2008-09-08 | 2008-09-12 | 5d | start no earlier than 2008-09-08 | All Working Day Calendar | 매핑 | 48648F0A0F9201F8E100800046140A10 | 07060716O410168 | P02-1 1.2.4 | 00000000000001277271 | DEFAULT |  |
| 166 | 2.4.2.4.2 | 청약서사용관리 | 5d | 2008-09-08 A | 2008-09-12 A |  | 100% | 2008-09-08 | 2008-09-12 | 5d | start no earlier than 2008-09-08 | All Working Day Calendar | 매핑 | 48648F0A0F9201F8E100800046140A10 | 07060716O410168 | P02-1 1.2.4 | 00000000000001277271 | DEFAULT |  |
| 167 | 2.4.2.4.3 | 영수증사용관리 | 5d | 2008-09-08 A | 2008-09-12 A |  | 100% | 2008-09-08 | 2008-09-12 | 5d | start no earlier than 2008-09-08 | All Working Day Calendar | 매핑 | 48648F0A0F9201F8E100800046140A10 | 07060716O410168 | P02-1 1.2.4 | 00000000000001277271 | DEFAULT |  |
| 168 | 2.4.2.5 | **반환보험료관리** | 5d | 2008-09-08 A | 2008-09-12 A |  | 100% | 2008-09-08 | 2008-09-12 | 5d |  | All Working Day Calendar | 매핑 | 48648F0A0F9201F8E100800046140A10 | 07060716O410168 | P02-1 1.2.4 | 00000000000001277271 | DEFAULT |  |
| 169 | 2.4.2.5.1 | 반송/청약철회 | 5d | 2008-09-08 A | 2008-09-12 A |  | 100% | 2008-09-08 | 2008-09-12 | 5d | start no earlier than 2008-09-08 | All Working Day Calendar | 매핑 | 48648F0A0F9201F8E100800046140A10 | 07060716O410168 | P02-1 1.2.4 | 00000000000001277271 | DEFAULT |  |
| 170 | 2.4.2.5.2 | 해지 | 5d | 2008-09-08 A | 2008-09-12 A |  | 100% | 2008-09-08 | 2008-09-12 | 5d | start no earlier than 2008-09-08 | All Working Day Calendar | 매핑 | 48648F0A0F9201F8E100800046140A10 | 07060716O410168 | P02-1 1.2.4 | 00000000000001277271 | DEFAULT |  |
| 171 | 2.4.2.6 | **계약심사** | 5d | 2008-09-08 A | 2008-09-12 A |  | 100% | 2008-09-08 | 2008-09-12 | 5d |  | All Working Day Calendar | 매핑 | 48648F0A0F9201F8E100800046140A10 | 07060716O410168 | P02-1 1.2.4 | 00000000000001277271 | DEFAULT |  |
| 172 | 2.4.2.6.1 | 개인신계약심사 | 5d | 2008-09-08 A | 2008-09-12 A |  | 100% | 2008-09-08 | 2008-09-12 | 5d | start no earlier than 2008-09-08 | All Working Day Calendar | 매핑 | 48648F0A0F9201F8E100800046140A10 | 07060716O410168 | P02-1 1.2.4 | 00000000000001277271 | DEFAULT |  |
| 173 | 2.4.2.6.2 | 단체신계약심사 | 5d | 2008-09-08 A | 2008-09-12 A |  | 100% | 2008-09-08 | 2008-09-12 | 5d | start no earlier than 2008-09-08 | All Working Day Calendar | 매핑 | 48648F0A0F9201F8E100800046140A10 | 07060716O410168 | P02-1 1.2.4 | 00000000000001277271 | DEFAULT |  |
| 174 | 2.4.2.6.3 | 부활심사 | 5d | 2008-09-08 A | 2008-09-12 A |  | 100% | 2008-09-08 | 2008-09-12 | 5d | start no earlier than 2008-09-08 | All Working Day Calendar | 매핑 | 48648F0A0F9201F8E100800046140A10 | 07060716O410168 | P02-1 1.2.4 | 00000000000001277271 | DEFAULT |  |
| 175 | 2.4.2.6.4 | 심사공통조회 | 5d | 2008-09-08 A | 2008-09-12 A |  | 100% | 2008-09-08 | 2008-09-12 | 5d | start no earlier than 2008-09-08 | All Working Day Calendar | 매핑 | 48648F0A0F9201F8E100800046140A10 | 07060716O410168 | P02-1 1.2.4 | 00000000000001277271 | DEFAULT |  |
| 176 | 2.4.2.6.5 | 심사(U/W)관리 | 5d | 2008-09-08 A | 2008-09-12 A |  | 100% | 2008-09-08 | 2008-09-12 | 5d | start no earlier than 2008-09-08 | All Working Day Calendar | 매핑 | 48648F0A0F9201F8E100800046140A10 | 07060716O410168 | P02-1 1.2.4 | 00000000000001277271 | DEFAULT |  |
| 177 | 2.4.2.7 | 적부조사 | 4d | 2008-09-16 A | 2008-09-19 A |  | 100% | 2008-09-16 | 2008-09-19 | 4d | start no earlier than 2008-09-16 | All Working Day Calendar | 매핑 | 48648F0A0F9201F8E100800046140A10 | 07060716O410168 | P02-1 1.2.4 | 00000000000001277271 | DEFAULT |  |
| 178 | 2.4.2.8 | 진단 | 4d | 2008-09-16 A | 2008-09-19 A |  | 100% | 2008-09-16 | 2008-09-19 | 4d | start no earlier than 2008-09-16 | All Working Day Calendar | 매핑 | 48648F0A0F9201F8E100800046140A10 | 07060716O410168 | P02-1 1.2.4 | 00000000000001277271 | DEFAULT |  |
| 179 | 2.4.2.9 | 증권관리 | 4d | 2008-09-16 A | 2008-09-19 A |  | 100% | 2008-09-16 | 2008-09-19 | 4d | start no earlier than 2008-09-16 | All Working Day Calendar | 매핑 | 48648F0A0F9201F8E100800046140A10 | 07060716O410168 | P02-1 1.2.4 | 00000000000001277271 | DEFAULT |  |
| 180 | 2.4.2.10 | 마감 | 4d | 2008-09-16 A | 2008-09-19 A |  | 100% | 2008-09-16 | 2008-09-19 | 4d | start no earlier than 2008-09-16 | All Working Day Calendar | 매핑 | 48648F0A0F9201F8E100800046140A10 | 07060716O410168 | P02-1 1.2.4 | 00000000000001277271 | DEFAULT |  |
| 181 | 2.4.2.11 | 통계 | 4d | 2008-09-16 A | 2008-09-19 A |  | 100% | 2008-09-16 | 2008-09-19 | 4d | start no earlier than 2008-09-16 | All Working Day Calendar | 매핑 | 48648F0A0F9201F8E100800046140A10 | 07060716O410168 | P02-1 1.2.4 | 00000000000001277271 | DEFAULT |  |
| 182 | 2.5 | **단계완료** | 5d | 2008-09-22 A | 2008-09-26 A |  | 100% | 2008-09-22 | 2008-09-26 | 5d |  | All Working Day Calendar | 단계완료 | 48648FB40F9201F8E100800046140A10 | 07060716O410080 | P02-1 1.6.8 | 00000000000001277356 | DEFAULT |  |
| 183 | 2.5.1 | 요구사항추적표 작성 | 1d | 2008-09-22 A | 2008-09-22 A |  | 100% | 2008-09-22 | 2008-09-22 | 1d | start no earlier than 2008-09-22 | All Working Day Calendar | 단계완료 | 48648FB60F9201F8E100800046140A10 | 07060716O410080 | P02-1 1.6.8 | 00000000000001277357 | DEFAULT | 요구사항추적표 |
| 184 | 2.5.2 | 분석단계산출물 정리(Inspection) | 1d | 2008-09-23 A | 2008-09-23 A | 183 | 100% | 2008-09-23 | 2008-09-23 | 1d |  | All Working Day Calendar | 단계완료 | 48648FB60F9201F8E100800046140A10 | 07060716O410080 | P02-1 1.6.8 | 00000000000001277357 | DEFAULT | 인스펙션결과서 |
| 185 | 2.5.3 | 고객검토 실시 | 2d | 2008-09-24 A | 2008-09-25 A | 184 | 100% | 2008-09-24 | 2008-09-25 | 2d |  | All Working Day Calendar | 단계완료 | 48648FB80F9201F8E100800046140A10 | 07060716O410080 | P02-1 1.6.8 | 00000000000001277358 | DEFAULT | 고객검토결과서 |
| 186 | 2.5.4 | 고객승인 획득 | 1d | 2008-09-26 A | 2008-09-26 A | 185 | 100% | 2008-09-26 | 2008-09-26 | 1d |  | All Working Day Calendar | 단계완료 | 48648FBA0F9201F8E100800046140A10 | 07060716O410080 | P02-1 1.6.8 | 00000000000001277359 | DEFAULT | 고객인수확인서(PAD) |

| ID | WBS | Task | Duration | Start | Finish | Predecessors | Complete | Baseline start | Baseline finish | Baseline duration | Constraint | Calendar | Text20 | Text22 | Text25 | Text26 | Text27 | Text28 | Text30 |
| --- | --- | --- | --- | --- | --- | --- | --- | --- | --- | --- | --- | --- | --- | --- | --- | --- | --- | --- | --- |
| 187 | 3 | **Design** | 44d | 2008-09-29 A | 2008-11-28 A |  | 100% | 2008-09-29 | 2008-11-28 | 44d |  | All Working Day Calendar | 설계 | 48648F320F9201F8E100800046140A10 | 07060716O410173 | P02-1 1.3 | 00000000000001277291 | DEFAULT |  |
| 188 | 3.1 | **추가개발 설계** | 34d | 2008-09-29 A | 2008-11-14 A |  | 100% | 2008-09-29 | 2008-11-14 | 34d |  | All Working Day Calendar | 추가개발 프로그램코딩 | 48648F340F9201F8E100800046140A10 | 07060716O410174 | P02-1 1.4.1 | 00000000000001277292 | DEFAULT |  |
| 189 | 3.1.1 | **데이터코드 설계** | 12d | 2008-09-29 A | 2008-10-15 A |  | 100% | 2008-09-29 | 2008-10-15 | 12d |  | All Working Day Calendar | 추가개발 프로그램코딩 | 48648F360F9201F8E100800046140A10 | 07060716O410174 | P02-1 1.4.1 | 00000000000001277293 | DEFAULT |  |
| 190 | 3.1.1.1 | 데이터코드정의서 작성 | 12d | 2008-09-29 A | 2008-10-15 A | 186 | 100% | 2008-09-29 | 2008-10-15 | 12d |  |  | 추가개발 프로그램코딩 |  |  | P02-1 1.4.1 |  |  | 데이터코드정의서 |
| 191 | 3.1.2 | **데이터베이스 설계** | 10d | 2008-10-01 A | 2008-10-15 A |  | 100% | 2008-10-01 | 2008-10-15 | 10d |  | All Working Day Calendar | 추가개발 프로그램코딩 | 48648F380F9201F8E100800046140A10 | 07060716O410174 | P02-1 1.4.1 | 00000000000001277294 | DEFAULT |  |
| 192 | 3.1.2.1 | ERD 작성 | 10d | 2008-10-01 A | 2008-10-15 A |  | 100% | 2008-10-01 | 2008-10-15 | 10d | start no earlier than 2008-10-01 |  | 추가개발 프로그램코딩 |  |  | P02-1 1.4.1 |  |  | ERD(물리) |
| 193 | 3.1.2.2 | 테이블목록 작성 | 2d | 2008-10-14 A | 2008-10-15 A |  | 100% | 2008-10-14 | 2008-10-15 | 2d | start no earlier than 2008-10-14 |  | 추가개발 프로그램코딩 |  |  | P02-1 1.4.1 |  |  | 테이블목록 |
| 194 | 3.1.2.3 | 테이블레이아웃 작성 | 7d | 2008-10-07 A | 2008-10-15 A |  | 100% | 2008-10-07 | 2008-10-15 | 7d | start no earlier than 2008-10-07 |  | 추가개발 프로그램코딩 |  |  | P02-1 1.4.1 |  |  | 테이블정의서 |
| 195 | 3.1.3 | **UI 설계** | 25d | 2008-10-06 A | 2008-11-07 A |  | 100% | 2008-10-06 | 2008-11-07 | 25d |  |  | 추가개발 프로그램코딩 |  |  | P02-1 1.4.1 |  |  |  |
| 196 | 3.1.3.1 | **화면레이아웃 작성** | 15d | 2008-10-06 A | 2008-10-24 A | 186 | 100% | 2008-10-06 | 2008-10-24 | 15d |  |  | 추가개발 프로그램코딩 |  |  | P02-1 1.4.1 |  |  | 페이지레이아웃,페이지목록 |
| 197 | 3.1.3.1.1 | **청약** | 10d | 2008-10-06 A | 2008-10-17 A |  | 100% | 2008-10-06 | 2008-10-17 | 10d |  | All Working Day Calendar | 추가개발 프로그램코딩 | 48648F0A0F9201F8E100800046140A10 | 07060716O410168 | P02-1 1.4.1 | 00000000000001277271 | DEFAULT |  |
| 198 | 3.1.3.1.1.1 | 개인청약 | 10d | 2008-10-06 A | 2008-10-17 A |  | 100% | 2008-10-06 | 2008-10-17 | 10d | finish no earlier than 2008-10-17 | All Working Day Calendar | 추가개발 프로그램코딩 | 48648F0A0F9201F8E100800046140A10 | 07060716O410168 | P02-1 1.4.1 | 00000000000001277271 | DEFAULT |  |
| 199 | 3.1.3.1.1.2 | 단체청약 | 10d | 2008-10-06 A | 2008-10-17 A |  | 100% | 2008-10-06 | 2008-10-17 | 10d | finish no earlier than 2008-10-17 | All Working Day Calendar | 추가개발 프로그램코딩 | 48648F0A0F9201F8E100800046140A10 | 07060716O410168 | P02-1 1.4.1 | 00000000000001277271 | DEFAULT |  |
| 200 | 3.1.3.1.1.3 | 부활청약 | 10d | 2008-10-06 A | 2008-10-17 A |  | 100% | 2008-10-06 | 2008-10-17 | 10d | finish no earlier than 2008-10-17 | All Working Day Calendar | 추가개발 프로그램코딩 | 48648F0A0F9201F8E100800046140A10 | 07060716O410168 | P02-1 1.4.1 | 00000000000001277271 | DEFAULT |  |
| 201 | 3.1.3.1.2 | **청약보험료** | 5d | 2008-10-13 A | 2008-10-17 A |  | 100% | 2008-10-13 | 2008-10-17 | 5d |  | All Working Day Calendar | 추가개발 프로그램코딩 | 48648F0A0F9201F8E100800046140A10 | 07060716O410168 | P02-1 1.4.1 | 00000000000001277271 | DEFAULT |  |
| 202 | 3.1.3.1.2.1 | 청약보험료수납 | 5d | 2008-10-13 A | 2008-10-17 A |  | 100% | 2008-10-13 | 2008-10-17 | 5d | start no earlier than 2008-10-13 | All Working Day Calendar | 추가개발 프로그램코딩 | 48648F0A0F9201F8E100800046140A10 | 07060716O410168 | P02-1 1.4.1 | 00000000000001277271 | DEFAULT |  |
| 203 | 3.1.3.1.2.2 | 납입서조회 | 5d | 2008-10-13 A | 2008-10-17 A |  | 100% | 2008-10-13 | 2008-10-17 | 5d | start no earlier than 2008-10-13 | All Working Day Calendar | 추가개발 프로그램코딩 | 48648F0A0F9201F8E100800046140A10 | 07060716O410168 | P02-1 1.4.1 | 00000000000001277271 | DEFAULT |  |
| 204 | 3.1.3.1.3 | **신계약일반조회** | 5d | 2008-10-06 A | 2008-10-10 A |  | 100% | 2008-10-06 | 2008-10-10 | 5d |  | All Working Day Calendar | 추가개발 프로그램코딩 | 48648F0A0F9201F8E100800046140A10 | 07060716O410168 | P02-1 1.4.1 | 00000000000001277271 | DEFAULT |  |
| 205 | 3.1.3.1.3.1 | 계약정보조회 | 5d | 2008-10-06 A | 2008-10-10 A |  | 100% | 2008-10-06 | 2008-10-10 | 5d | start no earlier than 2008-10-06 | All Working Day Calendar | 추가개발 프로그램코딩 | 48648F0A0F9201F8E100800046140A10 | 07060716O410168 | P02-1 1.4.1 | 00000000000001277271 | DEFAULT |  |
| 206 | 3.1.3.1.3.2 | 심사목록조회 | 5d | 2008-10-06 A | 2008-10-10 A |  | 100% | 2008-10-06 | 2008-10-10 | 5d | start no earlier than 2008-10-06 | All Working Day Calendar | 추가개발 프로그램코딩 | 48648F0A0F9201F8E100800046140A10 | 07060716O410168 | P02-1 1.4.1 | 00000000000001277271 | DEFAULT |  |
| 207 | 3.1.3.1.4 | **청약서/영수증관리** | 5d | 2008-10-13 A | 2008-10-17 A |  | 100% | 2008-10-13 | 2008-10-17 | 5d |  | All Working Day Calendar | 추가개발 프로그램코딩 | 48648F0A0F9201F8E100800046140A10 | 07060716O410168 | P02-1 1.4.1 | 00000000000001277271 | DEFAULT |  |
| 208 | 3.1.3.1.4.1 | 청약서사용관리 | 5d | 2008-10-13 A | 2008-10-17 A |  | 100% | 2008-10-13 | 2008-10-17 | 5d | start no earlier than 2008-10-13 | All Working Day Calendar | 추가개발 프로그램코딩 | 48648F0A0F9201F8E100800046140A10 | 07060716O410168 | P02-1 1.4.1 | 00000000000001277271 | DEFAULT |  |
| 209 | 3.1.3.1.4.2 | 영수증사용관리 | 5d | 2008-10-13 A | 2008-10-17 A |  | 100% | 2008-10-13 | 2008-10-17 | 5d | start no earlier than 2008-10-13 | All Working Day Calendar | 추가개발 프로그램코딩 | 48648F0A0F9201F8E100800046140A10 | 07060716O410168 | P02-1 1.4.1 | 00000000000001277271 | DEFAULT |  |
| 210 | 3.1.3.1.5 | **반환보험료관리** | 5d | 2008-10-06 A | 2008-10-10 A |  | 100% | 2008-10-06 | 2008-10-10 | 5d |  | All Working Day Calendar | 추가개발 프로그램코딩 | 48648F0A0F9201F8E100800046140A10 | 07060716O410168 | P02-1 1.4.1 | 00000000000001277271 | DEFAULT |  |
| 211 | 3.1.3.1.5.1 | 반송/청약철회 | 5d | 2008-10-06 A | 2008-10-10 A |  | 100% | 2008-10-06 | 2008-10-10 | 5d | start no earlier than 2008-10-06 | All Working Day Calendar | 추가개발 프로그램코딩 | 48648F0A0F9201F8E100800046140A10 | 07060716O410168 | P02-1 1.4.1 | 00000000000001277271 | DEFAULT |  |
| 212 | 3.1.3.1.5.2 | 품질보증해지 | 5d | 2008-10-06 A | 2008-10-10 A |  | 100% | 2008-10-06 | 2008-10-10 | 5d | start no earlier than 2008-10-06 | All Working Day Calendar | 추가개발 프로그램코딩 | 48648F0A0F9201F8E100800046140A10 | 07060716O410168 | P02-1 1.4.1 | 00000000000001277271 | DEFAULT |  |

| ID | WBS | Task | Duration | Start | Finish | Predecessors | Complete | Baseline start | Baseline finish | Baseline duration | Constraint | Calendar | Text20 | Text22 | Text25 | Text26 | Text27 | Text28 | Text30 |
| --- | --- | --- | --- | --- | --- | --- | --- | --- | --- | --- | --- | --- | --- | --- | --- | --- | --- | --- | --- |
| 213 | 3.1.3.1.6 | **계약심사** | 5d | 2008-10-13 A | 2008-10-17 A |  | 100% | 2008-10-13 | 2008-10-17 | 5d |  | All Working Day Calendar | 추가개발 프로그램코딩 | 48648F0A0F9201F8E100800046140A10 | 07060716O410168 | P02-1 1.4.1 | 00000000000001277271 | DEFAULT |  |
| 214 | 3.1.3.1.6.1 | 개인신계약심사 | 5d | 2008-10-13 A | 2008-10-17 A |  | 100% | 2008-10-13 | 2008-10-17 | 5d | start no earlier than 2008-10-13 | All Working Day Calendar | 추가개발 프로그램코딩 | 48648F0A0F9201F8E100800046140A10 | 07060716O410168 | P02-1 1.4.1 | 00000000000001277271 | DEFAULT |  |
| 215 | 3.1.3.1.6.2 | 단체신계약심사 | 5d | 2008-10-13 A | 2008-10-17 A |  | 100% | 2008-10-13 | 2008-10-17 | 5d | start no earlier than 2008-10-13 | All Working Day Calendar | 추가개발 프로그램코딩 | 48648F0A0F9201F8E100800046140A10 | 07060716O410168 | P02-1 1.4.1 | 00000000000001277271 | DEFAULT |  |
| 216 | 3.1.3.1.6.3 | 부활심사 | 5d | 2008-10-13 A | 2008-10-17 A |  | 100% | 2008-10-13 | 2008-10-17 | 5d | start no earlier than 2008-10-13 | All Working Day Calendar | 추가개발 프로그램코딩 | 48648F0A0F9201F8E100800046140A10 | 07060716O410168 | P02-1 1.4.1 | 00000000000001277271 | DEFAULT |  |
| 217 | 3.1.3.1.6.4 | 선심사 | 5d | 2008-10-13 A | 2008-10-17 A |  | 100% | 2008-10-13 | 2008-10-17 | 5d | start no earlier than 2008-10-13 | All Working Day Calendar | 추가개발 프로그램코딩 | 48648F0A0F9201F8E100800046140A10 | 07060716O410168 | P02-1 1.4.1 | 00000000000001277271 | DEFAULT |  |
| 218 | 3.1.3.1.6.5 | 심사공통조회 | 5d | 2008-10-13 A | 2008-10-17 A |  | 100% | 2008-10-13 | 2008-10-17 | 5d | start no earlier than 2008-10-13 | All Working Day Calendar | 추가개발 프로그램코딩 | 48648F0A0F9201F8E100800046140A10 | 07060716O410168 | P02-1 1.4.1 | 00000000000001277271 | DEFAULT |  |
| 219 | 3.1.3.1.6.6 | 심사(U/W)관리 | 5d | 2008-10-13 A | 2008-10-17 A |  | 100% | 2008-10-13 | 2008-10-17 | 5d | start no earlier than 2008-10-13 | All Working Day Calendar | 추가개발 프로그램코딩 | 48648F0A0F9201F8E100800046140A10 | 07060716O410168 | P02-1 1.4.1 | 00000000000001277271 | DEFAULT |  |
| 220 | 3.1.3.1.7 | 적부조사 | 5d | 2008-10-13 A | 2008-10-17 A |  | 100% | 2008-10-13 | 2008-10-17 | 5d | start no earlier than 2008-10-13 | All Working Day Calendar | 추가개발 프로그램코딩 | 48648F0A0F9201F8E100800046140A10 | 07060716O410168 | P02-1 1.4.1 | 00000000000001277271 | DEFAULT |  |
| 221 | 3.1.3.1.8 | 진단 | 5d | 2008-10-13 A | 2008-10-17 A |  | 100% | 2008-10-13 | 2008-10-17 | 5d | start no earlier than 2008-10-13 | All Working Day Calendar | 추가개발 프로그램코딩 | 48648F0A0F9201F8E100800046140A10 | 07060716O410168 | P02-1 1.4.1 | 00000000000001277271 | DEFAULT |  |
| 222 | 3.1.3.1.9 | 증권관리 | 5d | 2008-10-20 A | 2008-10-24 A |  | 100% | 2008-10-20 | 2008-10-24 | 5d | start no earlier than 2008-10-20 | All Working Day Calendar | 추가개발 프로그램코딩 | 48648F0A0F9201F8E100800046140A10 | 07060716O410168 | P02-1 1.4.1 | 00000000000001277271 | DEFAULT |  |
| 223 | 3.1.3.1.10 | 마감 | 5d | 2008-10-20 A | 2008-10-24 A |  | 100% | 2008-10-20 | 2008-10-24 | 5d | start no earlier than 2008-10-20 | All Working Day Calendar | 추가개발 프로그램코딩 | 48648F0A0F9201F8E100800046140A10 | 07060716O410168 | P02-1 1.4.1 | 00000000000001277271 | DEFAULT |  |
| 224 | 3.1.3.1.11 | 통계 | 5d | 2008-10-20 A | 2008-10-24 A |  | 100% | 2008-10-20 | 2008-10-24 | 5d | start no earlier than 2008-10-20 | All Working Day Calendar | 추가개발 프로그램코딩 | 48648F0A0F9201F8E100800046140A10 | 07060716O410168 | P02-1 1.4.1 | 00000000000001277271 | DEFAULT |  |
| 225 | 3.1.3.2 | **보고서레이아웃 작성** | 10d | 2008-10-27 A | 2008-11-07 A | 196 | 100% | 2008-10-27 | 2008-11-07 | 10d |  |  | 추가개발 프로그램코딩 |  |  | P02-1 1.4.1 |  |  | 보고서레이아웃,보고서목록 |
| 226 | 3.1.3.2.1 | 청약서양식 작성 | 10d | 2008-10-27 A | 2008-11-07 A |  | 100% | 2008-10-27 | 2008-11-07 | 10d |  |  | 추가개발 프로그램코딩 |  |  | P02-1 1.4.1 |  |  |  |
| 227 | 3.1.3.2.2 | 증권양식 작성 | 10d | 2008-10-27 A | 2008-11-07 A |  | 100% | 2008-10-27 | 2008-11-07 | 10d |  |  | 추가개발 프로그램코딩 |  |  | P02-1 1.4.1 |  |  |  |
| 228 | 3.1.3.2.3 | 제신청서양식 작성 | 10d | 2008-10-27 A | 2008-11-07 A |  | 100% | 2008-10-27 | 2008-11-07 | 10d |  |  | 추가개발 프로그램코딩 |  |  | P02-1 1.4.1 |  |  |  |
| 229 | 3.1.4 | **온라인 프로그램 설계** | 17d | 2008-10-16 A | 2008-11-07 A |  | 100% | 2008-10-16 | 2008-11-07 | 17d |  | All Working Day Calendar | 추가개발 프로그램코딩 | 48648F3A0F9201F8E100800046140A10 | 07060716O410174 | P02-1 1.4.1 | 00000000000001277295 | DEFAULT |  |
| 230 | 3.1.4.1 | 온라인프로그램목록 작성 | 2d | 2008-10-16 A | 2008-10-17 A | 191 | 100% | 2008-10-16 | 2008-10-17 | 2d |  |  | 추가개발 프로그램코딩 |  |  | P02-1 1.4.1 |  |  | 프로그램목록 |
| 231 | 3.1.4.2 | **온라인프로그램사양서 작성** | 17d | 2008-10-16 A | 2008-11-07 A | 191 | 100% | 2008-10-16 | 2008-11-07 | 17d |  |  | 추가개발 프로그램코딩 |  |  | P02-1 1.4.1 |  |  | 프로그램사양서 |
| 232 | 3.1.4.2.1 | **청약** | 9d | 2008-10-16 A | 2008-10-28 A |  | 100% | 2008-10-16 | 2008-10-28 | 9d |  | All Working Day Calendar | 추가개발 프로그램코딩 | 48648F0A0F9201F8E100800046140A10 | 07060716O410168 | P02-1 1.4.1 | 00000000000001277271 | DEFAULT |  |
| 233 | 3.1.4.2.1.1 | 개인청약 | 9d | 2008-10-16 A | 2008-10-28 A |  | 100% | 2008-10-16 | 2008-10-28 | 9d | start no earlier than 2008-07-21 | All Working Day Calendar | 추가개발 프로그램코딩 | 48648F0A0F9201F8E100800046140A10 | 07060716O410168 | P02-1 1.4.1 | 00000000000001277271 | DEFAULT |  |
| 234 | 3.1.4.2.1.2 | 단체청약 | 9d | 2008-10-16 A | 2008-10-28 A |  | 100% | 2008-10-16 | 2008-10-28 | 9d | start no earlier than 2008-07-21 | All Working Day Calendar | 추가개발 프로그램코딩 | 48648F0A0F9201F8E100800046140A10 | 07060716O410168 | P02-1 1.4.1 | 00000000000001277271 | DEFAULT |  |
| 235 | 3.1.4.2.1.3 | 부활청약 | 9d | 2008-10-16 A | 2008-10-28 A |  | 100% | 2008-10-16 | 2008-10-28 | 9d | start no earlier than 2008-07-21 | All Working Day Calendar | 추가개발 프로그램코딩 | 48648F0A0F9201F8E100800046140A10 | 07060716O410168 | P02-1 1.4.1 | 00000000000001277271 | DEFAULT |  |
| 236 | 3.1.4.2.2 | **청약보험료** | 5d | 2008-10-16 A | 2008-10-22 A |  | 100% | 2008-10-16 | 2008-10-22 | 5d |  | All Working Day Calendar | 추가개발 프로그램코딩 | 48648F0A0F9201F8E100800046140A10 | 07060716O410168 | P02-1 1.4.1 | 00000000000001277271 | DEFAULT |  |
| 237 | 3.1.4.2.2.1 | 청약보험료수납 | 5d | 2008-10-16 A | 2008-10-22 A |  | 100% | 2008-10-16 | 2008-10-22 | 5d | start no earlier than 2008-07-21 | All Working Day Calendar | 추가개발 프로그램코딩 | 48648F0A0F9201F8E100800046140A10 | 07060716O410168 | P02-1 1.4.1 | 00000000000001277271 | DEFAULT |  |
| 238 | 3.1.4.2.2.2 | 납입서조회 | 5d | 2008-10-16 A | 2008-10-22 A |  | 100% | 2008-10-16 | 2008-10-22 | 5d | start no earlier than 2008-07-21 | All Working Day Calendar | 추가개발 프로그램코딩 | 48648F0A0F9201F8E100800046140A10 | 07060716O410168 | P02-1 1.4.1 | 00000000000001277271 | DEFAULT |  |

| ID | WBS | Task | Duration | Start | Finish | Complete | Baseline start | Baseline finish | Baseline duration | Constraint | Calendar | Text20 | Text22 | Text25 | Text26 | Text27 | Text28 | Text30 |
| --- | --- | --- | --- | --- | --- | --- | --- | --- | --- | --- | --- | --- | --- | --- | --- | --- | --- | --- |
| 239 | 3.1.4.2.3 | **신계약일반조회** | 5d | 2008-10-16 A | 2008-10-22 A | 100% | 2008-10-16 | 2008-10-22 | 5d |  | All Working Day Calendar | 추가개발 프로그램코딩 | 48648F0A0F9201F8E100800046140A10 | 07060716O410168 | P02-1 1.4.1 | 00000000000001277271 | DEFAULT |  |
| 240 | 3.1.4.2.3.1 | 계약정보조회 | 5d | 2008-10-16 A | 2008-10-22 A | 100% | 2008-10-16 | 2008-10-22 | 5d | start no earlier than 2008-07-21 | All Working Day Calendar | 추가개발 프로그램코딩 | 48648F0A0F9201F8E100800046140A10 | 07060716O410168 | P02-1 1.4.1 | 00000000000001277271 | DEFAULT |  |
| 241 | 3.1.4.2.3.2 | 심사대상조회 | 5d | 2008-10-16 A | 2008-10-22 A | 100% | 2008-10-16 | 2008-10-22 | 5d | start no earlier than 2008-07-21 | All Working Day Calendar | 추가개발 프로그램코딩 | 48648F0A0F9201F8E100800046140A10 | 07060716O410168 | P02-1 1.4.1 | 00000000000001277271 | DEFAULT |  |
| 242 | 3.1.4.2.3.3 | 심사목록조회 | 5d | 2008-10-16 A | 2008-10-22 A | 100% | 2008-10-16 | 2008-10-22 | 5d | start no earlier than 2008-07-21 | All Working Day Calendar | 추가개발 프로그램코딩 | 48648F0A0F9201F8E100800046140A10 | 07060716O410168 | P02-1 1.4.1 | 00000000000001277271 | DEFAULT |  |
| 243 | 3.1.4.2.4 | **청약서/영수증관리** | 5d | 2008-10-16 A | 2008-10-22 A | 100% | 2008-10-16 | 2008-10-22 | 5d |  | All Working Day Calendar | 추가개발 프로그램코딩 | 48648F0A0F9201F8E100800046140A10 | 07060716O410168 | P02-1 1.4.1 | 00000000000001277271 | DEFAULT |  |
| 244 | 3.1.4.2.4.1 | 신계약양식관리 | 5d | 2008-10-16 A | 2008-10-22 A | 100% | 2008-10-16 | 2008-10-22 | 5d | start no earlier than 2008-07-21 | All Working Day Calendar | 추가개발 프로그램코딩 | 48648F0A0F9201F8E100800046140A10 | 07060716O410168 | P02-1 1.4.1 | 00000000000001277271 | DEFAULT |  |
| 245 | 3.1.4.2.4.2 | 청약서사용관리 | 5d | 2008-10-16 A | 2008-10-22 A | 100% | 2008-10-16 | 2008-10-22 | 5d | start no earlier than 2008-07-21 | All Working Day Calendar | 추가개발 프로그램코딩 | 48648F0A0F9201F8E100800046140A10 | 07060716O410168 | P02-1 1.4.1 | 00000000000001277271 | DEFAULT |  |
| 246 | 3.1.4.2.4.3 | 영수증사용관리 | 5d | 2008-10-16 A | 2008-10-22 A | 100% | 2008-10-16 | 2008-10-22 | 5d | start no earlier than 2008-07-21 | All Working Day Calendar | 추가개발 프로그램코딩 | 48648F0A0F9201F8E100800046140A10 | 07060716O410168 | P02-1 1.4.1 | 00000000000001277271 | DEFAULT |  |
| 247 | 3.1.4.2.5 | **반환보험료관리** | 5d | 2008-10-16 A | 2008-10-22 A | 100% | 2008-10-16 | 2008-10-22 | 5d |  | All Working Day Calendar | 추가개발 프로그램코딩 | 48648F0A0F9201F8E100800046140A10 | 07060716O410168 | P02-1 1.4.1 | 00000000000001277271 | DEFAULT |  |
| 248 | 3.1.4.2.5.1 | 반송/청약철회 | 5d | 2008-10-16 A | 2008-10-22 A | 100% | 2008-10-16 | 2008-10-22 | 5d | start no earlier than 2008-07-21 | All Working Day Calendar | 추가개발 프로그램코딩 | 48648F0A0F9201F8E100800046140A10 | 07060716O410168 | P02-1 1.4.1 | 00000000000001277271 | DEFAULT |  |
| 249 | 3.1.4.2.5.2 | 해지 | 5d | 2008-10-16 A | 2008-10-22 A | 100% | 2008-10-16 | 2008-10-22 | 5d | start no earlier than 2008-07-21 | All Working Day Calendar | 추가개발 프로그램코딩 | 48648F0A0F9201F8E100800046140A10 | 07060716O410168 | P02-1 1.4.1 | 00000000000001277271 | DEFAULT |  |
| 250 | 3.1.4.2.6 | **계약심사** | 10d | 2008-10-16 A | 2008-10-29 A | 100% | 2008-10-16 | 2008-10-29 | 10d |  | All Working Day Calendar | 추가개발 프로그램코딩 | 48648F0A0F9201F8E100800046140A10 | 07060716O410168 | P02-1 1.4.1 | 00000000000001277271 | DEFAULT |  |
| 251 | 3.1.4.2.6.1 | 개인신계약심사 | 10d | 2008-10-16 A | 2008-10-29 A | 100% | 2008-10-16 | 2008-10-29 | 10d | start no earlier than 2008-07-21 | All Working Day Calendar | 추가개발 프로그램코딩 | 48648F0A0F9201F8E100800046140A10 | 07060716O410168 | P02-1 1.4.1 | 00000000000001277271 | DEFAULT |  |
| 252 | 3.1.4.2.6.2 | 단체신계약심사 | 10d | 2008-10-16 A | 2008-10-29 A | 100% | 2008-10-16 | 2008-10-29 | 10d | start no earlier than 2008-07-21 | All Working Day Calendar | 추가개발 프로그램코딩 | 48648F0A0F9201F8E100800046140A10 | 07060716O410168 | P02-1 1.4.1 | 00000000000001277271 | DEFAULT |  |
| 253 | 3.1.4.2.6.3 | 부활심사 | 10d | 2008-10-16 A | 2008-10-29 A | 100% | 2008-10-16 | 2008-10-29 | 10d | start no earlier than 2008-07-21 | All Working Day Calendar | 추가개발 프로그램코딩 | 48648F0A0F9201F8E100800046140A10 | 07060716O410168 | P02-1 1.4.1 | 00000000000001277271 | DEFAULT |  |
| 254 | 3.1.4.2.6.4 | 심사공통조회 | 10d | 2008-10-16 A | 2008-10-29 A | 100% | 2008-10-16 | 2008-10-29 | 10d | start no earlier than 2008-07-21 | All Working Day Calendar | 추가개발 프로그램코딩 | 48648F0A0F9201F8E100800046140A10 | 07060716O410168 | P02-1 1.4.1 | 00000000000001277271 | DEFAULT |  |
| 255 | 3.1.4.2.6.5 | 심사(U/W)관리 | 10d | 2008-10-16 A | 2008-10-29 A | 100% | 2008-10-16 | 2008-10-29 | 10d | start no earlier than 2008-07-21 | All Working Day Calendar | 추가개발 프로그램코딩 | 48648F0A0F9201F8E100800046140A10 | 07060716O410168 | P02-1 1.4.1 | 00000000000001277271 | DEFAULT |  |
| 256 | 3.1.4.2.7 | 적부조사 | 10d | 2008-10-27 A | 2008-11-07 A | 100% | 2008-10-27 | 2008-11-07 | 10d | start no earlier than 2008-10-27 | All Working Day Calendar | 추가개발 프로그램코딩 | 48648F0A0F9201F8E100800046140A10 | 07060716O410168 | P02-1 1.4.1 | 00000000000001277271 | DEFAULT |  |
| 257 | 3.1.4.2.8 | 진단 | 10d | 2008-10-27 A | 2008-11-07 A | 100% | 2008-10-27 | 2008-11-07 | 10d | start no earlier than 2008-10-27 | All Working Day Calendar | 추가개발 프로그램코딩 | 48648F0A0F9201F8E100800046140A10 | 07060716O410168 | P02-1 1.4.1 | 00000000000001277271 | DEFAULT |  |
| 258 | 3.1.4.2.9 | 증권관리 | 10d | 2008-10-27 A | 2008-11-07 A | 100% | 2008-10-27 | 2008-11-07 | 10d | start no earlier than 2008-10-27 | All Working Day Calendar | 추가개발 프로그램코딩 | 48648F0A0F9201F8E100800046140A10 | 07060716O410168 | P02-1 1.4.1 | 00000000000001277271 | DEFAULT |  |
| 259 | 3.1.4.2.10 | 마감 | 10d | 2008-10-27 A | 2008-11-07 A | 100% | 2008-10-27 | 2008-11-07 | 10d | start no earlier than 2008-10-27 | All Working Day Calendar | 추가개발 프로그램코딩 | 48648F0A0F9201F8E100800046140A10 | 07060716O410168 | P02-1 1.4.1 | 00000000000001277271 | DEFAULT |  |
| 260 | 3.1.4.2.11 | 통계 | 10d | 2008-10-27 A | 2008-11-07 A | 100% | 2008-10-27 | 2008-11-07 | 10d | start no earlier than 2008-10-27 | All Working Day Calendar | 추가개발 프로그램코딩 | 48648F0A0F9201F8E100800046140A10 | 07060716O410168 | P02-1 1.4.1 | 00000000000001277271 | DEFAULT |  |
| 261 | 3.1.5 | **배치플로우 설계** | 15d | 2008-10-27 A | 2008-11-14 A | 100% | 2008-10-27 | 2008-11-14 | 15d |  |  | 추가개발 프로그램코딩 |  |  | P02-1 1.4.1 |  |  |  |
| 262 | 3.1.5.1 | 배치플로우정의서 작성 | 5d | 2008-10-27 A | 2008-10-31 A | 100% | 2008-10-27 | 2008-10-31 | 5d | start no earlier than 2008-10-27 |  | 추가개발 프로그램코딩 |  |  | P02-1 1.4.1 |  |  | 배치플로우정의서 |
| 263 | 3.1.5.2 | 배치프로그램목록 작성 | 3d | 2008-11-03 A | 2008-11-05 A | 100% | 2008-11-03 | 2008-11-05 | 3d | start no earlier than 2008-11-03 |  | 추가개발 프로그램코딩 |  |  | P02-1 1.4.1 |  |  | 프로그램목록 |
| 264 | 3.1.5.3 | 배치프로그램사양서 작성 | 10d | 2008-11-03 A | 2008-11-14 A | 100% | 2008-11-03 | 2008-11-14 | 10d | start no earlier than 2008-11-03 |  | 추가개발 프로그램코딩 |  |  | P02-1 1.4.1 |  |  | 프로그램사양서 |

| ID | WBS | Task | Duration | Start | Finish | Predecessors | Complete | Baseline start | Baseline finish | Baseline duration | Constraint | Calendar | Text20 | Text22 | Text25 | Text26 | Text27 | Text28 | Text30 |
| --- | --- | --- | --- | --- | --- | --- | --- | --- | --- | --- | --- | --- | --- | --- | --- | --- | --- | --- | --- |
| 265 | 3.1.6 | **메뉴구조정의** | 5d | 2008-11-10 A | 2008-11-14 A |  | 100% | 2008-11-10 | 2008-11-14 | 5d |  | All Working Day Calendar | 추가개발 프로그램코딩 | 48648F3E0F9201F8E100800046140A10 | 07060716O410174 | P02-1 1.4.1 | 00000000000001277297 | DEFAULT | 메뉴구조도 |
| 266 | 3.1.6.1 | 메뉴구조도작성 | 5d | 2008-11-10 A | 2008-11-14 A | 229 | 100% | 2008-11-10 | 2008-11-14 | 5d |  | All Working Day Calendar | 추가개발 프로그램코딩 | 48648F3E0F9201F8E100800046140A10 | 07060716O410174 | P02-1 1.4.1 | 00000000000001277297 | DEFAULT | 메뉴구조도 |
| 267 | 3.2 | **컨버젼 설계** | 34d | 2008-09-29 A | 2008-11-14 A |  | 100% | 2008-09-29 | 2008-11-14 | 34d |  | All Working Day Calendar | 컨버젼 설계 | 48648F400F9201F8E100800046140A10 | 07060716O410175 | P02-1 1.3.2 | 00000000000001277298 | DEFAULT |  |
| 268 | 3.2.1 | 테이블 매핑정의서 작성 지원 | 34d | 2008-09-29 A | 2008-11-14 A |  | 100% | 2008-09-29 | 2008-11-14 | 34d | start no earlier than 2008-09-29 | All Working Day Calendar | 컨버젼 설계 | 48648F440F9201F8E100800046140A10 | 07060716O410175 | P02-1 1.3.2 | 00000000000001277300 | DEFAULT |  |
| 269 | 3.2.2 | 데이터코드 매핑정의서 작성 지원 | 34d | 2008-09-29 A | 2008-11-14 A |  | 100% | 2008-09-29 | 2008-11-14 | 34d | start no earlier than 2008-09-29 | All Working Day Calendar | 컨버젼 설계 | 48648F440F9201F8E100800046140A10 | 07060716O410175 | P02-1 1.3.2 | 00000000000001277300 | DEFAULT |  |
| 270 | 3.3 | **타시스템 인터페이스 설계** | 10d | 2008-11-03 A | 2008-11-14 A |  | 100% | 2008-11-03 | 2008-11-14 | 10d |  | All Working Day Calendar | 추가개발설계 | 48648F180F9201F8E100800046140A10 | 07060716O410169 | P02-1 1.3.1 | 00000000000001277278 | DEFAULT |  |
| 271 | 3.3.1 | 인터페이스 목록(상세) 작성 | 5d | 2008-11-03 A | 2008-11-07 A |  | 100% | 2008-11-03 | 2008-11-07 | 5d | start no earlier than 2008-11-03 | All Working Day Calendar | 추가개발설계 | 48648F0A0F9201F8E100800046140A10 | 07060716O410168 | P02-1 1.3.1 | 00000000000001277271 | DEFAULT | 인터페이스목록 |
| 272 | 3.3.2 | **대내시스템 인터페이스 레이아웃 작성** | 10d | 2008-11-03 A | 2008-11-14 A |  | 100% | 2008-11-03 | 2008-11-14 | 10d |  | All Working Day Calendar | 추가개발설계 | 48648F180F9201F8E100800046140A10 | 07060716O410169 | P02-1 1.3.1 | 00000000000001277278 | DEFAULT | 인터페이스사양서 |
| 273 | 3.3.2.1 | 가입설계시스템 | 10d | 2008-11-03 A | 2008-11-14 A |  | 100% | 2008-11-03 | 2008-11-14 | 10d | start no earlier than 2008-11-03 | All Working Day Calendar | 추가개발설계 | 48648F0A0F9201F8E100800046140A10 | 07060716O410168 | P02-1 1.3.1 | 00000000000001277271 | DEFAULT |  |
| 274 | 3.3.2.2 | COS시스템 | 10d | 2008-11-03 A | 2008-11-14 A |  | 100% | 2008-11-03 | 2008-11-14 | 10d | start no earlier than 2008-11-03 | All Working Day Calendar | 추가개발설계 | 48648F0A0F9201F8E100800046140A10 | 07060716O410168 | P02-1 1.3.1 | 00000000000001277271 | DEFAULT |  |
| 275 | 3.3.2.3 | Customer Center | 10d | 2008-11-03 A | 2008-11-14 A |  | 100% | 2008-11-03 | 2008-11-14 | 10d | start no earlier than 2008-11-03 | All Working Day Calendar | 추가개발설계 | 48648F0A0F9201F8E100800046140A10 | 07060716O410168 | P02-1 1.3.1 | 00000000000001277271 | DEFAULT |  |
| 276 | 3.3.2.4 | 방카시스템 | 10d | 2008-11-03 A | 2008-11-14 A |  | 100% | 2008-11-03 | 2008-11-14 | 10d | start no earlier than 2008-11-03 | All Working Day Calendar | 추가개발설계 | 48648F0A0F9201F8E100800046140A10 | 07060716O410168 | P02-1 1.3.1 | 00000000000001277271 | DEFAULT |  |
| 277 | 3.3.2.5 | 이미지시스템 | 10d | 2008-11-03 A | 2008-11-14 A |  | 100% | 2008-11-03 | 2008-11-14 | 10d | start no earlier than 2008-11-03 | All Working Day Calendar | 추가개발설계 | 48648F0A0F9201F8E100800046140A10 | 07060716O410168 | P02-1 1.3.1 | 00000000000001277271 | DEFAULT |  |
| 278 | 3.3.2.6 | NFS시스템 | 10d | 2008-11-03 A | 2008-11-14 A |  | 100% | 2008-11-03 | 2008-11-14 | 10d | start no earlier than 2008-11-03 | All Working Day Calendar | 추가개발설계 | 48648F0A0F9201F8E100800046140A10 | 07060716O410168 | P02-1 1.3.1 | 00000000000001277271 | DEFAULT |  |
| 279 | 3.3.3 | **대외시스템 인터페이스 레이아웃 작성** | 10d | 2008-11-03 A | 2008-11-14 A |  | 100% | 2008-11-03 | 2008-11-14 | 10d |  | All Working Day Calendar | 추가개발설계 | 48648F180F9201F8E100800046140A10 | 07060716O410169 | P02-1 1.3.1 | 00000000000001277278 | DEFAULT | 인터페이스사양서 |
| 280 | 3.3.3.1 | 은행 리얼타임 이체 | 10d | 2008-11-03 A | 2008-11-14 A |  | 100% | 2008-11-03 | 2008-11-14 | 10d | start no earlier than 2008-11-03 | All Working Day Calendar | 추가개발설계 | 48648F0A0F9201F8E100800046140A10 | 07060716O410168 | P02-1 1.3.1 | 00000000000001277271 | DEFAULT |  |
| 281 | 3.3.3.2 | 카드사 실시간 승인 | 10d | 2008-11-03 A | 2008-11-14 A |  | 100% | 2008-11-03 | 2008-11-14 | 10d | start no earlier than 2008-11-03 | All Working Day Calendar | 추가개발설계 | 48648F0A0F9201F8E100800046140A10 | 07060716O410168 | P02-1 1.3.1 | 00000000000001277271 | DEFAULT |  |
| 282 | 3.3.3.3 | 카드사 매입요청 및 매입결과 수신 | 10d | 2008-11-03 A | 2008-11-14 A |  | 100% | 2008-11-03 | 2008-11-14 | 10d | start no earlier than 2008-11-03 | All Working Day Calendar | 추가개발설계 | 48648F0A0F9201F8E100800046140A10 | 07060716O410168 | P02-1 1.3.1 | 00000000000001277271 | DEFAULT |  |
| 283 | 3.3.3.4 | 세금우대정보 수신 | 10d | 2008-11-03 A | 2008-11-14 A |  | 100% | 2008-11-03 | 2008-11-14 | 10d | start no earlier than 2008-11-03 | All Working Day Calendar | 추가개발설계 | 48648F0A0F9201F8E100800046140A10 | 07060716O410168 | P02-1 1.3.1 | 00000000000001277271 | DEFAULT |  |
| 284 | 3.3.3.5 | 생보협회 자료 송수신 | 10d | 2008-11-03 A | 2008-11-14 A |  | 100% | 2008-11-03 | 2008-11-14 | 10d | start no earlier than 2008-11-03 | All Working Day Calendar | 추가개발설계 | 48648F0A0F9201F8E100800046140A10 | 07060716O410168 | P02-1 1.3.1 | 00000000000001277271 | DEFAULT |  |
| 285 | 3.4 | **단계완료** | 10d | 2008-11-17 A | 2008-11-28 A |  | 100% | 2008-11-17 | 2008-11-28 | 10d |  | All Working Day Calendar | 단계완료 | 48648FB40F9201F8E100800046140A10 | 07060716O410080 | P02-1 1.6.8 | 00000000000001277356 | DEFAULT |  |
| 286 | 3.4.1 | 요구사항추적표 작성 | 2d | 2008-11-17 A | 2008-11-18 A | 188 | 100% | 2008-11-17 | 2008-11-18 | 2d | start no earlier than 2008-11-03 | All Working Day Calendar | 단계완료 | 48648FB60F9201F8E100800046140A10 | 07060716O410080 | P02-1 1.6.8 | 00000000000001277357 | DEFAULT | 요구사항추적표 |
| 287 | 3.4.2 | 설계단계산출물 정리(Inspection) | 3d | 2008-11-19 A | 2008-11-21 A | 286 | 100% | 2008-11-19 | 2008-11-21 | 3d |  | All Working Day Calendar | 단계완료 | 48648FB60F9201F8E100800046140A10 | 07060716O410080 | P02-1 1.6.8 | 00000000000001277357 | DEFAULT | 인스펙션결과서 |
| 288 | 3.4.3 | 고객검토 실시 | 3d | 2008-11-24 A | 2008-11-26 A | 287 | 100% | 2008-11-24 | 2008-11-26 | 3d |  | All Working Day Calendar | 단계완료 | 48648FB80F9201F8E100800046140A10 | 07060716O410080 | P02-1 1.6.8 | 00000000000001277358 | DEFAULT | 고객검토결과서 |
| 289 | 3.4.4 | 고객승인 획득 | 2d | 2008-11-27 A | 2008-11-28 A | 288 | 100% | 2008-11-27 | 2008-11-28 | 2d |  | All Working Day Calendar | 단계완료 | 48648FBA0F9201F8E100800046140A10 | 07060716O410080 | P02-1 1.6.8 | 00000000000001277359 | DEFAULT | 고객인수확인서(PAD) |

| ID | WBS | Task | Duration | Start | Finish | Predecessors | Complete | Remaining | Baseline start | Baseline finish | Baseline duration | Total slack | Free slack | Constraint | Calendar | Text20 | Text22 | Text25 | Text26 | Text27 | Text28 | Text30 |
| --- | --- | --- | --- | --- | --- | --- | --- | --- | --- | --- | --- | --- | --- | --- | --- | --- | --- | --- | --- | --- | --- | --- |
| 290 | 4 | **Build/Unit Test** | 71d | 2008-12-01 A | 2009-03-13 |  | 10% | 63.6d | 2008-12-01 | 2009-03-13 | 71d | 85d |  |  | All Working Day Calendar | 개발 | 48648F4E0F9201F8E100800046140A10 | 07060716O410177 | P02-1 1.4 | 00000000000001277305 | DEFAULT |  |
| 291 | 4.1 | **추가개발/패키지 커스터마이징 및 Unit Test** | 61d | 2008-12-01 A | 2009-02-27 |  | 16% | 51d | 2008-12-01 | 2009-02-27 | 61d | 85d | 0d |  | All Working Day Calendar | 추가개발 프로그램코딩 | 48648F540F9201F8E100800046140A10 | 07060716O410178 | P02-1 1.4.1 | 00000000000001277308 | DEFAULT | 소스코드 및 단위테스트결과 |
| 292 | 4.1.1 | 개발 1주차(개발착수준비) | 5d | 2008-12-01 A | 2008-12-05 A |  | 100% |  | 2008-12-01 | 2008-12-05 | 5d |  |  | start no earlier than 2008-12-01 | All Working Day Calendar | 추가개발 프로그램코딩 | 48648F0A0F9201F8E100800046140A10 | 07060716O410168 | P02-1 1.4.1 | 00000000000001277271 | DEFAULT | 소스코드 및 단위테스트결과 |
| 293 | 4.1.2 | 개발 2주차 | 5d | 2008-12-08 A | 2008-12-12 A | 292 | 100% |  | 2008-12-08 | 2008-12-12 | 5d |  |  | start no earlier than 2008-12-01 | All Working Day Calendar | 추가개발 프로그램코딩 | 48648F0A0F9201F8E100800046140A10 | 07060716O410168 | P02-1 1.4.1 | 00000000000001277271 | DEFAULT | 소스코드 및 단위테스트결과 |
| 294 | 4.1.3 | 개발 3주차 | 5d | 2008-12-15 | 2008-12-19 | 293 |  |  | 2008-12-15 | 2008-12-19 | 5d | 85d | 0d | start no earlier than 2008-07-21 | All Working Day Calendar | 추가개발 프로그램코딩 | 48648F0A0F9201F8E100800046140A10 | 07060716O410168 | P02-1 1.4.1 | 00000000000001277271 | DEFAULT | 소스코드 및 단위테스트결과 |
| 295 | 4.1.4 | 개발 4주차 | 4d | 2008-12-22 | 2008-12-26 | 294 |  |  | 2008-12-22 | 2008-12-26 | 4d | 85d | 0d | start no earlier than 2008-11-17 | All Working Day Calendar | 추가개발 프로그램코딩 | 48648F0A0F9201F8E100800046140A10 | 07060716O410168 | P02-1 1.4.1 | 00000000000001277271 | DEFAULT | 소스코드 및 단위테스트결과 |
| 296 | 4.1.5 | 개발 5주차 | 4d | 2008-12-29 | 2009-01-02 | 295 |  |  | 2008-12-29 | 2009-01-02 | 4d | 85d | 0d | start no earlier than 2008-12-01 | All Working Day Calendar | 추가개발 프로그램코딩 | 48648F0A0F9201F8E100800046140A10 | 07060716O410168 | P02-1 1.4.1 | 00000000000001277271 | DEFAULT | 소스코드 및 단위테스트결과 |
| 297 | 4.1.6 | 개발 6주차 | 5d | 2009-01-05 | 2009-01-09 | 296 |  |  | 2009-01-05 | 2009-01-09 | 5d | 85d | 0d | start no earlier than 2008-12-01 | All Working Day Calendar | 추가개발 프로그램코딩 | 48648F0A0F9201F8E100800046140A10 | 07060716O410168 | P02-1 1.4.1 | 00000000000001277271 | DEFAULT | 소스코드 및 단위테스트결과 |
| 298 | 4.1.7 | 개발 7주차 | 5d | 2009-01-12 | 2009-01-16 | 297 |  |  | 2009-01-12 | 2009-01-16 | 5d | 85d | 0d | start no earlier than 2008-12-01 | All Working Day Calendar | 추가개발 프로그램코딩 | 48648F0A0F9201F8E100800046140A10 | 07060716O410168 | P02-1 1.4.1 | 00000000000001277271 | DEFAULT | 소스코드 및 단위테스트결과 |
| 299 | 4.1.8 | 개발 8주차 | 5d | 2009-01-19 | 2009-01-23 | 298 |  |  | 2009-01-19 | 2009-01-23 | 5d | 85d | 0d | start no earlier than 2008-07-21 | All Working Day Calendar | 추가개발 프로그램코딩 | 48648F0A0F9201F8E100800046140A10 | 07060716O410168 | P02-1 1.4.1 | 00000000000001277271 | DEFAULT | 소스코드 및 단위테스트결과 |
| 300 | 4.1.9 | 개발 9주차 | 3d | 2009-01-28 | 2009-01-30 | 299 |  |  | 2009-01-28 | 2009-01-30 | 3d | 85d | 0d | start no earlier than 2008-11-17 | All Working Day Calendar | 추가개발 프로그램코딩 | 48648F0A0F9201F8E100800046140A10 | 07060716O410168 | P02-1 1.4.1 | 00000000000001277271 | DEFAULT | 소스코드 및 단위테스트결과 |
| 301 | 4.1.10 | 개발 10주차 | 5d | 2009-02-02 | 2009-02-06 | 300 |  |  | 2009-02-02 | 2009-02-06 | 5d | 85d | 0d | start no earlier than 2008-12-01 | All Working Day Calendar | 추가개발 프로그램코딩 | 48648F0A0F9201F8E100800046140A10 | 07060716O410168 | P02-1 1.4.1 | 00000000000001277271 | DEFAULT | 소스코드 및 단위테스트결과 |
| 302 | 4.1.11 | 개발 11주차 | 5d | 2009-02-09 | 2009-02-13 | 301 |  |  | 2009-02-09 | 2009-02-13 | 5d | 85d | 0d | start no earlier than 2008-12-01 | All Working Day Calendar | 추가개발 프로그램코딩 | 48648F0A0F9201F8E100800046140A10 | 07060716O410168 | P02-1 1.4.1 | 00000000000001277271 | DEFAULT | 소스코드 및 단위테스트결과 |
| 303 | 4.1.12 | 개발 12주차 | 5d | 2009-02-16 | 2009-02-20 | 302 |  |  | 2009-02-16 | 2009-02-20 | 5d | 85d | 0d | start no earlier than 2008-12-01 | All Working Day Calendar | 추가개발 프로그램코딩 | 48648F0A0F9201F8E100800046140A10 | 07060716O410168 | P02-1 1.4.1 | 00000000000001277271 | DEFAULT | 소스코드 및 단위테스트결과 |
| 304 | 4.1.13 | 개발 13주차 | 5d | 2009-02-23 | 2009-02-27 | 303 |  |  | 2009-02-23 | 2009-02-27 | 5d | 85d |  | start no earlier than 2008-12-01 | All Working Day Calendar | 추가개발 프로그램코딩 | 48648F0A0F9201F8E100800046140A10 | 07060716O410168 | P02-1 1.4.1 | 00000000000001277271 | DEFAULT | 소스코드 및 단위테스트결과 |
| 305 | 4.2 | **테스트시나리오 작성** | 61d | 2008-12-01 A | 2009-02-27 |  | 8% | 56d | 2008-12-01 | 2009-02-27 | 61d | 95d |  |  | All Working Day Calendar | 추가개발 프로그램코딩 | 48648F540F9201F8E100800046140A10 | 07060716O410178 | P02-1 1.4.1 | 00000000000001277308 | DEFAULT | 테스트시나리오 |
| 306 | 4.2.1 | 테스트착수준비 | 5d | 2008-12-01 A | 2008-12-05 A |  | 100% |  | 2008-12-01 | 2008-12-05 | 5d |  |  | start no earlier than 2008-12-01 |  |  |  |  |  |  |  |  |
| 307 | 4.2.2 | 테스트목록 및 일정 확정 | 28d | 2008-12-08 | 2009-01-16 |  |  |  | 2008-12-08 | 2009-01-16 | 28d | 95d | 0d | start no earlier than 2008-12-08 | All Working Day Calendar | 추가개발 프로그램코딩 | 48648F0A0F9201F8E100800046140A10 | 07060716O410168 | P02-1 1.4.1 | 00000000000001277271 | DEFAULT | 테스트목록 |
| 308 | 4.2.3 | UAT시나리오 작성 - 비즈니스모듈1 | 5d | 2009-01-19 | 2009-01-23 | 307 |  |  | 2009-01-19 | 2009-01-23 | 5d | 95d | 0d | start no earlier than 2008-12-01 | All Working Day Calendar | 추가개발 프로그램코딩 | 48648F0A0F9201F8E100800046140A10 | 07060716O410168 | P02-1 1.4.1 | 00000000000001277271 | DEFAULT | UAT시나리오(E2E테스트시나리오) |
| 309 | 4.2.4 | UAT시나리오 작성 - 비즈니스모듈2 | 3d | 2009-01-28 | 2009-01-30 | 308 |  |  | 2009-01-28 | 2009-01-30 | 3d | 95d | 0d | start no earlier than 2008-07-21 | All Working Day Calendar | 추가개발 프로그램코딩 | 48648F0A0F9201F8E100800046140A10 | 07060716O410168 | P02-1 1.4.1 | 00000000000001277271 | DEFAULT | UAT시나리오(E2E테스트시나리오) |
| 310 | 4.2.5 | UAT시나리오 작성 - 비즈니스모듈3 | 5d | 2009-02-02 | 2009-02-06 | 309 |  |  | 2009-02-02 | 2009-02-06 | 5d | 95d | 0d | start no earlier than 2008-11-17 | All Working Day Calendar | 추가개발 프로그램코딩 | 48648F0A0F9201F8E100800046140A10 | 07060716O410168 | P02-1 1.4.1 | 00000000000001277271 | DEFAULT | UAT시나리오(E2E테스트시나리오) |
| 311 | 4.2.6 | UAT시나리오 작성 - 비즈니스모듈4 | 5d | 2009-02-09 | 2009-02-13 | 310 |  |  | 2009-02-09 | 2009-02-13 | 5d | 95d | 0d | start no earlier than 2008-12-01 | All Working Day Calendar | 추가개발 프로그램코딩 | 48648F0A0F9201F8E100800046140A10 | 07060716O410168 | P02-1 1.4.1 | 00000000000001277271 | DEFAULT | UAT시나리오(E2E테스트시나리오) |
| 312 | 4.2.7 | UAT시나리오 작성 - 비즈니스모듈5 | 5d | 2009-02-16 | 2009-02-20 | 311 |  |  | 2009-02-16 | 2009-02-20 | 5d | 95d | 0d | start no earlier than 2008-12-01 | All Working Day Calendar | 추가개발 프로그램코딩 | 48648F0A0F9201F8E100800046140A10 | 07060716O410168 | P02-1 1.4.1 | 00000000000001277271 | DEFAULT | UAT시나리오(E2E테스트시나리오) |
| 313 | 4.2.8 | UAT시나리오 작성 - 비즈니스모듈6 | 5d | 2009-02-23 | 2009-02-27 | 312 |  |  | 2009-02-23 | 2009-02-27 | 5d | 95d |  | start no earlier than 2008-12-01 | All Working Day Calendar | 추가개발 프로그램코딩 | 48648F0A0F9201F8E100800046140A10 | 07060716O410168 | P02-1 1.4.1 | 00000000000001277271 | DEFAULT | UAT시나리오(E2E테스트시나리오) |

| ID | WBS | Task | Duration | Start | Finish | Predecessors | Baseline start | Baseline finish | Baseline duration | Total slack | Free slack | Constraint | Calendar | Text20 | Text22 | Text25 | Text26 | Text27 | Text28 | Text30 |
| --- | --- | --- | --- | --- | --- | --- | --- | --- | --- | --- | --- | --- | --- | --- | --- | --- | --- | --- | --- | --- |
| 314 | 4.3 | **사전 E2E Test 실시** | 10d | 2009-03-02 | 2009-03-13 | 291 | 2009-03-02 | 2009-03-13 | 10d | 85d |  |  | All Working Day Calendar | 테스트실시 | 48648F560F9201F8E100800046140A10 | 07060716O410178 | P02-1 1.4.2 | 00000000000001277309 | DEFAULT | 테스트결과 |
| 315 | 4.3.1 | 사전 E2E Test - 주요프로세스1 | 5d | 2009-03-02 | 2009-03-06 |  | 2009-03-02 | 2009-03-06 | 5d | 85d | 0d | start no earlier than 2008-12-01 | All Working Day Calendar | 테스트실시 | 48648F0A0F9201F8E100800046140A10 | 07060716O410168 | P02-1 1.4.2 | 00000000000001277271 | DEFAULT |  |
| 316 | 4.3.2 | 사전 E2E Test - 주요프로세스2 | 5d | 2009-03-09 | 2009-03-13 | 315 | 2009-03-09 | 2009-03-13 | 5d | 85d |  | start no earlier than 2008-12-01 | All Working Day Calendar | 테스트실시 | 48648F0A0F9201F8E100800046140A10 | 07060716O410168 | P02-1 1.4.2 | 00000000000001277271 | DEFAULT |  |
| 317 | 4.4 | **개발단계 품질검증 및 단계완료** | 57d | 2008-12-19 | 2009-03-13 |  | 2008-12-19 | 2009-03-13 | 57d | 85d |  |  | All Working Day Calendar | 단계완료 | 48648FB40F9201F8E100800046140A10 | 07060716O410080 | P02-1 1.6.8 | 00000000000001277356 | DEFAULT |  |
| 318 | 4.4.1 | **Code Inspection 실시 및 보완** | 52d | 2008-12-19 | 2009-03-06 |  | 2008-12-19 | 2009-03-06 | 52d | 84d | 0d |  |  |  |  |  |  |  |  | Code Inspection 결과서 |
| 319 | 4.4.1.1 | Code Inspection 1차 | 1d | 2008-12-19 | 2008-12-19 |  | 2008-12-19 | 2008-12-19 | 1d | 136d |  | start no earlier than 2008-12-19 | All Working Day Calendar | 단계완료 | 48648FB60F9201F8E100800046140A10 | 07060716O410080 | P02-1 1.6.8 | 00000000000001277357 | DEFAULT |  |
| 320 | 4.4.1.2 | Code Inspection 2차 | 1d | 2009-01-02 | 2009-01-02 |  | 2009-01-02 | 2009-01-02 | 1d | 128d |  | start no earlier than 2009-01-02 | All Working Day Calendar | 단계완료 | 48648FB60F9201F8E100800046140A10 | 07060716O410080 | P02-1 1.6.8 | 00000000000001277357 | DEFAULT |  |
| 321 | 4.4.1.3 | Code Inspection 3차 | 1d | 2009-01-16 | 2009-01-16 |  | 2009-01-16 | 2009-01-16 | 1d | 118d |  | start no earlier than 2009-01-16 | All Working Day Calendar | 단계완료 | 48648FB60F9201F8E100800046140A10 | 07060716O410080 | P02-1 1.6.8 | 00000000000001277357 | DEFAULT |  |
| 322 | 4.4.1.4 | Code Inspection 4차 | 1d | 2009-01-30 | 2009-01-30 |  | 2009-01-30 | 2009-01-30 | 1d | 110d |  | start no earlier than 2009-01-30 | All Working Day Calendar | 단계완료 | 48648FB60F9201F8E100800046140A10 | 07060716O410080 | P02-1 1.6.8 | 00000000000001277357 | DEFAULT |  |
| 323 | 4.4.1.5 | Code Inspection 5차 | 1d | 2009-02-13 | 2009-02-13 |  | 2009-02-13 | 2009-02-13 | 1d | 100d |  | start no earlier than 2009-02-13 | All Working Day Calendar | 단계완료 | 48648FB60F9201F8E100800046140A10 | 07060716O410080 | P02-1 1.6.8 | 00000000000001277357 | DEFAULT |  |
| 324 | 4.4.1.6 | Code Inspection 6차 | 1d | 2009-02-20 | 2009-02-20 |  | 2009-02-20 | 2009-02-20 | 1d | 95d |  | start no earlier than 2009-02-20 | All Working Day Calendar | 단계완료 | 48648FB60F9201F8E100800046140A10 | 07060716O410080 | P02-1 1.6.8 | 00000000000001277357 | DEFAULT |  |
| 325 | 4.4.1.7 | Code Inspection 7차 | 1d | 2009-03-06 | 2009-03-06 |  | 2009-03-06 | 2009-03-06 | 1d | 84d |  | start no earlier than 2009-03-06 |  |  |  |  |  |  |  |  |
| 326 | 4.4.2 | 요구사항추적표 작성 | 5d | 2009-03-09 | 2009-03-13 | 318 | 2009-03-09 | 2009-03-13 | 5d | 84d |  |  |  |  |  |  |  |  |  | 요구사항추적표 |
| 327 | 5 | **E2E Test(End to End Test)** | 20d | 2009-03-16 | 2009-04-10 |  | 2009-03-16 | 2009-04-10 | 20d | 55d | 0d |  | All Working Day Calendar | 테스트실시 | 48648F580F9201F8E100800046140A10 | 07060716O410179 | P02-1 1.4.2 | 00000000000001277310 | DEFAULT |  |
| 328 | 5.1 | E2E 테스트 실시1 | 10d | 2009-03-16 | 2009-03-27 |  | 2009-03-16 | 2009-03-27 | 10d | 55d | 0d | start no earlier than 2009-03-16 | All Working Day Calendar | 테스트실시 | 48648F5A0F9201F8E100800046140A10 | 07060716O410179 | P02-1 1.4.2 | 00000000000001277311 | DEFAULT | 테스트시나리오(결과) |
| 329 | 5.2 | 테스트 결과확인 및 보완1 | 5d | 2009-03-23 | 2009-03-27 |  | 2009-03-23 | 2009-03-27 | 5d | 64d |  | start no earlier than 2009-03-23 |  |  |  |  |  |  |  | 테스트시나리오(결과) |
| 330 | 5.3 | E2E 테스트 실시2 | 10d | 2009-03-30 | 2009-04-10 | 328 | 2009-03-30 | 2009-04-10 | 10d | 54d |  |  |  |  |  |  |  |  |  | 테스트시나리오(결과) |
| 331 | 5.4 | 테스트 결과확인 및 보완2 | 5d | 2009-04-06 | 2009-04-10 |  | 2009-04-06 | 2009-04-10 | 5d | 54d |  | start no earlier than 2009-04-06 |  |  |  |  |  |  |  | 테스트시나리오(결과) |
| 332 | 6 | **개발 및 Test 검수** | 10d | 2009-04-13 | 2009-04-24 |  | 2009-04-13 | 2009-04-24 | 10d | 54d |  |  |  |  |  |  |  |  |  |  |
| 333 | 6.1 | 테스트결과제출 | 5d | 2009-04-13 | 2009-04-17 | 327 | 2009-04-13 | 2009-04-17 | 5d | 54d | 0d |  |  |  |  |  |  |  |  | E2E테스트결과, 시스템테스트결과서 |
| 334 | 6.2 | 고객 테스트결과 확인 | 3d | 2009-04-20 | 2009-04-22 | 333 | 2009-04-20 | 2009-04-22 | 3d | 54d | 0d |  |  |  |  |  |  |  |  | 고객검토결과서 |
| 335 | 6.3 | 고객승인 획득 | 2d | 2009-04-23 | 2009-04-24 | 334 | 2009-04-23 | 2009-04-24 | 2d | 54d |  |  |  |  |  |  |  |  |  | 고객인수확인서(PAD) |
| 336 | 7 | **UAT(User Acceptance Test)** | 39d | 2009-04-13 | 2009-06-05 |  | 2009-04-13 | 2009-06-05 | 39d | 1d | 0d |  | All Working Day Calendar | 테스트실시 | 48648F580F9201F8E100800046140A10 | 07060716O410179 | P02-1 1.4.2 | 00000000000001277310 | DEFAULT |  |
| 337 | 7.1 | 사용자테스트 실시 | 39d | 2009-04-13 | 2009-06-05 |  | 2009-04-13 | 2009-06-05 | 39d | 1d |  | start no earlier than 2009-04-13 | All Working Day Calendar | 테스트실시 | 48648F5A0F9201F8E100800046140A10 | 07060716O410179 | P02-1 1.4.2 | 00000000000001277311 | DEFAULT | 사용자테스트결과 |
| 338 | 7.2 | 사용자매뉴얼 작성 | 10d | 2009-04-23 | 2009-05-08 |  | 2009-04-23 | 2009-05-08 | 10d | 21d |  | start no earlier than 2009-04-23 |  |  |  |  |  |  |  | 사용자매뉴얼 |
| 339 | 7.3 | 사용자교육 실시 | 20d | 2009-05-11 | 2009-06-05 |  | 2009-05-11 | 2009-06-05 | 20d | 1d |  | start no earlier than 2009-05-11 |  |  |  |  |  |  |  | 교육교재 |

| ID | WBS | Task | Duration | Start | Finish | Predecessors | Baseline start | Baseline finish | Baseline duration | Total slack | Free slack | Constraint | Calendar | Text20 | Text22 | Text25 | Text26 | Text27 | Text28 | Text30 |
| --- | --- | --- | --- | --- | --- | --- | --- | --- | --- | --- | --- | --- | --- | --- | --- | --- | --- | --- | --- | --- |
| 340 | 8 | **ORT(Operation Readiness Test)** | 25d | 2009-06-08 | 2009-07-10 | 336 | 2009-06-08 | 2009-07-10 | 25d | 1d |  |  | All Working Day Calendar | 구현 | 48648F5E0F9201F8E100800046140A10 | 07060716O410180 | P02-1 1.5 | 00000000000001277313 | DEFAULT |  |
| 341 | 8.1 | **구현계획수립** | 5d | 2009-06-08 | 2009-06-12 |  | 2009-06-08 | 2009-06-12 | 5d | 6d |  |  | All Working Day Calendar | 구현계획수립 | 48648F600F9201F8E100800046140A10 | 07060716O410181 | P02-1 1.5.1 | 00000000000001277314 | DEFAULT |  |
| 342 | 8.1.1 | 릴리이즈및비상계획수립 | 5d | 2009-06-08 | 2009-06-12 |  | 2009-06-08 | 2009-06-12 | 5d | 21d |  | start no earlier than 2009-05-25 | All Working Day Calendar | 구현계획수립 | 48648F620F9201F8E100800046140A10 | 07060716O410181 | P02-1 1.5.1 | 00000000000001277315 | DEFAULT | 구현계획서 |
| 343 | 8.1.2 | 교육훈련계획수립 | 5d | 2009-06-08 | 2009-06-12 |  | 2009-06-08 | 2009-06-12 | 5d | 6d | 0d | start no earlier than 2009-06-01 | All Working Day Calendar | 구현계획수립 | 48648F640F9201F8E100800046140A10 | 07060716O410181 | P02-1 1.5.1 | 00000000000001277316 | DEFAULT | 교육계획서 |
| 344 | 8.2 | **시범운영** | 25d | 2009-06-08 | 2009-07-10 |  | 2009-06-08 | 2009-07-10 | 25d | 1d |  |  | All Working Day Calendar | 시범운영 | 48648F7A0F9201F8E100800046140A10 | 07060716O410184 | P02-1 1.5.4 | 00000000000001277327 | DEFAULT |  |
| 345 | 8.2.1 | 시범운영계획 수립 | 5d | 2009-06-08 | 2009-06-12 |  | 2009-06-08 | 2009-06-12 | 5d | 21d |  | start no earlier than 2009-06-08 | All Working Day Calendar | 시범운영 | 48648F7C0F9201F8E100800046140A10 | 07060716O410184 | P02-1 1.5.4 | 00000000000001277328 | DEFAULT | 시범운영계획서 |
| 346 | 8.2.2 | 시범운영 실시 | 25d | 2009-06-08 | 2009-07-10 |  | 2009-06-08 | 2009-07-10 | 25d | 1d |  | start no earlier than 2009-06-08 | All Working Day Calendar | 시범운영 | 48648F7E0F9201F8E100800046140A10 | 07060716O410184 | P02-1 1.5.4 | 00000000000001277329 | DEFAULT | 시범운영일지 |
| 347 | 8.3 | **시스템사용교육** | 15d | 2009-06-15 | 2009-07-03 |  | 2009-06-15 | 2009-07-03 | 15d | 6d |  |  | All Working Day Calendar | 시스템사용교육 | 48648F720F9201F8E100800046140A10 | 07060716O410183 | P02-1 1.5.3 | 00000000000001277323 | DEFAULT |  |
| 348 | 8.3.1 | 운영매뉴얼 작성 | 10d | 2009-06-15 | 2009-06-26 | 343 | 2009-06-15 | 2009-06-26 | 10d | 6d | 0d | start no earlier than 2009-06-15 | All Working Day Calendar | 시스템사용교육 | 48648F760F9201F8E100800046140A10 | 07060716O410183 | P02-1 1.5.3 | 00000000000001277325 | DEFAULT | 운영매뉴얼 |
| 349 | 8.3.2 | 운영자교육 실시 | 5d | 2009-06-29 | 2009-07-03 | 348 | 2009-06-29 | 2009-07-03 | 5d | 6d |  |  | All Working Day Calendar | 시스템사용교육 | 48648F780F9201F8E100800046140A10 | 07060716O410183 | P02-1 1.5.3 | 00000000000001277326 | DEFAULT | 교육교재 |
| 350 | 8.4 | **시스템 인수인계** | 20d | 2009-06-08 | 2009-07-03 |  | 2009-06-08 | 2009-07-03 | 20d | 6d |  |  | All Working Day Calendar | 시스템 인수인계 | 48648F7A0F9201F8E100800046140A10 | 07060716O410184 | P02-1 1.7.2 | 00000000000001277327 | DEFAULT |  |
| 351 | 8.4.1 | 인수인계계획 수립 | 5d | 2009-06-08 | 2009-06-12 |  | 2009-06-08 | 2009-06-12 | 5d | 6d | 0d | start no earlier than 2009-06-08 | All Working Day Calendar | 시스템 인수인계 | 48648F7C0F9201F8E100800046140A10 | 07060716O410184 | P02-1 1.7.2 | 00000000000001277328 | DEFAULT | 인수인계계획서 |
| 352 | 8.4.2 | 인수인계 실시 | 15d | 2009-06-15 | 2009-07-03 | 351 | 2009-06-15 | 2009-07-03 | 15d | 6d |  | start no earlier than 2009-06-15 | All Working Day Calendar | 시스템 인수인계 | 48648F7E0F9201F8E100800046140A10 | 07060716O410184 | P02-1 1.7.2 | 00000000000001277329 | DEFAULT | 인수인계확인서 |
| 353 | 8.5 | **오픈 준비** | 5d | 2009-07-06 | 2009-07-10 |  | 2009-07-06 | 2009-07-10 | 5d | 1d |  |  | All Working Day Calendar | 컨버젼 및 릴리이즈 | 48648F660F9201F8E100800046140A10 | 07060716O410182 | P02-1 1.5.2 | 00000000000001277317 | DEFAULT |  |
| 354 | 8.5.1 | 데이터베이스 구축 | 5d | 2009-07-06 | 2009-07-10 |  | 2009-07-06 | 2009-07-10 | 5d | 1d |  | start no earlier than 2009-07-06 | All Working Day Calendar | 컨버젼 및 릴리이즈 | 48648F680F9201F8E100800046140A10 | 07060716O410182 | P02-1 1.5.2 | 00000000000001277318 | DEFAULT |  |
| 355 | 8.5.2 | 소프트웨어 설치 | 5d | 2009-07-06 | 2009-07-10 |  | 2009-07-06 | 2009-07-10 | 5d | 1d |  | start no earlier than 2009-07-06 | All Working Day Calendar | 컨버젼 및 릴리이즈 | 48648F6A0F9201F8E100800046140A10 | 07060716O410182 | P02-1 1.5.2 | 00000000000001277319 | DEFAULT |  |
| 356 | 8.5.3 | 데이터컨버전 | 5d | 2009-07-06 | 2009-07-10 |  | 2009-07-06 | 2009-07-10 | 5d | 1d |  | start no earlier than 2009-07-06 | All Working Day Calendar | 컨버젼 및 릴리이즈 | 48648F6C0F9201F8E100800046140A10 | 07060716O410182 | P02-1 1.5.2 | 00000000000001277320 | DEFAULT |  |
| 357 | 8.5.4 | 시스템 릴리이즈 | 1d | 2009-07-10 | 2009-07-10 |  | 2009-07-10 | 2009-07-10 | 1d | 1d |  | start no earlier than 2009-07-10 | All Working Day Calendar | 컨버젼 및 릴리이즈 | 48648F700F9201F8E100800046140A10 | 07060716O410182 | P02-1 1.5.2 | 00000000000001277322 | DEFAULT |  |
| 358 | 9 | **Go Live** | 1d | 2009-07-13 | 2009-07-13 |  | 2009-07-13 | 2009-07-13 | 1d | 0d |  |  |  | 컨버젼 및 릴리이즈 |  |  | P02-1 1.5.2 |  |  |  |
| 359 | 9.1 | 시스템 최종 오픈 | 1d | 2009-07-13 | 2009-07-13 |  | 2009-07-13 | 2009-07-13 | 1d | 0d |  | start no earlier than 2009-07-13 |  |  |  |  |  |  |  |  |
