# 04.수금

Schedule from MS Project, 2008-07-23 to 2009-07-13, status date 2008-12-12, A marks actual dates.
HSIC-0820606

## Calendars

- All Working Day Calendar: Mon-Fri 08:00-12:00, 13:00-17:00; Sat-Sun off. Exceptions (off unless hours are given): 2008-08-15, 2008-09-15, 2008-10-03, 2008-12-25, 2009-01-01, 2009-01-26 to 2009-01-27, 2009-05-05.
- 한국: Mon-Fri 08:00-12:00, 13:00-17:00; Sat-Sun off. Exceptions (off unless hours are given): 2008-08-15, 2008-09-13 to 2008-09-15, 2008-10-03, 2008-12-25, 2009-01-01, 2009-01-25 to 2009-01-27, 2009-03-01, 2009-05-01 to 2009-05-02, 2009-05-05, 2009-06-06.

## Schedule

| ID | WBS | Task | Duration | Start | Finish | Predecessors | Complete | Baseline start | Baseline finish | Baseline duration | Constraint | Calendar | Text20 | Text22 | Text25 | Text26 | Text27 | Text28 | Text30 |
| --- | --- | --- | --- | --- | --- | --- | --- | --- | --- | --- | --- | --- | --- | --- | --- | --- | --- | --- | --- |
| 1 | 1 | **Inception** | 3d | 2008-07-23 A | 2008-07-25 A |  | 100% | 2008-07-23 | 2008-07-25 | 3d |  | All Working Day Calendar | 프로젝트 착수 | 48648EC80F9201F8E100800046140A10 | 07061114O410023 | P02-1 1.1 | 00000000000001277238 | DEFAULT |  |
| 2 | 1.1 | **착수준비** | 3d | 2008-07-23 A | 2008-07-25 A |  | 100% | 2008-07-23 | 2008-07-25 | 3d |  | All Working Day Calendar | 착수준비 | 48648ECA0F9201F8E100800046140A10 | 07061114O410024 | P02-1 1.1.1 | 00000000000001277239 | DEFAULT |  |
| 3 | 1.1.1 | 업무범위 정의 | 3d | 2008-07-23 A | 2008-07-25 A |  | 100% | 2008-07-23 | 2008-07-25 | 3d | start no earlier than 2008-07-23 | All Working Day Calendar | 착수준비 | 48648ECC0F9201F8E100800046140A10 | 07061114O410024 | P02-1 1.1.1 | 00000000000001277240 | DEFAULT |  |
| 4 | 1.1.2 | 업무파트 WBS 정의 | 3d | 2008-07-23 A | 2008-07-25 A |  | 100% | 2008-07-23 | 2008-07-25 | 3d | start no earlier than 2008-07-23 | All Working Day Calendar | 착수준비 | 48648ECE0F9201F8E100800046140A10 | 07061114O410024 | P02-1 1.1.1 | 00000000000001277241 | DEFAULT | WBS |
| 5 | 2 | **Analysis** | 43d | 2008-07-28 A | 2008-09-26 A |  | 100% | 2008-07-28 | 2008-09-26 | 43d |  | All Working Day Calendar | 분석 | 48648EFC0F9201F8E100800046140A10 | 07060716O410166 | P02-1 1.2 | 00000000000001277264 | DEFAULT |  |
| 6 | 2.1 | **현황평가** | 10d | 2008-07-28 A | 2008-08-08 A |  | 100% | 2008-07-28 | 2008-08-08 | 10d |  | All Working Day Calendar | 현황평가 | 48648F080F9201F8E100800046140A10 | 07060716O410168 | P02-1 1.2.2 | 00000000000001277270 | DEFAULT |  |
| 7 | 2.1.1 | **현행업무분석** | 5d | 2008-07-28 A | 2008-08-01 A |  | 100% | 2008-07-28 | 2008-08-01 | 5d |  | All Working Day Calendar | 현행업무분석 | 48648F0A0F9201F8E100800046140A10 | 07060716O410168 | P02-1 1.2.2.1 | 00000000000001277271 | DEFAULT |  |
| 8 | 2.1.1.1 | 현행업무분석서 수집 | 5d | 2008-07-28 A | 2008-08-01 A |  | 100% | 2008-07-28 | 2008-08-01 | 5d | start no earlier than 2008-07-28 | All Working Day Calendar | 현행업무분석 | 48648F0A0F9201F8E100800046140A10 | 07060716O410168 | P02-1 1.2.2.1 | 00000000000001277271 | DEFAULT | 현행업무분석서(기존 분석자료 대체) |
| 9 | 2.1.2 | **현행시스템분석** | 5d | 2008-08-04 A | 2008-08-08 A | 8 | 100% | 2008-08-04 | 2008-08-08 | 5d |  | All Working Day Calendar | 현행시스템분석 | 48648F0C0F9201F8E100800046140A10 | 07060716O410168 | P02-1 1.2.2.2 | 00000000000001277272 | DEFAULT |  |
| 10 | 2.1.2.1 | 현행시스템분석서 수집 | 5d | 2008-08-04 A | 2008-08-08 A |  | 100% | 2008-08-04 | 2008-08-08 | 5d | start no earlier than 2008-07-21 | All Working Day Calendar | 현행업무분석 | 48648F0A0F9201F8E100800046140A10 | 07060716O410168 | P02-1 1.2.2.1 | 00000000000001277271 | DEFAULT | 현행시스템분석서(현업운영 작성) |
| 11 | 2.1.2.2 | **현행시스템 화면 및 보고서 설명** | 5d | 2008-08-04 A | 2008-08-08 A |  | 100% | 2008-08-04 | 2008-08-08 | 5d |  | All Working Day Calendar | 현행업무분석 | 48648F0A0F9201F8E100800046140A10 | 07060716O410168 | P02-1 1.2.2.1 | 00000000000001277271 | DEFAULT |  |
| 12 | 2.1.2.2.1 | 간이/방문 | 5d | 2008-08-04 A | 2008-08-08 A |  | 100% | 2008-08-04 | 2008-08-08 | 5d | start no earlier than 2008-07-21 | All Working Day Calendar | 현행업무분석 | 48648F0A0F9201F8E100800046140A10 | 07060716O410168 | P02-1 1.2.2.1 | 00000000000001277271 | DEFAULT |  |
| 13 | 2.1.2.2.2 | 카드이체 | 5d | 2008-08-04 A | 2008-08-08 A |  | 100% | 2008-08-04 | 2008-08-08 | 5d |  |  |  |  |  |  |  |  |  |
| 14 | 2.1.2.2.3 | 자동이체 | 5d | 2008-08-04 A | 2008-08-08 A |  | 100% | 2008-08-04 | 2008-08-08 | 5d |  |  |  |  |  |  |  |  |  |
| 15 | 2.1.2.2.4 | 즉시이체 | 5d | 2008-08-04 A | 2008-08-08 A |  | 100% | 2008-08-04 | 2008-08-08 | 5d |  |  |  |  |  |  |  |  |  |
| 16 | 2.1.2.2.5 | 가상계좌 | 5d | 2008-08-04 A | 2008-08-08 A |  | 100% | 2008-08-04 | 2008-08-08 | 5d |  |  |  |  |  |  |  |  |  |
| 17 | 2.1.2.2.6 | 단체입금 | 5d | 2008-08-04 A | 2008-08-08 A |  | 100% | 2008-08-04 | 2008-08-08 | 5d |  |  |  |  |  |  |  |  |  |
| 18 | 2.1.2.2.7 | 자동대출 | 5d | 2008-08-04 A | 2008-08-08 A |  | 100% | 2008-08-04 | 2008-08-08 | 5d | start no earlier than 2008-07-21 | All Working Day Calendar | 현행업무분석 | 48648F0A0F9201F8E100800046140A10 | 07060716O410168 | P02-1 1.2.2.1 | 00000000000001277271 | DEFAULT |  |
| 19 | 2.1.2.2.8 | 지로입금 | 5d | 2008-08-04 A | 2008-08-08 A |  | 100% | 2008-08-04 | 2008-08-08 | 5d | start no earlier than 2008-07-21 | All Working Day Calendar | 현행업무분석 | 48648F0A0F9201F8E100800046140A10 | 07060716O410168 | P02-1 1.2.2.1 | 00000000000001277271 | DEFAULT |  |
| 20 | 2.1.2.2.9 | 보험료반송 | 5d | 2008-08-04 A | 2008-08-08 A |  | 100% | 2008-08-04 | 2008-08-08 | 5d | start no earlier than 2008-07-21 | All Working Day Calendar | 현행업무분석 | 48648F0A0F9201F8E100800046140A10 | 07060716O410168 | P02-1 1.2.2.1 | 00000000000001277271 | DEFAULT |  |
| 21 | 2.1.2.2.10 | 특별입금 | 5d | 2008-08-04 A | 2008-08-08 A |  | 100% | 2008-08-04 | 2008-08-08 | 5d | start no earlier than 2008-07-21 | All Working Day Calendar | 현행업무분석 | 48648F0A0F9201F8E100800046140A10 | 07060716O410168 | P02-1 1.2.2.1 | 00000000000001277271 | DEFAULT |  |
| 22 | 2.1.2.2.11 | 영수증관리 | 5d | 2008-08-04 A | 2008-08-08 A |  | 100% | 2008-08-04 | 2008-08-08 | 5d | start no earlier than 2008-07-21 | All Working Day Calendar | 현행업무분석 | 48648F0A0F9201F8E100800046140A10 | 07060716O410168 | P02-1 1.2.2.1 | 00000000000001277271 | DEFAULT |  |
| 23 | 2.1.2.2.12 | 마감/통계 | 5d | 2008-08-04 A | 2008-08-08 A |  | 100% | 2008-08-04 | 2008-08-08 | 5d | start no earlier than 2008-07-21 | All Working Day Calendar | 현행업무분석 | 48648F0A0F9201F8E100800046140A10 | 07060716O410168 | P02-1 1.2.2.1 | 00000000000001277271 | DEFAULT |  |
| 24 | 2.1.3 | 인터뷰실시 | 2d | 2008-08-04 A | 2008-08-05 A |  | 100% | 2008-08-04 | 2008-08-05 | 2d | start no earlier than 2008-08-04 | All Working Day Calendar | 인터뷰실시 | 48648F0E0F9201F8E100800046140A10 | 07060716O410168 | P02-1 1.2.2.3 | 00000000000001277273 | DEFAULT |  |
| 25 | 2.2 | 착수W/S | 3d | 2008-08-06 A | 2008-08-08 A | 24 | 100% | 2008-08-06 | 2008-08-08 | 3d |  |  |  |  |  |  |  |  |  |

| ID | WBS | Task | Duration | Start | Finish | Predecessors | Complete | Baseline start | Baseline finish | Baseline duration | Constraint | Calendar | Text20 | Text22 | Text25 | Text26 | Text27 | Text28 | Text30 |
| --- | --- | --- | --- | --- | --- | --- | --- | --- | --- | --- | --- | --- | --- | --- | --- | --- | --- | --- | --- |
| 26 | 2.3 | **패키지 요구사항정의** | 14d | 2008-08-11 A | 2008-08-29 A |  | 100% | 2008-08-11 | 2008-08-29 | 14d |  | All Working Day Calendar | 패키지 요구사항정의 | 48648F100F9201F8E100800046140A10 | 07060716O410169 | P02-1 1.2.3 | 00000000000001277274 | DEFAULT |  |
| 27 | 2.3.1 | **패키지 사용자교육** | 4d | 2008-08-11 A | 2008-08-14 A | 25 | 100% | 2008-08-11 | 2008-08-14 | 4d |  | All Working Day Calendar | 패키지 사용자교육 | 48648F120F9201F8E100800046140A10 | 07060716O410169 | P02-1 1.2.3.1 | 00000000000001277275 | DEFAULT |  |
| 28 | 2.3.1.1 | **메뉴구조 및 화면 설명** | 4d | 2008-08-11 A | 2008-08-14 A |  | 100% | 2008-08-11 | 2008-08-14 | 4d |  |  |  |  |  |  |  |  |  |
| 29 | 2.3.1.1.1 | 간이/방문 | 4d | 2008-08-11 A | 2008-08-14 A |  | 100% | 2008-08-11 | 2008-08-14 | 4d | start no earlier than 2008-07-21 | All Working Day Calendar | 현행업무분석 | 48648F0A0F9201F8E100800046140A10 | 07060716O410168 | P02-1 1.2.2.1 | 00000000000001277271 | DEFAULT |  |
| 30 | 2.3.1.1.2 | 카드이체 | 4d | 2008-08-11 A | 2008-08-14 A |  | 100% | 2008-08-11 | 2008-08-14 | 4d |  |  |  |  |  |  |  |  |  |
| 31 | 2.3.1.1.3 | 자동이체 | 4d | 2008-08-11 A | 2008-08-14 A |  | 100% | 2008-08-11 | 2008-08-14 | 4d |  |  |  |  |  |  |  |  |  |
| 32 | 2.3.1.1.4 | 즉시이체 | 4d | 2008-08-11 A | 2008-08-14 A |  | 100% | 2008-08-11 | 2008-08-14 | 4d |  |  |  |  |  |  |  |  |  |
| 33 | 2.3.1.1.5 | 가상계좌 | 4d | 2008-08-11 A | 2008-08-14 A |  | 100% | 2008-08-11 | 2008-08-14 | 4d |  |  |  |  |  |  |  |  |  |
| 34 | 2.3.1.1.6 | 단체입금 | 4d | 2008-08-11 A | 2008-08-14 A |  | 100% | 2008-08-11 | 2008-08-14 | 4d |  |  |  |  |  |  |  |  |  |
| 35 | 2.3.1.1.7 | 자동대출 | 4d | 2008-08-11 A | 2008-08-14 A |  | 100% | 2008-08-11 | 2008-08-14 | 4d | start no earlier than 2008-07-21 | All Working Day Calendar | 현행업무분석 | 48648F0A0F9201F8E100800046140A10 | 07060716O410168 | P02-1 1.2.2.1 | 00000000000001277271 | DEFAULT |  |
| 36 | 2.3.1.1.8 | 지로입금 | 4d | 2008-08-11 A | 2008-08-14 A |  | 100% | 2008-08-11 | 2008-08-14 | 4d | start no earlier than 2008-07-21 | All Working Day Calendar | 현행업무분석 | 48648F0A0F9201F8E100800046140A10 | 07060716O410168 | P02-1 1.2.2.1 | 00000000000001277271 | DEFAULT |  |
| 37 | 2.3.1.1.9 | 보험료반송 | 4d | 2008-08-11 A | 2008-08-14 A |  | 100% | 2008-08-11 | 2008-08-14 | 4d | start no earlier than 2008-07-21 | All Working Day Calendar | 현행업무분석 | 48648F0A0F9201F8E100800046140A10 | 07060716O410168 | P02-1 1.2.2.1 | 00000000000001277271 | DEFAULT |  |
| 38 | 2.3.1.1.10 | 특별입금 | 4d | 2008-08-11 A | 2008-08-14 A |  | 100% | 2008-08-11 | 2008-08-14 | 4d | start no earlier than 2008-07-21 | All Working Day Calendar | 현행업무분석 | 48648F0A0F9201F8E100800046140A10 | 07060716O410168 | P02-1 1.2.2.1 | 00000000000001277271 | DEFAULT |  |
| 39 | 2.3.1.1.11 | 영수증관리 | 4d | 2008-08-11 A | 2008-08-14 A |  | 100% | 2008-08-11 | 2008-08-14 | 4d | start no earlier than 2008-07-21 | All Working Day Calendar | 현행업무분석 | 48648F0A0F9201F8E100800046140A10 | 07060716O410168 | P02-1 1.2.2.1 | 00000000000001277271 | DEFAULT |  |
| 40 | 2.3.1.1.12 | 마감/통계 | 4d | 2008-08-11 A | 2008-08-14 A |  | 100% | 2008-08-11 | 2008-08-14 | 4d | start no earlier than 2008-07-21 | All Working Day Calendar | 현행업무분석 | 48648F0A0F9201F8E100800046140A10 | 07060716O410168 | P02-1 1.2.2.1 | 00000000000001277271 | DEFAULT |  |
| 41 | 2.3.1.2 | **데이터모델 설명** | 1d | 2008-08-14 A | 2008-08-14 A |  | 100% | 2008-08-14 | 2008-08-14 | 1d |  |  |  |  |  |  |  |  | Data 모델 |
| 42 | 2.3.1.2.1 | 주요 엔티티 설명 | 1d | 2008-08-14 A | 2008-08-14 A |  | 100% | 2008-08-14 | 2008-08-14 | 1d | start no earlier than 2008-08-14 |  |  |  |  |  |  |  |  |
| 43 | 2.3.2 | **기능요구사항정의** | 10d | 2008-08-18 A | 2008-08-29 A | 27 | 100% | 2008-08-18 | 2008-08-29 | 10d |  | All Working Day Calendar | 기능요구사항정의 | 48648F140F9201F8E100800046140A10 | 07060716O410169 | P02-1 1.2.3.2 | 00000000000001277276 | DEFAULT |  |
| 44 | 2.3.2.1 | **현업요구사항정의서작성** | 10d | 2008-08-18 A | 2008-08-29 A |  | 100% | 2008-08-18 | 2008-08-29 | 10d |  |  |  |  |  |  |  |  | Business System Requirement |
| 45 | 2.3.2.1.1 | 간이/방문 | 5d | 2008-08-18 A | 2008-08-22 A |  | 100% | 2008-08-18 | 2008-08-22 | 5d | start no earlier than 2008-07-21 | All Working Day Calendar | 현행업무분석 | 48648F0A0F9201F8E100800046140A10 | 07060716O410168 | P02-1 1.2.2.1 | 00000000000001277271 | DEFAULT |  |
| 46 | 2.3.2.1.2 | 카드이체 | 5d | 2008-08-18 A | 2008-08-22 A |  | 100% | 2008-08-18 | 2008-08-22 | 5d |  |  |  |  |  |  |  |  |  |
| 47 | 2.3.2.1.3 | 자동이체 | 5d | 2008-08-18 A | 2008-08-22 A |  | 100% | 2008-08-18 | 2008-08-22 | 5d | finish no earlier than 2008-08-22 |  |  |  |  |  |  |  |  |
| 48 | 2.3.2.1.4 | 즉시이체 | 5d | 2008-08-25 A | 2008-08-29 A |  | 100% | 2008-08-25 | 2008-08-29 | 5d | start no earlier than 2008-08-25 |  |  |  |  |  |  |  |  |
| 49 | 2.3.2.1.5 | 가상계좌 | 5d | 2008-08-25 A | 2008-08-29 A |  | 100% | 2008-08-25 | 2008-08-29 | 5d | start no earlier than 2008-08-25 |  |  |  |  |  |  |  |  |
| 50 | 2.3.2.1.6 | 단체입금 | 5d | 2008-08-18 A | 2008-08-22 A |  | 100% | 2008-08-18 | 2008-08-22 | 5d | start no earlier than 2008-07-21 | All Working Day Calendar | 현행업무분석 | 48648F0A0F9201F8E100800046140A10 | 07060716O410168 | P02-1 1.2.2.1 | 00000000000001277271 | DEFAULT |  |
| 51 | 2.3.2.1.7 | 자동대출 | 5d | 2008-08-18 A | 2008-08-22 A |  | 100% | 2008-08-18 | 2008-08-22 | 5d | start no earlier than 2008-07-21 | All Working Day Calendar | 현행업무분석 | 48648F0A0F9201F8E100800046140A10 | 07060716O410168 | P02-1 1.2.2.1 | 00000000000001277271 | DEFAULT |  |
| 52 | 2.3.2.1.8 | 지로입금 | 5d | 2008-08-18 A | 2008-08-22 A |  | 100% | 2008-08-18 | 2008-08-22 | 5d | start no earlier than 2008-07-21 | All Working Day Calendar | 현행업무분석 | 48648F0A0F9201F8E100800046140A10 | 07060716O410168 | P02-1 1.2.2.1 | 00000000000001277271 | DEFAULT |  |
| 53 | 2.3.2.1.9 | 보험료반송 | 5d | 2008-08-25 A | 2008-08-29 A |  | 100% | 2008-08-25 | 2008-08-29 | 5d | start no earlier than 2008-08-25 | All Working Day Calendar | 현행업무분석 | 48648F0A0F9201F8E100800046140A10 | 07060716O410168 | P02-1 1.2.2.1 | 00000000000001277271 | DEFAULT |  |
| 54 | 2.3.2.1.10 | 특별입금 | 5d | 2008-08-25 A | 2008-08-29 A |  | 100% | 2008-08-25 | 2008-08-29 | 5d | start no earlier than 2008-08-25 | All Working Day Calendar | 현행업무분석 | 48648F0A0F9201F8E100800046140A10 | 07060716O410168 | P02-1 1.2.2.1 | 00000000000001277271 | DEFAULT |  |
| 55 | 2.3.2.1.11 | 영수증관리 | 5d | 2008-08-25 A | 2008-08-29 A |  | 100% | 2008-08-25 | 2008-08-29 | 5d | start no earlier than 2008-08-25 | All Working Day Calendar | 현행업무분석 | 48648F0A0F9201F8E100800046140A10 | 07060716O410168 | P02-1 1.2.2.1 | 00000000000001277271 | DEFAULT |  |
| 56 | 2.3.2.1.12 | 마감/통계 | 5d | 2008-08-25 A | 2008-08-29 A |  | 100% | 2008-08-25 | 2008-08-29 | 5d | start no earlier than 2008-08-25 | All Working Day Calendar | 현행업무분석 | 48648F0A0F9201F8E100800046140A10 | 07060716O410168 | P02-1 1.2.2.1 | 00000000000001277271 | DEFAULT |  |

| ID | WBS | Task | Duration | Start | Finish | Predecessors | Complete | Baseline start | Baseline finish | Baseline duration | Constraint | Calendar | Text20 | Text22 | Text25 | Text26 | Text27 | Text28 | Text30 |
| --- | --- | --- | --- | --- | --- | --- | --- | --- | --- | --- | --- | --- | --- | --- | --- | --- | --- | --- | --- |
| 57 | 2.3.3 | **타시스템 인터페이스 요구사항정의** | 5d | 2008-08-18 A | 2008-08-22 A | 27 | 100% | 2008-08-18 | 2008-08-22 | 5d |  | All Working Day Calendar | 타시스템인터페이스 요구사항정의 | 48648F180F9201F8E100800046140A10 | 07060716O410169 | P02-1 1.2.3.4 | 00000000000001277278 | DEFAULT |  |
| 58 | 2.3.3.1 | **대내시스템 인터페이스 목록 작성** | 5d | 2008-08-18 A | 2008-08-22 A |  | 100% | 2008-08-18 | 2008-08-22 | 5d |  | All Working Day Calendar | 타시스템인터페이스 요구사항정의 | 48648F180F9201F8E100800046140A10 | 07060716O410169 | P02-1 1.2.3.4 | 00000000000001277278 | DEFAULT | Business System Requirement |
| 59 | 2.3.3.1.1 | 사이버창구/ARS | 5d | 2008-08-18 A | 2008-08-22 A |  | 100% | 2008-08-18 | 2008-08-22 | 5d | start no earlier than 2008-08-18 | All Working Day Calendar | 현행업무분석 | 48648F0A0F9201F8E100800046140A10 | 07060716O410168 | P02-1 1.2.2.1 | 00000000000001277271 | DEFAULT |  |
| 60 | 2.3.3.1.2 | TM시스템 | 5d | 2008-08-18 A | 2008-08-22 A |  | 100% | 2008-08-18 | 2008-08-22 | 5d | start no earlier than 2008-08-18 | All Working Day Calendar | 현행업무분석 | 48648F0A0F9201F8E100800046140A10 | 07060716O410168 | P02-1 1.2.2.1 | 00000000000001277271 | DEFAULT |  |
| 61 | 2.3.3.1.3 | 방카시스템 | 5d | 2008-08-18 A | 2008-08-22 A |  | 100% | 2008-08-18 | 2008-08-22 | 5d | start no earlier than 2008-08-18 | All Working Day Calendar | 현행업무분석 | 48648F0A0F9201F8E100800046140A10 | 07060716O410168 | P02-1 1.2.2.1 | 00000000000001277271 | DEFAULT |  |
| 62 | 2.3.3.1.4 | NFS시스템 | 5d | 2008-08-18 A | 2008-08-22 A |  | 100% | 2008-08-18 | 2008-08-22 | 5d | start no earlier than 2008-08-18 | All Working Day Calendar | 현행업무분석 | 48648F0A0F9201F8E100800046140A10 | 07060716O410168 | P02-1 1.2.2.1 | 00000000000001277271 | DEFAULT |  |
| 63 | 2.3.3.2 | **대외시스템 인터페이스 목록 작성** | 5d | 2008-08-18 A | 2008-08-22 A |  | 100% | 2008-08-18 | 2008-08-22 | 5d |  | All Working Day Calendar | 타시스템인터페이스 요구사항정의 | 48648F180F9201F8E100800046140A10 | 07060716O410169 | P02-1 1.2.3.4 | 00000000000001277278 | DEFAULT | Business System Requirement |
| 64 | 2.3.3.2.1 | 은행 리얼타임 이체 | 5d | 2008-08-18 A | 2008-08-22 A |  | 100% | 2008-08-18 | 2008-08-22 | 5d | start no earlier than 2008-08-18 | All Working Day Calendar | 현행업무분석 | 48648F0A0F9201F8E100800046140A10 | 07060716O410168 | P02-1 1.2.2.1 | 00000000000001277271 | DEFAULT |  |
| 65 | 2.3.3.2.2 | 카드사 실시간 승인 | 5d | 2008-08-18 A | 2008-08-22 A |  | 100% | 2008-08-18 | 2008-08-22 | 5d | start no earlier than 2008-08-18 | All Working Day Calendar | 현행업무분석 | 48648F0A0F9201F8E100800046140A10 | 07060716O410168 | P02-1 1.2.2.1 | 00000000000001277271 | DEFAULT |  |
| 66 | 2.3.3.2.3 | 세금우대정보 수신 | 5d | 2008-08-18 A | 2008-08-22 A |  | 100% | 2008-08-18 | 2008-08-22 | 5d | start no earlier than 2008-08-18 | All Working Day Calendar | 현행업무분석 | 48648F0A0F9201F8E100800046140A10 | 07060716O410168 | P02-1 1.2.2.1 | 00000000000001277271 | DEFAULT |  |
| 67 | 2.3.3.2.4 | 자동이체 송수신 | 5d | 2008-08-18 A | 2008-08-22 A |  | 100% | 2008-08-18 | 2008-08-22 | 5d | start no earlier than 2008-08-18 | All Working Day Calendar | 현행업무분석 | 48648F0A0F9201F8E100800046140A10 | 07060716O410168 | P02-1 1.2.2.1 | 00000000000001277271 | DEFAULT |  |
| 68 | 2.3.3.2.5 | 가상계좌 이체 | 5d | 2008-08-18 A | 2008-08-22 A |  | 100% | 2008-08-18 | 2008-08-22 | 5d | start no earlier than 2008-08-18 | All Working Day Calendar | 현행업무분석 | 48648F0A0F9201F8E100800046140A10 | 07060716O410168 | P02-1 1.2.2.1 | 00000000000001277271 | DEFAULT |  |
| 69 | 2.4 | **매핑** | 24d | 2008-08-18 A | 2008-09-19 A |  | 100% | 2008-08-18 | 2008-09-19 | 24d |  | All Working Day Calendar | 매핑 | 48648F1C0F9201F8E100800046140A10 | 07060716O410170 | P02-1 1.2.4 | 00000000000001277280 | DEFAULT |  |
| 70 | 2.4.1 | **패키지GAP분석** | 10d | 2008-08-18 A | 2008-08-29 A | 27 | 100% | 2008-08-18 | 2008-08-29 | 10d |  |  |  |  |  |  |  |  | 패키지 GAP 분석서 |
| 71 | 2.4.1.1 | 간이/방문 | 5d | 2008-08-18 A | 2008-08-22 A |  | 100% | 2008-08-18 | 2008-08-22 | 5d | start no earlier than 2008-07-21 | All Working Day Calendar | 현행업무분석 | 48648F0A0F9201F8E100800046140A10 | 07060716O410168 | P02-1 1.2.2.1 | 00000000000001277271 | DEFAULT |  |
| 72 | 2.4.1.2 | 카드이체 | 5d | 2008-08-18 A | 2008-08-22 A |  | 100% | 2008-08-18 | 2008-08-22 | 5d |  |  |  |  |  |  |  |  |  |
| 73 | 2.4.1.3 | 자동이체 | 5d | 2008-08-18 A | 2008-08-22 A |  | 100% | 2008-08-18 | 2008-08-22 | 5d |  |  |  |  |  |  |  |  |  |
| 74 | 2.4.1.4 | 즉시이체 | 5d | 2008-08-25 A | 2008-08-29 A |  | 100% | 2008-08-25 | 2008-08-29 | 5d | start no earlier than 2008-08-25 |  |  |  |  |  |  |  |  |
| 75 | 2.4.1.5 | 가상계좌 | 5d | 2008-08-25 A | 2008-08-29 A |  | 100% | 2008-08-25 | 2008-08-29 | 5d | start no earlier than 2008-08-25 |  |  |  |  |  |  |  |  |
| 76 | 2.4.1.6 | 단체입금 | 5d | 2008-08-18 A | 2008-08-22 A |  | 100% | 2008-08-18 | 2008-08-22 | 5d |  |  |  |  |  |  |  |  |  |
| 77 | 2.4.1.7 | 자동대출 | 5d | 2008-08-18 A | 2008-08-22 A |  | 100% | 2008-08-18 | 2008-08-22 | 5d | start no earlier than 2008-07-21 | All Working Day Calendar | 현행업무분석 | 48648F0A0F9201F8E100800046140A10 | 07060716O410168 | P02-1 1.2.2.1 | 00000000000001277271 | DEFAULT |  |
| 78 | 2.4.1.8 | 지로입금 | 5d | 2008-08-18 A | 2008-08-22 A |  | 100% | 2008-08-18 | 2008-08-22 | 5d | start no earlier than 2008-07-21 | All Working Day Calendar | 현행업무분석 | 48648F0A0F9201F8E100800046140A10 | 07060716O410168 | P02-1 1.2.2.1 | 00000000000001277271 | DEFAULT |  |
| 79 | 2.4.1.9 | 보험료반송 | 5d | 2008-08-25 A | 2008-08-29 A |  | 100% | 2008-08-25 | 2008-08-29 | 5d | start no earlier than 2008-08-25 | All Working Day Calendar | 현행업무분석 | 48648F0A0F9201F8E100800046140A10 | 07060716O410168 | P02-1 1.2.2.1 | 00000000000001277271 | DEFAULT |  |
| 80 | 2.4.1.10 | 특별입금 | 5d | 2008-08-25 A | 2008-08-29 A |  | 100% | 2008-08-25 | 2008-08-29 | 5d | start no earlier than 2008-08-25 | All Working Day Calendar | 현행업무분석 | 48648F0A0F9201F8E100800046140A10 | 07060716O410168 | P02-1 1.2.2.1 | 00000000000001277271 | DEFAULT |  |
| 81 | 2.4.1.11 | 영수증관리 | 5d | 2008-08-25 A | 2008-08-29 A |  | 100% | 2008-08-25 | 2008-08-29 | 5d | start no earlier than 2008-08-25 | All Working Day Calendar | 현행업무분석 | 48648F0A0F9201F8E100800046140A10 | 07060716O410168 | P02-1 1.2.2.1 | 00000000000001277271 | DEFAULT |  |
| 82 | 2.4.1.12 | 마감/통계 | 5d | 2008-08-25 A | 2008-08-29 A |  | 100% | 2008-08-25 | 2008-08-29 | 5d | start no earlier than 2008-08-25 | All Working Day Calendar | 현행업무분석 | 48648F0A0F9201F8E100800046140A10 | 07060716O410168 | P02-1 1.2.2.1 | 00000000000001277271 | DEFAULT |  |

| ID | WBS | Task | Duration | Start | Finish | Predecessors | Complete | Baseline start | Baseline finish | Baseline duration | Constraint | Calendar | Text30 | Text20 | Text22 | Text25 | Text26 | Text27 | Text28 |
| --- | --- | --- | --- | --- | --- | --- | --- | --- | --- | --- | --- | --- | --- | --- | --- | --- | --- | --- | --- |
| 83 | 2.4.2 | **매핑결과 및 GAP 대응방안 수립** | 14d | 2008-09-01 A | 2008-09-19 A | 70 | 100% | 2008-09-01 | 2008-09-19 | 14d |  |  | 현업요구사항정의서(매핑결과 및 GAP대응방안) |  |  |  |  |  |  |
| 84 | 2.4.2.1 | 간이/방문 | 5d | 2008-09-01 A | 2008-09-05 A |  | 100% | 2008-09-01 | 2008-09-05 | 5d | start no earlier than 2008-07-21 | All Working Day Calendar |  | 현행업무분석 | 48648F0A0F9201F8E100800046140A10 | 07060716O410168 | P02-1 1.2.2.1 | 00000000000001277271 | DEFAULT |
| 85 | 2.4.2.2 | 카드이체 | 5d | 2008-09-01 A | 2008-09-05 A |  | 100% | 2008-09-01 | 2008-09-05 | 5d |  |  |  |  |  |  |  |  |  |
| 86 | 2.4.2.3 | 자동이체 | 5d | 2008-09-01 A | 2008-09-05 A |  | 100% | 2008-09-01 | 2008-09-05 | 5d |  |  |  |  |  |  |  |  |  |
| 87 | 2.4.2.4 | 즉시이체 | 5d | 2008-09-08 A | 2008-09-12 A |  | 100% | 2008-09-08 | 2008-09-12 | 5d | start no earlier than 2008-09-08 |  |  |  |  |  |  |  |  |
| 88 | 2.4.2.5 | 가상계좌 | 5d | 2008-09-08 A | 2008-09-12 A |  | 100% | 2008-09-08 | 2008-09-12 | 5d | start no earlier than 2008-09-08 |  |  |  |  |  |  |  |  |
| 89 | 2.4.2.6 | 단체입금 | 5d | 2008-09-01 A | 2008-09-05 A |  | 100% | 2008-09-01 | 2008-09-05 | 5d | start no earlier than 2008-08-25 |  |  |  |  |  |  |  |  |
| 90 | 2.4.2.7 | 자동대출 | 5d | 2008-09-01 A | 2008-09-05 A |  | 100% | 2008-09-01 | 2008-09-05 | 5d | start no earlier than 2008-08-25 | All Working Day Calendar |  | 현행업무분석 | 48648F0A0F9201F8E100800046140A10 | 07060716O410168 | P02-1 1.2.2.1 | 00000000000001277271 | DEFAULT |
| 91 | 2.4.2.8 | 지로입금 | 5d | 2008-09-01 A | 2008-09-05 A |  | 100% | 2008-09-01 | 2008-09-05 | 5d | start no earlier than 2008-08-25 | All Working Day Calendar |  | 현행업무분석 | 48648F0A0F9201F8E100800046140A10 | 07060716O410168 | P02-1 1.2.2.1 | 00000000000001277271 | DEFAULT |
| 92 | 2.4.2.9 | 보험료반송 | 5d | 2008-09-08 A | 2008-09-12 A |  | 100% | 2008-09-08 | 2008-09-12 | 5d | start no earlier than 2008-09-08 | All Working Day Calendar |  | 현행업무분석 | 48648F0A0F9201F8E100800046140A10 | 07060716O410168 | P02-1 1.2.2.1 | 00000000000001277271 | DEFAULT |
| 93 | 2.4.2.10 | 특별입금 | 4d | 2008-09-16 A | 2008-09-19 A |  | 100% | 2008-09-16 | 2008-09-19 | 4d | start no earlier than 2008-09-16 | All Working Day Calendar |  | 현행업무분석 | 48648F0A0F9201F8E100800046140A10 | 07060716O410168 | P02-1 1.2.2.1 | 00000000000001277271 | DEFAULT |
| 94 | 2.4.2.11 | 영수증관리 | 4d | 2008-09-16 A | 2008-09-19 A |  | 100% | 2008-09-16 | 2008-09-19 | 4d | start no earlier than 2008-09-16 | All Working Day Calendar |  | 현행업무분석 | 48648F0A0F9201F8E100800046140A10 | 07060716O410168 | P02-1 1.2.2.1 | 00000000000001277271 | DEFAULT |
| 95 | 2.4.2.12 | 마감/통계 | 4d | 2008-09-16 A | 2008-09-19 A |  | 100% | 2008-09-16 | 2008-09-19 | 4d | start no earlier than 2008-09-16 | All Working Day Calendar |  | 현행업무분석 | 48648F0A0F9201F8E100800046140A10 | 07060716O410168 | P02-1 1.2.2.1 | 00000000000001277271 | DEFAULT |
| 96 | 2.5 | **단계완료** | 5d | 2008-09-22 A | 2008-09-26 A |  | 100% | 2008-09-22 | 2008-09-26 | 5d |  | All Working Day Calendar |  | 단계완료 | 48648FB40F9201F8E100800046140A10 | 07060716O410080 | P02-1 1.6.8 | 00000000000001277356 | DEFAULT |
| 97 | 2.5.1 | 요구사항추적표 작성 | 1d | 2008-09-22 A | 2008-09-22 A | 83 | 100% | 2008-09-22 | 2008-09-22 | 1d | start no earlier than 2008-09-22 | All Working Day Calendar | 요구사항추적표 | 단계결과 정리 | 48648FB60F9201F8E100800046140A10 | 07060716O410080 | P02-1 1.6.8.1 | 00000000000001277357 | DEFAULT |
| 98 | 2.5.2 | 분석단계산출물 정리(Inspection) | 1d | 2008-09-23 A | 2008-09-23 A | 97 | 100% | 2008-09-23 | 2008-09-23 | 1d |  | All Working Day Calendar | 인스펙션결과서 | 단계결과 정리 | 48648FB60F9201F8E100800046140A10 | 07060716O410080 | P02-1 1.6.8.1 | 00000000000001277357 | DEFAULT |
| 99 | 2.5.3 | 고객검토 실시 | 2d | 2008-09-24 A | 2008-09-25 A | 98 | 100% | 2008-09-24 | 2008-09-25 | 2d |  | All Working Day Calendar | 고객검토결과서 | 고객검토 실시 | 48648FB80F9201F8E100800046140A10 | 07060716O410080 | P02-1 1.6.8.2 | 00000000000001277358 | DEFAULT |
| 100 | 2.5.4 | 고객승인 획득 | 1d | 2008-09-26 A | 2008-09-26 A | 99 | 100% | 2008-09-26 | 2008-09-26 | 1d |  | All Working Day Calendar | 고객인수확인서(PAD) | 고객승인 획득 | 48648FBA0F9201F8E100800046140A10 | 07060716O410080 | P02-1 1.6.8.3 | 00000000000001277359 | DEFAULT |
| 101 | 3 | **Design** | 44d | 2008-09-29 A | 2008-11-28 A |  | 100% | 2008-09-29 | 2008-11-28 | 44d |  | All Working Day Calendar |  | 설계 | 48648F320F9201F8E100800046140A10 | 07060716O410173 | P02-1 1.3 | 00000000000001277291 | DEFAULT |
| 102 | 3.1 | **추가개발 설계** | 39d | 2008-09-29 A | 2008-11-21 A |  | 100% | 2008-09-29 | 2008-11-21 | 39d |  | All Working Day Calendar |  | 추가개발설계 | 48648F340F9201F8E100800046140A10 | 07060716O410174 | P02-1 1.3.1 | 00000000000001277292 | DEFAULT |
| 103 | 3.1.1 | **데이터코드 설계** | 8d | 2008-10-06 A | 2008-10-15 A |  | 100% | 2008-10-06 | 2008-10-15 | 8d |  | All Working Day Calendar |  | 데이터코드설계 | 48648F360F9201F8E100800046140A10 | 07060716O410174 | P02-1 1.3.1.1 | 00000000000001277293 | DEFAULT |
| 104 | 3.1.1.1 | 데이터코드정의서 작성 | 8d | 2008-10-06 A | 2008-10-15 A | 100 | 100% | 2008-10-06 | 2008-10-15 | 8d | finish no earlier than 2008-10-15 |  | 데이터코드정의서 |  |  |  |  |  |  |
| 105 | 3.1.2 | **데이터베이스 설계** | 7d | 2008-10-07 A | 2008-10-15 A |  | 100% | 2008-10-07 | 2008-10-15 | 7d |  | All Working Day Calendar |  | 추가개발데이터베이스설계 | 48648F380F9201F8E100800046140A10 | 07060716O410174 | P02-1 1.3.1.2 | 00000000000001277294 | DEFAULT |
| 106 | 3.1.2.1 | ERD 작성 | 2d | 2008-10-14 A | 2008-10-15 A |  | 100% | 2008-10-14 | 2008-10-15 | 2d | start no earlier than 2008-10-14 |  | ERD(물리) |  |  |  |  |  |  |
| 107 | 3.1.2.2 | 테이블목록 작성 | 2d | 2008-10-14 A | 2008-10-15 A |  | 100% | 2008-10-14 | 2008-10-15 | 2d | start no earlier than 2008-10-14 |  | 테이블목록 |  |  |  |  |  |  |
| 108 | 3.1.2.3 | 테이블레이아웃 작성 | 7d | 2008-10-07 A | 2008-10-15 A |  | 100% | 2008-10-07 | 2008-10-15 | 7d | start no earlier than 2008-10-07 |  | 테이블정의서 |  |  |  |  |  |  |

| ID | WBS | Task | Duration | Start | Finish | Predecessors | Complete | Baseline start | Baseline finish | Baseline duration | Constraint | Calendar | Text30 | Text20 | Text22 | Text25 | Text26 | Text27 | Text28 |
| --- | --- | --- | --- | --- | --- | --- | --- | --- | --- | --- | --- | --- | --- | --- | --- | --- | --- | --- | --- |
| 109 | 3.1.3 | **UI 설계** | 29d | 2008-09-29 A | 2008-11-07 A |  | 100% | 2008-09-29 | 2008-11-07 | 29d |  |  |  |  |  |  |  |  |  |
| 110 | 3.1.3.1 | **화면레이아웃 작성** | 19d | 2008-09-29 A | 2008-10-24 A | 100 | 100% | 2008-09-29 | 2008-10-24 | 19d |  |  | 페이지레이아웃,페이지목록 |  |  |  |  |  |  |
| 111 | 3.1.3.1.1 | 간이/방문 | 9d | 2008-09-29 A | 2008-10-10 A |  | 100% | 2008-09-29 | 2008-10-10 | 9d | start no earlier than 2008-07-21 | All Working Day Calendar |  | 현행업무분석 | 48648F0A0F9201F8E100800046140A10 | 07060716O410168 | P02-1 1.2.2.1 | 00000000000001277271 | DEFAULT |
| 112 | 3.1.3.1.2 | 카드이체 | 9d | 2008-09-29 A | 2008-10-10 A |  | 100% | 2008-09-29 | 2008-10-10 | 9d |  |  |  |  |  |  |  |  |  |
| 113 | 3.1.3.1.3 | 자동이체 | 5d | 2008-10-13 A | 2008-10-17 A |  | 100% | 2008-10-13 | 2008-10-17 | 5d | finish no earlier than 2008-10-17 |  |  |  |  |  |  |  |  |
| 114 | 3.1.3.1.4 | 즉시이체 | 10d | 2008-10-06 A | 2008-10-17 A |  | 100% | 2008-10-06 | 2008-10-17 | 10d | finish no earlier than 2008-10-17 |  |  |  |  |  |  |  |  |
| 115 | 3.1.3.1.5 | 가상계좌 | 10d | 2008-10-06 A | 2008-10-17 A |  | 100% | 2008-10-06 | 2008-10-17 | 10d | finish no earlier than 2008-10-17 |  |  |  |  |  |  |  |  |
| 116 | 3.1.3.1.6 | 단체입금 | 9d | 2008-09-29 A | 2008-10-10 A |  | 100% | 2008-09-29 | 2008-10-10 | 9d | start no earlier than 2008-09-22 |  |  |  |  |  |  |  |  |
| 117 | 3.1.3.1.7 | 자동대출 | 5d | 2008-10-13 A | 2008-10-17 A |  | 100% | 2008-10-13 | 2008-10-17 | 5d | start no earlier than 2008-10-13 | All Working Day Calendar |  | 현행업무분석 | 48648F0A0F9201F8E100800046140A10 | 07060716O410168 | P02-1 1.2.2.1 | 00000000000001277271 | DEFAULT |
| 118 | 3.1.3.1.8 | 지로입금 | 9d | 2008-09-29 A | 2008-10-10 A |  | 100% | 2008-09-29 | 2008-10-10 | 9d | start no earlier than 2008-09-29 | All Working Day Calendar |  | 현행업무분석 | 48648F0A0F9201F8E100800046140A10 | 07060716O410168 | P02-1 1.2.2.1 | 00000000000001277271 | DEFAULT |
| 119 | 3.1.3.1.9 | 보험료반송 | 5d | 2008-10-20 A | 2008-10-24 A |  | 100% | 2008-10-20 | 2008-10-24 | 5d | finish no earlier than 2008-10-24 | All Working Day Calendar |  | 현행업무분석 | 48648F0A0F9201F8E100800046140A10 | 07060716O410168 | P02-1 1.2.2.1 | 00000000000001277271 | DEFAULT |
| 120 | 3.1.3.1.10 | 특별입금 | 5d | 2008-10-20 A | 2008-10-24 A |  | 100% | 2008-10-20 | 2008-10-24 | 5d | finish no earlier than 2008-10-24 | All Working Day Calendar |  | 현행업무분석 | 48648F0A0F9201F8E100800046140A10 | 07060716O410168 | P02-1 1.2.2.1 | 00000000000001277271 | DEFAULT |
| 121 | 3.1.3.1.11 | 영수증관리 | 5d | 2008-10-20 A | 2008-10-24 A |  | 100% | 2008-10-20 | 2008-10-24 | 5d | finish no earlier than 2008-10-24 | All Working Day Calendar |  | 현행업무분석 | 48648F0A0F9201F8E100800046140A10 | 07060716O410168 | P02-1 1.2.2.1 | 00000000000001277271 | DEFAULT |
| 122 | 3.1.3.1.12 | 마감/통계 | 5d | 2008-10-20 A | 2008-10-24 A |  | 100% | 2008-10-20 | 2008-10-24 | 5d | finish no earlier than 2008-10-24 | All Working Day Calendar |  | 현행업무분석 | 48648F0A0F9201F8E100800046140A10 | 07060716O410168 | P02-1 1.2.2.1 | 00000000000001277271 | DEFAULT |
| 123 | 3.1.3.2 | **출력레이아웃 작성** | 10d | 2008-10-27 A | 2008-11-07 A | 110 | 100% | 2008-10-27 | 2008-11-07 | 10d |  |  | 출력레이아웃,출력목록 |  |  |  |  |  |  |
| 124 | 3.1.3.2.1 | 보험료영수증(개인/단체) 작성 | 10d | 2008-10-27 A | 2008-11-07 A |  | 100% | 2008-10-27 | 2008-11-07 | 10d |  |  |  |  |  |  |  |  |  |
| 125 | 3.1.3.2.2 | 제신청서양식 작성 | 10d | 2008-10-27 A | 2008-11-07 A |  | 100% | 2008-10-27 | 2008-11-07 | 10d |  |  |  |  |  |  |  |  |  |
| 126 | 3.1.3.2.3 | 안내장 작성 | 10d | 2008-10-27 A | 2008-11-07 A |  | 100% | 2008-10-27 | 2008-11-07 | 10d | start no earlier than 2008-10-27 |  |  |  |  |  |  |  |  |
| 127 | 3.1.4 | **온라인 프로그램 설계** | 17d | 2008-10-16 A | 2008-11-07 A |  | 100% | 2008-10-16 | 2008-11-07 | 17d |  | All Working Day Calendar |  | 추가개발프로그램설계 | 48648F3A0F9201F8E100800046140A10 | 07060716O410174 | P02-1 1.3.1.3 | 00000000000001277295 | DEFAULT |
| 128 | 3.1.4.1 | 온라인프로그램목록 작성 | 5d | 2008-10-16 A | 2008-10-22 A | 105 | 100% | 2008-10-16 | 2008-10-22 | 5d |  |  | 프로그램목록 |  |  |  |  |  |  |
| 129 | 3.1.4.2 | **온라인프로그램사양서 작성** | 17d | 2008-10-16 A | 2008-11-07 A | 105 | 100% | 2008-10-16 | 2008-11-07 | 17d |  |  | 프로그램사양서 |  |  |  |  |  |  |
| 130 | 3.1.4.2.1 | 간이/방문 | 5d | 2008-10-16 A | 2008-10-22 A |  | 100% | 2008-10-16 | 2008-10-22 | 5d | start no earlier than 2008-07-21 | All Working Day Calendar |  | 현행업무분석 | 48648F0A0F9201F8E100800046140A10 | 07060716O410168 | P02-1 1.2.2.1 | 00000000000001277271 | DEFAULT |
| 131 | 3.1.4.2.2 | 카드이체 | 5d | 2008-10-16 A | 2008-10-22 A |  | 100% | 2008-10-16 | 2008-10-22 | 5d |  |  |  |  |  |  |  |  |  |
| 132 | 3.1.4.2.3 | 자동이체 | 5d | 2008-10-20 A | 2008-10-24 A |  | 100% | 2008-10-20 | 2008-10-24 | 5d | start no earlier than 2008-10-20 |  |  |  |  |  |  |  |  |
| 133 | 3.1.4.2.4 | 즉시이체 | 5d | 2008-10-20 A | 2008-10-24 A |  | 100% | 2008-10-20 | 2008-10-24 | 5d | start no earlier than 2008-10-20 |  |  |  |  |  |  |  |  |
| 134 | 3.1.4.2.5 | 가상계좌 | 5d | 2008-10-16 A | 2008-10-22 A |  | 100% | 2008-10-16 | 2008-10-22 | 5d | start no earlier than 2008-10-06 |  |  |  |  |  |  |  |  |
| 135 | 3.1.4.2.6 | 단체입금 | 5d | 2008-10-16 A | 2008-10-22 A |  | 100% | 2008-10-16 | 2008-10-22 | 5d | start no earlier than 2008-10-06 |  |  |  |  |  |  |  |  |
| 136 | 3.1.4.2.7 | 자동대출 | 5d | 2008-10-27 A | 2008-10-31 A |  | 100% | 2008-10-27 | 2008-10-31 | 5d | start no earlier than 2008-10-27 | All Working Day Calendar |  | 현행업무분석 | 48648F0A0F9201F8E100800046140A10 | 07060716O410168 | P02-1 1.2.2.1 | 00000000000001277271 | DEFAULT |
| 137 | 3.1.4.2.8 | 지로입금 | 5d | 2008-10-16 A | 2008-10-22 A |  | 100% | 2008-10-16 | 2008-10-22 | 5d | start no earlier than 2008-10-06 | All Working Day Calendar |  | 현행업무분석 | 48648F0A0F9201F8E100800046140A10 | 07060716O410168 | P02-1 1.2.2.1 | 00000000000001277271 | DEFAULT |
| 138 | 3.1.4.2.9 | 보험료반송 | 5d | 2008-10-27 A | 2008-10-31 A |  | 100% | 2008-10-27 | 2008-10-31 | 5d | start no earlier than 2008-10-27 | All Working Day Calendar |  | 현행업무분석 | 48648F0A0F9201F8E100800046140A10 | 07060716O410168 | P02-1 1.2.2.1 | 00000000000001277271 | DEFAULT |
| 139 | 3.1.4.2.10 | 특별입금 | 5d | 2008-10-27 A | 2008-10-31 A |  | 100% | 2008-10-27 | 2008-10-31 | 5d | start no earlier than 2008-10-27 | All Working Day Calendar |  | 현행업무분석 | 48648F0A0F9201F8E100800046140A10 | 07060716O410168 | P02-1 1.2.2.1 | 00000000000001277271 | DEFAULT |
| 140 | 3.1.4.2.11 | 영수증관리 | 5d | 2008-11-03 A | 2008-11-07 A |  | 100% | 2008-11-03 | 2008-11-07 | 5d | start no earlier than 2008-11-03 | All Working Day Calendar |  | 현행업무분석 | 48648F0A0F9201F8E100800046140A10 | 07060716O410168 | P02-1 1.2.2.1 | 00000000000001277271 | DEFAULT |
| 141 | 3.1.4.2.12 | 마감/통계 | 5d | 2008-11-03 A | 2008-11-07 A |  | 100% | 2008-11-03 | 2008-11-07 | 5d | start no earlier than 2008-11-03 | All Working Day Calendar |  | 현행업무분석 | 48648F0A0F9201F8E100800046140A10 | 07060716O410168 | P02-1 1.2.2.1 | 00000000000001277271 | DEFAULT |

| ID | WBS | Task | Duration | Start | Finish | Predecessors | Complete | Baseline start | Baseline finish | Baseline duration | Constraint | Calendar | Text30 | Text20 | Text22 | Text25 | Text26 | Text27 | Text28 |
| --- | --- | --- | --- | --- | --- | --- | --- | --- | --- | --- | --- | --- | --- | --- | --- | --- | --- | --- | --- |
| 142 | 3.1.5 | **배치플로우 설계** | 20d | 2008-10-27 A | 2008-11-21 A |  | 100% | 2008-10-27 | 2008-11-21 | 20d |  |  |  |  |  |  |  |  |  |
| 143 | 3.1.5.1 | 배치플로우정의서 작성 | 5d | 2008-10-27 A | 2008-10-31 A |  | 100% | 2008-10-27 | 2008-10-31 | 5d | start no earlier than 2008-10-27 |  | 배치플로우정의서 |  |  |  |  |  |  |
| 144 | 3.1.5.2 | 배치프로그램목록 작성 | 3d | 2008-11-03 A | 2008-11-05 A |  | 100% | 2008-11-03 | 2008-11-05 | 3d | start no earlier than 2008-11-03 |  | 프로그램목록 |  |  |  |  |  |  |
| 145 | 3.1.5.3 | 배치프로그램사양서 작성 | 15d | 2008-11-03 A | 2008-11-21 A |  | 100% | 2008-11-03 | 2008-11-21 | 15d | start no earlier than 2008-11-03 |  | 프로그램사양서 |  |  |  |  |  |  |
| 146 | 3.1.6 | **메뉴구조정의** | 5d | 2008-11-10 A | 2008-11-14 A |  | 100% | 2008-11-10 | 2008-11-14 | 5d |  | All Working Day Calendar |  | 메뉴구조정의 | 48648F3E0F9201F8E100800046140A10 | 07060716O410174 | P02-1 1.3.1.5 | 00000000000001277297 | DEFAULT |
| 147 | 3.1.6.1 | 메뉴구조도작성 | 5d | 2008-11-10 A | 2008-11-14 A | 127 | 100% | 2008-11-10 | 2008-11-14 | 5d |  | All Working Day Calendar | 메뉴구조도 | 메뉴구조정의 | 48648F3E0F9201F8E100800046140A10 | 07060716O410174 | P02-1 1.3.1.5 | 00000000000001277297 | DEFAULT |
| 148 | 3.2 | **컨버젼 설계** | 36d | 2008-09-29 A | 2008-11-18 A |  | 100% | 2008-09-29 | 2008-11-18 | 36d |  | All Working Day Calendar |  | 컨버젼 설계 | 48648F400F9201F8E100800046140A10 | 07060716O410175 | P02-1 1.3.2 | 00000000000001277298 | DEFAULT |
| 149 | 3.2.1 | 테이블 매핑정의서 작성 지원 | 36d | 2008-09-29 A | 2008-11-18 A |  | 100% | 2008-09-29 | 2008-11-18 | 36d | start no earlier than 2008-09-29 | All Working Day Calendar |  | 컨버전프로그램설계 | 48648F440F9201F8E100800046140A10 | 07060716O410175 | P02-1 1.3.2.2 | 00000000000001277300 | DEFAULT |
| 150 | 3.2.2 | 데이터코드 매핑정의서 작성 지원 | 36d | 2008-09-29 A | 2008-11-18 A |  | 100% | 2008-09-29 | 2008-11-18 | 36d | start no earlier than 2008-09-29 | All Working Day Calendar |  | 컨버전프로그램설계 | 48648F440F9201F8E100800046140A10 | 07060716O410175 | P02-1 1.3.2.2 | 00000000000001277300 | DEFAULT |
| 151 | 3.3 | **타시스템 인터페이스 설계** | 5d | 2008-11-10 A | 2008-11-14 A |  | 100% | 2008-11-10 | 2008-11-14 | 5d |  | All Working Day Calendar |  | 타시스템인터페이스 요구사항정의 | 48648F180F9201F8E100800046140A10 | 07060716O410169 | P02-1 1.2.3.4 | 00000000000001277278 | DEFAULT |
| 152 | 3.3.1 | 인터페이스 목록(상세) 작성 | 5d | 2008-11-10 A | 2008-11-14 A |  | 100% | 2008-11-10 | 2008-11-14 | 5d | start no earlier than 2008-11-10 | All Working Day Calendar | 인터페이스목록 | 현행업무분석 | 48648F0A0F9201F8E100800046140A10 | 07060716O410168 | P02-1 1.2.2.1 | 00000000000001277271 | DEFAULT |
| 153 | 3.3.2 | **대내시스템 인터페이스 레이아웃 작성** | 5d | 2008-11-10 A | 2008-11-14 A |  | 100% | 2008-11-10 | 2008-11-14 | 5d |  | All Working Day Calendar | 인터페이스사양서 | 타시스템인터페이스 요구사항정의 | 48648F180F9201F8E100800046140A10 | 07060716O410169 | P02-1 1.2.3.4 | 00000000000001277278 | DEFAULT |
| 154 | 3.3.2.1 | 사이버창구/ARS | 5d | 2008-11-10 A | 2008-11-14 A |  | 100% | 2008-11-10 | 2008-11-14 | 5d | start no earlier than 2008-11-10 | All Working Day Calendar |  | 현행업무분석 | 48648F0A0F9201F8E100800046140A10 | 07060716O410168 | P02-1 1.2.2.1 | 00000000000001277271 | DEFAULT |
| 155 | 3.3.2.2 | TM시스템 | 5d | 2008-11-10 A | 2008-11-14 A |  | 100% | 2008-11-10 | 2008-11-14 | 5d | start no earlier than 2008-11-10 | All Working Day Calendar |  | 현행업무분석 | 48648F0A0F9201F8E100800046140A10 | 07060716O410168 | P02-1 1.2.2.1 | 00000000000001277271 | DEFAULT |
| 156 | 3.3.2.3 | 방카시스템 | 5d | 2008-11-10 A | 2008-11-14 A |  | 100% | 2008-11-10 | 2008-11-14 | 5d | start no earlier than 2008-11-10 | All Working Day Calendar |  | 현행업무분석 | 48648F0A0F9201F8E100800046140A10 | 07060716O410168 | P02-1 1.2.2.1 | 00000000000001277271 | DEFAULT |
| 157 | 3.3.2.4 | NFS시스템 | 5d | 2008-11-10 A | 2008-11-14 A |  | 100% | 2008-11-10 | 2008-11-14 | 5d | start no earlier than 2008-11-10 | All Working Day Calendar |  | 현행업무분석 | 48648F0A0F9201F8E100800046140A10 | 07060716O410168 | P02-1 1.2.2.1 | 00000000000001277271 | DEFAULT |
| 158 | 3.3.3 | **대외시스템 인터페이스 레이아웃 작성** | 5d | 2008-11-10 A | 2008-11-14 A |  | 100% | 2008-11-10 | 2008-11-14 | 5d |  | All Working Day Calendar | 인터페이스사양서 | 타시스템인터페이스 요구사항정의 | 48648F180F9201F8E100800046140A10 | 07060716O410169 | P02-1 1.2.3.4 | 00000000000001277278 | DEFAULT |
| 159 | 3.3.3.1 | 은행 리얼타임 이체 | 5d | 2008-11-10 A | 2008-11-14 A |  | 100% | 2008-11-10 | 2008-11-14 | 5d | start no earlier than 2008-11-10 | All Working Day Calendar |  | 현행업무분석 | 48648F0A0F9201F8E100800046140A10 | 07060716O410168 | P02-1 1.2.2.1 | 00000000000001277271 | DEFAULT |
| 160 | 3.3.3.2 | 카드사 실시간 승인 | 5d | 2008-11-10 A | 2008-11-14 A |  | 100% | 2008-11-10 | 2008-11-14 | 5d | start no earlier than 2008-11-10 | All Working Day Calendar |  | 현행업무분석 | 48648F0A0F9201F8E100800046140A10 | 07060716O410168 | P02-1 1.2.2.1 | 00000000000001277271 | DEFAULT |
| 161 | 3.3.3.3 | 세금우대정보 수신 | 5d | 2008-11-10 A | 2008-11-14 A |  | 100% | 2008-11-10 | 2008-11-14 | 5d | start no earlier than 2008-11-10 | All Working Day Calendar |  | 현행업무분석 | 48648F0A0F9201F8E100800046140A10 | 07060716O410168 | P02-1 1.2.2.1 | 00000000000001277271 | DEFAULT |
| 162 | 3.3.3.4 | 자동이체 송수신 | 5d | 2008-11-10 A | 2008-11-14 A |  | 100% | 2008-11-10 | 2008-11-14 | 5d | start no earlier than 2008-11-10 | All Working Day Calendar |  | 현행업무분석 | 48648F0A0F9201F8E100800046140A10 | 07060716O410168 | P02-1 1.2.2.1 | 00000000000001277271 | DEFAULT |
| 163 | 3.3.3.5 | 가상계좌 이체 | 5d | 2008-11-10 A | 2008-11-14 A |  | 100% | 2008-11-10 | 2008-11-14 | 5d | start no earlier than 2008-11-10 | All Working Day Calendar |  | 현행업무분석 | 48648F0A0F9201F8E100800046140A10 | 07060716O410168 | P02-1 1.2.2.1 | 00000000000001277271 | DEFAULT |
| 164 | 3.4 | **단계완료** | 10d | 2008-11-17 A | 2008-11-28 A |  | 100% | 2008-11-17 | 2008-11-28 | 10d |  | All Working Day Calendar |  | 단계완료 | 48648FB40F9201F8E100800046140A10 | 07060716O410080 | P02-1 1.6.8 | 00000000000001277356 | DEFAULT |
| 165 | 3.4.1 | 요구사항추적표 작성 | 2d | 2008-11-17 A | 2008-11-18 A | 127 | 100% | 2008-11-17 | 2008-11-18 | 2d | start no earlier than 2008-11-17 | All Working Day Calendar | 요구사항추적표 | 단계결과 정리 | 48648FB60F9201F8E100800046140A10 | 07060716O410080 | P02-1 1.6.8.1 | 00000000000001277357 | DEFAULT |
| 166 | 3.4.2 | 설계단계산출물 정리(Inspection) | 3d | 2008-11-19 A | 2008-11-21 A | 165 | 100% | 2008-11-19 | 2008-11-21 | 3d |  | All Working Day Calendar | 인스펙션결과서 | 단계결과 정리 | 48648FB60F9201F8E100800046140A10 | 07060716O410080 | P02-1 1.6.8.1 | 00000000000001277357 | DEFAULT |
| 167 | 3.4.3 | 고객검토 실시 | 3d | 2008-11-24 A | 2008-11-26 A | 166 | 100% | 2008-11-24 | 2008-11-26 | 3d |  | All Working Day Calendar | 고객검토결과서 | 고객검토 실시 | 48648FB80F9201F8E100800046140A10 | 07060716O410080 | P02-1 1.6.8.2 | 00000000000001277358 | DEFAULT |
| 168 | 3.4.4 | 고객승인 획득 | 2d | 2008-11-27 A | 2008-11-28 A | 167 | 100% | 2008-11-27 | 2008-11-28 | 2d |  | All Working Day Calendar | 고객인수확인서(PAD) | 고객승인 획득 | 48648FBA0F9201F8E100800046140A10 | 07060716O410080 | P02-1 1.6.8.3 | 00000000000001277359 | DEFAULT |

| ID | WBS | Task | Duration | Start | Finish | Predecessors | Complete | Remaining | Baseline start | Baseline finish | Baseline duration | Total slack | Free slack | Constraint | Calendar | Text20 | Text22 | Text25 | Text26 | Text27 | Text28 | Text30 |
| --- | --- | --- | --- | --- | --- | --- | --- | --- | --- | --- | --- | --- | --- | --- | --- | --- | --- | --- | --- | --- | --- | --- |
| 169 | 4 | **Build/Unit Test** | 71d | 2008-12-01 A | 2009-03-13 |  | 10% | 63.6d | 2008-12-01 | 2009-03-13 | 71d | 85d |  |  | All Working Day Calendar | 개발 | 48648F4E0F9201F8E100800046140A10 | 07060716O410177 | P02-1 1.4 | 00000000000001277305 | DEFAULT |  |
| 170 | 4.1 | **추가개발/패키지 커스터마이징 및 Unit Test** | 61d | 2008-12-01 A | 2009-02-27 |  | 16% | 51d | 2008-12-01 | 2009-02-27 | 61d | 55d | 0d |  | All Working Day Calendar | 추가개발 프로그램코딩 | 48648F540F9201F8E100800046140A10 | 07060716O410178 | P02-1 1.4.1 | 00000000000001277308 | DEFAULT | 소스코드 및 단위테스트결과 |
| 171 | 4.1.1 | 개발 1주차(개발착수준비) | 5d | 2008-12-01 A | 2008-12-05 A |  | 100% |  | 2008-12-01 | 2008-12-05 | 5d |  |  | start no earlier than 2008-12-01 | All Working Day Calendar | 추가개발 프로그램코딩 | 48648F0A0F9201F8E100800046140A10 | 07060716O410168 | P02-1 1.4.1 | 00000000000001277271 | DEFAULT | 소스코드 및 단위테스트결과 |
| 172 | 4.1.2 | 개발 2주차 | 5d | 2008-12-08 A | 2008-12-12 A | 171 | 100% |  | 2008-12-08 | 2008-12-12 | 5d |  |  | start no earlier than 2008-12-01 | All Working Day Calendar | 추가개발 프로그램코딩 | 48648F0A0F9201F8E100800046140A10 | 07060716O410168 | P02-1 1.4.1 | 00000000000001277271 | DEFAULT | 소스코드 및 단위테스트결과 |
| 173 | 4.1.3 | 개발 3주차 | 5d | 2008-12-15 | 2008-12-19 | 172 |  |  | 2008-12-15 | 2008-12-19 | 5d | 55d | 0d | start no earlier than 2008-07-21 | All Working Day Calendar | 추가개발 프로그램코딩 | 48648F0A0F9201F8E100800046140A10 | 07060716O410168 | P02-1 1.4.1 | 00000000000001277271 | DEFAULT | 소스코드 및 단위테스트결과 |
| 174 | 4.1.4 | 개발 4주차 | 4d | 2008-12-22 | 2008-12-26 | 173 |  |  | 2008-12-22 | 2008-12-26 | 4d | 55d | 0d | start no earlier than 2008-11-17 | All Working Day Calendar | 추가개발 프로그램코딩 | 48648F0A0F9201F8E100800046140A10 | 07060716O410168 | P02-1 1.4.1 | 00000000000001277271 | DEFAULT | 소스코드 및 단위테스트결과 |
| 175 | 4.1.5 | 개발 5주차 | 4d | 2008-12-29 | 2009-01-02 | 174 |  |  | 2008-12-29 | 2009-01-02 | 4d | 55d | 0d | start no earlier than 2008-12-01 | All Working Day Calendar | 추가개발 프로그램코딩 | 48648F0A0F9201F8E100800046140A10 | 07060716O410168 | P02-1 1.4.1 | 00000000000001277271 | DEFAULT | 소스코드 및 단위테스트결과 |
| 176 | 4.1.6 | 개발 6주차 | 5d | 2009-01-05 | 2009-01-09 | 175 |  |  | 2009-01-05 | 2009-01-09 | 5d | 55d | 0d | start no earlier than 2008-12-01 | All Working Day Calendar | 추가개발 프로그램코딩 | 48648F0A0F9201F8E100800046140A10 | 07060716O410168 | P02-1 1.4.1 | 00000000000001277271 | DEFAULT | 소스코드 및 단위테스트결과 |
| 177 | 4.1.7 | 개발 7주차 | 5d | 2009-01-12 | 2009-01-16 | 176 |  |  | 2009-01-12 | 2009-01-16 | 5d | 55d | 0d | start no earlier than 2008-12-01 | All Working Day Calendar | 추가개발 프로그램코딩 | 48648F0A0F9201F8E100800046140A10 | 07060716O410168 | P02-1 1.4.1 | 00000000000001277271 | DEFAULT | 소스코드 및 단위테스트결과 |
| 178 | 4.1.8 | 개발 8주차 | 5d | 2009-01-19 | 2009-01-23 | 177 |  |  | 2009-01-19 | 2009-01-23 | 5d | 55d | 0d | start no earlier than 2008-07-21 | All Working Day Calendar | 추가개발 프로그램코딩 | 48648F0A0F9201F8E100800046140A10 | 07060716O410168 | P02-1 1.4.1 | 00000000000001277271 | DEFAULT | 소스코드 및 단위테스트결과 |
| 179 | 4.1.9 | 개발 9주차 | 3d | 2009-01-28 | 2009-01-30 | 178 |  |  | 2009-01-28 | 2009-01-30 | 3d | 55d | 0d | start no earlier than 2008-11-17 | All Working Day Calendar | 추가개발 프로그램코딩 | 48648F0A0F9201F8E100800046140A10 | 07060716O410168 | P02-1 1.4.1 | 00000000000001277271 | DEFAULT | 소스코드 및 단위테스트결과 |
| 180 | 4.1.10 | 개발 10주차 | 5d | 2009-02-02 | 2009-02-06 | 179 |  |  | 2009-02-02 | 2009-02-06 | 5d | 55d | 0d | start no earlier than 2008-12-01 | All Working Day Calendar | 추가개발 프로그램코딩 | 48648F0A0F9201F8E100800046140A10 | 07060716O410168 | P02-1 1.4.1 | 00000000000001277271 | DEFAULT | 소스코드 및 단위테스트결과 |
| 181 | 4.1.11 | 개발 11주차 | 5d | 2009-02-09 | 2009-02-13 | 180 |  |  | 2009-02-09 | 2009-02-13 | 5d | 55d | 0d | start no earlier than 2008-12-01 | All Working Day Calendar | 추가개발 프로그램코딩 | 48648F0A0F9201F8E100800046140A10 | 07060716O410168 | P02-1 1.4.1 | 00000000000001277271 | DEFAULT | 소스코드 및 단위테스트결과 |
| 182 | 4.1.12 | 개발 12주차 | 5d | 2009-02-16 | 2009-02-20 | 181 |  |  | 2009-02-16 | 2009-02-20 | 5d | 55d | 0d | start no earlier than 2008-12-01 | All Working Day Calendar | 추가개발 프로그램코딩 | 48648F0A0F9201F8E100800046140A10 | 07060716O410168 | P02-1 1.4.1 | 00000000000001277271 | DEFAULT | 소스코드 및 단위테스트결과 |
| 183 | 4.1.13 | 개발 13주차 | 5d | 2009-02-23 | 2009-02-27 | 182 |  |  | 2009-02-23 | 2009-02-27 | 5d | 55d |  | start no earlier than 2008-12-01 | All Working Day Calendar | 추가개발 프로그램코딩 | 48648F0A0F9201F8E100800046140A10 | 07060716O410168 | P02-1 1.4.1 | 00000000000001277271 | DEFAULT | 소스코드 및 단위테스트결과 |
| 184 | 4.2 | **테스트시나리오 작성** | 61d | 2008-12-01 A | 2009-02-27 |  | 8% | 56d | 2008-12-01 | 2009-02-27 | 61d | 95d |  |  | All Working Day Calendar | 추가개발 프로그램코딩 | 48648F540F9201F8E100800046140A10 | 07060716O410178 | P02-1 1.4.1 | 00000000000001277308 | DEFAULT | 테스트시나리오 |
| 185 | 4.2.1 | 테스트착수준비 | 5d | 2008-12-01 A | 2008-12-05 A |  | 100% |  | 2008-12-01 | 2008-12-05 | 5d |  |  | start no earlier than 2008-12-01 |  |  |  |  |  |  |  |  |
| 186 | 4.2.2 | 테스트목록 및 일정 확정 | 28d | 2008-12-08 | 2009-01-16 | 185 |  |  | 2008-12-08 | 2009-01-16 | 28d | 95d | 0d |  | All Working Day Calendar | 추가개발 프로그램코딩 | 48648F0A0F9201F8E100800046140A10 | 07060716O410168 | P02-1 1.4.1 | 00000000000001277271 | DEFAULT | 테스트목록 |
| 187 | 4.2.3 | UAT시나리오 작성 - 비즈니스모듈1 | 5d | 2009-01-19 | 2009-01-23 | 186 |  |  | 2009-01-19 | 2009-01-23 | 5d | 95d | 0d | start no earlier than 2008-12-01 | All Working Day Calendar | 추가개발 프로그램코딩 | 48648F0A0F9201F8E100800046140A10 | 07060716O410168 | P02-1 1.4.1 | 00000000000001277271 | DEFAULT | UAT시나리오(E2E테스트시나리오) |
| 188 | 4.2.4 | UAT시나리오 작성 - 비즈니스모듈2 | 3d | 2009-01-28 | 2009-01-30 | 187 |  |  | 2009-01-28 | 2009-01-30 | 3d | 95d | 0d | start no earlier than 2008-07-21 | All Working Day Calendar | 추가개발 프로그램코딩 | 48648F0A0F9201F8E100800046140A10 | 07060716O410168 | P02-1 1.4.1 | 00000000000001277271 | DEFAULT | UAT시나리오(E2E테스트시나리오) |
| 189 | 4.2.5 | UAT시나리오 작성 - 비즈니스모듈3 | 5d | 2009-02-02 | 2009-02-06 | 188 |  |  | 2009-02-02 | 2009-02-06 | 5d | 95d | 0d | start no earlier than 2008-11-17 | All Working Day Calendar | 추가개발 프로그램코딩 | 48648F0A0F9201F8E100800046140A10 | 07060716O410168 | P02-1 1.4.1 | 00000000000001277271 | DEFAULT | UAT시나리오(E2E테스트시나리오) |
| 190 | 4.2.6 | UAT시나리오 작성 - 비즈니스모듈4 | 5d | 2009-02-09 | 2009-02-13 | 189 |  |  | 2009-02-09 | 2009-02-13 | 5d | 95d | 0d | start no earlier than 2008-12-01 | All Working Day Calendar | 추가개발 프로그램코딩 | 48648F0A0F9201F8E100800046140A10 | 07060716O410168 | P02-1 1.4.1 | 00000000000001277271 | DEFAULT | UAT시나리오(E2E테스트시나리오) |
| 191 | 4.2.7 | UAT시나리오 작성 - 비즈니스모듈5 | 5d | 2009-02-16 | 2009-02-20 | 190 |  |  | 2009-02-16 | 2009-02-20 | 5d | 95d | 0d | start no earlier than 2008-12-01 | All Working Day Calendar | 추가개발 프로그램코딩 | 48648F0A0F9201F8E100800046140A10 | 07060716O410168 | P02-1 1.4.1 | 00000000000001277271 | DEFAULT | UAT시나리오(E2E테스트시나리오) |
| 192 | 4.2.8 | UAT시나리오 작성 - 비즈니스모듈6 | 5d | 2009-02-23 | 2009-02-27 | 191 |  |  | 2009-02-23 | 2009-02-27 | 5d | 95d |  | start no earlier than 2008-12-01 | All Working Day Calendar | 추가개발 프로그램코딩 | 48648F0A0F9201F8E100800046140A10 | 07060716O410168 | P02-1 1.4.1 | 00000000000001277271 | DEFAULT | UAT시나리오(E2E테스트시나리오) |

| ID | WBS | Task | Duration | Start | Finish | Predecessors | Baseline start | Baseline finish | Baseline duration | Total slack | Free slack | Constraint | Calendar | Text20 | Text22 | Text25 | Text26 | Text27 | Text28 | Text30 |
| --- | --- | --- | --- | --- | --- | --- | --- | --- | --- | --- | --- | --- | --- | --- | --- | --- | --- | --- | --- | --- |
| 193 | 4.3 | **사전 E2E Test 실시** | 10d | 2009-03-02 | 2009-03-13 | 170 | 2009-03-02 | 2009-03-13 | 10d | 55d |  |  | All Working Day Calendar | 테스트실시 | 48648F560F9201F8E100800046140A10 | 07060716O410178 | P02-1 1.4.2 | 00000000000001277309 | DEFAULT | 테스트결과 |
| 194 | 4.3.1 | 사전 E2E Test - 주요프로세스1 | 5d | 2009-03-02 | 2009-03-06 |  | 2009-03-02 | 2009-03-06 | 5d | 55d | 0d | start no earlier than 2008-12-01 | All Working Day Calendar | 테스트실시 | 48648F0A0F9201F8E100800046140A10 | 07060716O410168 | P02-1 1.4.2 | 00000000000001277271 | DEFAULT |  |
| 195 | 4.3.2 | 사전 E2E Test - 주요프로세스2 | 5d | 2009-03-09 | 2009-03-13 | 194 | 2009-03-09 | 2009-03-13 | 5d | 55d | 0d | start no earlier than 2008-12-01 | All Working Day Calendar | 테스트실시 | 48648F0A0F9201F8E100800046140A10 | 07060716O410168 | P02-1 1.4.2 | 00000000000001277271 | DEFAULT |  |
| 196 | 4.4 | **개발단계 품질검증 및 단계완료** | 57d | 2008-12-19 | 2009-03-13 |  | 2008-12-19 | 2009-03-13 | 57d | 85d |  |  | All Working Day Calendar | 단계완료 | 48648FB40F9201F8E100800046140A10 | 07060716O410080 | P02-1 1.6.8 | 00000000000001277356 | DEFAULT |  |
| 197 | 4.4.1 | **Code Inspection 실시 및 보완** | 52d | 2008-12-19 | 2009-03-06 |  | 2008-12-19 | 2009-03-06 | 52d | 84d | 0d |  |  |  |  |  |  |  |  | Code Inspection 결과서 |
| 198 | 4.4.1.1 | Code Inspection 1차 | 1d | 2008-12-19 | 2008-12-19 |  | 2008-12-19 | 2008-12-19 | 1d | 136d |  | start no earlier than 2008-12-19 | All Working Day Calendar | 단계완료 | 48648FB60F9201F8E100800046140A10 | 07060716O410080 | P02-1 1.6.8 | 00000000000001277357 | DEFAULT |  |
| 199 | 4.4.1.2 | Code Inspection 2차 | 1d | 2009-01-02 | 2009-01-02 |  | 2009-01-02 | 2009-01-02 | 1d | 128d |  | start no earlier than 2009-01-02 | All Working Day Calendar | 단계완료 | 48648FB60F9201F8E100800046140A10 | 07060716O410080 | P02-1 1.6.8 | 00000000000001277357 | DEFAULT |  |
| 200 | 4.4.1.3 | Code Inspection 3차 | 1d | 2009-01-16 | 2009-01-16 |  | 2009-01-16 | 2009-01-16 | 1d | 118d |  | start no earlier than 2009-01-16 | All Working Day Calendar | 단계완료 | 48648FB60F9201F8E100800046140A10 | 07060716O410080 | P02-1 1.6.8 | 00000000000001277357 | DEFAULT |  |
| 201 | 4.4.1.4 | Code Inspection 4차 | 1d | 2009-01-30 | 2009-01-30 |  | 2009-01-30 | 2009-01-30 | 1d | 110d |  | start no earlier than 2009-01-30 | All Working Day Calendar | 단계완료 | 48648FB60F9201F8E100800046140A10 | 07060716O410080 | P02-1 1.6.8 | 00000000000001277357 | DEFAULT |  |
| 202 | 4.4.1.5 | Code Inspection 5차 | 1d | 2009-02-13 | 2009-02-13 |  | 2009-02-13 | 2009-02-13 | 1d | 100d |  | start no earlier than 2009-02-13 | All Working Day Calendar | 단계완료 | 48648FB60F9201F8E100800046140A10 | 07060716O410080 | P02-1 1.6.8 | 00000000000001277357 | DEFAULT |  |
| 203 | 4.4.1.6 | Code Inspection 6차 | 1d | 2009-02-20 | 2009-02-20 |  | 2009-02-20 | 2009-02-20 | 1d | 95d |  | start no earlier than 2009-02-20 | All Working Day Calendar | 단계완료 | 48648FB60F9201F8E100800046140A10 | 07060716O410080 | P02-1 1.6.8 | 00000000000001277357 | DEFAULT |  |
| 204 | 4.4.1.7 | Code Inspection 7차 | 1d | 2009-03-06 | 2009-03-06 |  | 2009-03-06 | 2009-03-06 | 1d | 84d |  | start no earlier than 2009-03-06 |  |  |  |  |  |  |  |  |
| 205 | 4.4.2 | 요구사항추적표 작성 | 5d | 2009-03-09 | 2009-03-13 | 197 | 2009-03-09 | 2009-03-13 | 5d | 84d |  |  |  |  |  |  |  |  |  | 요구사항추적표 |
| 206 | 5 | **E2E Test(End to End Test)** | 20d | 2009-03-16 | 2009-04-10 | 195 | 2009-03-16 | 2009-04-10 | 20d | 55d | 0d |  | All Working Day Calendar | 테스트실시 | 48648F580F9201F8E100800046140A10 | 07060716O410179 | P02-1 1.4.2 | 00000000000001277310 | DEFAULT |  |
| 207 | 5.1 | E2E 테스트 실시1 | 10d | 2009-03-16 | 2009-03-27 |  | 2009-03-16 | 2009-03-27 | 10d | 55d | 0d | start no earlier than 2009-03-16 | All Working Day Calendar | 테스트실시 | 48648F5A0F9201F8E100800046140A10 | 07060716O410179 | P02-1 1.4.2 | 00000000000001277311 | DEFAULT | 테스트시나리오(결과) |
| 208 | 5.2 | 테스트 결과확인 및 보완1 | 5d | 2009-03-23 | 2009-03-27 |  | 2009-03-23 | 2009-03-27 | 5d | 64d |  | start no earlier than 2009-03-23 |  |  |  |  |  |  |  | 테스트시나리오(결과) |
| 209 | 5.3 | E2E 테스트 실시2 | 10d | 2009-03-30 | 2009-04-10 | 207 | 2009-03-30 | 2009-04-10 | 10d | 54d |  |  |  |  |  |  |  |  |  | 테스트시나리오(결과) |
| 210 | 5.4 | 테스트 결과확인 및 보완2 | 5d | 2009-04-06 | 2009-04-10 |  | 2009-04-06 | 2009-04-10 | 5d | 54d |  | start no earlier than 2009-04-06 |  |  |  |  |  |  |  | 테스트시나리오(결과) |
| 211 | 6 | **개발 및 Test 검수** | 10d | 2009-04-13 | 2009-04-24 | 206 | 2009-04-13 | 2009-04-24 | 10d | 54d |  |  |  |  |  |  |  |  |  |  |
| 212 | 6.1 | 테스트결과제출 | 5d | 2009-04-13 | 2009-04-17 |  | 2009-04-13 | 2009-04-17 | 5d | 54d | 0d |  |  |  |  |  |  |  |  | E2E테스트결과, 시스템테스트결과서 |
| 213 | 6.2 | 고객 테스트결과 확인 | 3d | 2009-04-20 | 2009-04-22 | 212 | 2009-04-20 | 2009-04-22 | 3d | 54d | 0d |  |  |  |  |  |  |  |  | 고객검토결과서 |
| 214 | 6.3 | 고객승인 획득 | 2d | 2009-04-23 | 2009-04-24 | 213 | 2009-04-23 | 2009-04-24 | 2d | 54d |  |  |  |  |  |  |  |  |  | 고객인수확인서(PAD) |
| 215 | 7 | **UAT(User Acceptance Test)** | 38d | 2009-04-13 | 2009-06-05 |  | 2009-04-13 | 2009-06-05 | 38d | 1d | 0d |  |  |  |  |  |  |  |  |  |
| 216 | 7.1 | 사용자테스트 실시 | 38d | 2009-04-13 | 2009-06-05 |  | 2009-04-13 | 2009-06-05 | 38d | 1d |  | start no earlier than 2009-04-13 |  |  |  |  |  |  |  | 사용자테스트결과 |
| 217 | 7.2 | 사용자매뉴얼 작성 | 10d | 2009-04-23 | 2009-05-08 |  | 2009-04-23 | 2009-05-08 | 10d | 21d |  | start no earlier than 2009-04-23 |  |  |  |  |  |  |  | 사용자매뉴얼 |
| 218 | 7.3 | 사용자교육 실시 | 20d | 2009-05-11 | 2009-06-05 |  | 2009-05-11 | 2009-06-05 | 20d | 1d |  | start no earlier than 2009-05-11 |  |  |  |  |  |  |  | 교육교재 |

| ID | WBS | Task | Duration | Start | Finish | Predecessors | Baseline start | Baseline finish | Baseline duration | Total slack | Free slack | Constraint | Calendar | Text20 | Text22 | Text25 | Text26 | Text27 | Text28 | Text30 |
| --- | --- | --- | --- | --- | --- | --- | --- | --- | --- | --- | --- | --- | --- | --- | --- | --- | --- | --- | --- | --- |
| 219 | 8 | **ORT(Operation Readiness Test)** | 25d | 2009-06-08 | 2009-07-10 | 215 | 2009-06-08 | 2009-07-10 | 25d | 1d |  |  | All Working Day Calendar | 구현 | 48648F5E0F9201F8E100800046140A10 | 07060716O410180 | P02-1 1.5 | 00000000000001277313 | DEFAULT |  |
| 220 | 8.1 | **구현계획수립** | 5d | 2009-06-08 | 2009-06-12 |  | 2009-06-08 | 2009-06-12 | 5d | 6d |  |  | All Working Day Calendar | 구현계획수립 | 48648F600F9201F8E100800046140A10 | 07060716O410181 | P02-1 1.5.1 | 00000000000001277314 | DEFAULT |  |
| 221 | 8.1.1 | 릴리이즈및비상계획수립 | 5d | 2009-06-08 | 2009-06-12 |  | 2009-06-08 | 2009-06-12 | 5d | 21d |  | start no earlier than 2009-05-25 | All Working Day Calendar | 구현계획수립 | 48648F620F9201F8E100800046140A10 | 07060716O410181 | P02-1 1.5.1 | 00000000000001277315 | DEFAULT | 구현계획서 |
| 222 | 8.1.2 | 교육훈련계획수립 | 5d | 2009-06-08 | 2009-06-12 |  | 2009-06-08 | 2009-06-12 | 5d | 6d | 0d | start no earlier than 2009-06-01 | All Working Day Calendar | 구현계획수립 | 48648F640F9201F8E100800046140A10 | 07060716O410181 | P02-1 1.5.1 | 00000000000001277316 | DEFAULT | 교육계획서 |
| 223 | 8.2 | **시범운영** | 25d | 2009-06-08 | 2009-07-10 |  | 2009-06-08 | 2009-07-10 | 25d | 1d |  |  | All Working Day Calendar | 시범운영 | 48648F7A0F9201F8E100800046140A10 | 07060716O410184 | P02-1 1.5.4 | 00000000000001277327 | DEFAULT |  |
| 224 | 8.2.1 | 시범운영계획 수립 | 5d | 2009-06-08 | 2009-06-12 |  | 2009-06-08 | 2009-06-12 | 5d | 21d |  | start no earlier than 2009-06-08 | All Working Day Calendar | 시범운영 | 48648F7C0F9201F8E100800046140A10 | 07060716O410184 | P02-1 1.5.4 | 00000000000001277328 | DEFAULT | 시범운영계획서 |
| 225 | 8.2.2 | 시범운영 실시 | 25d | 2009-06-08 | 2009-07-10 |  | 2009-06-08 | 2009-07-10 | 25d | 1d |  | start no earlier than 2009-06-08 | All Working Day Calendar | 시범운영 | 48648F7E0F9201F8E100800046140A10 | 07060716O410184 | P02-1 1.5.4 | 00000000000001277329 | DEFAULT | 시범운영일지 |
| 226 | 8.3 | **시스템사용교육** | 15d | 2009-06-15 | 2009-07-03 |  | 2009-06-15 | 2009-07-03 | 15d | 6d |  |  | All Working Day Calendar | 시스템사용교육 | 48648F720F9201F8E100800046140A10 | 07060716O410183 | P02-1 1.5.3 | 00000000000001277323 | DEFAULT |  |
| 227 | 8.3.1 | 운영매뉴얼 작성 | 10d | 2009-06-15 | 2009-06-26 | 222 | 2009-06-15 | 2009-06-26 | 10d | 6d | 0d | start no earlier than 2009-06-15 | All Working Day Calendar | 시스템사용교육 | 48648F760F9201F8E100800046140A10 | 07060716O410183 | P02-1 1.5.3 | 00000000000001277325 | DEFAULT | 운영매뉴얼 |
| 228 | 8.3.2 | 운영자교육 실시 | 5d | 2009-06-29 | 2009-07-03 | 227 | 2009-06-29 | 2009-07-03 | 5d | 6d |  |  | All Working Day Calendar | 시스템사용교육 | 48648F780F9201F8E100800046140A10 | 07060716O410183 | P02-1 1.5.3 | 00000000000001277326 | DEFAULT | 교육교재 |
| 229 | 8.4 | **시스템 인수인계** | 20d | 2009-06-08 | 2009-07-03 |  | 2009-06-08 | 2009-07-03 | 20d | 6d |  |  | All Working Day Calendar | 시스템 인수인계 | 48648F7A0F9201F8E100800046140A10 | 07060716O410184 | P02-1 1.7.2 | 00000000000001277327 | DEFAULT |  |
| 230 | 8.4.1 | 인수인계계획 수립 | 5d | 2009-06-08 | 2009-06-12 |  | 2009-06-08 | 2009-06-12 | 5d | 6d | 0d | start no earlier than 2009-06-08 | All Working Day Calendar | 시스템 인수인계 | 48648F7C0F9201F8E100800046140A10 | 07060716O410184 | P02-1 1.7.2 | 00000000000001277328 | DEFAULT | 인수인계계획서 |
| 231 | 8.4.2 | 인수인계 실시 | 15d | 2009-06-15 | 2009-07-03 | 230 | 2009-06-15 | 2009-07-03 | 15d | 6d |  | start no earlier than 2009-06-15 | All Working Day Calendar | 시스템 인수인계 | 48648F7E0F9201F8E100800046140A10 | 07060716O410184 | P02-1 1.7.2 | 00000000000001277329 | DEFAULT | 인수인계확인서 |
| 232 | 8.5 | **오픈 준비** | 5d | 2009-07-06 | 2009-07-10 |  | 2009-07-06 | 2009-07-10 | 5d | 1d |  |  | All Working Day Calendar | 컨버젼 및 릴리이즈 | 48648F660F9201F8E100800046140A10 | 07060716O410182 | P02-1 1.5.2 | 00000000000001277317 | DEFAULT |  |
| 233 | 8.5.1 | 데이터베이스 구축 | 5d | 2009-07-06 | 2009-07-10 |  | 2009-07-06 | 2009-07-10 | 5d | 1d |  | start no earlier than 2009-07-06 | All Working Day Calendar | 컨버젼 및 릴리이즈 | 48648F680F9201F8E100800046140A10 | 07060716O410182 | P02-1 1.5.2 | 00000000000001277318 | DEFAULT |  |
| 234 | 8.5.2 | 소프트웨어 설치 | 5d | 2009-07-06 | 2009-07-10 |  | 2009-07-06 | 2009-07-10 | 5d | 1d |  | start no earlier than 2009-07-06 | All Working Day Calendar | 컨버젼 및 릴리이즈 | 48648F6A0F9201F8E100800046140A10 | 07060716O410182 | P02-1 1.5.2 | 00000000000001277319 | DEFAULT |  |
| 235 | 8.5.3 | 데이터컨버전 | 5d | 2009-07-06 | 2009-07-10 |  | 2009-07-06 | 2009-07-10 | 5d | 1d |  | start no earlier than 2009-07-06 | All Working Day Calendar | 컨버젼 및 릴리이즈 | 48648F6C0F9201F8E100800046140A10 | 07060716O410182 | P02-1 1.5.2 | 00000000000001277320 | DEFAULT |  |
| 236 | 8.5.4 | 시스템 릴리이즈 | 1d | 2009-07-10 | 2009-07-10 |  | 2009-07-10 | 2009-07-10 | 1d | 1d |  | start no earlier than 2009-07-10 | All Working Day Calendar | 컨버젼 및 릴리이즈 | 48648F700F9201F8E100800046140A10 | 07060716O410182 | P02-1 1.5.2 | 00000000000001277322 | DEFAULT |  |
| 237 | 9 | **Go Live** | 1d | 2009-07-13 | 2009-07-13 |  | 2009-07-13 | 2009-07-13 | 1d | 0d |  |  |  | 컨버젼 및 릴리이즈 |  |  | P02-1 1.5.2 |  |  |  |
| 238 | 9.1 | 시스템 최종 오픈 | 1d | 2009-07-13 | 2009-07-13 |  | 2009-07-13 | 2009-07-13 | 1d | 0d |  | start no earlier than 2009-07-13 |  |  |  |  |  |  |  |  |
