# 08.변액

Schedule from MS Project, 2008-07-23 to 2009-07-13, status date 2008-12-12, A marks actual dates.
HSIC-0820606

## Calendars

- All Working Day Calendar: Mon-Fri 08:00-12:00, 13:00-17:00; Sat-Sun off. Exceptions (off unless hours are given): 2008-08-15, 2008-09-15, 2008-10-03, 2008-12-25, 2009-01-01, 2009-01-26 to 2009-01-27, 2009-05-05.
- 한국: Mon-Fri 08:00-12:00, 13:00-17:00; Sat-Sun off. Exceptions (off unless hours are given): 2008-08-15, 2008-09-13 to 2008-09-15, 2008-10-03, 2008-12-25, 2009-01-01, 2009-01-25 to 2009-01-27, 2009-03-01, 2009-05-01 to 2009-05-02, 2009-05-05, 2009-06-06.

## Schedule

| ID | WBS | Task | Duration | Start | Finish | Predecessors | Complete | Baseline start | Baseline finish | Baseline duration | Constraint | Calendar | Text20 | Text22 | Text25 | Text26 | Text27 | Text28 | Text30 |
| --- | --- | --- | --- | --- | --- | --- | --- | --- | --- | --- | --- | --- | --- | --- | --- | --- | --- | --- | --- |
| 1 | 1 | **Inception** | 3d | 2008-07-23 A | 2008-07-25 A |  | 100% | 2008-07-23 | 2008-07-25 | 3d |  | All Working Day Calendar | 프로젝트 착수 | 48648EC80F9201F8E100800046140A10 | 07061114O410023 | P02-1 1.1 | 00000000000001277238 | DEFAULT |  |
| 2 | 1.1 | **착수준비** | 3d | 2008-07-23 A | 2008-07-25 A |  | 100% | 2008-07-23 | 2008-07-25 | 3d |  | All Working Day Calendar | 착수준비 | 48648ECA0F9201F8E100800046140A10 | 07061114O410024 | P02-1 1.1.1 | 00000000000001277239 | DEFAULT |  |
| 3 | 1.1.1 | 업무범위 정의 | 3d | 2008-07-23 A | 2008-07-25 A |  | 100% | 2008-07-23 | 2008-07-25 | 3d | start no earlier than 2008-07-23 | All Working Day Calendar | 착수준비 | 48648ECC0F9201F8E100800046140A10 | 07061114O410024 | P02-1 1.1.1 | 00000000000001277240 | DEFAULT | 과업대비표,규모측정내역서,실무고객협의체 명단,업무범위 |
| 4 | 1.1.2 | 업무파트 WBS 정의 | 3d | 2008-07-23 A | 2008-07-25 A |  | 100% | 2008-07-23 | 2008-07-25 | 3d | start no earlier than 2008-07-23 | All Working Day Calendar | 착수준비 | 48648ECE0F9201F8E100800046140A10 | 07061114O410024 | P02-1 1.1.1 | 00000000000001277241 | DEFAULT | 변경관리계획 |
| 5 | 2 | **Analysis** | 43d | 2008-07-28 A | 2008-09-26 A |  | 100% | 2008-07-28 | 2008-09-26 | 43d |  | All Working Day Calendar | 분석 | 48648EFC0F9201F8E100800046140A10 | 07060716O410166 | P02-1 1.2 | 00000000000001277264 | DEFAULT |  |
| 6 | 2.1 | **현황평가** | 7d | 2008-07-28 A | 2008-08-05 A |  | 100% | 2008-07-28 | 2008-08-05 | 7d |  | All Working Day Calendar | 현황평가 | 48648F080F9201F8E100800046140A10 | 07060716O410168 | P02-1 1.2.2 | 00000000000001277270 | DEFAULT |  |
| 7 | 2.1.1 | **현행업무분석** | 5d | 2008-07-28 A | 2008-08-01 A |  | 100% | 2008-07-28 | 2008-08-01 | 5d |  | All Working Day Calendar | 현황평가 | 48648F0A0F9201F8E100800046140A10 | 07060716O410168 | P02-1 1.2.2 | 00000000000001277271 | DEFAULT |  |
| 8 | 2.1.1.1 | 현행업무분석서 수집 | 5d | 2008-07-28 A | 2008-08-01 A |  | 100% | 2008-07-28 | 2008-08-01 | 5d | start no earlier than 2008-07-28 | All Working Day Calendar | 현황평가 | 48648F0A0F9201F8E100800046140A10 | 07060716O410168 | P02-1 1.2.2 | 00000000000001277271 | DEFAULT | 현행업무분석서(기존 분석자료 대체) |
| 9 | 2.1.2 | **현행시스템분석** | 5d | 2008-07-28 A | 2008-08-01 A |  | 100% | 2008-07-28 | 2008-08-01 | 5d |  | All Working Day Calendar | 현황평가 | 48648F0C0F9201F8E100800046140A10 | 07060716O410168 | P02-1 1.2.2 | 00000000000001277272 | DEFAULT |  |
| 10 | 2.1.2.1 | 현행시스템분석서 수집 | 5d | 2008-07-28 A | 2008-08-01 A |  | 100% | 2008-07-28 | 2008-08-01 | 5d | start no earlier than 2008-07-28 | All Working Day Calendar | 현황평가 | 48648F0A0F9201F8E100800046140A10 | 07060716O410168 | P02-1 1.2.2 | 00000000000001277271 | DEFAULT | 현행시스템분석서(현업운영 작성) |
| 11 | 2.1.2.2 | **현행시스템 설명** | 5d | 2008-07-28 A | 2008-08-01 A |  | 100% | 2008-07-28 | 2008-08-01 | 5d |  | All Working Day Calendar | 현황평가 | 48648F0A0F9201F8E100800046140A10 | 07060716O410168 | P02-1 1.2.2 | 00000000000001277271 | DEFAULT |  |
| 12 | 2.1.2.2.1 | 변액 신계약 처리 | 5d | 2008-07-28 A | 2008-08-01 A |  | 100% | 2008-07-28 | 2008-08-01 | 5d | start no earlier than 2008-07-28 | All Working Day Calendar | 현황평가 | 48648F0A0F9201F8E100800046140A10 | 07060716O410168 | P02-1 1.2.2 | 00000000000001277271 | DEFAULT |  |
| 13 | 2.1.2.2.2 | 변액 수금/보전 처리 | 5d | 2008-07-28 A | 2008-08-01 A |  | 100% | 2008-07-28 | 2008-08-01 | 5d | start no earlier than 2008-07-28 | All Working Day Calendar | 현황평가 | 48648F0A0F9201F8E100800046140A10 | 07060716O410168 | P02-1 1.2.2 | 00000000000001277271 | DEFAULT |  |
| 14 | 2.1.2.2.3 | 변액 지급 처리 | 5d | 2008-07-28 A | 2008-08-01 A |  | 100% | 2008-07-28 | 2008-08-01 | 5d | start no earlier than 2008-07-28 | All Working Day Calendar | 현황평가 | 48648F0A0F9201F8E100800046140A10 | 07060716O410168 | P02-1 1.2.2 | 00000000000001277271 | DEFAULT |  |
| 15 | 2.1.2.2.4 | 변액 회계/마감 처리 | 5d | 2008-07-28 A | 2008-08-01 A |  | 100% | 2008-07-28 | 2008-08-01 | 5d | start no earlier than 2008-07-28 | All Working Day Calendar | 현황평가 | 48648F0A0F9201F8E100800046140A10 | 07060716O410168 | P02-1 1.2.2 | 00000000000001277271 | DEFAULT |  |
| 16 | 2.1.2.2.5 | 변액 인터페이스 처리 | 5d | 2008-07-28 A | 2008-08-01 A |  | 100% | 2008-07-28 | 2008-08-01 | 5d | start no earlier than 2008-07-28 | All Working Day Calendar | 현황평가 | 48648F0A0F9201F8E100800046140A10 | 07060716O410168 | P02-1 1.2.2 | 00000000000001277271 | DEFAULT |  |
| 17 | 2.1.2.2.6 | 변액 온라인 | 5d | 2008-07-28 A | 2008-08-01 A |  | 100% | 2008-07-28 | 2008-08-01 | 5d | start no earlier than 2008-07-28 | All Working Day Calendar | 현황평가 | 48648F0A0F9201F8E100800046140A10 | 07060716O410168 | P02-1 1.2.2 | 00000000000001277271 | DEFAULT |  |
| 18 | 2.1.3 | 인터뷰실시 | 2d | 2008-08-04 A | 2008-08-05 A | 7 | 100% | 2008-08-04 | 2008-08-05 | 2d |  | All Working Day Calendar | 현황평가 | 48648F0E0F9201F8E100800046140A10 | 07060716O410168 | P02-1 1.2.2 | 00000000000001277273 | DEFAULT |  |
| 19 | 2.2 | 착수W/S | 3d | 2008-08-06 A | 2008-08-08 A | 18 | 100% | 2008-08-06 | 2008-08-08 | 3d |  |  | 현황평가 |  |  | P02-1 1.2.2 |  |  |  |
| 20 | 2.3 | **패키지 요구사항정의** | 14d | 2008-08-11 A | 2008-08-29 A |  | 100% | 2008-08-11 | 2008-08-29 | 14d |  | All Working Day Calendar | 패키지 요구사항정의 | 48648F100F9201F8E100800046140A10 | 07060716O410169 | P02-1 1.2.3 | 00000000000001277274 | DEFAULT |  |
| 21 | 2.3.1 | **패키지 사용자교육** | 4d | 2008-08-11 A | 2008-08-14 A | 19 | 100% | 2008-08-11 | 2008-08-14 | 4d |  | All Working Day Calendar | 패키지 요구사항정의 | 48648F120F9201F8E100800046140A10 | 07060716O410169 | P02-1 1.2.3 | 00000000000001277275 | DEFAULT |  |
| 22 | 2.3.1.1 | **메뉴구조 및 화면 설명** | 4d | 2008-08-11 A | 2008-08-14 A |  | 100% | 2008-08-11 | 2008-08-14 | 4d |  |  | 패키지 요구사항정의 |  |  | P02-1 1.2.3 |  |  | 패키지 화면, 패키지 설계서 |
| 23 | 2.3.1.1.1 | 변액 신계약 처리 | 4d | 2008-08-11 A | 2008-08-14 A |  | 100% | 2008-08-11 | 2008-08-14 | 4d | start no earlier than 2008-07-21 | All Working Day Calendar | 패키지 요구사항정의 | 48648F0A0F9201F8E100800046140A10 | 07060716O410168 | P02-1 1.2.3 | 00000000000001277271 | DEFAULT |  |
| 24 | 2.3.1.1.2 | 변액 수금/보전 처리 | 4d | 2008-08-11 A | 2008-08-14 A |  | 100% | 2008-08-11 | 2008-08-14 | 4d | start no earlier than 2008-07-21 | All Working Day Calendar | 패키지 요구사항정의 | 48648F0A0F9201F8E100800046140A10 | 07060716O410168 | P02-1 1.2.3 | 00000000000001277271 | DEFAULT |  |
| 25 | 2.3.1.1.3 | 변액 지급 처리 | 4d | 2008-08-11 A | 2008-08-14 A |  | 100% | 2008-08-11 | 2008-08-14 | 4d | start no earlier than 2008-07-21 | All Working Day Calendar | 패키지 요구사항정의 | 48648F0A0F9201F8E100800046140A10 | 07060716O410168 | P02-1 1.2.3 | 00000000000001277271 | DEFAULT |  |
| 26 | 2.3.1.1.4 | 변액 회계/마감 처리 | 4d | 2008-08-11 A | 2008-08-14 A |  | 100% | 2008-08-11 | 2008-08-14 | 4d | start no earlier than 2008-07-21 | All Working Day Calendar | 패키지 요구사항정의 | 48648F0A0F9201F8E100800046140A10 | 07060716O410168 | P02-1 1.2.3 | 00000000000001277271 | DEFAULT |  |
| 27 | 2.3.1.1.5 | 변액 인터페이스 처리 | 4d | 2008-08-11 A | 2008-08-14 A |  | 100% | 2008-08-11 | 2008-08-14 | 4d | start no earlier than 2008-07-21 | All Working Day Calendar | 패키지 요구사항정의 | 48648F0A0F9201F8E100800046140A10 | 07060716O410168 | P02-1 1.2.3 | 00000000000001277271 | DEFAULT |  |
| 28 | 2.3.1.1.6 | 변액 온라인 | 4d | 2008-08-11 A | 2008-08-14 A |  | 100% | 2008-08-11 | 2008-08-14 | 4d | start no earlier than 2008-07-21 | All Working Day Calendar | 패키지 요구사항정의 | 48648F0A0F9201F8E100800046140A10 | 07060716O410168 | P02-1 1.2.3 | 00000000000001277271 | DEFAULT |  |
| 29 | 2.3.1.1.7 | 변액 버퍼/로그파일 생성 처리 | 4d | 2008-08-11 A | 2008-08-14 A |  | 100% | 2008-08-11 | 2008-08-14 | 4d | start no earlier than 2008-07-21 | All Working Day Calendar | 패키지 요구사항정의 | 48648F0A0F9201F8E100800046140A10 | 07060716O410168 | P02-1 1.2.3 | 00000000000001277271 | DEFAULT |  |
| 30 | 2.3.1.1.8 | 변액 전일자 작업 처리 | 4d | 2008-08-11 A | 2008-08-14 A |  | 100% | 2008-08-11 | 2008-08-14 | 4d | start no earlier than 2008-07-21 | All Working Day Calendar | 패키지 요구사항정의 | 48648F0A0F9201F8E100800046140A10 | 07060716O410168 | P02-1 1.2.3 | 00000000000001277271 | DEFAULT |  |

| ID | WBS | Task | Duration | Start | Finish | Predecessors | Complete | Baseline start | Baseline finish | Baseline duration | Constraint | Calendar | Text20 | Text26 | Text30 | Text22 | Text25 | Text27 | Text28 |
| --- | --- | --- | --- | --- | --- | --- | --- | --- | --- | --- | --- | --- | --- | --- | --- | --- | --- | --- | --- |
| 31 | 2.3.1.2 | **데이터모델 설명** | 1d | 2008-08-14 A | 2008-08-14 A |  | 100% | 2008-08-14 | 2008-08-14 | 1d |  |  | 패키지 요구사항정의 | P02-1 1.2.3 | Data 모델 |  |  |  |  |
| 32 | 2.3.1.2.1 | 주요 엔티티 설명 | 1d | 2008-08-14 A | 2008-08-14 A |  | 100% | 2008-08-14 | 2008-08-14 | 1d | start no earlier than 2008-08-14 |  | 패키지 요구사항정의 | P02-1 1.2.3 |  |  |  |  |  |
| 33 | 2.3.2 | **기능요구사항정의** | 10d | 2008-08-18 A | 2008-08-29 A | 21 | 100% | 2008-08-18 | 2008-08-29 | 10d |  | All Working Day Calendar | 패키지 요구사항정의 | P02-1 1.2.3 |  | 48648F140F9201F8E100800046140A10 | 07060716O410169 | 00000000000001277276 | DEFAULT |
| 34 | 2.3.2.1 | **현업요구사항정의서작성** | 10d | 2008-08-18 A | 2008-08-29 A |  | 100% | 2008-08-18 | 2008-08-29 | 10d |  |  | 패키지 요구사항정의 | P02-1 1.2.3 | Business System Requirement |  |  |  |  |
| 35 | 2.3.2.1.1 | 변액 신계약 처리 | 5d | 2008-08-18 A | 2008-08-22 A |  | 100% | 2008-08-18 | 2008-08-22 | 5d | start no earlier than 2008-07-21 | All Working Day Calendar | 패키지 요구사항정의 | P02-1 1.2.3 |  | 48648F0A0F9201F8E100800046140A10 | 07060716O410168 | 00000000000001277271 | DEFAULT |
| 36 | 2.3.2.1.2 | 변액 수금/보전 처리 | 5d | 2008-08-18 A | 2008-08-22 A |  | 100% | 2008-08-18 | 2008-08-22 | 5d | start no earlier than 2008-07-21 | All Working Day Calendar | 패키지 요구사항정의 | P02-1 1.2.3 |  | 48648F0A0F9201F8E100800046140A10 | 07060716O410168 | 00000000000001277271 | DEFAULT |
| 37 | 2.3.2.1.3 | 변액 지급 처리 | 5d | 2008-08-18 A | 2008-08-22 A |  | 100% | 2008-08-18 | 2008-08-22 | 5d | start no earlier than 2008-07-21 | All Working Day Calendar | 패키지 요구사항정의 | P02-1 1.2.3 |  | 48648F0A0F9201F8E100800046140A10 | 07060716O410168 | 00000000000001277271 | DEFAULT |
| 38 | 2.3.2.1.4 | 변액 회계/마감 처리 | 5d | 2008-08-18 A | 2008-08-22 A |  | 100% | 2008-08-18 | 2008-08-22 | 5d | start no earlier than 2008-07-21 | All Working Day Calendar | 패키지 요구사항정의 | P02-1 1.2.3 |  | 48648F0A0F9201F8E100800046140A10 | 07060716O410168 | 00000000000001277271 | DEFAULT |
| 39 | 2.3.2.1.5 | 변액 인터페이스 | 5d | 2008-08-25 A | 2008-08-29 A |  | 100% | 2008-08-25 | 2008-08-29 | 5d | start no earlier than 2008-08-25 | All Working Day Calendar | 패키지 요구사항정의 | P02-1 1.2.3 |  | 48648F0A0F9201F8E100800046140A10 | 07060716O410168 | 00000000000001277271 | DEFAULT |
| 40 | 2.3.2.1.6 | 변액 온라인 | 5d | 2008-08-25 A | 2008-08-29 A |  | 100% | 2008-08-25 | 2008-08-29 | 5d | start no earlier than 2008-08-25 | All Working Day Calendar | 패키지 요구사항정의 | P02-1 1.2.3 |  | 48648F0A0F9201F8E100800046140A10 | 07060716O410168 | 00000000000001277271 | DEFAULT |
| 41 | 2.3.3 | **타시스템 인터페이스 요구사항정의** | 5d | 2008-08-25 A | 2008-08-29 A | 18 | 100% | 2008-08-25 | 2008-08-29 | 5d |  | All Working Day Calendar | 패키지 요구사항정의 | P02-1 1.2.3 |  | 48648F180F9201F8E100800046140A10 | 07060716O410169 | 00000000000001277278 | DEFAULT |
| 42 | 2.3.3.1 | **대내시스템 인터페이스 목록 작성** | 5d | 2008-08-25 A | 2008-08-29 A |  | 100% | 2008-08-25 | 2008-08-29 | 5d |  | All Working Day Calendar | 패키지 요구사항정의 | P02-1 1.2.3 | Business System Requirement | 48648F180F9201F8E100800046140A10 | 07060716O410169 | 00000000000001277278 | DEFAULT |
| 43 | 2.3.3.1.1 | 기간계 신계약 | 5d | 2008-08-25 A | 2008-08-29 A |  | 100% | 2008-08-25 | 2008-08-29 | 5d | start no earlier than 2008-08-25 | All Working Day Calendar | 패키지 요구사항정의 | P02-1 1.2.3 |  | 48648F0A0F9201F8E100800046140A10 | 07060716O410168 | 00000000000001277271 | DEFAULT |
| 44 | 2.3.3.1.2 | 기간계 수금/보전 | 5d | 2008-08-25 A | 2008-08-29 A |  | 100% | 2008-08-25 | 2008-08-29 | 5d | start no earlier than 2008-08-25 | All Working Day Calendar | 패키지 요구사항정의 | P02-1 1.2.3 |  | 48648F0A0F9201F8E100800046140A10 | 07060716O410168 | 00000000000001277271 | DEFAULT |
| 45 | 2.3.3.1.3 | 기간계 지급 | 5d | 2008-08-25 A | 2008-08-29 A |  | 100% | 2008-08-25 | 2008-08-29 | 5d | start no earlier than 2008-08-25 | All Working Day Calendar | 패키지 요구사항정의 | P02-1 1.2.3 |  | 48648F0A0F9201F8E100800046140A10 | 07060716O410168 | 00000000000001277271 | DEFAULT |
| 46 | 2.3.3.1.4 | 기간계 회계/마감 | 5d | 2008-08-25 A | 2008-08-29 A |  | 100% | 2008-08-25 | 2008-08-29 | 5d | start no earlier than 2008-08-25 | All Working Day Calendar | 패키지 요구사항정의 | P02-1 1.2.3 |  | 48648F0A0F9201F8E100800046140A10 | 07060716O410168 | 00000000000001277271 | DEFAULT |
| 47 | 2.3.3.1.5 | 안내장 | 5d | 2008-08-25 A | 2008-08-29 A |  | 100% | 2008-08-25 | 2008-08-29 | 5d | start no earlier than 2008-08-25 | All Working Day Calendar | 패키지 요구사항정의 | P02-1 1.2.3 |  | 48648F0A0F9201F8E100800046140A10 | 07060716O410168 | 00000000000001277271 | DEFAULT |
| 48 | 2.3.3.1.6 | Cyber Portal | 5d | 2008-08-25 A | 2008-08-29 A |  | 100% | 2008-08-25 | 2008-08-29 | 5d | start no earlier than 2008-08-25 | All Working Day Calendar | 패키지 요구사항정의 | P02-1 1.2.3 |  | 48648F0A0F9201F8E100800046140A10 | 07060716O410168 | 00000000000001277271 | DEFAULT |
| 49 | 2.3.3.1.7 | 방카시스템 | 5d | 2008-08-25 A | 2008-08-29 A |  | 100% | 2008-08-25 | 2008-08-29 | 5d | start no earlier than 2008-08-25 | All Working Day Calendar | 패키지 요구사항정의 | P02-1 1.2.3 |  | 48648F0A0F9201F8E100800046140A10 | 07060716O410168 | 00000000000001277271 | DEFAULT |
| 50 | 2.4 | **매핑** | 24d | 2008-08-18 A | 2008-09-19 A |  | 100% | 2008-08-18 | 2008-09-19 | 24d |  | All Working Day Calendar | 매핑 | P02-1 1.2.4 |  | 48648F1C0F9201F8E100800046140A10 | 07060716O410170 | 00000000000001277280 | DEFAULT |
| 51 | 2.4.1 | **패키지GAP분석** | 10d | 2008-08-18 A | 2008-08-29 A | 21 | 100% | 2008-08-18 | 2008-08-29 | 10d |  |  | 매핑 | P02-1 1.2.4 | 패키지 GAP 분석서 |  |  |  |  |
| 52 | 2.4.1.1 | 변액 신계약 | 5d | 2008-08-18 A | 2008-08-22 A |  | 100% | 2008-08-18 | 2008-08-22 | 5d | start no earlier than 2008-07-21 | All Working Day Calendar | 매핑 | P02-1 1.2.4 |  | 48648F0A0F9201F8E100800046140A10 | 07060716O410168 | 00000000000001277271 | DEFAULT |
| 53 | 2.4.1.2 | 변액 수금/보전 | 5d | 2008-08-18 A | 2008-08-22 A |  | 100% | 2008-08-18 | 2008-08-22 | 5d | start no earlier than 2008-07-21 | All Working Day Calendar | 매핑 | P02-1 1.2.4 |  | 48648F0A0F9201F8E100800046140A10 | 07060716O410168 | 00000000000001277271 | DEFAULT |
| 54 | 2.4.1.3 | 변액 지급 | 5d | 2008-08-18 A | 2008-08-22 A |  | 100% | 2008-08-18 | 2008-08-22 | 5d | start no earlier than 2008-07-21 | All Working Day Calendar | 매핑 | P02-1 1.2.4 |  | 48648F0A0F9201F8E100800046140A10 | 07060716O410168 | 00000000000001277271 | DEFAULT |
| 55 | 2.4.1.4 | 변액 회계/마감 | 5d | 2008-08-25 A | 2008-08-29 A |  | 100% | 2008-08-25 | 2008-08-29 | 5d | start no earlier than 2008-08-25 | All Working Day Calendar | 매핑 | P02-1 1.2.4 |  | 48648F0A0F9201F8E100800046140A10 | 07060716O410168 | 00000000000001277271 | DEFAULT |
| 56 | 2.4.1.5 | 변액 인터페이스 | 5d | 2008-08-25 A | 2008-08-29 A |  | 100% | 2008-08-25 | 2008-08-29 | 5d | start no earlier than 2008-08-25 | All Working Day Calendar | 매핑 | P02-1 1.2.4 |  | 48648F0A0F9201F8E100800046140A10 | 07060716O410168 | 00000000000001277271 | DEFAULT |
| 57 | 2.4.1.6 | 변액 온라인 | 5d | 2008-08-25 A | 2008-08-29 A |  | 100% | 2008-08-25 | 2008-08-29 | 5d | start no earlier than 2008-08-25 | All Working Day Calendar | 매핑 | P02-1 1.2.4 |  | 48648F0A0F9201F8E100800046140A10 | 07060716O410168 | 00000000000001277271 | DEFAULT |

| ID | WBS | Task | Duration | Start | Finish | Predecessors | Complete | Baseline start | Baseline finish | Baseline duration | Constraint | Calendar | Text20 | Text22 | Text25 | Text26 | Text27 | Text28 | Text30 |
| --- | --- | --- | --- | --- | --- | --- | --- | --- | --- | --- | --- | --- | --- | --- | --- | --- | --- | --- | --- |
| 58 | 2.4.2 | **매핑결과 및 GAP 대응방안 수립** | 14d | 2008-09-01 A | 2008-09-19 A |  | 100% | 2008-09-01 | 2008-09-19 | 14d |  | All Working Day Calendar | 매핑 | 48648F220F9201F8E100800046140A10 | 07060716O410170 | P02-1 1.2.4 | 00000000000001277283 | DEFAULT | 현업요구사항정의서(매핑결과 및 GAP대응방안) |
| 59 | 2.4.2.1 | 변액 신계약 | 8d | 2008-09-01 A | 2008-09-10 A |  | 100% | 2008-09-01 | 2008-09-10 | 8d | start no earlier than 2008-09-01 | All Working Day Calendar | 매핑 | 48648F0A0F9201F8E100800046140A10 | 07060716O410168 | P02-1 1.2.4 | 00000000000001277271 | DEFAULT |  |
| 60 | 2.4.2.2 | 변액 수금/보전 | 8d | 2008-09-01 A | 2008-09-10 A |  | 100% | 2008-09-01 | 2008-09-10 | 8d | start no earlier than 2008-09-01 | All Working Day Calendar | 매핑 | 48648F0A0F9201F8E100800046140A10 | 07060716O410168 | P02-1 1.2.4 | 00000000000001277271 | DEFAULT |  |
| 61 | 2.4.2.3 | 변액 지급 | 8d | 2008-09-01 A | 2008-09-10 A |  | 100% | 2008-09-01 | 2008-09-10 | 8d | start no earlier than 2008-09-01 | All Working Day Calendar | 매핑 | 48648F0A0F9201F8E100800046140A10 | 07060716O410168 | P02-1 1.2.4 | 00000000000001277271 | DEFAULT |  |
| 62 | 2.4.2.4 | 변액 회계/마감 | 7d | 2008-09-10 A | 2008-09-19 A |  | 100% | 2008-09-10 | 2008-09-19 | 7d | start no earlier than 2008-09-10 | All Working Day Calendar | 매핑 | 48648F0A0F9201F8E100800046140A10 | 07060716O410168 | P02-1 1.2.4 | 00000000000001277271 | DEFAULT |  |
| 63 | 2.4.2.5 | 변액 인터페이스 | 7d | 2008-09-10 A | 2008-09-19 A |  | 100% | 2008-09-10 | 2008-09-19 | 7d | start no earlier than 2008-09-10 | All Working Day Calendar | 매핑 | 48648F0A0F9201F8E100800046140A10 | 07060716O410168 | P02-1 1.2.4 | 00000000000001277271 | DEFAULT |  |
| 64 | 2.4.2.6 | 변액 온라인 | 7d | 2008-09-10 A | 2008-09-19 A |  | 100% | 2008-09-10 | 2008-09-19 | 7d | start no earlier than 2008-09-10 | All Working Day Calendar | 매핑 | 48648F0A0F9201F8E100800046140A10 | 07060716O410168 | P02-1 1.2.4 | 00000000000001277271 | DEFAULT |  |
| 65 | 2.5 | **단계완료** | 5d | 2008-09-22 A | 2008-09-26 A |  | 100% | 2008-09-22 | 2008-09-26 | 5d |  | All Working Day Calendar | 단계완료 | 48648FB40F9201F8E100800046140A10 | 07060716O410080 | P02-1 1.6.8 | 00000000000001277356 | DEFAULT |  |
| 66 | 2.5.1 | 요구사항추적표 작성 | 1d | 2008-09-22 A | 2008-09-22 A |  | 100% | 2008-09-22 | 2008-09-22 | 1d | start no earlier than 2008-09-22 | All Working Day Calendar | 단계완료 | 48648FB60F9201F8E100800046140A10 | 07060716O410080 | P02-1 1.6.8 | 00000000000001277357 | DEFAULT | 요구사항추적표 |
| 67 | 2.5.2 | 분석단계산출물 정리(Inspection) | 1d | 2008-09-23 A | 2008-09-23 A | 66 | 100% | 2008-09-23 | 2008-09-23 | 1d |  | All Working Day Calendar | 단계완료 | 48648FB60F9201F8E100800046140A10 | 07060716O410080 | P02-1 1.6.8 | 00000000000001277357 | DEFAULT | 단계점검결과,요구사항추적표 |
| 68 | 2.5.3 | 고객검토 실시 | 2d | 2008-09-24 A | 2008-09-25 A | 67 | 100% | 2008-09-24 | 2008-09-25 | 2d |  | All Working Day Calendar | 단계완료 | 48648FB80F9201F8E100800046140A10 | 07060716O410080 | P02-1 1.6.8 | 00000000000001277358 | DEFAULT | 고객검토결과,시정조치서 |
| 69 | 2.5.4 | 고객승인 획득 | 1d | 2008-09-26 A | 2008-09-26 A | 68 | 100% | 2008-09-26 | 2008-09-26 | 1d |  | All Working Day Calendar | 단계완료 | 48648FBA0F9201F8E100800046140A10 | 07060716O410080 | P02-1 1.6.8 | 00000000000001277359 | DEFAULT | 고객인수확인서(PAD) |
| 70 | 3 | **Design** | 44d | 2008-09-29 A | 2008-11-28 A |  | 100% | 2008-09-29 | 2008-11-28 | 44d |  | All Working Day Calendar | 설계 | 48648F320F9201F8E100800046140A10 | 07060716O410173 | P02-1 1.3 | 00000000000001277291 | DEFAULT |  |
| 71 | 3.1 | **추가개발 설계** | 34d | 2008-09-29 A | 2008-11-14 A |  | 100% | 2008-09-29 | 2008-11-14 | 34d |  | All Working Day Calendar | 추가개발설계 | 48648F340F9201F8E100800046140A10 | 07060716O410174 | P02-1 1.3.1 | 00000000000001277292 | DEFAULT |  |
| 72 | 3.1.1 | **데이터코드 설계** | 12d | 2008-09-29 A | 2008-10-15 A |  | 100% | 2008-09-29 | 2008-10-15 | 12d |  | All Working Day Calendar | 추가개발설계 | 48648F360F9201F8E100800046140A10 | 07060716O410174 | P02-1 1.3.1 | 00000000000001277293 | DEFAULT |  |
| 73 | 3.1.1.1 | 데이터코드정의서 작성 | 12d | 2008-09-29 A | 2008-10-15 A | 69 | 100% | 2008-09-29 | 2008-10-15 | 12d | start no earlier than 2008-09-29 |  | 추가개발설계 |  |  | P02-1 1.3.1 |  |  | 데이터코드정의서 |
| 74 | 3.1.2 | **데이터베이스 설계** | 12d | 2008-09-29 A | 2008-10-15 A |  | 100% | 2008-09-29 | 2008-10-15 | 12d |  | All Working Day Calendar | 추가개발설계 | 48648F380F9201F8E100800046140A10 | 07060716O410174 | P02-1 1.3.1 | 00000000000001277294 | DEFAULT | 테이블목록,테이블정의서(핵심) |
| 75 | 3.1.2.1 | ERD 작성 | 12d | 2008-09-29 A | 2008-10-15 A | 69 | 100% | 2008-09-29 | 2008-10-15 | 12d | finish no earlier than 2008-10-15 |  | 추가개발설계 |  |  | P02-1 1.3.1 |  |  | ERD(물리) |
| 76 | 3.1.2.2 | 테이블목록 작성 | 2d | 2008-10-14 A | 2008-10-15 A |  | 100% | 2008-10-14 | 2008-10-15 | 2d | finish no earlier than 2008-10-15 |  | 추가개발설계 |  |  | P02-1 1.3.1 |  |  | 테이블목록 |
| 77 | 3.1.2.3 | 테이블레이아웃 작성 | 8d | 2008-10-06 A | 2008-10-15 A |  | 100% | 2008-10-06 | 2008-10-15 | 8d | finish no earlier than 2008-10-15 |  | 추가개발설계 |  |  | P02-1 1.3.1 |  |  | 테이블정의서 |
| 78 | 3.1.3 | **UI 설계** | 29d | 2008-10-07 A | 2008-11-14 A |  | 100% | 2008-10-07 | 2008-11-14 | 29d |  |  | 추가개발설계 |  |  | P02-1 1.3.1 |  |  |  |
| 79 | 3.1.3.1 | **화면레이아웃 작성** | 19d | 2008-10-07 A | 2008-10-31 A | 69 | 100% | 2008-10-07 | 2008-10-31 | 19d |  |  | 추가개발설계 |  |  | P02-1 1.3.1 |  |  | 페이지레이아웃,페이지목록 |
| 80 | 3.1.3.1.1 | 계약정보 관련 | 9d | 2008-10-07 A | 2008-10-17 A |  | 100% | 2008-10-07 | 2008-10-17 | 9d | finish no earlier than 2008-10-17 | All Working Day Calendar | 추가개발설계 | 48648F0A0F9201F8E100800046140A10 | 07060716O410168 | P02-1 1.3.1 | 00000000000001277271 | DEFAULT |  |
| 81 | 3.1.3.1.2 | 펀드정보 관련 | 9d | 2008-10-07 A | 2008-10-17 A |  | 100% | 2008-10-07 | 2008-10-17 | 9d | finish no earlier than 2008-10-17 | All Working Day Calendar | 추가개발설계 | 48648F0A0F9201F8E100800046140A10 | 07060716O410168 | P02-1 1.3.1 | 00000000000001277271 | DEFAULT |  |
| 82 | 3.1.3.1.3 | 거래정보 관련 | 9d | 2008-10-07 A | 2008-10-17 A |  | 100% | 2008-10-07 | 2008-10-17 | 9d | finish no earlier than 2008-10-17 | All Working Day Calendar | 추가개발설계 | 48648F0A0F9201F8E100800046140A10 | 07060716O410168 | P02-1 1.3.1 | 00000000000001277271 | DEFAULT |  |
| 83 | 3.1.3.1.4 | 적립금정보 관련 | 5d | 2008-10-20 A | 2008-10-24 A |  | 100% | 2008-10-20 | 2008-10-24 | 5d | start no earlier than 2008-10-20 | All Working Day Calendar | 추가개발설계 | 48648F0A0F9201F8E100800046140A10 | 07060716O410168 | P02-1 1.3.1 | 00000000000001277271 | DEFAULT |  |
| 84 | 3.1.3.1.5 | 전표정보 관련 | 5d | 2008-10-20 A | 2008-10-24 A |  | 100% | 2008-10-20 | 2008-10-24 | 5d | start no earlier than 2008-10-20 | All Working Day Calendar | 추가개발설계 | 48648F0A0F9201F8E100800046140A10 | 07060716O410168 | P02-1 1.3.1 | 00000000000001277271 | DEFAULT |  |
| 85 | 3.1.3.1.6 | 자금정보관련 | 5d | 2008-10-20 A | 2008-10-24 A |  | 100% | 2008-10-20 | 2008-10-24 | 5d | start no earlier than 2008-10-20 | All Working Day Calendar | 추가개발설계 | 48648F0A0F9201F8E100800046140A10 | 07060716O410168 | P02-1 1.3.1 | 00000000000001277271 | DEFAULT |  |
| 86 | 3.1.3.1.7 | 코드정보 관련 | 5d | 2008-10-13 A | 2008-10-17 A |  | 100% | 2008-10-13 | 2008-10-17 | 5d | start no earlier than 2008-10-13 | All Working Day Calendar | 추가개발설계 | 48648F0A0F9201F8E100800046140A10 | 07060716O410168 | P02-1 1.3.1 | 00000000000001277271 | DEFAULT |  |
| 87 | 3.1.3.1.8 | 마감 정보 관련 | 5d | 2008-10-27 A | 2008-10-31 A | 84 | 100% | 2008-10-27 | 2008-10-31 | 5d |  | All Working Day Calendar | 추가개발설계 | 48648F0A0F9201F8E100800046140A10 | 07060716O410168 | P02-1 1.3.1 | 00000000000001277271 | DEFAULT |  |
| 88 | 3.1.3.2 | 보고서레이아웃 작성 | 10d | 2008-11-03 A | 2008-11-14 A | 79 | 100% | 2008-11-03 | 2008-11-14 | 10d |  |  | 추가개발설계 |  |  | P02-1 1.3.1 |  |  |  |

| ID | WBS | Task | Duration | Start | Finish | Predecessors | Complete | Baseline start | Baseline finish | Baseline duration | Constraint | Calendar | Text20 | Text22 | Text25 | Text26 | Text27 | Text28 | Text30 |
| --- | --- | --- | --- | --- | --- | --- | --- | --- | --- | --- | --- | --- | --- | --- | --- | --- | --- | --- | --- |
| 89 | 3.1.4 | **온라인 프로그램 설계** | 17d | 2008-10-16 A | 2008-11-07 A |  | 100% | 2008-10-16 | 2008-11-07 | 17d |  | All Working Day Calendar | 추가개발설계 | 48648F3A0F9201F8E100800046140A10 | 07060716O410174 | P02-1 1.3.1 | 00000000000001277295 | DEFAULT |  |
| 90 | 3.1.4.1 | 온라인프로그램목록 작성 | 5d | 2008-10-16 A | 2008-10-22 A | 74 | 100% | 2008-10-16 | 2008-10-22 | 5d |  |  | 추가개발설계 |  |  | P02-1 1.3.1 |  |  | 프로그램목록 |
| 91 | 3.1.4.2 | **온라인프로그램사양서 작성** | 17d | 2008-10-16 A | 2008-11-07 A | 74 | 100% | 2008-10-16 | 2008-11-07 | 17d |  |  | 추가개발설계 |  |  | P02-1 1.3.1 |  |  | 프로그램사양서 |
| 92 | 3.1.4.2.1 | 계약정보 관련 | 10d | 2008-10-16 A | 2008-10-29 A |  | 100% | 2008-10-16 | 2008-10-29 | 10d | start no earlier than 2008-07-21 | All Working Day Calendar | 추가개발설계 | 48648F0A0F9201F8E100800046140A10 | 07060716O410168 | P02-1 1.3.1 | 00000000000001277271 | DEFAULT |  |
| 93 | 3.1.4.2.2 | 펀드정보 관련 | 10d | 2008-10-16 A | 2008-10-29 A |  | 100% | 2008-10-16 | 2008-10-29 | 10d | start no earlier than 2008-07-21 | All Working Day Calendar | 추가개발설계 | 48648F0A0F9201F8E100800046140A10 | 07060716O410168 | P02-1 1.3.1 | 00000000000001277271 | DEFAULT |  |
| 94 | 3.1.4.2.3 | 거래정보 관련 | 10d | 2008-10-16 A | 2008-10-29 A |  | 100% | 2008-10-16 | 2008-10-29 | 10d | start no earlier than 2008-07-21 | All Working Day Calendar | 추가개발설계 | 48648F0A0F9201F8E100800046140A10 | 07060716O410168 | P02-1 1.3.1 | 00000000000001277271 | DEFAULT |  |
| 95 | 3.1.4.2.4 | 적립금정보관련 | 5d | 2008-10-27 A | 2008-10-31 A |  | 100% | 2008-10-27 | 2008-10-31 | 5d | start no earlier than 2008-10-27 | All Working Day Calendar | 추가개발설계 | 48648F0A0F9201F8E100800046140A10 | 07060716O410168 | P02-1 1.3.1 | 00000000000001277271 | DEFAULT |  |
| 96 | 3.1.4.2.5 | 전표정보 관련 | 5d | 2008-10-27 A | 2008-10-31 A |  | 100% | 2008-10-27 | 2008-10-31 | 5d | start no earlier than 2008-10-27 | All Working Day Calendar | 추가개발설계 | 48648F0A0F9201F8E100800046140A10 | 07060716O410168 | P02-1 1.3.1 | 00000000000001277271 | DEFAULT |  |
| 97 | 3.1.4.2.6 | 자금정보관련 | 5d | 2008-11-03 A | 2008-11-07 A |  | 100% | 2008-11-03 | 2008-11-07 | 5d | start no earlier than 2008-11-03 | All Working Day Calendar | 추가개발설계 | 48648F0A0F9201F8E100800046140A10 | 07060716O410168 | P02-1 1.3.1 | 00000000000001277271 | DEFAULT |  |
| 98 | 3.1.4.2.7 | 코드정보관련 | 5d | 2008-11-03 A | 2008-11-07 A |  | 100% | 2008-11-03 | 2008-11-07 | 5d | start no earlier than 2008-11-03 | All Working Day Calendar | 추가개발설계 | 48648F0A0F9201F8E100800046140A10 | 07060716O410168 | P02-1 1.3.1 | 00000000000001277271 | DEFAULT |  |
| 99 | 3.1.4.2.8 | 마감정보 관련 | 5d | 2008-11-03 A | 2008-11-07 A |  | 100% | 2008-11-03 | 2008-11-07 | 5d | start no earlier than 2008-11-03 | All Working Day Calendar | 추가개발설계 | 48648F0A0F9201F8E100800046140A10 | 07060716O410168 | P02-1 1.3.1 | 00000000000001277271 | DEFAULT |  |
| 100 | 3.1.5 | **배치플로우 설계** | 15d | 2008-10-27 A | 2008-11-14 A |  | 100% | 2008-10-27 | 2008-11-14 | 15d |  |  | 추가개발설계 |  |  | P02-1 1.3.1 |  |  |  |
| 101 | 3.1.5.1 | 배치프로우 정의서 작성 | 5d | 2008-10-27 A | 2008-10-31 A |  | 100% | 2008-10-27 | 2008-10-31 | 5d | start no earlier than 2008-10-27 |  | 추가개발설계 |  |  | P02-1 1.3.1 |  |  | 배치플로우정의서 |
| 102 | 3.1.5.2 | 배치프로그램목록 작성 | 3d | 2008-10-27 A | 2008-10-29 A |  | 100% | 2008-10-27 | 2008-10-29 | 3d | start no earlier than 2008-10-27 |  | 추가개발설계 |  |  | P02-1 1.3.1 |  |  | 프로그램목록 |
| 103 | 3.1.5.3 | 배치프로그램사양서 작성 | 15d | 2008-10-27 A | 2008-11-14 A |  | 100% | 2008-10-27 | 2008-11-14 | 15d | start no earlier than 2008-10-27 |  | 추가개발설계 |  |  | P02-1 1.3.1 |  |  | 프로그램사양서 |
| 104 | 3.1.6 | **메뉴구조정의** | 5d | 2008-11-10 A | 2008-11-14 A |  | 100% | 2008-11-10 | 2008-11-14 | 5d |  | All Working Day Calendar | 추가개발설계 | 48648F3E0F9201F8E100800046140A10 | 07060716O410174 | P02-1 1.3.1 | 00000000000001277297 | DEFAULT |  |
| 105 | 3.1.6.1 | 메뉴구조도작성 | 5d | 2008-11-10 A | 2008-11-14 A | 89 | 100% | 2008-11-10 | 2008-11-14 | 5d |  | All Working Day Calendar | 추가개발설계 | 48648F3E0F9201F8E100800046140A10 | 07060716O410174 | P02-1 1.3.1 | 00000000000001277297 | DEFAULT | 메뉴구조도 |
| 106 | 3.2 | **컨버젼 설계** | 34d | 2008-09-29 A | 2008-11-14 A |  | 100% | 2008-09-29 | 2008-11-14 | 34d |  | All Working Day Calendar | 컨버젼 설계 | 48648F400F9201F8E100800046140A10 | 07060716O410175 | P02-1 1.3.2 | 00000000000001277298 | DEFAULT |  |
| 107 | 3.2.1 | 테이블 매핑정의서 작성 지원 | 34d | 2008-09-29 A | 2008-11-14 A |  | 100% | 2008-09-29 | 2008-11-14 | 34d | start no earlier than 2008-09-29 | All Working Day Calendar | 컨버젼 설계 | 48648F440F9201F8E100800046140A10 | 07060716O410175 | P02-1 1.3.2 | 00000000000001277300 | DEFAULT |  |
| 108 | 3.2.2 | 데이터코드 매핑정의서 작성 지원 | 15d | 2008-10-27 A | 2008-11-14 A |  | 100% | 2008-10-27 | 2008-11-14 | 15d | start no earlier than 2008-10-27 | All Working Day Calendar | 컨버젼 설계 | 48648F440F9201F8E100800046140A10 | 07060716O410175 | P02-1 1.3.2 | 00000000000001277300 | DEFAULT |  |
| 109 | 3.3 | **타시스템 인터페이스 설계** | 13d | 2008-11-10 A | 2008-11-26 A |  | 100% | 2008-11-10 | 2008-11-26 | 13d |  | All Working Day Calendar | 추가개발설계 | 48648F180F9201F8E100800046140A10 | 07060716O410169 | P02-1 1.3.1 | 00000000000001277278 | DEFAULT |  |
| 110 | 3.3.1 | 인터페이스 목록(상세) 작성 | 5d | 2008-11-10 A | 2008-11-14 A |  | 100% | 2008-11-10 | 2008-11-14 | 5d | start no earlier than 2008-11-10 | All Working Day Calendar | 추가개발설계 | 48648F0A0F9201F8E100800046140A10 | 07060716O410168 | P02-1 1.3.1 | 00000000000001277271 | DEFAULT | 인터페이스목록 |
| 111 | 3.3.2 | **대내시스템 인터페이스 레이아웃 작성** | 13d | 2008-11-10 A | 2008-11-26 A |  | 100% | 2008-11-10 | 2008-11-26 | 13d |  | All Working Day Calendar | 추가개발설계 | 48648F180F9201F8E100800046140A10 | 07060716O410169 | P02-1 1.3.1 | 00000000000001277278 | DEFAULT | 인터페이스사양서 |
| 112 | 3.3.2.1 | 기간계 신계약 | 10d | 2008-11-10 A | 2008-11-21 A |  | 100% | 2008-11-10 | 2008-11-21 | 10d | start no earlier than 2008-11-10 | All Working Day Calendar | 추가개발설계 | 48648F0A0F9201F8E100800046140A10 | 07060716O410168 | P02-1 1.3.1 | 00000000000001277271 | DEFAULT |  |
| 113 | 3.3.2.2 | 기간계 수금/보전 | 10d | 2008-11-10 A | 2008-11-21 A |  | 100% | 2008-11-10 | 2008-11-21 | 10d | start no earlier than 2008-11-10 | All Working Day Calendar | 추가개발설계 | 48648F0A0F9201F8E100800046140A10 | 07060716O410168 | P02-1 1.3.1 | 00000000000001277271 | DEFAULT |  |
| 114 | 3.3.2.3 | 기간계 지급 | 10d | 2008-11-10 A | 2008-11-21 A |  | 100% | 2008-11-10 | 2008-11-21 | 10d | start no earlier than 2008-11-10 | All Working Day Calendar | 추가개발설계 | 48648F0A0F9201F8E100800046140A10 | 07060716O410168 | P02-1 1.3.1 | 00000000000001277271 | DEFAULT |  |
| 115 | 3.3.2.4 | 기간계 회계/마감 | 10d | 2008-11-10 A | 2008-11-21 A |  | 100% | 2008-11-10 | 2008-11-21 | 10d | start no earlier than 2008-11-10 | All Working Day Calendar | 추가개발설계 | 48648F0A0F9201F8E100800046140A10 | 07060716O410168 | P02-1 1.3.1 | 00000000000001277271 | DEFAULT |  |
| 116 | 3.3.2.5 | 안내장 | 10d | 2008-11-10 A | 2008-11-21 A |  | 100% | 2008-11-10 | 2008-11-21 | 10d | start no earlier than 2008-11-10 | All Working Day Calendar | 추가개발설계 | 48648F0A0F9201F8E100800046140A10 | 07060716O410168 | P02-1 1.3.1 | 00000000000001277271 | DEFAULT |  |
| 117 | 3.3.2.6 | Cyber Portal | 10d | 2008-11-10 A | 2008-11-21 A |  | 100% | 2008-11-10 | 2008-11-21 | 10d | start no earlier than 2008-11-10 | All Working Day Calendar | 추가개발설계 | 48648F0A0F9201F8E100800046140A10 | 07060716O410168 | P02-1 1.3.1 | 00000000000001277271 | DEFAULT |  |
| 118 | 3.3.2.7 | NFS 월마감 자료 | 13d | 2008-11-10 A | 2008-11-26 A |  | 100% | 2008-11-10 | 2008-11-26 | 13d | start no earlier than 2008-11-10 | All Working Day Calendar | 추가개발설계 | 48648F0A0F9201F8E100800046140A10 | 07060716O410168 | P02-1 1.3.1 | 00000000000001277271 | DEFAULT |  |
| 119 | 3.3.2.8 | 방카시스템 | 10d | 2008-11-10 A | 2008-11-21 A |  | 100% | 2008-11-10 | 2008-11-21 | 10d | start no earlier than 2008-11-10 | All Working Day Calendar | 추가개발설계 | 48648F0A0F9201F8E100800046140A10 | 07060716O410168 | P02-1 1.3.1 | 00000000000001277271 | DEFAULT |  |

| ID | WBS | Task | Duration | Start | Finish | Predecessors | Complete | Remaining | Baseline start | Baseline finish | Baseline duration | Total slack | Free slack | Constraint | Calendar | Text20 | Text22 | Text25 | Text26 | Text27 | Text28 | Text30 |
| --- | --- | --- | --- | --- | --- | --- | --- | --- | --- | --- | --- | --- | --- | --- | --- | --- | --- | --- | --- | --- | --- | --- |
| 120 | 3.4 | **단계완료** | 10d | 2008-11-17 A | 2008-11-28 A |  | 100% |  | 2008-11-17 | 2008-11-28 | 10d |  |  |  | All Working Day Calendar | 단계완료 | 48648FB40F9201F8E100800046140A10 | 07060716O410080 | P02-1 1.6.8 | 00000000000001277356 | DEFAULT |  |
| 121 | 3.4.1 | 요구사항추적표 작성 | 2d | 2008-11-17 A | 2008-11-18 A | 89 | 100% |  | 2008-11-17 | 2008-11-18 | 2d |  |  | start no earlier than 2008-11-17 | All Working Day Calendar | 단계완료 | 48648FB60F9201F8E100800046140A10 | 07060716O410080 | P02-1 1.6.8 | 00000000000001277357 | DEFAULT | 요구사항추적표 |
| 122 | 3.4.2 | 설계단계산출물 정리(Inspection) | 3d | 2008-11-19 A | 2008-11-21 A | 121 | 100% |  | 2008-11-19 | 2008-11-21 | 3d |  |  |  | All Working Day Calendar | 단계완료 | 48648FB60F9201F8E100800046140A10 | 07060716O410080 | P02-1 1.6.8 | 00000000000001277357 | DEFAULT | 인스펙션결과서 |
| 123 | 3.4.3 | 고객검토 실시 | 3d | 2008-11-24 A | 2008-11-26 A | 122 | 100% |  | 2008-11-24 | 2008-11-26 | 3d |  |  | start no earlier than 2008-11-24 | All Working Day Calendar | 단계완료 | 48648FB80F9201F8E100800046140A10 | 07060716O410080 | P02-1 1.6.8 | 00000000000001277358 | DEFAULT | 고객검토결과,시정조치서 |
| 124 | 3.4.4 | 고객승인 획득 | 2d | 2008-11-27 A | 2008-11-28 A | 123 | 100% |  | 2008-11-27 | 2008-11-28 | 2d |  |  |  | All Working Day Calendar | 단계완료 | 48648FBA0F9201F8E100800046140A10 | 07060716O410080 | P02-1 1.6.8 | 00000000000001277359 | DEFAULT | 고객인수확인서(PAD) |
| 125 | 4 | **Build/Unit Test** | 71d | 2008-12-01 A | 2009-03-13 |  | 10% | 63.6d | 2008-12-01 | 2009-03-13 | 71d | 85d |  |  | All Working Day Calendar | 개발 | 48648F4E0F9201F8E100800046140A10 | 07060716O410177 | P02-1 1.4 | 00000000000001277305 | DEFAULT |  |
| 126 | 4.1 | **추가개발/패키지 커스터마이징 및 Unit Test** | 61d | 2008-12-01 A | 2009-02-27 |  | 16% | 51d | 2008-12-01 | 2009-02-27 | 61d | 95d |  |  | All Working Day Calendar | 추가개발 프로그램코딩 | 48648F540F9201F8E100800046140A10 | 07060716O410178 | P02-1 1.4.1 | 00000000000001277308 | DEFAULT | 소스코드 및 단위테스트결과 |
| 127 | 4.1.1 | 개발 1주차(개발착수준비) | 5d | 2008-12-01 A | 2008-12-05 A |  | 100% |  | 2008-12-01 | 2008-12-05 | 5d |  |  | start no earlier than 2008-12-01 | All Working Day Calendar | 추가개발 프로그램코딩 | 48648F0A0F9201F8E100800046140A10 | 07060716O410168 | P02-1 1.4.1 | 00000000000001277271 | DEFAULT | 소스코드 및 단위테스트결과 |
| 128 | 4.1.2 | 개발 2주차 | 5d | 2008-12-08 A | 2008-12-12 A | 127 | 100% |  | 2008-12-08 | 2008-12-12 | 5d |  |  | start no earlier than 2008-12-01 | All Working Day Calendar | 추가개발 프로그램코딩 | 48648F0A0F9201F8E100800046140A10 | 07060716O410168 | P02-1 1.4.1 | 00000000000001277271 | DEFAULT | 소스코드 및 단위테스트결과 |
| 129 | 4.1.3 | 개발 3주차 | 5d | 2008-12-15 | 2008-12-19 | 128 |  |  | 2008-12-15 | 2008-12-19 | 5d | 95d | 0d | start no earlier than 2008-07-21 | All Working Day Calendar | 추가개발 프로그램코딩 | 48648F0A0F9201F8E100800046140A10 | 07060716O410168 | P02-1 1.4.1 | 00000000000001277271 | DEFAULT | 소스코드 및 단위테스트결과 |
| 130 | 4.1.4 | 개발 4주차 | 4d | 2008-12-22 | 2008-12-26 | 129 |  |  | 2008-12-22 | 2008-12-26 | 4d | 95d | 0d | start no earlier than 2008-11-17 | All Working Day Calendar | 추가개발 프로그램코딩 | 48648F0A0F9201F8E100800046140A10 | 07060716O410168 | P02-1 1.4.1 | 00000000000001277271 | DEFAULT | 소스코드 및 단위테스트결과 |
| 131 | 4.1.5 | 개발 5주차 | 4d | 2008-12-29 | 2009-01-02 | 130 |  |  | 2008-12-29 | 2009-01-02 | 4d | 95d | 0d | start no earlier than 2008-12-01 | All Working Day Calendar | 추가개발 프로그램코딩 | 48648F0A0F9201F8E100800046140A10 | 07060716O410168 | P02-1 1.4.1 | 00000000000001277271 | DEFAULT | 소스코드 및 단위테스트결과 |
| 132 | 4.1.6 | 개발 6주차 | 5d | 2009-01-05 | 2009-01-09 | 131 |  |  | 2009-01-05 | 2009-01-09 | 5d | 95d | 0d | start no earlier than 2008-12-01 | All Working Day Calendar | 추가개발 프로그램코딩 | 48648F0A0F9201F8E100800046140A10 | 07060716O410168 | P02-1 1.4.1 | 00000000000001277271 | DEFAULT | 소스코드 및 단위테스트결과 |
| 133 | 4.1.7 | 개발 7주차 | 5d | 2009-01-12 | 2009-01-16 | 132 |  |  | 2009-01-12 | 2009-01-16 | 5d | 95d | 0d | start no earlier than 2008-12-01 | All Working Day Calendar | 추가개발 프로그램코딩 | 48648F0A0F9201F8E100800046140A10 | 07060716O410168 | P02-1 1.4.1 | 00000000000001277271 | DEFAULT | 소스코드 및 단위테스트결과 |
| 134 | 4.1.8 | 개발 8주차 | 5d | 2009-01-19 | 2009-01-23 | 133 |  |  | 2009-01-19 | 2009-01-23 | 5d | 95d | 0d | start no earlier than 2008-07-21 | All Working Day Calendar | 추가개발 프로그램코딩 | 48648F0A0F9201F8E100800046140A10 | 07060716O410168 | P02-1 1.4.1 | 00000000000001277271 | DEFAULT | 소스코드 및 단위테스트결과 |
| 135 | 4.1.9 | 개발 9주차 | 3d | 2009-01-28 | 2009-01-30 | 134 |  |  | 2009-01-28 | 2009-01-30 | 3d | 95d | 0d | start no earlier than 2008-11-17 | All Working Day Calendar | 추가개발 프로그램코딩 | 48648F0A0F9201F8E100800046140A10 | 07060716O410168 | P02-1 1.4.1 | 00000000000001277271 | DEFAULT | 소스코드 및 단위테스트결과 |
| 136 | 4.1.10 | 개발 10주차 | 5d | 2009-02-02 | 2009-02-06 | 135 |  |  | 2009-02-02 | 2009-02-06 | 5d | 95d | 0d | start no earlier than 2008-12-01 | All Working Day Calendar | 추가개발 프로그램코딩 | 48648F0A0F9201F8E100800046140A10 | 07060716O410168 | P02-1 1.4.1 | 00000000000001277271 | DEFAULT | 소스코드 및 단위테스트결과 |
| 137 | 4.1.11 | 개발 11주차 | 5d | 2009-02-09 | 2009-02-13 | 136 |  |  | 2009-02-09 | 2009-02-13 | 5d | 95d | 0d | start no earlier than 2008-12-01 | All Working Day Calendar | 추가개발 프로그램코딩 | 48648F0A0F9201F8E100800046140A10 | 07060716O410168 | P02-1 1.4.1 | 00000000000001277271 | DEFAULT | 소스코드 및 단위테스트결과 |
| 138 | 4.1.12 | 개발 12주차 | 5d | 2009-02-16 | 2009-02-20 | 137 |  |  | 2009-02-16 | 2009-02-20 | 5d | 95d | 0d | start no earlier than 2008-12-01 | All Working Day Calendar | 추가개발 프로그램코딩 | 48648F0A0F9201F8E100800046140A10 | 07060716O410168 | P02-1 1.4.1 | 00000000000001277271 | DEFAULT | 소스코드 및 단위테스트결과 |
| 139 | 4.1.13 | 개발 13주차 | 5d | 2009-02-23 | 2009-02-27 | 138 |  |  | 2009-02-23 | 2009-02-27 | 5d | 95d |  | start no earlier than 2008-12-01 | All Working Day Calendar | 추가개발 프로그램코딩 | 48648F0A0F9201F8E100800046140A10 | 07060716O410168 | P02-1 1.4.1 | 00000000000001277271 | DEFAULT | 소스코드 및 단위테스트결과 |
| 140 | 4.2 | **테스트시나리오 작성** | 61d | 2008-12-01 A | 2009-02-27 |  | 8% | 56d | 2008-12-01 | 2009-02-27 | 61d | 95d |  |  | All Working Day Calendar | 추가개발 프로그램코딩 | 48648F540F9201F8E100800046140A10 | 07060716O410178 | P02-1 1.4.1 | 00000000000001277308 | DEFAULT | 테스트시나리오 |
| 141 | 4.2.1 | 테스트착수준비 | 5d | 2008-12-01 A | 2008-12-05 A |  | 100% |  | 2008-12-01 | 2008-12-05 | 5d |  |  | start no earlier than 2008-12-01 |  |  |  |  |  |  |  |  |
| 142 | 4.2.2 | 테스트목록 및 일정 확정 | 28d | 2008-12-08 | 2009-01-16 | 141 |  |  | 2008-12-08 | 2009-01-16 | 28d | 95d | 0d | start no earlier than 2008-12-08 | All Working Day Calendar | 추가개발 프로그램코딩 | 48648F0A0F9201F8E100800046140A10 | 07060716O410168 | P02-1 1.4.1 | 00000000000001277271 | DEFAULT | 테스트목록 |
| 143 | 4.2.3 | UAT시나리오 작성 - 비즈니스모듈1 | 5d | 2009-01-19 | 2009-01-23 | 142 |  |  | 2009-01-19 | 2009-01-23 | 5d | 95d | 0d | start no earlier than 2008-12-01 | All Working Day Calendar | 추가개발 프로그램코딩 | 48648F0A0F9201F8E100800046140A10 | 07060716O410168 | P02-1 1.4.1 | 00000000000001277271 | DEFAULT | UAT시나리오(E2E테스트시나리오) |
| 144 | 4.2.4 | UAT시나리오 작성 - 비즈니스모듈2 | 3d | 2009-01-28 | 2009-01-30 | 143 |  |  | 2009-01-28 | 2009-01-30 | 3d | 95d | 0d | start no earlier than 2008-07-21 | All Working Day Calendar | 추가개발 프로그램코딩 | 48648F0A0F9201F8E100800046140A10 | 07060716O410168 | P02-1 1.4.1 | 00000000000001277271 | DEFAULT | UAT시나리오(E2E테스트시나리오) |
| 145 | 4.2.5 | UAT시나리오 작성 - 비즈니스모듈3 | 5d | 2009-02-02 | 2009-02-06 | 144 |  |  | 2009-02-02 | 2009-02-06 | 5d | 95d | 0d | start no earlier than 2008-11-17 | All Working Day Calendar | 추가개발 프로그램코딩 | 48648F0A0F9201F8E100800046140A10 | 07060716O410168 | P02-1 1.4.1 | 00000000000001277271 | DEFAULT | UAT시나리오(E2E테스트시나리오) |
| 146 | 4.2.6 | UAT시나리오 작성 - 비즈니스모듈4 | 5d | 2009-02-09 | 2009-02-13 | 145 |  |  | 2009-02-09 | 2009-02-13 | 5d | 95d | 0d | start no earlier than 2008-12-01 | All Working Day Calendar | 추가개발 프로그램코딩 | 48648F0A0F9201F8E100800046140A10 | 07060716O410168 | P02-1 1.4.1 | 00000000000001277271 | DEFAULT | UAT시나리오(E2E테스트시나리오) |
| 147 | 4.2.7 | UAT시나리오 작성 - 비즈니스모듈5 | 5d | 2009-02-16 | 2009-02-20 | 146 |  |  | 2009-02-16 | 2009-02-20 | 5d | 95d | 0d | start no earlier than 2008-12-01 | All Working Day Calendar | 추가개발 프로그램코딩 | 48648F0A0F9201F8E100800046140A10 | 07060716O410168 | P02-1 1.4.1 | 00000000000001277271 | DEFAULT | UAT시나리오(E2E테스트시나리오) |
| 148 | 4.2.8 | UAT시나리오 작성 - 비즈니스모듈6 | 5d | 2009-02-23 | 2009-02-27 | 147 |  |  | 2009-02-23 | 2009-02-27 | 5d | 95d |  | start no earlier than 2008-12-01 | All Working Day Calendar | 추가개발 프로그램코딩 | 48648F0A0F9201F8E100800046140A10 | 07060716O410168 | P02-1 1.4.1 | 00000000000001277271 | DEFAULT | UAT시나리오(E2E테스트시나리오) |

| ID | WBS | Task | Duration | Start | Finish | Predecessors | Baseline start | Baseline finish | Baseline duration | Total slack | Free slack | Constraint | Calendar | Text20 | Text22 | Text25 | Text26 | Text27 | Text28 | Text30 |
| --- | --- | --- | --- | --- | --- | --- | --- | --- | --- | --- | --- | --- | --- | --- | --- | --- | --- | --- | --- | --- |
| 149 | 4.3 | **사전 E2E Test 실시** | 10d | 2009-03-02 | 2009-03-13 |  | 2009-03-02 | 2009-03-13 | 10d | 65d |  |  | All Working Day Calendar | 테스트실시 | 48648F560F9201F8E100800046140A10 | 07060716O410178 | P02-1 1.4.2 | 00000000000001277309 | DEFAULT | 테스트결과 |
| 150 | 4.3.1 | 사전 E2E Test - 주요프로세스1 | 5d | 2009-03-02 | 2009-03-06 |  | 2009-03-02 | 2009-03-06 | 5d | 65d | 0d | start no earlier than 2009-03-02 | All Working Day Calendar | 테스트실시 | 48648F0A0F9201F8E100800046140A10 | 07060716O410168 | P02-1 1.4.2 | 00000000000001277271 | DEFAULT |  |
| 151 | 4.3.2 | 사전 E2E Test - 주요프로세스2 | 5d | 2009-03-09 | 2009-03-13 | 150 | 2009-03-09 | 2009-03-13 | 5d | 65d | 0d | start no earlier than 2008-12-01 | All Working Day Calendar | 테스트실시 | 48648F0A0F9201F8E100800046140A10 | 07060716O410168 | P02-1 1.4.2 | 00000000000001277271 | DEFAULT |  |
| 152 | 4.4 | **개발단계 품질검증 및 단계완료** | 57d | 2008-12-19 | 2009-03-13 |  | 2008-12-19 | 2009-03-13 | 57d | 85d |  |  | All Working Day Calendar | 단계완료 | 48648FB40F9201F8E100800046140A10 | 07060716O410080 | P02-1 1.6.8 | 00000000000001277356 | DEFAULT |  |
| 153 | 4.4.1 | **Code Inspection 실시 및 보완** | 52d | 2008-12-19 | 2009-03-06 |  | 2008-12-19 | 2009-03-06 | 52d | 84d | 0d |  |  |  |  |  |  |  |  | Code Inspection 결과서 |
| 154 | 4.4.1.1 | Code Inspection 1차 | 1d | 2008-12-19 | 2008-12-19 |  | 2008-12-19 | 2008-12-19 | 1d | 136d |  | start no earlier than 2008-12-19 | All Working Day Calendar | 단계완료 | 48648FB60F9201F8E100800046140A10 | 07060716O410080 | P02-1 1.6.8 | 00000000000001277357 | DEFAULT |  |
| 155 | 4.4.1.2 | Code Inspection 2차 | 1d | 2009-01-02 | 2009-01-02 |  | 2009-01-02 | 2009-01-02 | 1d | 128d |  | start no earlier than 2009-01-02 | All Working Day Calendar | 단계완료 | 48648FB60F9201F8E100800046140A10 | 07060716O410080 | P02-1 1.6.8 | 00000000000001277357 | DEFAULT |  |
| 156 | 4.4.1.3 | Code Inspection 3차 | 1d | 2009-01-16 | 2009-01-16 |  | 2009-01-16 | 2009-01-16 | 1d | 118d |  | start no earlier than 2009-01-16 | All Working Day Calendar | 단계완료 | 48648FB60F9201F8E100800046140A10 | 07060716O410080 | P02-1 1.6.8 | 00000000000001277357 | DEFAULT |  |
| 157 | 4.4.1.4 | Code Inspection 4차 | 1d | 2009-01-30 | 2009-01-30 |  | 2009-01-30 | 2009-01-30 | 1d | 110d |  | start no earlier than 2009-01-30 | All Working Day Calendar | 단계완료 | 48648FB60F9201F8E100800046140A10 | 07060716O410080 | P02-1 1.6.8 | 00000000000001277357 | DEFAULT |  |
| 158 | 4.4.1.5 | Code Inspection 5차 | 1d | 2009-02-13 | 2009-02-13 |  | 2009-02-13 | 2009-02-13 | 1d | 100d |  | start no earlier than 2009-02-13 | All Working Day Calendar | 단계완료 | 48648FB60F9201F8E100800046140A10 | 07060716O410080 | P02-1 1.6.8 | 00000000000001277357 | DEFAULT |  |
| 159 | 4.4.1.6 | Code Inspection 6차 | 1d | 2009-02-20 | 2009-02-20 |  | 2009-02-20 | 2009-02-20 | 1d | 95d |  | start no earlier than 2009-02-20 | All Working Day Calendar | 단계완료 | 48648FB60F9201F8E100800046140A10 | 07060716O410080 | P02-1 1.6.8 | 00000000000001277357 | DEFAULT |  |
| 160 | 4.4.1.7 | Code Inspection 7차 | 1d | 2009-03-06 | 2009-03-06 |  | 2009-03-06 | 2009-03-06 | 1d | 84d |  | start no earlier than 2009-03-06 |  |  |  |  |  |  |  |  |
| 161 | 4.4.2 | 요구사항추적표 작성 | 5d | 2009-03-09 | 2009-03-13 | 153 | 2009-03-09 | 2009-03-13 | 5d | 84d |  |  |  |  |  |  |  |  |  | 요구사항추적표 |
| 162 | 5 | **E2E Test(End to End Test)** | 20d | 2009-03-16 | 2009-04-10 | 151 | 2009-03-16 | 2009-04-10 | 20d | 65d |  |  | All Working Day Calendar | 테스트실시 | 48648F580F9201F8E100800046140A10 | 07060716O410179 | P02-1 1.4.2 | 00000000000001277310 | DEFAULT |  |
| 163 | 5.1 | E2E 테스트 실시1 | 10d | 2009-03-16 | 2009-03-27 |  | 2009-03-16 | 2009-03-27 | 10d | 65d | 0d | start no earlier than 2009-03-16 | All Working Day Calendar | 테스트실시 | 48648F5A0F9201F8E100800046140A10 | 07060716O410179 | P02-1 1.4.2 | 00000000000001277311 | DEFAULT | 테스트시나리오(결과) |
| 164 | 5.2 | 테스트 결과확인 및 보완1 | 5d | 2009-03-23 | 2009-03-27 |  | 2009-03-23 | 2009-03-27 | 5d | 74d |  | start no earlier than 2009-03-23 |  |  |  |  |  |  |  | 테스트시나리오(결과) |
| 165 | 5.3 | E2E 테스트 실시2 | 10d | 2009-03-30 | 2009-04-10 | 163 | 2009-03-30 | 2009-04-10 | 10d | 64d |  |  |  |  |  |  |  |  |  | 테스트시나리오(결과) |
| 166 | 5.4 | 테스트 결과확인 및 보완2 | 5d | 2009-04-06 | 2009-04-10 |  | 2009-04-06 | 2009-04-10 | 5d | 64d |  | start no earlier than 2009-04-06 |  |  |  |  |  |  |  | 테스트시나리오(결과) |
| 167 | 6 | **개발 및 Test 검수** | 10d | 2009-04-13 | 2009-04-24 |  | 2009-04-13 | 2009-04-24 | 10d | 54d |  |  |  |  |  |  |  |  |  |  |
| 168 | 6.1 | 테스트결과제출 | 5d | 2009-04-13 | 2009-04-17 |  | 2009-04-13 | 2009-04-17 | 5d | 54d | 0d | start no earlier than 2009-04-13 |  |  |  |  |  |  |  | E2E테스트결과, 시스템테스트결과서 |
| 169 | 6.2 | 고객 테스트결과 확인 | 3d | 2009-04-20 | 2009-04-22 | 168 | 2009-04-20 | 2009-04-22 | 3d | 54d | 0d |  |  |  |  |  |  |  |  | 고객검토결과서 |
| 170 | 6.3 | 고객승인 획득 | 2d | 2009-04-23 | 2009-04-24 | 169 | 2009-04-23 | 2009-04-24 | 2d | 54d |  |  |  |  |  |  |  |  |  | 고객인수확인서(PAD) |
| 171 | 7 | **UAT(User Acceptance Test)** | 39d | 2009-04-13 | 2009-06-05 |  | 2009-04-13 | 2009-06-05 | 39d | 26d |  |  | All Working Day Calendar | 테스트실시 | 48648F580F9201F8E100800046140A10 | 07060716O410179 | P02-1 1.4.2 | 00000000000001277310 | DEFAULT |  |
| 172 | 7.1 | 사용자테스트 실시 | 39d | 2009-04-13 | 2009-06-05 |  | 2009-04-13 | 2009-06-05 | 39d | 26d |  | start no earlier than 2009-04-13 | All Working Day Calendar | 테스트실시 | 48648F5A0F9201F8E100800046140A10 | 07060716O410179 | P02-1 1.4.2 | 00000000000001277311 | DEFAULT | 사용자테스트결과 |
| 173 | 7.2 | 사용자매뉴얼 작성 | 10d | 2009-04-23 | 2009-05-08 |  | 2009-04-23 | 2009-05-08 | 10d | 46d |  | start no earlier than 2009-04-23 |  |  |  |  |  |  |  | 사용자매뉴얼 |
| 174 | 7.3 | 사용자교육 실시 | 20d | 2009-05-11 | 2009-06-05 |  | 2009-05-11 | 2009-06-05 | 20d | 26d |  | start no earlier than 2009-05-11 |  |  |  |  |  |  |  | 교육교재 |

| ID | WBS | Task | Duration | Start | Finish | Predecessors | Baseline start | Baseline finish | Baseline duration | Total slack | Free slack | Constraint | Calendar | Text20 | Text22 | Text25 | Text26 | Text27 | Text28 | Text30 |
| --- | --- | --- | --- | --- | --- | --- | --- | --- | --- | --- | --- | --- | --- | --- | --- | --- | --- | --- | --- | --- |
| 175 | 8 | **ORT(Operation Readiness Test)** | 35d | 2009-05-25 | 2009-07-10 |  | 2009-06-08 | 2009-07-10 | 25d | 1d |  |  | All Working Day Calendar | 구현 | 48648F5E0F9201F8E100800046140A10 | 07060716O410180 | P02-1 1.5 | 00000000000001277313 | DEFAULT |  |
| 176 | 8.1 | **구현계획수립** | 10d | 2009-05-25 | 2009-06-05 |  | 2009-06-08 | 2009-06-12 | 5d | 16d |  |  | All Working Day Calendar | 구현계획수립 | 48648F600F9201F8E100800046140A10 | 07060716O410181 | P02-1 1.5.1 | 00000000000001277314 | DEFAULT |  |
| 177 | 8.1.1 | 릴리이즈및비상계획수립 | 5d | 2009-05-25 | 2009-05-29 |  | 2009-06-08 | 2009-06-12 | 5d | 31d |  | start no earlier than 2009-05-25 | All Working Day Calendar | 구현계획수립 | 48648F620F9201F8E100800046140A10 | 07060716O410181 | P02-1 1.5.1 | 00000000000001277315 | DEFAULT | 구현계획서 |
| 178 | 8.1.2 | 교육훈련계획수립 | 5d | 2009-06-01 | 2009-06-05 |  | 2009-06-08 | 2009-06-12 | 5d | 11d | 5d | start no earlier than 2009-06-01 | All Working Day Calendar | 구현계획수립 | 48648F640F9201F8E100800046140A10 | 07060716O410181 | P02-1 1.5.1 | 00000000000001277316 | DEFAULT | 교육계획서 |
| 179 | 8.2 | **시범운영** | 25d | 2009-06-08 | 2009-07-10 |  | 2009-06-08 | 2009-07-10 | 25d | 1d |  |  | All Working Day Calendar | 시범운영 | 48648F7A0F9201F8E100800046140A10 | 07060716O410184 | P02-1 1.5.4 | 00000000000001277327 | DEFAULT |  |
| 180 | 8.2.1 | 시범운영계획 수립 | 5d | 2009-06-08 | 2009-06-12 |  | 2009-06-08 | 2009-06-12 | 5d | 21d |  | start no earlier than 2009-06-08 | All Working Day Calendar | 시범운영 | 48648F7C0F9201F8E100800046140A10 | 07060716O410184 | P02-1 1.5.4 | 00000000000001277328 | DEFAULT | 시범운영계획서 |
| 181 | 8.2.2 | 시범운영 실시 | 25d | 2009-06-08 | 2009-07-10 |  | 2009-06-08 | 2009-07-10 | 25d | 1d |  | start no earlier than 2009-06-08 | All Working Day Calendar | 시범운영 | 48648F7E0F9201F8E100800046140A10 | 07060716O410184 | P02-1 1.5.4 | 00000000000001277329 | DEFAULT | 시범운영일지 |
| 182 | 8.3 | **시스템사용교육** | 15d | 2009-06-15 | 2009-07-03 |  | 2009-06-15 | 2009-07-03 | 15d | 6d |  |  | All Working Day Calendar | 시스템사용교육 | 48648F720F9201F8E100800046140A10 | 07060716O410183 | P02-1 1.5.3 | 00000000000001277323 | DEFAULT |  |
| 183 | 8.3.1 | 운영매뉴얼 작성 | 10d | 2009-06-15 | 2009-06-26 | 178 | 2009-06-15 | 2009-06-26 | 10d | 6d | 0d | start no earlier than 2009-06-15 | All Working Day Calendar | 시스템사용교육 | 48648F760F9201F8E100800046140A10 | 07060716O410183 | P02-1 1.5.3 | 00000000000001277325 | DEFAULT | 운영매뉴얼 |
| 184 | 8.3.2 | 운영자교육 실시 | 5d | 2009-06-29 | 2009-07-03 | 183 | 2009-06-29 | 2009-07-03 | 5d | 6d |  |  | All Working Day Calendar | 시스템사용교육 | 48648F780F9201F8E100800046140A10 | 07060716O410183 | P02-1 1.5.3 | 00000000000001277326 | DEFAULT | 교육교재 |
| 185 | 8.4 | **시스템 인수인계** | 20d | 2009-06-08 | 2009-07-03 |  | 2009-06-08 | 2009-07-03 | 20d | 6d |  |  | All Working Day Calendar | 시스템 인수인계 | 48648F7A0F9201F8E100800046140A10 | 07060716O410184 | P02-1 1.7.2 | 00000000000001277327 | DEFAULT |  |
| 186 | 8.4.1 | 인수인계계획 수립 | 5d | 2009-06-08 | 2009-06-12 |  | 2009-06-08 | 2009-06-12 | 5d | 6d | 0d | start no earlier than 2009-06-08 | All Working Day Calendar | 시스템 인수인계 | 48648F7C0F9201F8E100800046140A10 | 07060716O410184 | P02-1 1.7.2 | 00000000000001277328 | DEFAULT | 인수인계계획서 |
| 187 | 8.4.2 | 인수인계 실시 | 15d | 2009-06-15 | 2009-07-03 | 186 | 2009-06-15 | 2009-07-03 | 15d | 6d |  | start no earlier than 2009-06-15 | All Working Day Calendar | 시스템 인수인계 | 48648F7E0F9201F8E100800046140A10 | 07060716O410184 | P02-1 1.7.2 | 00000000000001277329 | DEFAULT | 인수인계확인서 |
| 188 | 8.5 | **오픈 준비** | 5d | 2009-07-06 | 2009-07-10 |  | 2009-07-06 | 2009-07-10 | 5d | 1d |  |  | All Working Day Calendar | 컨버젼 및 릴리이즈 | 48648F660F9201F8E100800046140A10 | 07060716O410182 | P02-1 1.5.2 | 00000000000001277317 | DEFAULT |  |
| 189 | 8.5.1 | 데이터베이스 구축 | 5d | 2009-07-06 | 2009-07-10 |  | 2009-07-06 | 2009-07-10 | 5d | 1d |  | start no earlier than 2009-07-06 | All Working Day Calendar | 컨버젼 및 릴리이즈 | 48648F680F9201F8E100800046140A10 | 07060716O410182 | P02-1 1.5.2 | 00000000000001277318 | DEFAULT |  |
| 190 | 8.5.2 | 소프트웨어 설치 | 5d | 2009-07-06 | 2009-07-10 |  | 2009-07-06 | 2009-07-10 | 5d | 1d |  | start no earlier than 2009-07-06 | All Working Day Calendar | 컨버젼 및 릴리이즈 | 48648F6A0F9201F8E100800046140A10 | 07060716O410182 | P02-1 1.5.2 | 00000000000001277319 | DEFAULT |  |
| 191 | 8.5.3 | 데이터컨버전 | 5d | 2009-07-06 | 2009-07-10 |  | 2009-07-06 | 2009-07-10 | 5d | 1d |  | start no earlier than 2009-07-06 | All Working Day Calendar | 컨버젼 및 릴리이즈 | 48648F6C0F9201F8E100800046140A10 | 07060716O410182 | P02-1 1.5.2 | 00000000000001277320 | DEFAULT |  |
| 192 | 8.5.4 | 시스템 릴리이즈 | 1d | 2009-07-10 | 2009-07-10 |  | 2009-07-10 | 2009-07-10 | 1d | 1d |  | start no earlier than 2009-07-10 | All Working Day Calendar | 컨버젼 및 릴리이즈 | 48648F700F9201F8E100800046140A10 | 07060716O410182 | P02-1 1.5.2 | 00000000000001277322 | DEFAULT |  |
| 193 | 9 | **Go Live** | 1d | 2009-07-13 | 2009-07-13 |  | 2009-07-13 | 2009-07-13 | 1d | 0d |  |  |  | 컨버젼 및 릴리이즈 |  |  | P02-1 1.5.2 |  |  |  |
| 194 | 9.1 | 시스템 최종 오픈 | 1d | 2009-07-13 | 2009-07-13 |  | 2009-07-13 | 2009-07-13 | 1d | 0d |  | start no earlier than 2009-07-13 |  |  |  |  |  |  |  |  |
