# 09.마이그레이션

Schedule from MS Project, 2008-07-23 to 2009-07-17, status date 2008-12-11, A marks actual dates.
HSIC-0820606
삼성SDS

## Calendars

- 한국: Mon-Fri 08:00-12:00, 13:00-17:00; Sat-Sun off. Exceptions (off unless hours are given): 2008-08-15, 2008-09-13 to 2008-09-15, 2008-10-03, 2008-12-25, 2009-01-01, 2009-01-25 to 2009-01-27, 2009-03-01, 2009-05-01 to 2009-05-02, 2009-05-05, 2009-06-06.

## Resources

| Resource | Rate | Cost per use |
| --- | --- | --- |
| PM | 1 | 1 |
| QAO | 1 | 1 |
| PL | 1 | 1 |
| SA | 1 |  |
| TA | 1 |  |
| F/W | 1 |  |
| UI | 1 |  |
| 개발팀 | 1 |  |
| FW | 1 |  |
| DBIO | 1 |  |
| SA.F/W | 1 |  |
| IBM | 1 |  |
| Tmax | 1 |  |
| PJT | 1 |  |
| NCRM | 1 |  |
| StarTeam | 1 |  |
| CaliberRM | 1 |  |
| TestDirector | 1 |  |
| 생보기술지원파트 | 1 |  |
| RM | 1 |  |
| QTP | 1 |  |
| EAI | 1 |  |
| AnyLink | 1 |  |
| 메타블루 | 1 |  |
| Tivoli | 1 |  |
| Syncsort | 1 |  |
| Rule | 1 |  |
| Printing | 1 |  |
| 이미지 | 1 |  |
| 시스템공통 | 1 |  |
| SA.레포팅 | 1 |  |
| SA.프린팅 | 1 |  |
| DBA | 1 |  |
| 데이터이행 | 1 |  |
| SSO | 1 |  |
| 김현규 |  |  |
| 김용세 |  |  |

## Schedule

| ID | WBS | Task | Duration | Start | Finish | Predecessors | Complete | Baseline start | Baseline finish | Baseline duration | Constraint | Resources | Work | Actual work | Text20 | Text26 | Text10 | Text1 | Text22 | Text25 | Text27 | Text28 | Text30 | Text2 |
| --- | --- | --- | --- | --- | --- | --- | --- | --- | --- | --- | --- | --- | --- | --- | --- | --- | --- | --- | --- | --- | --- | --- | --- | --- |
| 1 | PSR10.01 | **Inception** | 3d | 2008-07-23 A | 2008-07-25 A |  | 100% | 2008-07-23 | 2008-07-25 | 3d |  |  |  |  | 프로젝트 착수 | P02-1 1.1 |  |  |  |  |  |  |  |  |
| 2 | PSR10.01.01 | 업무범위 정의 | 3d | 2008-07-23 A | 2008-07-25 A |  | 100% | 2008-07-23 | 2008-07-25 | 3d | start no earlier than 2008-07-23 |  |  |  | 착수준비 | P02-1 1.1.1 | 한길수 |  |  |  |  |  |  |  |
| 3 | PSR10.01.02 | 업무파트 WBS 정의 | 3d | 2008-07-23 A | 2008-07-25 A |  | 100% | 2008-07-23 | 2008-07-25 | 3d | start no earlier than 2008-07-23 |  |  |  | 착수준비 | P02-1 1.1.1 | 한길수 | WBS |  |  |  |  |  |  |
| 4 | PSR10.02 | **Analysis** | 43d | 2008-07-28 A | 2008-09-26 A |  | 100% | 2008-07-28 | 2008-09-26 | 43d |  |  |  |  |  |  |  |  |  |  |  |  |  |  |
| 5 | PSR10.02.01 | **구조 분석** | 38d | 2008-07-28 A | 2008-09-19 A |  | 100% | 2008-07-28 | 2008-09-19 | 38d |  |  |  |  |  |  |  |  |  |  |  |  |  |  |
| 6 | PSR10.02.01.01 | 마이그레이션 대상 범위 확정 | 5d | 2008-08-01 A | 2008-08-07 A |  | 100% | 2008-08-01 | 2008-08-07 | 5d | start no earlier than 2008-08-01 |  |  |  |  |  |  |  |  |  |  |  |  |  |
| 7 | PSR10.02.01.02 | 착수W/S | 1d | 2008-08-06 A | 2008-08-06 A |  | 100% | 2008-08-06 | 2008-08-06 | 1d | start no earlier than 2008-08-06 |  |  |  |  |  |  |  |  |  |  |  |  |  |
| 8 | PSR10.02.01.03 | **As-Is 시스템 DB구조분석** | 38d | 2008-07-28 A | 2008-09-19 A |  | 100% | 2008-07-28 | 2008-09-19 | 38d |  |  |  |  |  |  |  | AS-IS 테이블목록/정의서/코드정의서 |  |  |  |  |  |  |
| 9 | PSR10.02.01.03.01 | 현행 시스템 Table/Column/코드 목록 취합 | 9d | 2008-07-28 A | 2008-08-07 A |  | 100% | 2008-07-28 | 2008-08-07 | 9d | start no earlier than 2008-07-28 |  |  |  |  |  |  |  |  |  |  |  |  |  |
| 10 | PSR10.02.01.03.02 | 현행 시스템 Table/Column/코드 분석 | 11d | 2008-08-08 A | 2008-08-25 A | 9 | 100% | 2008-08-08 | 2008-08-25 | 11d | start no earlier than 2008-08-08 |  |  |  |  |  |  |  |  |  |  |  |  |  |
| 11 | PSR10.02.01.03.03 | 현행 시스템 Table/Column/코드 현업리뷰 | 10d | 2008-08-26 A | 2008-09-08 A | 10 | 100% | 2008-08-26 | 2008-09-08 | 10d | start no earlier than 2008-08-26 |  |  |  |  |  |  |  |  |  |  |  |  |  |
| 12 | PSR10.02.01.03.04 | 현행 시스템 코드정의서 취합/분석 | 8d | 2008-09-09 A | 2008-09-19 A | 11 | 100% | 2008-09-09 | 2008-09-19 | 8d | start no earlier than 2008-09-09 |  |  |  |  |  |  |  |  |  |  |  |  |  |
| 13 | PSR10.02.03 | **데이터 프로파일링 1차(업무별 원장 1개 대상)** | 17d | 2008-08-13 A | 2008-09-05 A |  | 100% | 2008-08-13 | 2008-09-05 | 17d |  |  |  |  |  |  |  |  |  |  |  |  |  |  |
| 14 | PSR10.02.03.01 | 업무별 속성 검토 범위 결정 | 3d | 2008-08-13 A | 2008-08-18 A |  | 100% | 2008-08-13 | 2008-08-18 | 3d | start no earlier than 2008-08-13 |  |  |  |  |  |  |  |  |  |  |  |  |  |
| 15 | PSR10.02.03.02 | 속성검토 프로파일링 대상 선정(컬럼 확정 및 개발) | 7d | 2008-08-19 A | 2008-08-27 A | 14 | 100% | 2008-08-19 | 2008-08-27 | 7d | start no earlier than 2008-08-19 |  |  |  |  |  |  |  |  |  |  |  |  |  |
| 16 | PSR10.02.03.03 | 속성검토 프로파일링 작업수행(인포매티카) | 7d | 2008-08-28 A | 2008-09-05 A | 15 | 100% | 2008-08-28 | 2008-09-05 | 7d | start no earlier than 2008-08-28 |  |  |  |  |  |  | 오류데이터내역 |  |  |  |  |  |  |
| 17 | 2.3 | **테이블매핑정의** | 4d | 2008-09-16 A | 2008-09-19 A |  | 100% | 2008-09-16 | 2008-09-19 | 4d |  |  |  |  |  |  |  |  |  |  |  |  |  |  |
| 18 | 2.3.1 | 테이블매핑정의서초안작성(마이그+현업+개발+운영IT) | 4d | 2008-09-16 A | 2008-09-19 A |  | 100% | 2008-09-16 | 2008-09-19 | 4d | start no earlier than 2008-09-16 |  |  |  |  |  |  |  |  |  |  |  |  |  |
| 19 | PSR10.02.04 | **단계완료** | 5d | 2008-09-22 A | 2008-09-26 A |  | 100% | 2008-09-22 | 2008-09-26 | 5d |  |  |  |  | 단계완료 | P02-1 1.6.8 |  |  | 48648FB40F9201F8E100800046140A10 | 07060716O410080 | 00000000000001277356 | DEFAULT |  |  |
| 20 | PSR10.02.04.01 | 분석단계산출물 정리(Inspection) | 2d | 2008-09-22 A | 2008-09-23 A |  | 100% | 2008-09-22 | 2008-09-23 | 2d | start no earlier than 2008-09-22 |  |  |  | 단계결과 정리 | P02-1 1.6.8.1 |  | 인스펙션결과서 | 48648FB60F9201F8E100800046140A10 | 07060716O410080 | 00000000000001277357 | DEFAULT | 인스펙션결과서 |  |
| 21 | PSR10.02.04.02 | 고객검토 실시 | 2d | 2008-09-24 A | 2008-09-25 A |  | 100% | 2008-09-24 | 2008-09-25 | 2d | start no earlier than 2008-09-24 |  |  |  | 고객검토 실시 | P02-1 1.6.8.2 |  | 고객검토결과서 | 48648FB80F9201F8E100800046140A10 | 07060716O410080 | 00000000000001277358 | DEFAULT | 고객검토결과서 |  |
| 22 | PSR10.02.04.03 | 고객승인 획득 | 1d | 2008-09-26 A | 2008-09-26 A |  | 100% | 2008-09-26 | 2008-09-26 | 1d | start no earlier than 2008-09-26 |  |  |  | 고객승인 획득 | P02-1 1.6.8.3 |  | 고객인수확인서(PAD) | 48648FBA0F9201F8E100800046140A10 | 07060716O410080 | 00000000000001277359 | DEFAULT | 고객인수확인서(PAD) |  |
| 23 | PSR10.03 | **Design** | 44d | 2008-09-29 A | 2008-11-28 A |  | 100% | 2008-09-29 | 2008-11-28 | 44d |  |  | 31h | 31h |  |  |  |  |  |  |  |  |  |  |
| 24 | PSR10.03.01 | **데이터 변환 설계** | 34d | 2008-09-29 A | 2008-11-14 A |  | 100% | 2008-09-29 | 2008-11-14 | 34d |  |  | 31h | 31h |  |  |  |  |  |  |  |  |  |  |
| 25 | PSR10.03.01.01 | **설계방안 정의** | 3.88d | 2008-09-29 A | 2008-10-02 A |  | 100% | 2008-09-29 | 2008-10-02 | 3.88d |  |  | 31h | 31h |  |  |  |  |  |  |  |  |  |  |
| 26 | PSR10.03.01.01.01 | 데이터 이행 설계 일정수립 및 설계방안 정의 | 3.88d | 2008-09-29 A | 2008-10-02 A |  | 100% | 2008-09-29 | 2008-10-02 | 3.88d | start no earlier than 2008-09-29 | 김현규 | 31h | 31h |  |  |  | 이행시나리오 |  |  |  |  |  | 데이터매핑가이드 |

Notes:
- 10: 1. DQ 팀에서 도출 되는 중요 도매인별 값 분포도 / 2. DQ 팀에서 도출 되는 코드 통계 자료 / 3. DQ 팀에서 도출 되는 데이터 품질 측정 기준 자료

| ID | WBS | Task | Duration | Start | Finish | Predecessors | Complete | Remaining | Baseline start | Baseline finish | Baseline duration | Total slack | Free slack | Constraint | Text2 | Text1 | Text20 | Text22 | Text25 | Text26 | Text27 | Text28 | Text30 |
| --- | --- | --- | --- | --- | --- | --- | --- | --- | --- | --- | --- | --- | --- | --- | --- | --- | --- | --- | --- | --- | --- | --- | --- |
| 27 | PSR10.03.01.02 | **데이터 매핑 설계** | 30d | 2008-10-06 A | 2008-11-14 A |  | 100% |  | 2008-10-06 | 2008-11-14 | 30d |  |  |  | 데이터매핑정의서 |  |  |  |  |  |  |  |  |
| 28 | PSR10.03.01.02.01 | 데이터 이행 테이블 매핑 정의서 작성 (원장성) | 3d | 2008-10-06 A | 2008-10-08 A |  | 100% |  | 2008-10-06 | 2008-10-08 | 3d |  |  | start no earlier than 2008-10-06 |  | 테이블매핑정의서 |  |  |  |  |  |  |  |
| 29 | PSR10.03.01.02.02 | 데이터 이행 컬럼 매핑 정의서 작성(원장성) | 15d | 2008-10-09 A | 2008-10-29 A | 28 | 100% |  | 2008-10-09 | 2008-10-29 | 15d |  |  | start no earlier than 2008-10-09 |  |  |  |  |  |  |  |  |  |
| 30 | PSR10.03.01.02.03 | 데이터 이행 코드 매핑 정의서 작성(원장성) | 15d | 2008-10-09 A | 2008-10-29 A |  | 100% |  | 2008-10-09 | 2008-10-29 | 15d |  |  | start no earlier than 2008-10-09 |  |  |  |  |  |  |  |  |  |
| 31 | PSR10.03.01.02.04 | 데이터 이행 테이블 매핑 정의서 작성 (비원장성) | 2d | 2008-10-30 A | 2008-10-31 A | 29 | 100% |  | 2008-10-30 | 2008-10-31 | 2d |  |  | start no earlier than 2008-10-30 |  |  |  |  |  |  |  |  |  |
| 32 | PSR10.03.01.02.05 | 데이터 이행 컬럼 매핑 정의서 작성(비원장성) | 10d | 2008-11-03 A | 2008-11-14 A | 31 | 100% |  | 2008-11-03 | 2008-11-14 | 10d |  |  | start no earlier than 2008-11-03 |  |  |  |  |  |  |  |  |  |
| 33 | PSR10.03.01.02.06 | 데이터 이행 코드 매핑 정의서 작성(비원장성) | 10d | 2008-11-03 A | 2008-11-14 A |  | 100% |  | 2008-11-03 | 2008-11-14 | 10d |  |  | start no earlier than 2008-11-03 |  |  |  |  |  |  |  |  |  |
| 34 | PSR10.03.03 | **데이터 이행 관계 설계** | 5d | 2008-11-10 A | 2008-11-14 A |  | 100% |  | 2008-11-10 | 2008-11-14 | 5d |  |  |  |  |  |  |  |  |  |  |  |  |
| 35 | PSR10.03.03.01 | **데이터 이행 흐름 분석** | 5d | 2008-11-10 A | 2008-11-14 A |  | 100% |  | 2008-11-10 | 2008-11-14 | 5d |  |  |  |  |  |  |  |  |  |  |  |  |
| 36 | PSR10.03.03.01.01 | 테이블 및 시스템별 흐름 분석 및 작성 | 5d | 2008-11-10 A | 2008-11-14 A |  | 100% |  | 2008-11-10 | 2008-11-14 | 5d |  |  | start no earlier than 2008-11-10 |  | 프로그램사양서(목록),이행Flow정의서 |  |  |  |  |  |  |  |
| 37 | PSR10.03.04 | **단계완료** | 10d | 2008-11-17 A | 2008-11-28 A |  | 100% |  | 2008-11-17 | 2008-11-28 | 10d |  |  |  |  |  | 단계완료 | 48648FB40F9201F8E100800046140A10 | 07060716O410080 | P02-1 1.6.8 | 00000000000001277356 | DEFAULT |  |
| 38 | PSR10.03.04.01 | 설계단계산출물 정리(Inspection) | 4d | 2008-11-17 A | 2008-11-20 A |  | 100% |  | 2008-11-17 | 2008-11-20 | 4d |  |  | start no earlier than 2008-11-17 |  | 인스펙션결과서 | 단계결과 정리 | 48648FB60F9201F8E100800046140A10 | 07060716O410080 | P02-1 1.6.8.1 | 00000000000001277357 | DEFAULT | 인스펙션결과서 |
| 39 | PSR10.03.04.02 | 고객검토 실시 | 3d | 2008-11-24 A | 2008-11-26 A |  | 100% |  | 2008-11-24 | 2008-11-26 | 3d |  |  | start no earlier than 2008-11-24 |  | 고객검토결과서 | 고객검토 실시 | 48648FB80F9201F8E100800046140A10 | 07060716O410080 | P02-1 1.6.8.2 | 00000000000001277358 | DEFAULT | 고객검토결과서 |
| 40 | PSR10.03.04.03 | 고객승인 획득 | 2d | 2008-11-27 A | 2008-11-28 A |  | 100% |  | 2008-11-27 | 2008-11-28 | 2d |  |  | start no earlier than 2008-11-27 |  | 고객인수확인서(PAD) | 고객승인 획득 | 48648FBA0F9201F8E100800046140A10 | 07060716O410080 | P02-1 1.6.8.3 | 00000000000001277359 | DEFAULT | 고객인수확인서(PAD) |
| 41 | PSR10.04 | **Build** | 71d | 2008-12-01 A | 2009-03-13 |  | 13% | 62.03d | 2008-12-01 | 2009-03-13 | 71d | 88d |  |  |  |  |  |  |  |  |  |  |  |
| 42 | PSR10.04.02 | **추가 테이블 확인** | 22d | 2008-12-01 A | 2008-12-31 |  | 42% | 12.81d | 2008-12-01 | 2008-12-31 | 22d | 137d |  |  |  |  |  |  |  |  |  |  |  |
| 43 | PSR10.04.02.01 | 미매핑테이블 확인 | 1d | 2008-12-01 A | 2008-12-01 A |  | 100% |  | 2008-12-01 | 2008-12-01 | 1d |  |  | start no earlier than 2008-12-01 |  |  |  |  |  |  |  |  |  |
| 44 | PSR10.04.02.02 | 정보성테이블 분류 | 21d | 2008-12-02 A | 2008-12-31 | 43 | 39% | 12.81d | 2008-12-02 | 2008-12-31 | 21d | 137d |  | start no earlier than 2008-12-02 | 데이터단위검증방안서 |  |  |  |  |  |  |  |  |
| 45 | PSR10.04.03 | **변환 구현 및 수행** | 71d | 2008-12-01 A | 2009-03-13 |  | 7% | 65.76d | 2008-12-01 | 2009-03-13 | 71d | 88d |  |  |  |  |  |  |  |  |  |  |  |
| 46 | PSR10.04.03.01 | **데이터 전환 프로그램 개발 테스트 및 매핑보정** | 71d | 2008-12-01 A | 2009-03-13 |  | 13% | 62d | 2008-12-01 | 2009-03-13 | 71d | 88d |  |  | 데이터이행PGM목록 | 이행 환경/소스코드 |  |  |  |  |  |  |  |
| 47 | 4.2.1.1 | 데이터 전환 개발 및 매핑보정 1주차 | 5d | 2008-12-01 A | 2008-12-05 A |  | 100% |  | 2008-12-01 | 2008-12-05 | 5d |  |  | start no earlier than 2008-12-01 |  |  | 추가개발 프로그램코딩 | 48648F0A0F9201F8E100800046140A10 | 07060716O410168 | P02-1 1.4.1 | 00000000000001277271 | DEFAULT |  |
| 48 | 4.2.1.2 | 데이터 전환 개발 및 매핑보정 2주차 | 5d | 2008-12-08 A | 2008-12-12 | 47 | 80% | 1d | 2008-12-08 | 2008-12-12 | 5d | 88d | 0d | start no earlier than 2008-12-01 |  |  | 추가개발 프로그램코딩 | 48648F0A0F9201F8E100800046140A10 | 07060716O410168 | P02-1 1.4.1 | 00000000000001277271 | DEFAULT |  |
| 49 | 4.2.1.3 | 데이터 전환 개발 및 매핑보정 3주차 | 5d | 2008-12-15 | 2008-12-19 | 48 |  |  | 2008-12-15 | 2008-12-19 | 5d | 88d | 0d | start no earlier than 2008-07-21 |  |  | 추가개발 프로그램코딩 | 48648F0A0F9201F8E100800046140A10 | 07060716O410168 | P02-1 1.4.1 | 00000000000001277271 | DEFAULT |  |
| 50 | 4.2.1.4 | 데이터 전환 개발 및 매핑보정 4주차 | 4d | 2008-12-22 | 2008-12-26 | 49 |  |  | 2008-12-22 | 2008-12-26 | 4d | 88d | 0d | start no earlier than 2008-11-17 |  |  | 추가개발 프로그램코딩 | 48648F0A0F9201F8E100800046140A10 | 07060716O410168 | P02-1 1.4.1 | 00000000000001277271 | DEFAULT |  |
| 51 | 4.2.1.5 | 데이터 전환 개발 및 매핑보정 5주차 | 4d | 2008-12-29 | 2009-01-02 | 50 |  |  | 2008-12-29 | 2009-01-02 | 4d | 88d | 0d | start no earlier than 2008-12-01 |  |  | 추가개발 프로그램코딩 | 48648F0A0F9201F8E100800046140A10 | 07060716O410168 | P02-1 1.4.1 | 00000000000001277271 | DEFAULT |  |
| 52 | 4.2.1.6 | 데이터 전환 개발 및 매핑보정 6주차 | 5d | 2009-01-05 | 2009-01-09 | 51 |  |  | 2009-01-05 | 2009-01-09 | 5d | 88d | 0d | start no earlier than 2008-12-01 |  |  | 추가개발 프로그램코딩 | 48648F0A0F9201F8E100800046140A10 | 07060716O410168 | P02-1 1.4.1 | 00000000000001277271 | DEFAULT |  |
| 53 | 4.2.1.7 | 데이터 전환 개발 및 매핑보정 7주차 | 5d | 2009-01-12 | 2009-01-16 | 52 |  |  | 2009-01-12 | 2009-01-16 | 5d | 88d | 0d | start no earlier than 2008-12-01 |  |  | 추가개발 프로그램코딩 | 48648F0A0F9201F8E100800046140A10 | 07060716O410168 | P02-1 1.4.1 | 00000000000001277271 | DEFAULT |  |
| 54 | 4.2.1.8 | 데이터 전환 개발 및 매핑보정 8주차 | 5d | 2009-01-19 | 2009-01-23 | 53 |  |  | 2009-01-19 | 2009-01-23 | 5d | 88d | 0d | start no earlier than 2008-07-21 |  |  | 추가개발 프로그램코딩 | 48648F0A0F9201F8E100800046140A10 | 07060716O410168 | P02-1 1.4.1 | 00000000000001277271 | DEFAULT |  |
| 55 | 4.2.1.9 | 데이터 전환 개발 및 매핑보정 9주차 | 3d | 2009-01-28 | 2009-01-30 | 54 |  |  | 2009-01-28 | 2009-01-30 | 3d | 88d | 0d | start no earlier than 2008-11-17 |  |  | 추가개발 프로그램코딩 | 48648F0A0F9201F8E100800046140A10 | 07060716O410168 | P02-1 1.4.1 | 00000000000001277271 | DEFAULT |  |
| 56 | 4.2.1.10 | 데이터 전환 개발 및 매핑보정 10주차 | 5d | 2009-02-02 | 2009-02-06 | 55 |  |  | 2009-02-02 | 2009-02-06 | 5d | 88d | 0d | start no earlier than 2008-12-01 |  |  | 추가개발 프로그램코딩 | 48648F0A0F9201F8E100800046140A10 | 07060716O410168 | P02-1 1.4.1 | 00000000000001277271 | DEFAULT |  |
| 57 | 4.2.1.11 | 데이터 전환 개발 및 매핑보정 11주차 | 5d | 2009-02-09 | 2009-02-13 | 56 |  |  | 2009-02-09 | 2009-02-13 | 5d | 88d | 0d | start no earlier than 2008-12-01 |  |  | 추가개발 프로그램코딩 | 48648F0A0F9201F8E100800046140A10 | 07060716O410168 | P02-1 1.4.1 | 00000000000001277271 | DEFAULT |  |
| 58 | 4.2.1.12 | 데이터 전환 개발 및 매핑보정 12주차 | 5d | 2009-02-16 | 2009-02-20 | 57 |  |  | 2009-02-16 | 2009-02-20 | 5d | 88d | 0d | start no earlier than 2008-12-01 |  |  | 추가개발 프로그램코딩 | 48648F0A0F9201F8E100800046140A10 | 07060716O410168 | P02-1 1.4.1 | 00000000000001277271 | DEFAULT |  |
| 59 | 4.2.1.13 | 데이터 전환 개발 및 매핑보정 13주차 | 5d | 2009-02-23 | 2009-02-27 | 58 |  |  | 2009-02-23 | 2009-02-27 | 5d | 88d | 0d | start no earlier than 2008-12-01 |  |  | 추가개발 프로그램코딩 | 48648F0A0F9201F8E100800046140A10 | 07060716O410168 | P02-1 1.4.1 | 00000000000001277271 | DEFAULT |  |
| 60 | 4.2.1.14 | 데이터 전환 개발 및 매핑보정 14주차 | 5d | 2009-03-02 | 2009-03-06 | 59 |  |  | 2009-03-02 | 2009-03-06 | 5d | 88d | 0d | start no earlier than 2008-12-01 |  |  | 추가개발 프로그램코딩 | 48648F0A0F9201F8E100800046140A10 | 07060716O410168 | P02-1 1.4.1 | 00000000000001277271 | DEFAULT |  |
| 61 | 4.2.1.15 | 데이터 전환 개발 및 매핑보정 15주차 | 5d | 2009-03-09 | 2009-03-13 | 60 |  |  | 2009-03-09 | 2009-03-13 | 5d | 88d |  | start no earlier than 2008-12-01 |  |  | 추가개발 프로그램코딩 | 48648F0A0F9201F8E100800046140A10 | 07060716O410168 | P02-1 1.4.1 | 00000000000001277271 | DEFAULT |  |

Notes:
- 27: 1. 설계 단계 구축 시작 1개월내 에 도출 / a. 모델링팀에서 분석한 To-Be 도메인 정의 자료 / b. 모델링팀에서 분석한 As-Is 에서 To-Be로 변화하는 매핑 정의 자료(예, 논리적인 도메인정의) / c. 설계중 물리적인 To-Be 모델이 정의 / 2. 설계 단계 구축 완료 1개월내 에 도출 / a. 중요 테이블(예, 고객Master)에 대한 논리/물리 설계가 완료 / b. To-Be 코드 테이블에 대한 설계가 완료하고 데이터 이행 완료 즉 To-Be코드 데이터가 생성 완료 / c. As-Is Vs To-Be 코드 매핑 정보 완료(예, As-Is Vs To-Be 코드 매핑 Table) / d. 전체 모델 설계는 설계단계 마무리 1개월전에는 완료 되어야 한다. / 3. 데이터 표준 처리 정보 / a. 데이터 표준화팀 에서 코드표준(예, To-Be Vs As-Is 코드 매핑등) / b. 데이터 표준화팀 에서 데이터 처리 표준(예, Null 데이터 처리 표준등) / c. 데이터 표준화팀 에서 데이터 값중 표준 처리 범위(예, 보험금 납입금의 금액이 1000원 이상 1000만원 이하는 정상 그외는 비정상)
- 45: 1. 중요 핵심 모델(Master성) 은 프로젝트 기간중 설계단계 3~4M 사이에 확정되어 설계및 개발이 이루어 진다.

| ID | WBS | Task | Duration | Start | Finish | Predecessors | Baseline start | Baseline finish | Baseline duration | Total slack | Free slack | Constraint | Text1 | Text2 |
| --- | --- | --- | --- | --- | --- | --- | --- | --- | --- | --- | --- | --- | --- | --- |
| 62 | PSR10.04.03.02 | **데이터 전환 수행 테스트** | 44d | 2008-12-29 | 2009-03-03 |  | 2008-12-29 | 2009-03-03 | 44d | 96d |  |  |  |  |
| 63 | PSR10.04.03.02.01 | **0차 데이터 전환 (원부성)** | 9d | 2008-12-29 | 2009-01-09 |  | 2008-12-29 | 2009-01-09 | 9d | 131d |  |  | 데이터 이행 결과서(약식) |  |
| 64 | PSR10.04.03.02.01.01 | **데이터추출** | 2d | 2008-12-29 | 2008-12-30 |  | 2008-12-29 | 2008-12-30 | 2d | 138d |  |  |  |  |
| 65 | PSR10.04.03.02.01.01.01 | 고객원장 | 2d | 2008-12-29 | 2008-12-30 |  | 2008-12-29 | 2008-12-30 | 2d | 138d |  | start no earlier than 2008-12-29 |  |  |
| 66 | PSR10.04.03.02.01.01.02 | 계약원부 | 2d | 2008-12-29 | 2008-12-30 |  | 2008-12-29 | 2008-12-30 | 2d | 138d |  | start no earlier than 2008-12-29 |  |  |
| 67 | PSR10.04.03.02.01.01.03 | 수금마스터 | 2d | 2008-12-29 | 2008-12-30 |  | 2008-12-29 | 2008-12-30 | 2d | 138d |  | start no earlier than 2008-12-29 |  |  |
| 68 | PSR10.04.03.02.01.01.04 | 지급마스터 | 2d | 2008-12-29 | 2008-12-30 |  | 2008-12-29 | 2008-12-30 | 2d | 138d |  | start no earlier than 2008-12-29 |  |  |
| 69 | PSR10.04.03.02.01.02 | **데이터전환** | 3d | 2008-12-31 | 2009-01-05 |  | 2008-12-31 | 2009-01-05 | 3d | 135d |  |  |  |  |
| 70 | PSR10.04.03.02.01.02.01 | 고객원장 | 3d | 2008-12-31 | 2009-01-05 |  | 2008-12-31 | 2009-01-05 | 3d | 135d |  | start no earlier than 2008-12-31 |  |  |
| 71 | PSR10.04.03.02.01.02.02 | 계약원부 | 3d | 2008-12-31 | 2009-01-05 |  | 2008-12-31 | 2009-01-05 | 3d | 135d |  | start no earlier than 2008-12-31 |  |  |
| 72 | PSR10.04.03.02.01.02.03 | 수금마스터 | 3d | 2008-12-31 | 2009-01-05 |  | 2008-12-31 | 2009-01-05 | 3d | 135d |  | start no earlier than 2008-12-31 |  |  |
| 73 | PSR10.04.03.02.01.02.04 | 지급마스터 | 3d | 2008-12-31 | 2009-01-05 |  | 2008-12-31 | 2009-01-05 | 3d | 135d |  | start no earlier than 2008-12-31 |  |  |
| 74 | PSR10.04.03.02.01.03 | **데이터검증** | 4d | 2009-01-06 | 2009-01-09 |  | 2009-01-06 | 2009-01-09 | 4d | 131d |  |  |  |  |
| 75 | PSR10.04.03.02.01.03.01 | 고객원장 | 4d | 2009-01-06 | 2009-01-09 |  | 2009-01-06 | 2009-01-09 | 4d | 131d |  | start no earlier than 2009-01-06 |  |  |
| 76 | PSR10.04.03.02.01.03.02 | 계약원부 | 4d | 2009-01-06 | 2009-01-09 |  | 2009-01-06 | 2009-01-09 | 4d | 131d |  | start no earlier than 2009-01-06 |  |  |
| 77 | PSR10.04.03.02.01.03.03 | 수금마스터 | 4d | 2009-01-06 | 2009-01-09 |  | 2009-01-06 | 2009-01-09 | 4d | 131d |  | start no earlier than 2009-01-06 |  |  |
| 78 | PSR10.04.03.02.01.03.04 | 지급마스터 | 4d | 2009-01-06 | 2009-01-09 |  | 2009-01-06 | 2009-01-09 | 4d | 131d |  | start no earlier than 2009-01-06 |  |  |
| 79 | PSR10.04.03.02.02 | **1차 데이터 전환(추가원부성)** | 7d | 2009-01-22 | 2009-02-03 |  | 2009-01-22 | 2009-02-03 | 7d | 116d |  |  | 데이터 이행 결과서(약식) | 데이터단위검증 결과서 |
| 80 | PSR10.04.03.02.02.01 | 데이터추출 | 2d | 2009-01-22 | 2009-01-26 |  | 2009-01-22 | 2009-01-26 | 2d | 116d | 0d | finish no earlier than 2009-01-26 |  |  |
| 81 | PSR10.04.03.02.02.02 | 데이터전환 | 3d | 2009-01-28 | 2009-01-30 | 80 | 2009-01-28 | 2009-01-30 | 3d | 116d | 0d | start no earlier than 2009-01-28 |  |  |
| 82 | PSR10.04.03.02.02.03 | 데이터검증 | 2d | 2009-02-02 | 2009-02-03 | 81 | 2009-02-02 | 2009-02-03 | 2d | 116d |  |  |  |  |
| 83 | PSR10.04.03.02.03 | **2차 데이터 전환(비원부성포함)** | 8d | 2009-02-20 | 2009-03-03 |  | 2009-02-20 | 2009-03-03 | 8d | 96d |  |  | 데이터 이행 결과서(약식) | 데이터단위검증 결과서 |
| 84 | PSR10.04.03.02.03.01 | 데이터추출 | 2d | 2009-02-20 | 2009-02-23 |  | 2009-02-20 | 2009-02-23 | 2d | 96d | 0d | start no earlier than 2009-02-20 |  |  |
| 85 | PSR10.04.03.02.03.02 | 데이터전환 | 3d | 2009-02-24 | 2009-02-26 | 84 | 2009-02-24 | 2009-02-26 | 3d | 96d | 0d | start no earlier than 2009-02-23 |  |  |
| 86 | PSR10.04.03.02.03.03 | 데이터검증 | 3d | 2009-02-27 | 2009-03-03 | 85 | 2009-02-27 | 2009-03-03 | 3d | 96d |  | start no earlier than 2009-02-27 |  |  |

| ID | WBS | Task | Duration | Start | Finish | Predecessors | Baseline start | Baseline finish | Baseline duration | Total slack | Free slack | Constraint | Resources | Work | Text1 | Text2 |
| --- | --- | --- | --- | --- | --- | --- | --- | --- | --- | --- | --- | --- | --- | --- | --- | --- |
| 87 | PSR10.05 | **Deploy** | 93d | 2009-03-09 | 2009-07-17 |  | 2009-03-09 | 2009-07-17 | 93d | 0d |  |  |  | 130h |  |  |
| 88 | PSR10.05.01 | **1차 데이터 이행 및 데이터 검증** | 15d | 2009-03-09 | 2009-03-27 |  | 2009-03-09 | 2009-03-27 | 15d | 78d |  |  |  | 16h | 데이터 이행 결과서 |  |
| 89 | PSR10.05.01.01 | 데이터 이행 프로그램테스트 및 오류확인 | 2d | 2009-03-09 | 2009-03-10 |  | 2009-03-09 | 2009-03-10 | 2d | 78d | 0d | start no earlier than 2009-03-09 | 김용세 | 16h |  |  |
| 90 | PSR10.05.01.02 | 데이터 이행 대상 확인 및 DB 구축 확인 | 2d | 2009-03-11 | 2009-03-12 | 89 | 2009-03-11 | 2009-03-12 | 2d | 78d | 0d | start no earlier than 2009-03-11 |  |  | 데이터베이스 |  |
| 91 | PSR10.05.01.03 | 테이블별 데이터 이행실시 및 결과 정리 | 2d | 2009-03-13 | 2009-03-16 | 90 | 2009-03-13 | 2009-03-16 | 2d | 78d | 0d | start no earlier than 2009-03-13 |  |  |  | 데이터이행결과서 |
| 92 | PSR10.05.01.04 | 테이블별 검증 수행 | 4d | 2009-03-17 | 2009-03-20 | 91 | 2009-03-17 | 2009-03-20 | 4d | 78d | 0d | start no earlier than 2009-03-17 |  |  | 현행추출파일목록/데이터검증결과서 | 데이터이행검증결과서 |
| 93 | PSR10.05.01.05 | 이행오류 로직 검증 수정 작업 | 5d | 2009-03-23 | 2009-03-27 | 92 | 2009-03-23 | 2009-03-27 | 5d | 78d |  | start no earlier than 2009-03-23 |  |  | 데이터정제결과표(현업)/검증불가의사결정요청서(현업) |  |
| 94 | PSR10.05.02 | **2차 데이터 이행 및 데이터 검증** | 15d | 2009-03-30 | 2009-04-17 |  | 2009-03-30 | 2009-04-17 | 15d | 63d |  |  |  | 31h | 데이터 이행 결과서 |  |
| 95 | PSR10.05.02.01 | 데이터 이행 프로그램테스트 및 오류확인 | 6d | 2009-03-30 | 2009-04-06 |  | 2009-03-30 | 2009-04-06 | 6d | 63d | 0d | start no earlier than 2009-03-30 | 김용세 | 31h |  |  |
| 96 | PSR10.05.02.02 | 데이터 이행 대상 확인 및 DB 구축 확인 | 3d | 2009-04-07 | 2009-04-09 | 95 | 2009-04-07 | 2009-04-09 | 3d | 63d | 0d | start no earlier than 2009-04-07 |  |  | 데이터베이스 |  |
| 97 | PSR10.05.02.03 | 테이블별 데이터 이행실시 및 결과 정리 | 3d | 2009-04-10 | 2009-04-14 | 96 | 2009-04-10 | 2009-04-14 | 3d | 63d | 0d | start no earlier than 2009-04-10 |  |  |  | 데이터이행결과서 |
| 98 | PSR10.05.02.04 | 테이블별 검증 수행 | 3d | 2009-04-15 | 2009-04-17 | 97 | 2009-04-15 | 2009-04-17 | 3d | 63d |  | start no earlier than 2009-04-15 |  |  | 현행추출파일목록/데이터검증결과서 | 데이터이행검증결과서 |
| 99 | PSR10.05.02.05 | 이행오류 로직 검증 수정 작업 | 5d | 2009-04-13 | 2009-04-17 |  | 2009-04-13 | 2009-04-17 | 5d | 63d |  | start no earlier than 2009-04-13 |  |  | 데이터정제결과표(현업)/검증불가의사결정요청서(현업) |  |
| 100 | PSR10.05.03 | **3차 데이터 이행 및 데이터 검증** | 10d | 2009-04-20 | 2009-05-04 |  | 2009-04-20 | 2009-05-04 | 10d | 53d |  |  |  | 23h | 데이터 이행 결과서 |  |
| 101 | PSR10.05.03.01 | 데이터 이행 프로그램테스트 및 오류확인 | 3d | 2009-04-20 | 2009-04-22 |  | 2009-04-20 | 2009-04-22 | 3d | 53d | 0d | start no earlier than 2009-04-20 | 김용세 | 23h |  |  |
| 102 | PSR10.05.03.02 | 데이터 이행 대상 확인 및 DB 구축 확인 | 2d | 2009-04-23 | 2009-04-24 | 101 | 2009-04-23 | 2009-04-24 | 2d | 53d | 0d | start no earlier than 2009-04-23 |  |  | 데이터베이스 |  |
| 103 | PSR10.05.03.03 | 테이블별 데이터 이행실시 및 결과 정리 | 2d | 2009-04-27 | 2009-04-28 | 102 | 2009-04-27 | 2009-04-28 | 2d | 53d | 0d | start no earlier than 2009-04-27 |  |  |  | 데이터이행결과서 |
| 104 | PSR10.05.03.04 | 테이블별 검증 수행 | 3d | 2009-04-29 | 2009-05-04 | 103 | 2009-04-29 | 2009-05-04 | 3d | 53d |  | start no earlier than 2009-04-29 |  |  | 현행추출파일목록/데이터검증결과서 | 데이터이행검증결과서 |
| 105 | PSR10.05.03.05 | 이행오류 로직 검증 수정 작업 | 5d | 2009-04-27 | 2009-05-04 |  | 2009-04-27 | 2009-05-04 | 5d | 53d |  | start no earlier than 2009-04-27 |  |  | 데이터정제결과표(현업)/검증불가의사결정요청서(현업) |  |
| 106 | PSR10.05.04 | **4차 데이터 이행 및 데이터 검증** | 9d | 2009-05-04 | 2009-05-15 |  | 2009-05-04 | 2009-05-15 | 9d | 45d |  |  |  | 15h | 데이터 이행 결과서 |  |
| 107 | PSR10.05.04.01 | 데이터 이행 프로그램테스트 및 오류확인 | 2d | 2009-05-04 | 2009-05-06 |  | 2009-05-04 | 2009-05-06 | 2d | 46d | 0d | start no earlier than 2009-05-04 | 김용세 | 15h |  |  |
| 108 | PSR10.05.04.02 | 데이터 이행 대상 확인 및 DB 구축 확인 | 2d | 2009-05-07 | 2009-05-08 | 107 | 2009-05-07 | 2009-05-08 | 2d | 46d | 0d | start no earlier than 2009-05-07 |  |  | 데이터베이스 |  |
| 109 | PSR10.05.04.03 | 테이블별 데이터 이행실시 및 결과 정리 | 2d | 2009-05-11 | 2009-05-12 | 108 | 2009-05-11 | 2009-05-12 | 2d | 46d | 0d | start no earlier than 2009-05-11 |  |  |  | 데이터이행결과서 |
| 110 | PSR10.05.04.04 | 테이블별 검증 수행 | 2d | 2009-05-13 | 2009-05-14 | 109 | 2009-05-13 | 2009-05-14 | 2d | 46d |  | start no earlier than 2009-05-13 |  |  | 현행추출파일목록/데이터검증결과서 | 데이터이행검증결과서 |
| 111 | PSR10.05.04.05 | 이행오류 로직 검증 수정 작업 | 4d | 2009-05-12 | 2009-05-15 |  | 2009-05-12 | 2009-05-15 | 4d | 45d |  | start no earlier than 2009-05-12 |  |  | 데이터정제결과표(현업)/검증불가의사결정요청서(현업) |  |

| ID | WBS | Task | Duration | Start | Finish | Predecessors | Baseline start | Baseline finish | Baseline duration | Total slack | Free slack | Constraint | Resources | Work | Text1 | Text2 |
| --- | --- | --- | --- | --- | --- | --- | --- | --- | --- | --- | --- | --- | --- | --- | --- | --- |
| 112 | PSR10.05.05 | **5차 데이터 이행 및 데이터 검증** | 10d | 2009-05-18 | 2009-05-29 |  | 2009-05-18 | 2009-05-29 | 10d | 35d |  |  |  | 16h | 데이터 이행 결과서 |  |
| 113 | PSR10.05.05.01 | 데이터 이행 프로그램테스트 및 오류확인 | 2d | 2009-05-18 | 2009-05-19 |  | 2009-05-18 | 2009-05-19 | 2d | 37d | 0d | finish no earlier than 2009-05-19 | 김용세 | 16h |  |  |
| 114 | PSR10.05.05.02 | 데이터 이행 대상 확인 및 DB 구축 확인 | 2d | 2009-05-20 | 2009-05-21 | 113 | 2009-05-20 | 2009-05-21 | 2d | 37d | 0d |  |  |  | 데이터베이스 |  |
| 115 | PSR10.05.05.03 | 테이블별 데이터 이행실시 및 결과 정리 | 2d | 2009-05-22 | 2009-05-25 | 114 | 2009-05-22 | 2009-05-25 | 2d | 37d | 0d |  |  |  |  | 데이터이행결과서 |
| 116 | PSR10.05.05.04 | 테이블별 검증 수행 | 2d | 2009-05-26 | 2009-05-27 | 115 | 2009-05-26 | 2009-05-27 | 2d | 37d |  |  |  |  | 현행추출파일목록/데이터검증결과서 | 데이터이행검증결과서 |
| 117 | PSR10.05.05.05 | 이행오류 로직 검증 수정 작업 | 4d | 2009-05-26 | 2009-05-29 |  | 2009-05-26 | 2009-05-29 | 4d | 35d |  | start no earlier than 2009-05-26 |  |  | 데이터정제결과표(현업)/검증불가의사결정요청서(현업) |  |
| 118 | PSR10.05.06 | **6차 데이터 이행 및 데이터 검증** | 10d | 2009-06-01 | 2009-06-12 |  | 2009-06-01 | 2009-06-12 | 10d | 25d |  |  |  | 15h | 데이터 이행 결과서 |  |
| 119 | PSR10.05.06.01 | 데이터 이행 프로그램테스트 및 오류확인 | 2d | 2009-06-01 | 2009-06-02 |  | 2009-06-01 | 2009-06-02 | 2d | 26d | 0d | start no earlier than 2009-06-01 | 김용세 | 15h |  |  |
| 120 | PSR10.05.06.02 | 데이터 이행 대상 확인 및 DB 구축 확인 | 2d | 2009-06-03 | 2009-06-04 | 119 | 2009-06-03 | 2009-06-04 | 2d | 26d | 1d | start no earlier than 2009-06-03 |  |  | 데이터베이스 |  |
| 121 | PSR10.05.06.03 | 테이블별 데이터 이행실시 및 결과 정리 | 2d | 2009-06-08 | 2009-06-09 | 120 | 2009-06-08 | 2009-06-09 | 2d | 25d | 0d | start no earlier than 2009-06-08 |  |  |  | 데이터이행결과서 |
| 122 | PSR10.05.06.04 | 테이블별 검증 수행 | 3d | 2009-06-10 | 2009-06-12 | 121 | 2009-06-10 | 2009-06-12 | 3d | 25d |  | start no earlier than 2009-06-10 |  |  | 현행추출파일목록/데이터검증결과서 | 데이터이행검증결과서 |
| 123 | PSR10.05.06.05 | 이행오류 로직 검증 수정 작업 | 3d | 2009-06-09 | 2009-06-11 |  | 2009-06-09 | 2009-06-11 | 3d | 26d |  | start no earlier than 2009-06-09 |  |  | 데이터정제결과표(현업)/검증불가의사결정요청서(현업) |  |
| 124 | PSR10.05.07 | **7차 데이터 이행 및 데이터 검증** | 10d | 2009-06-15 | 2009-06-26 |  | 2009-06-15 | 2009-06-26 | 10d | 15d |  |  |  | 7h | 데이터 이행 결과서 |  |
| 125 | PSR10.05.07.01 | 데이터 이행 프로그램테스트 및 오류확인 | 2d | 2009-06-15 | 2009-06-16 |  | 2009-06-15 | 2009-06-16 | 2d | 17d | 0d | start no earlier than 2009-06-15 | 김용세 | 7h |  |  |
| 126 | PSR10.05.07.02 | 데이터 이행 대상 확인 및 DB 구축 확인 | 2d | 2009-06-17 | 2009-06-18 | 125 | 2009-06-17 | 2009-06-18 | 2d | 17d | 0d | start no earlier than 2009-06-17 |  |  | 데이터베이스 |  |
| 127 | PSR10.05.07.03 | 테이블별 데이터 이행실시 및 결과 정리 | 2d | 2009-06-19 | 2009-06-22 | 126 | 2009-06-19 | 2009-06-22 | 2d | 17d | 0d | start no earlier than 2009-06-19 |  |  |  | 데이터이행결과서 |
| 128 | PSR10.05.07.04 | 테이블별 검증 수행 | 2d | 2009-06-23 | 2009-06-24 | 127 | 2009-06-23 | 2009-06-24 | 2d | 17d |  | start no earlier than 2009-06-23 |  |  | 현행추출파일목록/데이터검증결과서 | 데이터이행검증결과서 |
| 129 | PSR10.05.07.05 | 이행오류 로직 검증 수정 작업 | 4d | 2009-06-23 | 2009-06-26 |  | 2009-06-23 | 2009-06-26 | 4d | 15d |  | start no earlier than 2009-06-23 |  |  | 데이터정제결과표(현업)/검증불가의사결정요청서(현업) |  |
| 130 | PSR10.05.08 | **최종 데이터 이행 및 데이터 검증** | 11d | 2009-06-29 | 2009-07-13 |  | 2009-06-29 | 2009-07-13 | 11d | 4d |  |  |  | 7h | 최종이행시나리오 및 결과서 |  |
| 131 | PSR10.05.08.01 | 데이터 이행 프로그램테스트 및 오류확인 | 1d | 2009-06-29 | 2009-06-29 |  | 2009-06-29 | 2009-06-29 | 1d | 5d | 0d | start no earlier than 2009-06-29 | 김용세 | 7h |  |  |
| 132 | PSR10.05.08.02 | 데이터 이행 대상 확인 및 DB 구축 확인 | 4d | 2009-06-30 | 2009-07-03 | 131 | 2009-06-30 | 2009-07-03 | 4d | 5d | 0d | start no earlier than 2009-06-30 |  |  | 데이터베이스 |  |
| 133 | PSR10.05.08.03 | 테이블별 데이터 이행실시 및 결과 정리 | 5d | 2009-07-06 | 2009-07-10 | 132 | 2009-07-06 | 2009-07-10 | 5d | 5d |  | start no earlier than 2009-07-06 |  |  |  | 데이터이행결과서 |
| 134 | PSR10.05.08.04 | 테이블별 검증 및 재작업 | 2d | 2009-07-10 | 2009-07-13 |  | 2009-07-10 | 2009-07-13 | 2d | 4d |  | start no earlier than 2009-07-10 |  |  |  | 데이터이행검증결과서 |
| 135 | PSR10.05.09 | 이행완료보고 | 5d | 2009-07-13 | 2009-07-17 |  | 2009-07-13 | 2009-07-17 | 5d | 0d |  | start no earlier than 2009-07-13 |  |  | 이행완료보고서 |  |
