# 10.인프라_대외계

Schedule from MS Project, 2008-07-23 to 2009-07-13, status date 2008-12-12, A marks actual dates.
HSIC-0820606

## Calendars

- 한국: Mon-Fri 08:00-12:00, 13:00-17:00; Sat-Sun off. Exceptions (off unless hours are given): 2008-08-15, 2008-09-13 to 2008-09-15, 2008-10-03, 2008-12-25, 2009-01-01, 2009-01-25 to 2009-01-27, 2009-03-01, 2009-05-01 to 2009-05-02, 2009-05-05, 2009-06-06.

## Resources

| Resource | Rate | Cost per use |
| --- | --- | --- |
| PM | 1 | 1 |
| QAO | 1 | 1 |
| PL | 1 | 1 |
| SA | 1 |  |
| TA | 1 |  |
| F/W | 1 |  |
| UI | 1 |  |
| 개발팀 | 1 |  |
| FW | 1 |  |
| DBIO | 1 |  |
| SA.F/W | 1 |  |
| IBM | 1 |  |
| Tmax | 1 |  |
| PJT | 1 |  |
| NCRM | 1 |  |
| StarTeam | 1 |  |
| CaliberRM | 1 |  |
| TestDirector | 1 |  |
| 생보기술지원파트 | 1 |  |
| RM | 1 |  |
| QTP | 1 |  |
| EAI | 1 |  |
| AnyLink | 1 |  |
| 메타블루 | 1 |  |
| Tivoli | 1 |  |
| Syncsort | 1 |  |
| Rule | 1 |  |
| Printing | 1 |  |
| 이미지 | 1 |  |
| 시스템공통 | 1 |  |
| SA.레포팅 | 1 |  |
| SA.프린팅 | 1 |  |
| DBA | 1 |  |
| 데이터이행 | 1 |  |
| SSO | 1 |  |

## Schedule

| ID | WBS | Task | Duration | Start | Finish | Predecessors | Complete | Baseline start | Baseline finish | Baseline duration | Text20 | Text26 | Text30 |
| --- | --- | --- | --- | --- | --- | --- | --- | --- | --- | --- | --- | --- | --- |
| 1 | 1 | **Analysis** | 46d | 2008-07-23 A | 2008-09-26 A |  | 100% | 2008-07-23 | 2008-09-26 | 46d | 분석 | P02-1 1.2 |  |
| 2 | 1.1 | **대외계 인터페이스 일정계획 수립** | 3d | 2008-07-23 A | 2008-07-25 A |  | 100% | 2008-07-23 | 2008-07-25 | 3d | 현황평가 | P02-1 1.2.2 |  |
| 3 | 1.1.1 | WBS 작업 정의 | 2d | 2008-07-23 A | 2008-07-24 A |  | 100% | 2008-07-23 | 2008-07-24 | 2d | 현황평가 | P02-1 1.2.2 | WBS |
| 4 | 1.1.2 | WBS 선후행 관계 및 일정 계획 수립 | 1d | 2008-07-25 A | 2008-07-25 A | 3 | 100% | 2008-07-25 | 2008-07-25 | 1d | 현황평가 | P02-1 1.2.2 | WBS |
| 5 | 1.2 | **대외서버 업체와ROLL분배 및 요구사항정리** | 2d | 2008-07-28 A | 2008-07-29 A |  | 100% | 2008-07-28 | 2008-07-29 | 2d | 현황평가 | P02-1 1.2.2 |  |
| 6 | 1.2.1 | 대외서버 | 2d | 2008-07-28 A | 2008-07-29 A | 2 | 100% | 2008-07-28 | 2008-07-29 | 2d | 현황평가 | P02-1 1.2.2 |  |
| 7 | 1.3 | **현행시스템 분석** | 3d | 2008-07-30 A | 2008-08-01 A |  | 100% | 2008-07-30 | 2008-08-01 | 3d | 현황평가 | P02-1 1.2.2 |  |
| 8 | 1.3.1 | **현행시스템 대외기관별 목록 검토** | 3d | 2008-07-30 A | 2008-08-01 A | 6 | 100% | 2008-07-30 | 2008-08-01 | 3d | 현황평가 | P02-1 1.2.2 | 현행인터페이스목록 |
| 9 | 1.3.1.1 | KS-NET(즉시이체) | 3d | 2008-07-30 A | 2008-08-01 A |  | 100% | 2008-07-30 | 2008-08-01 | 3d | 현황평가 | P02-1 1.2.2 |  |
| 10 | 1.3.1.2 | 기업은행 | 3d | 2008-07-30 A | 2008-08-01 A |  | 100% | 2008-07-30 | 2008-08-01 | 3d | 현황평가 | P02-1 1.2.2 |  |
| 11 | 1.3.1.3 | 국민은행 | 3d | 2008-07-30 A | 2008-08-01 A |  | 100% | 2008-07-30 | 2008-08-01 | 3d | 현황평가 | P02-1 1.2.2 |  |
| 12 | 1.3.1.4 | 외환은행 | 3d | 2008-07-30 A | 2008-08-01 A |  | 100% | 2008-07-30 | 2008-08-01 | 3d | 현황평가 | P02-1 1.2.2 |  |
| 13 | 1.3.1.5 | 농협(단위조합 포함) | 3d | 2008-07-30 A | 2008-08-01 A |  | 100% | 2008-07-30 | 2008-08-01 | 3d | 현황평가 | P02-1 1.2.2 |  |
| 14 | 1.3.1.6 | 우리은행 | 3d | 2008-07-30 A | 2008-08-01 A |  | 100% | 2008-07-30 | 2008-08-01 | 3d | 현황평가 | P02-1 1.2.2 |  |
| 15 | 1.3.1.7 | 제일은행 | 3d | 2008-07-30 A | 2008-08-01 A |  | 100% | 2008-07-30 | 2008-08-01 | 3d | 현황평가 | P02-1 1.2.2 |  |
| 16 | 1.3.1.8 | 신한은행 | 3d | 2008-07-30 A | 2008-08-01 A |  | 100% | 2008-07-30 | 2008-08-01 | 3d | 현황평가 | P02-1 1.2.2 |  |
| 17 | 1.3.1.9 | 한국씨티은행 | 3d | 2008-07-30 A | 2008-08-01 A |  | 100% | 2008-07-30 | 2008-08-01 | 3d | 현황평가 | P02-1 1.2.2 |  |
| 18 | 1.3.1.10 | 대구은행 | 3d | 2008-07-30 A | 2008-08-01 A |  | 100% | 2008-07-30 | 2008-08-01 | 3d | 현황평가 | P02-1 1.2.2 |  |
| 19 | 1.3.1.11 | 부산은행 | 3d | 2008-07-30 A | 2008-08-01 A |  | 100% | 2008-07-30 | 2008-08-01 | 3d | 현황평가 | P02-1 1.2.2 |  |
| 20 | 1.3.1.12 | 광주은행 | 3d | 2008-07-30 A | 2008-08-01 A |  | 100% | 2008-07-30 | 2008-08-01 | 3d | 현황평가 | P02-1 1.2.2 |  |
| 21 | 1.3.1.13 | 경남은행 | 3d | 2008-07-30 A | 2008-08-01 A |  | 100% | 2008-07-30 | 2008-08-01 | 3d | 현황평가 | P02-1 1.2.2 |  |
| 22 | 1.3.1.14 | 전북은행 | 3d | 2008-07-30 A | 2008-08-01 A |  | 100% | 2008-07-30 | 2008-08-01 | 3d | 현황평가 | P02-1 1.2.2 |  |
| 23 | 1.3.1.15 | 우체국 | 3d | 2008-07-30 A | 2008-08-01 A |  | 100% | 2008-07-30 | 2008-08-01 | 3d | 현황평가 | P02-1 1.2.2 |  |
| 24 | 1.3.1.16 | 하나은행 | 3d | 2008-07-30 A | 2008-08-01 A |  | 100% | 2008-07-30 | 2008-08-01 | 3d | 현황평가 | P02-1 1.2.2 |  |
| 25 | 1.3.1.17 | KS-NET(카드납) | 3d | 2008-07-30 A | 2008-08-01 A |  | 100% | 2008-07-30 | 2008-08-01 | 3d | 현황평가 | P02-1 1.2.2 |  |
| 26 | 1.3.1.18 | 생보협회 | 3d | 2008-07-30 A | 2008-08-01 A |  | 100% | 2008-07-30 | 2008-08-01 | 3d | 현황평가 | P02-1 1.2.2 |  |
| 27 | 1.3.1.19 | 기업은행가상계좌 | 3d | 2008-07-30 A | 2008-08-01 A |  | 100% | 2008-07-30 | 2008-08-01 | 3d | 현황평가 | P02-1 1.2.2 |  |
| 28 | 1.3.1.20 | 국민은행가상계좌 | 3d | 2008-07-30 A | 2008-08-01 A |  | 100% | 2008-07-30 | 2008-08-01 | 3d | 현황평가 | P02-1 1.2.2 |  |
| 29 | 1.3.1.21 | 외환은행가상계좌 | 3d | 2008-07-30 A | 2008-08-01 A |  | 100% | 2008-07-30 | 2008-08-01 | 3d | 현황평가 | P02-1 1.2.2 |  |
| 30 | 1.3.1.22 | 농협가상계좌 | 3d | 2008-07-30 A | 2008-08-01 A |  | 100% | 2008-07-30 | 2008-08-01 | 3d | 현황평가 | P02-1 1.2.2 |  |
| 31 | 1.3.1.23 | 우리은행가상계좌 | 3d | 2008-07-30 A | 2008-08-01 A |  | 100% | 2008-07-30 | 2008-08-01 | 3d | 현황평가 | P02-1 1.2.2 |  |
| 32 | 1.3.1.24 | 제일은행가상계좌 | 3d | 2008-07-30 A | 2008-08-01 A |  | 100% | 2008-07-30 | 2008-08-01 | 3d | 현황평가 | P02-1 1.2.2 |  |
| 33 | 1.3.1.25 | CITI은행가상계좌 | 3d | 2008-07-30 A | 2008-08-01 A |  | 100% | 2008-07-30 | 2008-08-01 | 3d | 현황평가 | P02-1 1.2.2 |  |
| 34 | 1.3.1.26 | 부산은행가상계좌 | 3d | 2008-07-30 A | 2008-08-01 A |  | 100% | 2008-07-30 | 2008-08-01 | 3d | 현황평가 | P02-1 1.2.2 |  |
| 35 | 1.3.1.27 | 광주은행가상계좌 | 3d | 2008-07-30 A | 2008-08-01 A |  | 100% | 2008-07-30 | 2008-08-01 | 3d | 현황평가 | P02-1 1.2.2 |  |
| 36 | 1.3.1.28 | 전북은행가상계좌 | 3d | 2008-07-30 A | 2008-08-01 A |  | 100% | 2008-07-30 | 2008-08-01 | 3d | 현황평가 | P02-1 1.2.2 |  |
| 37 | 1.3.1.29 | 경남은행가상계좌 | 3d | 2008-07-30 A | 2008-08-01 A |  | 100% | 2008-07-30 | 2008-08-01 | 3d | 현황평가 | P02-1 1.2.2 |  |
| 38 | 1.3.1.30 | 하나은행가상계좌 | 3d | 2008-07-30 A | 2008-08-01 A |  | 100% | 2008-07-30 | 2008-08-01 | 3d | 현황평가 | P02-1 1.2.2 |  |
| 39 | 1.3.1.31 | 신한은행가상계좌 | 3d | 2008-07-30 A | 2008-08-01 A |  | 100% | 2008-07-30 | 2008-08-01 | 3d | 현황평가 | P02-1 1.2.2 |  |

| ID | WBS | Task | Duration | Start | Finish | Predecessors | Complete | Baseline start | Baseline finish | Baseline duration | Text20 | Text26 | Text30 |
| --- | --- | --- | --- | --- | --- | --- | --- | --- | --- | --- | --- | --- | --- |
| 40 | 1.3.2 | **현행시스템 대외기관별 전문레이아웃검토** | 3d | 2008-07-30 A | 2008-08-01 A | 6 | 100% | 2008-07-30 | 2008-08-01 | 3d | 현황평가 | P02-1 1.2.2 | 현행 인터페이스 전문 레이아웃 |
| 41 | 1.3.2.1 | KS-NET(즉시이체) | 3d | 2008-07-30 A | 2008-08-01 A |  | 100% | 2008-07-30 | 2008-08-01 | 3d | 현황평가 | P02-1 1.2.2 |  |
| 42 | 1.3.2.2 | 기업은행 | 3d | 2008-07-30 A | 2008-08-01 A |  | 100% | 2008-07-30 | 2008-08-01 | 3d | 현황평가 | P02-1 1.2.2 |  |
| 43 | 1.3.2.3 | 국민은행 | 3d | 2008-07-30 A | 2008-08-01 A |  | 100% | 2008-07-30 | 2008-08-01 | 3d | 현황평가 | P02-1 1.2.2 |  |
| 44 | 1.3.2.4 | 외환은행 | 3d | 2008-07-30 A | 2008-08-01 A |  | 100% | 2008-07-30 | 2008-08-01 | 3d | 현황평가 | P02-1 1.2.2 |  |
| 45 | 1.3.2.5 | 농협(단위조합 포함) | 3d | 2008-07-30 A | 2008-08-01 A |  | 100% | 2008-07-30 | 2008-08-01 | 3d | 현황평가 | P02-1 1.2.2 |  |
| 46 | 1.3.2.6 | 우리은행 | 3d | 2008-07-30 A | 2008-08-01 A |  | 100% | 2008-07-30 | 2008-08-01 | 3d | 현황평가 | P02-1 1.2.2 |  |
| 47 | 1.3.2.7 | 제일은행 | 3d | 2008-07-30 A | 2008-08-01 A |  | 100% | 2008-07-30 | 2008-08-01 | 3d | 현황평가 | P02-1 1.2.2 |  |
| 48 | 1.3.2.8 | 신한은행 | 3d | 2008-07-30 A | 2008-08-01 A |  | 100% | 2008-07-30 | 2008-08-01 | 3d | 현황평가 | P02-1 1.2.2 |  |
| 49 | 1.3.2.9 | 한국씨티은행 | 3d | 2008-07-30 A | 2008-08-01 A |  | 100% | 2008-07-30 | 2008-08-01 | 3d | 현황평가 | P02-1 1.2.2 |  |
| 50 | 1.3.2.10 | 대구은행 | 3d | 2008-07-30 A | 2008-08-01 A |  | 100% | 2008-07-30 | 2008-08-01 | 3d | 현황평가 | P02-1 1.2.2 |  |
| 51 | 1.3.2.11 | 부산은행 | 3d | 2008-07-30 A | 2008-08-01 A |  | 100% | 2008-07-30 | 2008-08-01 | 3d | 현황평가 | P02-1 1.2.2 |  |
| 52 | 1.3.2.12 | 광주은행 | 3d | 2008-07-30 A | 2008-08-01 A |  | 100% | 2008-07-30 | 2008-08-01 | 3d | 현황평가 | P02-1 1.2.2 |  |
| 53 | 1.3.2.13 | 경남은행 | 3d | 2008-07-30 A | 2008-08-01 A |  | 100% | 2008-07-30 | 2008-08-01 | 3d | 현황평가 | P02-1 1.2.2 |  |
| 54 | 1.3.2.14 | 전북은행 | 3d | 2008-07-30 A | 2008-08-01 A |  | 100% | 2008-07-30 | 2008-08-01 | 3d | 현황평가 | P02-1 1.2.2 |  |
| 55 | 1.3.2.15 | 우체국 | 3d | 2008-07-30 A | 2008-08-01 A |  | 100% | 2008-07-30 | 2008-08-01 | 3d | 현황평가 | P02-1 1.2.2 |  |
| 56 | 1.3.2.16 | 하나은행 | 3d | 2008-07-30 A | 2008-08-01 A |  | 100% | 2008-07-30 | 2008-08-01 | 3d | 현황평가 | P02-1 1.2.2 |  |
| 57 | 1.3.2.17 | KS-NET(카드납) | 3d | 2008-07-30 A | 2008-08-01 A |  | 100% | 2008-07-30 | 2008-08-01 | 3d | 현황평가 | P02-1 1.2.2 |  |
| 58 | 1.3.2.18 | 생보협회 | 3d | 2008-07-30 A | 2008-08-01 A |  | 100% | 2008-07-30 | 2008-08-01 | 3d | 현황평가 | P02-1 1.2.2 |  |
| 59 | 1.3.2.19 | 기업은행가상계좌 | 3d | 2008-07-30 A | 2008-08-01 A |  | 100% | 2008-07-30 | 2008-08-01 | 3d | 현황평가 | P02-1 1.2.2 |  |
| 60 | 1.3.2.20 | 국민은행가상계좌 | 3d | 2008-07-30 A | 2008-08-01 A |  | 100% | 2008-07-30 | 2008-08-01 | 3d | 현황평가 | P02-1 1.2.2 |  |
| 61 | 1.3.2.21 | 외환은행가상계좌 | 3d | 2008-07-30 A | 2008-08-01 A |  | 100% | 2008-07-30 | 2008-08-01 | 3d | 현황평가 | P02-1 1.2.2 |  |
| 62 | 1.3.2.22 | 농협가상계좌 | 3d | 2008-07-30 A | 2008-08-01 A |  | 100% | 2008-07-30 | 2008-08-01 | 3d | 현황평가 | P02-1 1.2.2 |  |
| 63 | 1.3.2.23 | 우리은행가상계좌 | 3d | 2008-07-30 A | 2008-08-01 A |  | 100% | 2008-07-30 | 2008-08-01 | 3d | 현황평가 | P02-1 1.2.2 |  |
| 64 | 1.3.2.24 | 제일은행가상계좌 | 3d | 2008-07-30 A | 2008-08-01 A |  | 100% | 2008-07-30 | 2008-08-01 | 3d | 현황평가 | P02-1 1.2.2 |  |
| 65 | 1.3.2.25 | CITI은행가상계좌 | 3d | 2008-07-30 A | 2008-08-01 A |  | 100% | 2008-07-30 | 2008-08-01 | 3d | 현황평가 | P02-1 1.2.2 |  |
| 66 | 1.3.2.26 | 부산은행가상계좌 | 3d | 2008-07-30 A | 2008-08-01 A |  | 100% | 2008-07-30 | 2008-08-01 | 3d | 현황평가 | P02-1 1.2.2 |  |
| 67 | 1.3.2.27 | 광주은행가상계좌 | 3d | 2008-07-30 A | 2008-08-01 A |  | 100% | 2008-07-30 | 2008-08-01 | 3d | 현황평가 | P02-1 1.2.2 |  |
| 68 | 1.3.2.28 | 전북은행가상계좌 | 3d | 2008-07-30 A | 2008-08-01 A |  | 100% | 2008-07-30 | 2008-08-01 | 3d | 현황평가 | P02-1 1.2.2 |  |
| 69 | 1.3.2.29 | 경남은행가상계좌 | 3d | 2008-07-30 A | 2008-08-01 A |  | 100% | 2008-07-30 | 2008-08-01 | 3d | 현황평가 | P02-1 1.2.2 |  |
| 70 | 1.3.2.30 | 하나은행가상계좌 | 3d | 2008-07-30 A | 2008-08-01 A |  | 100% | 2008-07-30 | 2008-08-01 | 3d | 현황평가 | P02-1 1.2.2 |  |
| 71 | 1.3.2.31 | 신한은행가상계좌 | 3d | 2008-07-30 A | 2008-08-01 A |  | 100% | 2008-07-30 | 2008-08-01 | 3d | 현황평가 | P02-1 1.2.2 |  |

| ID | WBS | Task | Duration | Start | Finish | Predecessors | Complete | Baseline start | Baseline finish | Baseline duration | Text20 | Text26 | Text30 |
| --- | --- | --- | --- | --- | --- | --- | --- | --- | --- | --- | --- | --- | --- |
| 72 | 1.4 | **매핑** | 9d | 2008-08-04 A | 2008-08-14 A | 40 | 100% | 2008-08-04 | 2008-08-14 | 9d | 매핑 | P02-1 1.2.4 |  |
| 73 | 1.4.1 | 현업요구사항목록 작성 | 3d | 2008-08-04 A | 2008-08-06 A |  | 100% | 2008-08-04 | 2008-08-06 | 3d | 매핑 | P02-1 1.2.4 |  |
| 74 | 1.4.2 | **프로세스 매핑정의서작성** | 5d | 2008-08-07 A | 2008-08-13 A | 73 | 100% | 2008-08-07 | 2008-08-13 | 5d | 매핑 | P02-1 1.2.4 | BusinessSystemRequirement |
| 75 | 1.4.2.1 | 신계약 | 5d | 2008-08-07 A | 2008-08-13 A |  | 100% | 2008-08-07 | 2008-08-13 | 5d | 매핑 | P02-1 1.2.4 |  |
| 76 | 1.4.2.2 | 수금 | 5d | 2008-08-07 A | 2008-08-13 A |  | 100% | 2008-08-07 | 2008-08-13 | 5d | 매핑 | P02-1 1.2.4 |  |
| 77 | 1.4.2.3 | 계약변경 | 5d | 2008-08-07 A | 2008-08-13 A |  | 100% | 2008-08-07 | 2008-08-13 | 5d | 매핑 | P02-1 1.2.4 |  |
| 78 | 1.4.2.4 | 지급 | 5d | 2008-08-07 A | 2008-08-13 A |  | 100% | 2008-08-07 | 2008-08-13 | 5d | 매핑 | P02-1 1.2.4 |  |
| 79 | 1.4.2.5 | CLAIM | 5d | 2008-08-07 A | 2008-08-13 A |  | 100% | 2008-08-07 | 2008-08-13 | 5d | 매핑 | P02-1 1.2.4 |  |
| 80 | 1.4.3 | 현업요구사항목록(매핑결과) 및 업무프로세스 매핑정의서 검토 | 1d | 2008-08-14 A | 2008-08-14 A | 74 | 100% | 2008-08-14 | 2008-08-14 | 1d | 매핑 | P02-1 1.2.4 |  |
| 81 | 1.5 | **GAP분석 및 대응방안 수립** | 17d | 2008-08-18 A | 2008-09-09 A |  | 100% | 2008-08-18 | 2008-09-09 | 17d | 매핑 | P02-1 1.2.4 |  |
| 82 | 1.5.1 | **현업요구사항정의서 작성** | 10d | 2008-08-18 A | 2008-08-29 A | 80 | 100% | 2008-08-18 | 2008-08-29 | 10d | 매핑 | P02-1 1.2.4 | 패키지 GAP 분석서 |
| 83 | 1.5.1.1 | 신계약 | 10d | 2008-08-18 A | 2008-08-29 A |  | 100% | 2008-08-18 | 2008-08-29 | 10d | 매핑 | P02-1 1.2.4 |  |
| 84 | 1.5.1.2 | 수금 | 10d | 2008-08-18 A | 2008-08-29 A |  | 100% | 2008-08-18 | 2008-08-29 | 10d | 매핑 | P02-1 1.2.4 |  |
| 85 | 1.5.1.3 | 계약변경 | 10d | 2008-08-18 A | 2008-08-29 A |  | 100% | 2008-08-18 | 2008-08-29 | 10d | 매핑 | P02-1 1.2.4 |  |
| 86 | 1.5.1.4 | 지급 | 10d | 2008-08-18 A | 2008-08-29 A |  | 100% | 2008-08-18 | 2008-08-29 | 10d | 매핑 | P02-1 1.2.4 |  |
| 87 | 1.5.1.5 | CLAIM | 10d | 2008-08-18 A | 2008-08-29 A |  | 100% | 2008-08-18 | 2008-08-29 | 10d | 매핑 | P02-1 1.2.4 |  |
| 88 | 1.5.2 | **현업요구사항정의서 리뷰 및 보완** | 5d | 2008-09-01 A | 2008-09-05 A | 82 | 100% | 2008-09-01 | 2008-09-05 | 5d | 매핑 | P02-1 1.2.4 | 패키지 GAP 분석서 |
| 89 | 1.5.2.1 | 신계약 | 5d | 2008-09-01 A | 2008-09-05 A |  | 100% | 2008-09-01 | 2008-09-05 | 5d | 매핑 | P02-1 1.2.4 |  |
| 90 | 1.5.2.2 | 수금 | 5d | 2008-09-01 A | 2008-09-05 A |  | 100% | 2008-09-01 | 2008-09-05 | 5d | 매핑 | P02-1 1.2.4 |  |
| 91 | 1.5.2.3 | 계약변경 | 5d | 2008-09-01 A | 2008-09-05 A |  | 100% | 2008-09-01 | 2008-09-05 | 5d | 매핑 | P02-1 1.2.4 |  |
| 92 | 1.5.2.4 | 지급 | 5d | 2008-09-01 A | 2008-09-05 A |  | 100% | 2008-09-01 | 2008-09-05 | 5d | 매핑 | P02-1 1.2.4 |  |
| 93 | 1.5.2.5 | CLAIM | 5d | 2008-09-01 A | 2008-09-05 A |  | 100% | 2008-09-01 | 2008-09-05 | 5d | 매핑 | P02-1 1.2.4 |  |
| 94 | 1.5.3 | **현업요구사항정의서 최종 승인** | 2d | 2008-09-08 A | 2008-09-09 A | 88 | 100% | 2008-09-08 | 2008-09-09 | 2d | 매핑 | P02-1 1.2.4 | 패키지 GAP 분석서 |
| 95 | 1.5.3.1 | 신계약 | 2d | 2008-09-08 A | 2008-09-09 A |  | 100% | 2008-09-08 | 2008-09-09 | 2d | 매핑 | P02-1 1.2.4 |  |
| 96 | 1.5.3.2 | 수금 | 2d | 2008-09-08 A | 2008-09-09 A |  | 100% | 2008-09-08 | 2008-09-09 | 2d | 매핑 | P02-1 1.2.4 |  |
| 97 | 1.5.3.3 | 계약변경 | 2d | 2008-09-08 A | 2008-09-09 A |  | 100% | 2008-09-08 | 2008-09-09 | 2d | 매핑 | P02-1 1.2.4 |  |
| 98 | 1.5.3.4 | 지급 | 2d | 2008-09-08 A | 2008-09-09 A |  | 100% | 2008-09-08 | 2008-09-09 | 2d | 매핑 | P02-1 1.2.4 |  |
| 99 | 1.5.3.5 | CLAIM | 2d | 2008-09-08 A | 2008-09-09 A |  | 100% | 2008-09-08 | 2008-09-09 | 2d | 매핑 | P02-1 1.2.4 |  |

| ID | WBS | Task | Duration | Start | Finish | Predecessors | Complete | Baseline start | Baseline finish | Baseline duration | Constraint | Text20 | Text26 | Text30 | Text22 | Text25 | Text27 | Text28 |
| --- | --- | --- | --- | --- | --- | --- | --- | --- | --- | --- | --- | --- | --- | --- | --- | --- | --- | --- |
| 100 | 1.6 | **인터페이스 정의** | 7d | 2008-09-10 A | 2008-09-19 A | 81 | 100% | 2008-09-10 | 2008-09-19 | 7d |  | 패키지 요구사항정의 | P02-1 1.2.3 |  |  |  |  |  |
| 101 | 1.6.1 | **인터페이스 목록 및 레이아웃 작성** | 7d | 2008-09-10 A | 2008-09-19 A |  | 100% | 2008-09-10 | 2008-09-19 | 7d |  | 패키지 요구사항정의 | P02-1 1.2.3 | 인터페이스목록,인터페이스 전문 레이아웃 |  |  |  |  |
| 102 | 1.6.1.1 | KS-NET(즉시이체) | 7d | 2008-09-10 A | 2008-09-19 A |  | 100% | 2008-09-10 | 2008-09-19 | 7d |  | 패키지 요구사항정의 | P02-1 1.2.3 |  |  |  |  |  |
| 103 | 1.6.1.2 | 기업은행 | 7d | 2008-09-10 A | 2008-09-19 A |  | 100% | 2008-09-10 | 2008-09-19 | 7d |  | 패키지 요구사항정의 | P02-1 1.2.3 |  |  |  |  |  |
| 104 | 1.6.1.3 | 국민은행 | 7d | 2008-09-10 A | 2008-09-19 A |  | 100% | 2008-09-10 | 2008-09-19 | 7d |  | 패키지 요구사항정의 | P02-1 1.2.3 |  |  |  |  |  |
| 105 | 1.6.1.4 | 외환은행 | 7d | 2008-09-10 A | 2008-09-19 A |  | 100% | 2008-09-10 | 2008-09-19 | 7d |  | 패키지 요구사항정의 | P02-1 1.2.3 |  |  |  |  |  |
| 106 | 1.6.1.5 | 농협(단위조합 포함) | 7d | 2008-09-10 A | 2008-09-19 A |  | 100% | 2008-09-10 | 2008-09-19 | 7d |  | 패키지 요구사항정의 | P02-1 1.2.3 |  |  |  |  |  |
| 107 | 1.6.1.6 | 우리은행 | 7d | 2008-09-10 A | 2008-09-19 A |  | 100% | 2008-09-10 | 2008-09-19 | 7d |  | 패키지 요구사항정의 | P02-1 1.2.3 |  |  |  |  |  |
| 108 | 1.6.1.7 | 제일은행 | 7d | 2008-09-10 A | 2008-09-19 A |  | 100% | 2008-09-10 | 2008-09-19 | 7d |  | 패키지 요구사항정의 | P02-1 1.2.3 |  |  |  |  |  |
| 109 | 1.6.1.8 | 신한은행 | 7d | 2008-09-10 A | 2008-09-19 A |  | 100% | 2008-09-10 | 2008-09-19 | 7d |  | 패키지 요구사항정의 | P02-1 1.2.3 |  |  |  |  |  |
| 110 | 1.6.1.9 | 한국씨티은행 | 7d | 2008-09-10 A | 2008-09-19 A |  | 100% | 2008-09-10 | 2008-09-19 | 7d |  | 패키지 요구사항정의 | P02-1 1.2.3 |  |  |  |  |  |
| 111 | 1.6.1.10 | 대구은행 | 7d | 2008-09-10 A | 2008-09-19 A |  | 100% | 2008-09-10 | 2008-09-19 | 7d |  | 패키지 요구사항정의 | P02-1 1.2.3 |  |  |  |  |  |
| 112 | 1.6.1.11 | 부산은행 | 7d | 2008-09-10 A | 2008-09-19 A |  | 100% | 2008-09-10 | 2008-09-19 | 7d |  | 패키지 요구사항정의 | P02-1 1.2.3 |  |  |  |  |  |
| 113 | 1.6.1.12 | 광주은행 | 7d | 2008-09-10 A | 2008-09-19 A |  | 100% | 2008-09-10 | 2008-09-19 | 7d |  | 패키지 요구사항정의 | P02-1 1.2.3 |  |  |  |  |  |
| 114 | 1.6.1.13 | 경남은행 | 7d | 2008-09-10 A | 2008-09-19 A |  | 100% | 2008-09-10 | 2008-09-19 | 7d |  | 패키지 요구사항정의 | P02-1 1.2.3 |  |  |  |  |  |
| 115 | 1.6.1.14 | 전북은행 | 7d | 2008-09-10 A | 2008-09-19 A |  | 100% | 2008-09-10 | 2008-09-19 | 7d |  | 패키지 요구사항정의 | P02-1 1.2.3 |  |  |  |  |  |
| 116 | 1.6.1.15 | 우체국 | 7d | 2008-09-10 A | 2008-09-19 A |  | 100% | 2008-09-10 | 2008-09-19 | 7d |  | 패키지 요구사항정의 | P02-1 1.2.3 |  |  |  |  |  |
| 117 | 1.6.1.16 | 하나은행 | 7d | 2008-09-10 A | 2008-09-19 A |  | 100% | 2008-09-10 | 2008-09-19 | 7d |  | 패키지 요구사항정의 | P02-1 1.2.3 |  |  |  |  |  |
| 118 | 1.6.1.17 | KS-NET(카드납) | 7d | 2008-09-10 A | 2008-09-19 A |  | 100% | 2008-09-10 | 2008-09-19 | 7d |  | 패키지 요구사항정의 | P02-1 1.2.3 |  |  |  |  |  |
| 119 | 1.6.1.18 | 생보협회 | 7d | 2008-09-10 A | 2008-09-19 A |  | 100% | 2008-09-10 | 2008-09-19 | 7d |  | 패키지 요구사항정의 | P02-1 1.2.3 |  |  |  |  |  |
| 120 | 1.6.1.19 | 국민은행가상계좌 | 7d | 2008-09-10 A | 2008-09-19 A |  | 100% | 2008-09-10 | 2008-09-19 | 7d |  | 패키지 요구사항정의 | P02-1 1.2.3 |  |  |  |  |  |
| 121 | 1.6.1.20 | 우리은행가상계좌 | 7d | 2008-09-10 A | 2008-09-19 A |  | 100% | 2008-09-10 | 2008-09-19 | 7d |  | 패키지 요구사항정의 | P02-1 1.2.3 |  |  |  |  |  |
| 122 | 1.7 | **단계완료** | 5d | 2008-09-22 A | 2008-09-26 A |  | 100% | 2008-09-22 | 2008-09-26 | 5d |  | 단계완료 | P02-1 1.6.8 |  | 48648FB40F9201F8E100800046140A10 | 07060716O410080 | 00000000000001277356 | DEFAULT |
| 123 | 1.7.1 | 요구사항추적표 작성 | 1d | 2008-09-22 A | 2008-09-22 A | 101 | 100% | 2008-09-22 | 2008-09-22 | 1d | start no earlier than 2008-09-22 | 단계완료 | P02-1 1.6.8 | 요구사항추적표 | 48648FB60F9201F8E100800046140A10 | 07060716O410080 | 00000000000001277357 | DEFAULT |
| 124 | 1.7.2 | 분석단계산출물 정리(Inspection) | 1d | 2008-09-23 A | 2008-09-23 A | 123 | 100% | 2008-09-23 | 2008-09-23 | 1d |  | 단계완료 | P02-1 1.6.8 | 인스펙션결과서 | 48648FB60F9201F8E100800046140A10 | 07060716O410080 | 00000000000001277357 | DEFAULT |
| 125 | 1.7.3 | 고객검토 실시 | 2d | 2008-09-24 A | 2008-09-25 A | 124 | 100% | 2008-09-24 | 2008-09-25 | 2d |  | 단계완료 | P02-1 1.6.8 | 고객검토결과서 | 48648FB80F9201F8E100800046140A10 | 07060716O410080 | 00000000000001277358 | DEFAULT |
| 126 | 1.7.4 | 고객승인 획득 | 1d | 2008-09-26 A | 2008-09-26 A | 125 | 100% | 2008-09-26 | 2008-09-26 | 1d |  | 단계완료 | P02-1 1.6.8 | 고객인수확인서(PAD) | 48648FBA0F9201F8E100800046140A10 | 07060716O410080 | 00000000000001277359 | DEFAULT |

| ID | WBS | Task | Duration | Start | Finish | Predecessors | Complete | Remaining | Baseline start | Baseline finish | Baseline duration | Total slack | Free slack | Constraint | Text20 | Text26 | Text30 | Text22 | Text25 | Text27 | Text28 |
| --- | --- | --- | --- | --- | --- | --- | --- | --- | --- | --- | --- | --- | --- | --- | --- | --- | --- | --- | --- | --- | --- |
| 127 | 2 | **Design** | 44d | 2008-09-29 A | 2008-11-28 A |  | 100% |  | 2008-09-29 | 2008-11-28 | 44d |  |  |  | 설계 | P02-1 1.3 |  |  |  |  |  |
| 128 | 2.1 | **프로그램설계** | 34d | 2008-09-29 A | 2008-11-14 A |  | 100% |  | 2008-09-29 | 2008-11-14 | 34d |  |  |  | 추가개발설계 | P02-1 1.3.1 |  |  |  |  |  |
| 129 | 2.1.1 | **데이터베이스 설계** | 6d | 2008-09-29 A | 2008-10-07 A |  | 100% |  | 2008-09-29 | 2008-10-07 | 6d |  |  |  | 추가개발설계 | P02-1 1.3.1 |  |  |  |  |  |
| 130 | 2.1.1.1 | ERD 작성 | 3d | 2008-09-29 A | 2008-10-01 A | 122 | 100% |  | 2008-09-29 | 2008-10-01 | 3d |  |  |  | 추가개발설계 | P02-1 1.3.1 | ERD |  |  |  |  |
| 131 | 2.1.1.2 | **테이블 설계** | 3d | 2008-10-02 A | 2008-10-07 A |  | 100% |  | 2008-10-02 | 2008-10-07 | 3d |  |  |  | 추가개발설계 | P02-1 1.3.1 |  |  |  |  |  |
| 132 | 2.1.1.2.1 | 테이블목록 작성 | 1d | 2008-10-02 A | 2008-10-02 A | 130 | 100% |  | 2008-10-02 | 2008-10-02 | 1d |  |  |  | 추가개발설계 | P02-1 1.3.1 | 테이블목록 |  |  |  |  |
| 133 | 2.1.1.2.2 | 테이블정의서 작성 | 1d | 2008-10-02 A | 2008-10-02 A | 130 | 100% |  | 2008-10-02 | 2008-10-02 | 1d |  |  |  | 추가개발설계 | P02-1 1.3.1 | 테이블정의서 |  |  |  |  |
| 134 | 2.1.1.2.3 | 테이블목록 및 테이블정의서 및 코드정의서 검토 | 2d | 2008-10-06 A | 2008-10-07 A | 133 | 100% |  | 2008-10-06 | 2008-10-07 | 2d |  |  |  | 추가개발설계 | P02-1 1.3.1 | 데이터코드정의서 |  |  |  |  |
| 135 | 2.1.2 | 프로그램목록 | 5d | 2008-10-08 A | 2008-10-14 A | 129 | 100% |  | 2008-10-08 | 2008-10-14 | 5d |  |  |  | 추가개발설계 | P02-1 1.3.1 | 프로그램목록 |  |  |  |  |
| 136 | 2.1.3 | **프로그램사양서** | 15d | 2008-10-15 A | 2008-11-04 A | 135 | 100% |  | 2008-10-15 | 2008-11-04 | 15d |  |  |  | 추가개발설계 | P02-1 1.3.1 | 프로그램사양서 |  |  |  |  |
| 137 | 2.1.3.1 | UI | 15d | 2008-10-15 A | 2008-11-04 A |  | 100% |  | 2008-10-15 | 2008-11-04 | 15d |  |  |  | 추가개발설계 | P02-1 1.3.1 |  |  |  |  |  |
| 138 | 2.1.3.2 | Service Object | 15d | 2008-10-15 A | 2008-11-04 A |  | 100% |  | 2008-10-15 | 2008-11-04 | 15d |  |  |  | 추가개발설계 | P02-1 1.3.1 |  |  |  |  |  |
| 139 | 2.1.3.3 | Biz Object | 15d | 2008-10-15 A | 2008-11-04 A |  | 100% |  | 2008-10-15 | 2008-11-04 | 15d |  |  |  | 추가개발설계 | P02-1 1.3.1 |  |  |  |  |  |
| 140 | 2.1.4 | 프로그램목록/프로그램사양서 검토 | 3d | 2008-11-05 A | 2008-11-07 A | 136 | 100% |  | 2008-11-05 | 2008-11-07 | 3d |  |  |  | 추가개발설계 | P02-1 1.3.1 |  |  |  |  |  |
| 141 | 2.1.5 | **메뉴구조정의** | 5d | 2008-11-10 A | 2008-11-14 A |  | 100% |  | 2008-11-10 | 2008-11-14 | 5d |  |  |  | 추가개발설계 | P02-1 1.3.1 | 메뉴구조도 |  |  |  |  |
| 142 | 2.1.5.1 | 메뉴구조도 작성 | 3d | 2008-11-10 A | 2008-11-12 A | 140 | 100% |  | 2008-11-10 | 2008-11-12 | 3d |  |  |  | 추가개발설계 | P02-1 1.3.1 |  |  |  |  |  |
| 143 | 2.1.5.2 | 메뉴구조도 확정 | 2d | 2008-11-13 A | 2008-11-14 A | 142 | 100% |  | 2008-11-13 | 2008-11-14 | 2d |  |  |  | 추가개발설계 | P02-1 1.3.1 |  |  |  |  |  |
| 144 | 2.2 | **단계완료** | 10d | 2008-11-17 A | 2008-11-28 A |  | 100% |  | 2008-11-17 | 2008-11-28 | 10d |  |  |  | 단계완료 | P02-1 1.6.8 |  | 48648FB40F9201F8E100800046140A10 | 07060716O410080 | 00000000000001277356 | DEFAULT |
| 145 | 2.2.1 | 요구사항추적표 작성 | 2d | 2008-11-17 A | 2008-11-18 A | 143 | 100% |  | 2008-11-17 | 2008-11-18 | 2d |  |  | start no earlier than 2008-09-09 | 단계결과 정리 | P02-1 1.6.8.1 | 요구사항추적표 | 48648FB60F9201F8E100800046140A10 | 07060716O410080 | 00000000000001277357 | DEFAULT |
| 146 | 2.2.2 | 설계단계산출물 정리(Inspection) | 3d | 2008-11-19 A | 2008-11-21 A | 145 | 100% |  | 2008-11-19 | 2008-11-21 | 3d |  |  |  | 단계결과 정리 | P02-1 1.6.8.1 | 인스펙션결과서 | 48648FB60F9201F8E100800046140A10 | 07060716O410080 | 00000000000001277357 | DEFAULT |
| 147 | 2.2.3 | 고객검토 실시 | 3d | 2008-11-24 A | 2008-11-26 A | 146 | 100% |  | 2008-11-24 | 2008-11-26 | 3d |  |  |  | 고객검토 실시 | P02-1 1.6.8.2 | 고객검토결과서 | 48648FB80F9201F8E100800046140A10 | 07060716O410080 | 00000000000001277358 | DEFAULT |
| 148 | 2.2.4 | 고객승인 획득 | 2d | 2008-11-27 A | 2008-11-28 A | 147 | 100% |  | 2008-11-27 | 2008-11-28 | 2d |  |  |  | 고객승인 획득 | P02-1 1.6.8.3 | 고객인수확인서(PAD) | 48648FBA0F9201F8E100800046140A10 | 07060716O410080 | 00000000000001277359 | DEFAULT |
| 149 | 3 | **Build/Unit Test** | 71d | 2008-12-01 A | 2009-03-13 |  | 6% | 66.72d | 2008-12-01 | 2009-03-13 | 71d | 84d |  |  | 개발 | P02-1 1.4 |  |  |  |  |  |
| 150 | 3.1 | **추가개발/패키지 커스터마이징 및 Unit Test** | 61d | 2008-12-01 A | 2009-02-27 |  | 16% | 51d | 2008-12-01 | 2009-02-27 | 61d | 94d |  |  | 추가개발 프로그램코딩 | P02-1 1.4.1 | 소스코드 및 단위테스트결과 | 48648F540F9201F8E100800046140A10 | 07060716O410178 | 00000000000001277308 | DEFAULT |
| 151 | 3.1.1 | 개발 1주차(개발일정계획수립) | 5d | 2008-12-01 A | 2008-12-05 A |  | 100% |  | 2008-12-01 | 2008-12-05 | 5d |  |  | start no earlier than 2008-12-01 | 추가개발 프로그램코딩 | P02-1 1.4.1 | 소스코드 및 단위테스트결과 | 48648F0A0F9201F8E100800046140A10 | 07060716O410168 | 00000000000001277271 | DEFAULT |
| 152 | 3.1.2 | 개발 2주차 | 5d | 2008-12-08 A | 2008-12-12 A | 151 | 100% |  | 2008-12-08 | 2008-12-12 | 5d |  |  | start no earlier than 2008-12-01 | 추가개발 프로그램코딩 | P02-1 1.4.1 | 소스코드 및 단위테스트결과 | 48648F0A0F9201F8E100800046140A10 | 07060716O410168 | 00000000000001277271 | DEFAULT |
| 153 | 3.1.3 | 개발 3주차 | 5d | 2008-12-15 | 2008-12-19 | 152 |  |  | 2008-12-15 | 2008-12-19 | 5d | 94d | 0d | start no earlier than 2008-07-21 | 추가개발 프로그램코딩 | P02-1 1.4.1 | 소스코드 및 단위테스트결과 | 48648F0A0F9201F8E100800046140A10 | 07060716O410168 | 00000000000001277271 | DEFAULT |
| 154 | 3.1.4 | 개발 4주차 | 4d | 2008-12-22 | 2008-12-26 | 153 |  |  | 2008-12-22 | 2008-12-26 | 4d | 94d | 0d | start no earlier than 2008-11-17 | 추가개발 프로그램코딩 | P02-1 1.4.1 | 소스코드 및 단위테스트결과 | 48648F0A0F9201F8E100800046140A10 | 07060716O410168 | 00000000000001277271 | DEFAULT |
| 155 | 3.1.5 | 개발 5주차 | 4d | 2008-12-29 | 2009-01-02 | 154 |  |  | 2008-12-29 | 2009-01-02 | 4d | 94d | 0d | start no earlier than 2008-12-01 | 추가개발 프로그램코딩 | P02-1 1.4.1 | 소스코드 및 단위테스트결과 | 48648F0A0F9201F8E100800046140A10 | 07060716O410168 | 00000000000001277271 | DEFAULT |
| 156 | 3.1.6 | 개발 6주차 | 5d | 2009-01-05 | 2009-01-09 | 155 |  |  | 2009-01-05 | 2009-01-09 | 5d | 94d | 0d | start no earlier than 2008-12-01 | 추가개발 프로그램코딩 | P02-1 1.4.1 | 소스코드 및 단위테스트결과 | 48648F0A0F9201F8E100800046140A10 | 07060716O410168 | 00000000000001277271 | DEFAULT |
| 157 | 3.1.7 | 개발 7주차 | 5d | 2009-01-12 | 2009-01-16 | 156 |  |  | 2009-01-12 | 2009-01-16 | 5d | 94d | 0d | start no earlier than 2008-12-01 | 추가개발 프로그램코딩 | P02-1 1.4.1 | 소스코드 및 단위테스트결과 | 48648F0A0F9201F8E100800046140A10 | 07060716O410168 | 00000000000001277271 | DEFAULT |
| 158 | 3.1.8 | 개발 8주차 | 5d | 2009-01-19 | 2009-01-23 | 157 |  |  | 2009-01-19 | 2009-01-23 | 5d | 94d | 0d | start no earlier than 2008-07-21 | 추가개발 프로그램코딩 | P02-1 1.4.1 | 소스코드 및 단위테스트결과 | 48648F0A0F9201F8E100800046140A10 | 07060716O410168 | 00000000000001277271 | DEFAULT |
| 159 | 3.1.9 | 개발 9주차 | 3d | 2009-01-28 | 2009-01-30 | 158 |  |  | 2009-01-28 | 2009-01-30 | 3d | 94d | 0d | start no earlier than 2008-11-17 | 추가개발 프로그램코딩 | P02-1 1.4.1 | 소스코드 및 단위테스트결과 | 48648F0A0F9201F8E100800046140A10 | 07060716O410168 | 00000000000001277271 | DEFAULT |
| 160 | 3.1.10 | 개발 10주차 | 5d | 2009-02-02 | 2009-02-06 | 159 |  |  | 2009-02-02 | 2009-02-06 | 5d | 94d | 0d | start no earlier than 2008-12-01 | 추가개발 프로그램코딩 | P02-1 1.4.1 | 소스코드 및 단위테스트결과 | 48648F0A0F9201F8E100800046140A10 | 07060716O410168 | 00000000000001277271 | DEFAULT |
| 161 | 3.1.11 | 개발 11주차 | 5d | 2009-02-09 | 2009-02-13 | 160 |  |  | 2009-02-09 | 2009-02-13 | 5d | 94d | 0d | start no earlier than 2008-12-01 | 추가개발 프로그램코딩 | P02-1 1.4.1 | 소스코드 및 단위테스트결과 | 48648F0A0F9201F8E100800046140A10 | 07060716O410168 | 00000000000001277271 | DEFAULT |
| 162 | 3.1.12 | 개발 12주차 | 5d | 2009-02-16 | 2009-02-20 | 161 |  |  | 2009-02-16 | 2009-02-20 | 5d | 94d | 0d | start no earlier than 2008-12-01 | 추가개발 프로그램코딩 | P02-1 1.4.1 | 소스코드 및 단위테스트결과 | 48648F0A0F9201F8E100800046140A10 | 07060716O410168 | 00000000000001277271 | DEFAULT |
| 163 | 3.1.13 | 개발 13주차 | 5d | 2009-02-23 | 2009-02-27 | 162 |  |  | 2009-02-23 | 2009-02-27 | 5d | 94d |  | start no earlier than 2008-12-01 | 추가개발 프로그램코딩 | P02-1 1.4.1 | 소스코드 및 단위테스트결과 | 48648F0A0F9201F8E100800046140A10 | 07060716O410168 | 00000000000001277271 | DEFAULT |

| ID | WBS | Task | Duration | Start | Finish | Predecessors | Complete | Remaining | Baseline start | Baseline finish | Baseline duration | Total slack | Free slack | Constraint | Text20 | Text26 | Text22 | Text25 | Text27 | Text28 | Text30 |
| --- | --- | --- | --- | --- | --- | --- | --- | --- | --- | --- | --- | --- | --- | --- | --- | --- | --- | --- | --- | --- | --- |
| 164 | 3.2 | **대외기관업무협의** | 5d | 2008-12-15 | 2008-12-19 |  |  |  | 2008-12-15 | 2008-12-19 | 5d | 140d |  |  | 추가개발 프로그램코딩 | P02-1 1.4.1 |  |  |  |  |  |
| 165 | 3.2.1 | SSL 등록 | 5d | 2008-12-15 | 2008-12-19 |  |  |  | 2008-12-15 | 2008-12-19 | 5d | 140d |  | start no earlier than 2008-12-15 | 추가개발 프로그램코딩 | P02-1 1.4.1 |  |  |  |  |  |
| 166 | 3.2.2 | KS-NET(즉시이체) | 5d | 2008-12-15 | 2008-12-19 |  |  |  | 2008-12-15 | 2008-12-19 | 5d | 140d |  | start no earlier than 2008-12-15 | 추가개발 프로그램코딩 | P02-1 1.4.1 |  |  |  |  |  |
| 167 | 3.2.3 | 기업은행 | 5d | 2008-12-15 | 2008-12-19 |  |  |  | 2008-12-15 | 2008-12-19 | 5d | 140d |  | start no earlier than 2008-12-15 | 추가개발 프로그램코딩 | P02-1 1.4.1 |  |  |  |  |  |
| 168 | 3.2.4 | 국민은행 | 5d | 2008-12-15 | 2008-12-19 |  |  |  | 2008-12-15 | 2008-12-19 | 5d | 140d |  | start no earlier than 2008-12-15 | 추가개발 프로그램코딩 | P02-1 1.4.1 |  |  |  |  |  |
| 169 | 3.2.5 | 외환은행 | 5d | 2008-12-15 | 2008-12-19 |  |  |  | 2008-12-15 | 2008-12-19 | 5d | 140d |  | start no earlier than 2008-12-15 | 추가개발 프로그램코딩 | P02-1 1.4.1 |  |  |  |  |  |
| 170 | 3.2.6 | 농협(단위조합 포함) | 5d | 2008-12-15 | 2008-12-19 |  |  |  | 2008-12-15 | 2008-12-19 | 5d | 140d |  | start no earlier than 2008-12-15 | 추가개발 프로그램코딩 | P02-1 1.4.1 |  |  |  |  |  |
| 171 | 3.2.7 | 우리은행 | 5d | 2008-12-15 | 2008-12-19 |  |  |  | 2008-12-15 | 2008-12-19 | 5d | 140d |  | start no earlier than 2008-12-15 | 추가개발 프로그램코딩 | P02-1 1.4.1 |  |  |  |  |  |
| 172 | 3.2.8 | 제일은행 | 5d | 2008-12-15 | 2008-12-19 |  |  |  | 2008-12-15 | 2008-12-19 | 5d | 140d |  | start no earlier than 2008-12-15 | 추가개발 프로그램코딩 | P02-1 1.4.1 |  |  |  |  |  |
| 173 | 3.2.9 | 신한은행 | 5d | 2008-12-15 | 2008-12-19 |  |  |  | 2008-12-15 | 2008-12-19 | 5d | 140d |  | start no earlier than 2008-12-15 | 추가개발 프로그램코딩 | P02-1 1.4.1 |  |  |  |  |  |
| 174 | 3.2.10 | 한국씨티은행 | 5d | 2008-12-15 | 2008-12-19 |  |  |  | 2008-12-15 | 2008-12-19 | 5d | 140d |  | start no earlier than 2008-12-15 | 추가개발 프로그램코딩 | P02-1 1.4.1 |  |  |  |  |  |
| 175 | 3.2.11 | 대구은행 | 5d | 2008-12-15 | 2008-12-19 |  |  |  | 2008-12-15 | 2008-12-19 | 5d | 140d |  | start no earlier than 2008-12-15 | 추가개발 프로그램코딩 | P02-1 1.4.1 |  |  |  |  |  |
| 176 | 3.2.12 | 부산은행 | 5d | 2008-12-15 | 2008-12-19 |  |  |  | 2008-12-15 | 2008-12-19 | 5d | 140d |  | start no earlier than 2008-12-15 | 추가개발 프로그램코딩 | P02-1 1.4.1 |  |  |  |  |  |
| 177 | 3.2.13 | 광주은행 | 5d | 2008-12-15 | 2008-12-19 |  |  |  | 2008-12-15 | 2008-12-19 | 5d | 140d |  | start no earlier than 2008-12-15 | 추가개발 프로그램코딩 | P02-1 1.4.1 |  |  |  |  |  |
| 178 | 3.2.14 | 경남은행 | 5d | 2008-12-15 | 2008-12-19 |  |  |  | 2008-12-15 | 2008-12-19 | 5d | 140d |  | start no earlier than 2008-12-15 | 추가개발 프로그램코딩 | P02-1 1.4.1 |  |  |  |  |  |
| 179 | 3.2.15 | 전북은행 | 5d | 2008-12-15 | 2008-12-19 |  |  |  | 2008-12-15 | 2008-12-19 | 5d | 140d |  | start no earlier than 2008-12-15 | 추가개발 프로그램코딩 | P02-1 1.4.1 |  |  |  |  |  |
| 180 | 3.2.16 | 우체국 | 5d | 2008-12-15 | 2008-12-19 |  |  |  | 2008-12-15 | 2008-12-19 | 5d | 140d |  | start no earlier than 2008-12-15 | 추가개발 프로그램코딩 | P02-1 1.4.1 |  |  |  |  |  |
| 181 | 3.2.17 | 하나은행 | 5d | 2008-12-15 | 2008-12-19 |  |  |  | 2008-12-15 | 2008-12-19 | 5d | 140d |  | start no earlier than 2008-12-15 | 추가개발 프로그램코딩 | P02-1 1.4.1 |  |  |  |  |  |
| 182 | 3.2.18 | KS-NET(카드납) | 5d | 2008-12-15 | 2008-12-19 |  |  |  | 2008-12-15 | 2008-12-19 | 5d | 140d |  | start no earlier than 2008-12-15 | 추가개발 프로그램코딩 | P02-1 1.4.1 |  |  |  |  |  |
| 183 | 3.2.19 | 생보협회 | 5d | 2008-12-15 | 2008-12-19 |  |  |  | 2008-12-15 | 2008-12-19 | 5d | 140d |  | start no earlier than 2008-12-15 | 추가개발 프로그램코딩 | P02-1 1.4.1 |  |  |  |  |  |
| 184 | 3.2.20 | 국민은행가상계좌 | 5d | 2008-12-15 | 2008-12-19 |  |  |  | 2008-12-15 | 2008-12-19 | 5d | 140d |  | start no earlier than 2008-12-15 | 추가개발 프로그램코딩 | P02-1 1.4.1 |  |  |  |  |  |
| 185 | 3.2.21 | 우리은행가상계좌 | 5d | 2008-12-15 | 2008-12-19 |  |  |  | 2008-12-15 | 2008-12-19 | 5d | 140d |  | start no earlier than 2008-12-15 | 추가개발 프로그램코딩 | P02-1 1.4.1 |  |  |  |  |  |
| 186 | 3.3 | **테스트시나리오 작성** | 61d | 2008-12-01 A | 2009-02-27 |  | 8% | 56d | 2008-12-01 | 2009-02-27 | 61d | 84d |  |  | 추가개발 프로그램코딩 | P02-1 1.4.1 | 48648F540F9201F8E100800046140A10 | 07060716O410178 | 00000000000001277308 | DEFAULT | 테스트시나리오 |
| 187 | 3.3.1 | 테스트착수준비 | 5d | 2008-12-01 A | 2008-12-05 A |  | 100% |  | 2008-12-01 | 2008-12-05 | 5d |  |  | start no earlier than 2008-12-01 |  |  |  |  |  |  |  |
| 188 | 3.3.2 | 테스트목록 및 일정 확정 | 28d | 2008-12-08 | 2009-01-16 |  |  |  | 2008-12-08 | 2009-01-16 | 28d | 84d | 0d | start no earlier than 2008-12-08 | 추가개발 프로그램코딩 | P02-1 1.4.1 | 48648F0A0F9201F8E100800046140A10 | 07060716O410168 | 00000000000001277271 | DEFAULT | 테스트목록 |
| 189 | 3.3.3 | UAT시나리오 작성 - 비즈니스모듈1 | 5d | 2009-01-19 | 2009-01-23 | 188 |  |  | 2009-01-19 | 2009-01-23 | 5d | 84d | 0d | start no earlier than 2008-12-01 | 추가개발 프로그램코딩 | P02-1 1.4.1 | 48648F0A0F9201F8E100800046140A10 | 07060716O410168 | 00000000000001277271 | DEFAULT | UAT시나리오(E2E테스트시나리오) |
| 190 | 3.3.4 | UAT시나리오 작성 - 비즈니스모듈2 | 3d | 2009-01-28 | 2009-01-30 | 189 |  |  | 2009-01-28 | 2009-01-30 | 3d | 84d | 0d | start no earlier than 2008-07-21 | 추가개발 프로그램코딩 | P02-1 1.4.1 | 48648F0A0F9201F8E100800046140A10 | 07060716O410168 | 00000000000001277271 | DEFAULT | UAT시나리오(E2E테스트시나리오) |
| 191 | 3.3.5 | UAT시나리오 작성 - 비즈니스모듈3 | 5d | 2009-02-02 | 2009-02-06 | 190 |  |  | 2009-02-02 | 2009-02-06 | 5d | 84d | 0d | start no earlier than 2008-11-17 | 추가개발 프로그램코딩 | P02-1 1.4.1 | 48648F0A0F9201F8E100800046140A10 | 07060716O410168 | 00000000000001277271 | DEFAULT | UAT시나리오(E2E테스트시나리오) |
| 192 | 3.3.6 | UAT시나리오 작성 - 비즈니스모듈4 | 5d | 2009-02-09 | 2009-02-13 | 191 |  |  | 2009-02-09 | 2009-02-13 | 5d | 84d | 0d | start no earlier than 2008-12-01 | 추가개발 프로그램코딩 | P02-1 1.4.1 | 48648F0A0F9201F8E100800046140A10 | 07060716O410168 | 00000000000001277271 | DEFAULT | UAT시나리오(E2E테스트시나리오) |
| 193 | 3.3.7 | UAT시나리오 작성 - 비즈니스모듈5 | 5d | 2009-02-16 | 2009-02-20 | 192 |  |  | 2009-02-16 | 2009-02-20 | 5d | 84d | 0d | start no earlier than 2008-12-01 | 추가개발 프로그램코딩 | P02-1 1.4.1 | 48648F0A0F9201F8E100800046140A10 | 07060716O410168 | 00000000000001277271 | DEFAULT | UAT시나리오(E2E테스트시나리오) |
| 194 | 3.3.8 | UAT시나리오 작성 - 비즈니스모듈6 | 5d | 2009-02-23 | 2009-02-27 | 193 |  |  | 2009-02-23 | 2009-02-27 | 5d | 84d | 0d | start no earlier than 2008-12-01 | 추가개발 프로그램코딩 | P02-1 1.4.1 | 48648F0A0F9201F8E100800046140A10 | 07060716O410168 | 00000000000001277271 | DEFAULT | UAT시나리오(E2E테스트시나리오) |

| ID | WBS | Task | Duration | Start | Finish | Predecessors | Baseline start | Baseline finish | Baseline duration | Total slack | Free slack | Constraint | Text20 | Text22 | Text25 | Text26 | Text27 | Text28 | Text30 |
| --- | --- | --- | --- | --- | --- | --- | --- | --- | --- | --- | --- | --- | --- | --- | --- | --- | --- | --- | --- |
| 195 | 3.4 | **사전 E2E Test 실시** | 10d | 2009-03-02 | 2009-03-13 |  | 2009-03-02 | 2009-03-13 | 10d | 84d |  |  | 테스트실시 | 48648F560F9201F8E100800046140A10 | 07060716O410178 | P02-1 1.4.2 | 00000000000001277309 | DEFAULT | 테스트결과 |
| 196 | 3.4.1 | 사전 E2E Test - 주요프로세스1 | 5d | 2009-03-02 | 2009-03-06 | 194 | 2009-03-02 | 2009-03-06 | 5d | 84d | 0d | start no earlier than 2008-12-01 | 테스트실시 | 48648F0A0F9201F8E100800046140A10 | 07060716O410168 | P02-1 1.4.2 | 00000000000001277271 | DEFAULT |  |
| 197 | 3.4.2 | 사전 E2E Test - 주요프로세스2 | 5d | 2009-03-09 | 2009-03-13 | 196 | 2009-03-09 | 2009-03-13 | 5d | 84d |  | start no earlier than 2008-12-01 | 테스트실시 | 48648F0A0F9201F8E100800046140A10 | 07060716O410168 | P02-1 1.4.2 | 00000000000001277271 | DEFAULT |  |
| 198 | 3.5 | **개발단계 품질검증 및 단계완료** | 57d | 2008-12-19 | 2009-03-13 |  | 2008-12-19 | 2009-03-13 | 57d | 54d |  |  | 단계완료 | 48648FB40F9201F8E100800046140A10 | 07060716O410080 | P02-1 1.6.8 | 00000000000001277356 | DEFAULT |  |
| 199 | 3.5.1 | **Code Inspection 실시 및 보완** | 52d | 2008-12-19 | 2009-03-06 |  | 2008-12-19 | 2009-03-06 | 52d | 54d | 0d |  |  |  |  |  |  |  | Code Inspection 결과서 |
| 200 | 3.5.1.1 | Code Inspection 1차 | 1d | 2008-12-19 | 2008-12-19 |  | 2008-12-19 | 2008-12-19 | 1d | 105d |  | start no earlier than 2008-12-19 | 단계완료 | 48648FB60F9201F8E100800046140A10 | 07060716O410080 | P02-1 1.6.8 | 00000000000001277357 | DEFAULT |  |
| 201 | 3.5.1.2 | Code Inspection 2차 | 1d | 2009-01-02 | 2009-01-02 |  | 2009-01-02 | 2009-01-02 | 1d | 97d |  | start no earlier than 2009-01-02 | 단계완료 | 48648FB60F9201F8E100800046140A10 | 07060716O410080 | P02-1 1.6.8 | 00000000000001277357 | DEFAULT |  |
| 202 | 3.5.1.3 | Code Inspection 3차 | 1d | 2009-01-16 | 2009-01-16 |  | 2009-01-16 | 2009-01-16 | 1d | 87d |  | start no earlier than 2009-01-16 | 단계완료 | 48648FB60F9201F8E100800046140A10 | 07060716O410080 | P02-1 1.6.8 | 00000000000001277357 | DEFAULT |  |
| 203 | 3.5.1.4 | Code Inspection 4차 | 1d | 2009-01-30 | 2009-01-30 |  | 2009-01-30 | 2009-01-30 | 1d | 79d |  | start no earlier than 2009-01-30 | 단계완료 | 48648FB60F9201F8E100800046140A10 | 07060716O410080 | P02-1 1.6.8 | 00000000000001277357 | DEFAULT |  |
| 204 | 3.5.1.5 | Code Inspection 5차 | 1d | 2009-02-13 | 2009-02-13 |  | 2009-02-13 | 2009-02-13 | 1d | 69d |  | start no earlier than 2009-02-13 | 단계완료 | 48648FB60F9201F8E100800046140A10 | 07060716O410080 | P02-1 1.6.8 | 00000000000001277357 | DEFAULT |  |
| 205 | 3.5.1.6 | Code Inspection 6차 | 1d | 2009-02-20 | 2009-02-20 |  | 2009-02-20 | 2009-02-20 | 1d | 64d |  | start no earlier than 2009-02-20 | 단계완료 | 48648FB60F9201F8E100800046140A10 | 07060716O410080 | P02-1 1.6.8 | 00000000000001277357 | DEFAULT |  |
| 206 | 3.5.1.7 | Code Inspection 7차 | 1d | 2009-03-06 | 2009-03-06 |  | 2009-03-06 | 2009-03-06 | 1d | 54d |  | start no earlier than 2009-03-06 |  |  |  |  |  |  |  |
| 207 | 3.5.2 | 요구사항추적표 작성 | 5d | 2009-03-09 | 2009-03-13 | 199 | 2009-03-09 | 2009-03-13 | 5d | 54d | 0d |  |  |  |  |  |  |  | 요구사항추적표 |
| 208 | 4 | **E2E Test(End to End Test)** | 20d | 2009-03-16 | 2009-04-10 |  | 2009-03-16 | 2009-04-10 | 20d | 54d | 0d |  | 테스트실시 | 48648F580F9201F8E100800046140A10 | 07060716O410179 | P02-1 1.4.2 | 00000000000001277310 | DEFAULT |  |
| 209 | 4.1 | KS-NET(즉시이체) | 1d | 2009-03-16 | 2009-03-16 | 207 | 2009-03-16 | 2009-03-16 | 1d | 54d | 0d |  | 테스트실시 |  |  | P02-1 1.4.2 |  |  |  |
| 210 | 4.2 | 기업은행 | 1d | 2009-03-17 | 2009-03-17 | 209 | 2009-03-17 | 2009-03-17 | 1d | 54d | 0d |  | 테스트실시 |  |  | P02-1 1.4.2 |  |  |  |
| 211 | 4.3 | 국민은행 | 1d | 2009-03-18 | 2009-03-18 | 210 | 2009-03-18 | 2009-03-18 | 1d | 54d | 0d |  | 테스트실시 |  |  | P02-1 1.4.2 |  |  |  |
| 212 | 4.4 | 외환은행 | 1d | 2009-03-19 | 2009-03-19 | 211 | 2009-03-19 | 2009-03-19 | 1d | 54d | 0d |  | 테스트실시 |  |  | P02-1 1.4.2 |  |  |  |
| 213 | 4.5 | 농협(단위조합 포함) | 1d | 2009-03-20 | 2009-03-20 | 212 | 2009-03-20 | 2009-03-20 | 1d | 54d | 0d |  | 테스트실시 |  |  | P02-1 1.4.2 |  |  |  |
| 214 | 4.6 | 우리은행 | 1d | 2009-03-23 | 2009-03-23 | 213 | 2009-03-23 | 2009-03-23 | 1d | 54d | 0d |  | 테스트실시 |  |  | P02-1 1.4.2 |  |  |  |
| 215 | 4.7 | 제일은행 | 1d | 2009-03-24 | 2009-03-24 | 214 | 2009-03-24 | 2009-03-24 | 1d | 54d | 0d |  | 테스트실시 |  |  | P02-1 1.4.2 |  |  |  |
| 216 | 4.8 | 신한은행 | 1d | 2009-03-25 | 2009-03-25 | 215 | 2009-03-25 | 2009-03-25 | 1d | 54d | 0d |  | 테스트실시 |  |  | P02-1 1.4.2 |  |  |  |
| 217 | 4.9 | 한국씨티은행 | 1d | 2009-03-26 | 2009-03-26 | 216 | 2009-03-26 | 2009-03-26 | 1d | 54d | 0d |  | 테스트실시 |  |  | P02-1 1.4.2 |  |  |  |
| 218 | 4.10 | 대구은행 | 1d | 2009-03-27 | 2009-03-27 | 217 | 2009-03-27 | 2009-03-27 | 1d | 54d | 0d |  | 테스트실시 |  |  | P02-1 1.4.2 |  |  |  |
| 219 | 4.11 | 부산은행 | 1d | 2009-03-30 | 2009-03-30 | 218 | 2009-03-30 | 2009-03-30 | 1d | 54d | 0d |  | 테스트실시 |  |  | P02-1 1.4.2 |  |  |  |
| 220 | 4.12 | 광주은행 | 1d | 2009-03-31 | 2009-03-31 | 219 | 2009-03-31 | 2009-03-31 | 1d | 54d | 0d |  | 테스트실시 |  |  | P02-1 1.4.2 |  |  |  |
| 221 | 4.13 | 경남은행 | 1d | 2009-04-01 | 2009-04-01 | 220 | 2009-04-01 | 2009-04-01 | 1d | 54d | 0d |  | 테스트실시 |  |  | P02-1 1.4.2 |  |  |  |
| 222 | 4.14 | 전북은행 | 1d | 2009-04-02 | 2009-04-02 | 221 | 2009-04-02 | 2009-04-02 | 1d | 54d | 0d |  | 테스트실시 |  |  | P02-1 1.4.2 |  |  |  |
| 223 | 4.15 | 우체국 | 1d | 2009-04-03 | 2009-04-03 | 222 | 2009-04-03 | 2009-04-03 | 1d | 54d | 0d |  | 테스트실시 |  |  | P02-1 1.4.2 |  |  |  |
| 224 | 4.16 | 하나은행 | 1d | 2009-04-06 | 2009-04-06 | 223 | 2009-04-06 | 2009-04-06 | 1d | 54d | 0d |  | 테스트실시 |  |  | P02-1 1.4.2 |  |  |  |
| 225 | 4.17 | KS-NET(카드납) | 1d | 2009-04-07 | 2009-04-07 | 224 | 2009-04-07 | 2009-04-07 | 1d | 54d | 0d |  | 테스트실시 |  |  | P02-1 1.4.2 |  |  |  |
| 226 | 4.18 | 생보협회 | 1d | 2009-04-08 | 2009-04-08 | 225 | 2009-04-08 | 2009-04-08 | 1d | 54d | 0d |  | 테스트실시 |  |  | P02-1 1.4.2 |  |  |  |
| 227 | 4.19 | 국민은행가상계좌 | 1d | 2009-04-09 | 2009-04-09 | 226 | 2009-04-09 | 2009-04-09 | 1d | 54d | 0d |  | 테스트실시 |  |  | P02-1 1.4.2 |  |  |  |
| 228 | 4.20 | 우리은행가상계좌 | 1d | 2009-04-10 | 2009-04-10 | 227 | 2009-04-10 | 2009-04-10 | 1d | 54d |  |  | 테스트실시 |  |  | P02-1 1.4.2 |  |  |  |

| ID | WBS | Task | Duration | Start | Finish | Predecessors | Baseline start | Baseline finish | Baseline duration | Total slack | Free slack | Constraint | Text30 | Text20 | Text22 | Text25 | Text26 | Text27 | Text28 |
| --- | --- | --- | --- | --- | --- | --- | --- | --- | --- | --- | --- | --- | --- | --- | --- | --- | --- | --- | --- |
| 229 | 5 | **개발 및 Test 검수** | 10d | 2009-04-13 | 2009-04-24 | 208 | 2009-04-13 | 2009-04-24 | 10d | 54d |  |  |  |  |  |  |  |  |  |
| 230 | 5.1 | 테스트결과제출 | 5d | 2009-04-13 | 2009-04-17 |  | 2009-04-13 | 2009-04-17 | 5d | 54d | 0d |  | E2E테스트결과, 시스템테스트결과서 |  |  |  |  |  |  |
| 231 | 5.2 | 고객 테스트결과 확인 | 3d | 2009-04-20 | 2009-04-22 | 230 | 2009-04-20 | 2009-04-22 | 3d | 54d | 0d |  | 고객검토결과서 |  |  |  |  |  |  |
| 232 | 5.3 | 고객승인 획득 | 2d | 2009-04-23 | 2009-04-24 | 231 | 2009-04-23 | 2009-04-24 | 2d | 54d |  |  | 고객인수확인서(PAD) |  |  |  |  |  |  |
| 233 | 6 | **UAT(User Acceptance Test)** | 38d | 2009-04-13 | 2009-06-05 |  | 2009-04-13 | 2009-06-05 | 38d | 26d |  |  |  |  |  |  |  |  |  |
| 234 | 6.1 | 사용자테스트 실시 | 38d | 2009-04-13 | 2009-06-05 |  | 2009-04-13 | 2009-06-05 | 38d | 26d |  | start no earlier than 2009-04-13 | 사용자테스트결과 |  |  |  |  |  |  |
| 235 | 6.2 | 사용자매뉴얼 작성 | 10d | 2009-04-23 | 2009-05-08 |  | 2009-04-23 | 2009-05-08 | 10d | 46d |  | start no earlier than 2009-04-23 | 사용자매뉴얼 |  |  |  |  |  |  |
| 236 | 6.3 | 사용자교육 실시 | 20d | 2009-05-11 | 2009-06-05 |  | 2009-05-11 | 2009-06-05 | 20d | 26d |  | start no earlier than 2009-05-11 | 교육교재 |  |  |  |  |  |  |
| 237 | 7 | **ORT(Operation Readiness Test)** | 35d | 2009-05-25 | 2009-07-10 |  | 2009-05-25 | 2009-07-10 | 35d | 1d |  |  |  | 구현 | 48648F5E0F9201F8E100800046140A10 | 07060716O410180 | P02-1 1.5 | 00000000000001277313 | DEFAULT |
| 238 | 7.1 | **구현계획수립** | 10d | 2009-05-25 | 2009-06-05 |  | 2009-05-25 | 2009-06-05 | 10d | 16d |  |  |  | 구현계획수립 | 48648F600F9201F8E100800046140A10 | 07060716O410181 | P02-1 1.5.1 | 00000000000001277314 | DEFAULT |
| 239 | 7.1.1 | 릴리이즈및비상계획수립 | 5d | 2009-05-25 | 2009-05-29 |  | 2009-05-25 | 2009-05-29 | 5d | 31d |  | start no earlier than 2009-05-25 | 구현계획서 | 구현계획수립 | 48648F620F9201F8E100800046140A10 | 07060716O410181 | P02-1 1.5.1 | 00000000000001277315 | DEFAULT |
| 240 | 7.1.2 | 교육훈련계획수립 | 5d | 2009-06-01 | 2009-06-05 |  | 2009-06-01 | 2009-06-05 | 5d | 11d | 5d | start no earlier than 2009-06-01 | 교육계획서 | 구현계획수립 | 48648F640F9201F8E100800046140A10 | 07060716O410181 | P02-1 1.5.1 | 00000000000001277316 | DEFAULT |
| 241 | 7.2 | **시범운영** | 25d | 2009-06-08 | 2009-07-10 |  | 2009-06-08 | 2009-07-10 | 25d | 1d |  |  |  | 시범운영 | 48648F7A0F9201F8E100800046140A10 | 07060716O410184 | P02-1 1.5.4 | 00000000000001277327 | DEFAULT |
| 242 | 7.2.1 | 시범운영계획 수립 | 5d | 2009-06-08 | 2009-06-12 |  | 2009-06-08 | 2009-06-12 | 5d | 21d |  | start no earlier than 2009-06-08 | 시범운영계획서 | 시범운영 | 48648F7C0F9201F8E100800046140A10 | 07060716O410184 | P02-1 1.5.4 | 00000000000001277328 | DEFAULT |
| 243 | 7.2.2 | 시범운영 실시 | 25d | 2009-06-08 | 2009-07-10 |  | 2009-06-08 | 2009-07-10 | 25d | 1d |  | start no earlier than 2009-06-08 | 시범운영일지 | 시범운영 | 48648F7E0F9201F8E100800046140A10 | 07060716O410184 | P02-1 1.5.4 | 00000000000001277329 | DEFAULT |
| 244 | 7.3 | **시스템사용교육** | 15d | 2009-06-15 | 2009-07-03 |  | 2009-06-15 | 2009-07-03 | 15d | 6d |  |  |  | 시스템사용교육 | 48648F720F9201F8E100800046140A10 | 07060716O410183 | P02-1 1.5.3 | 00000000000001277323 | DEFAULT |
| 245 | 7.3.1 | 운영매뉴얼 작성 | 10d | 2009-06-15 | 2009-06-26 | 240 | 2009-06-15 | 2009-06-26 | 10d | 6d | 0d | start no earlier than 2009-06-15 | 운영매뉴얼 | 시스템사용교육 | 48648F760F9201F8E100800046140A10 | 07060716O410183 | P02-1 1.5.3 | 00000000000001277325 | DEFAULT |
| 246 | 7.3.2 | 운영자교육 실시 | 5d | 2009-06-29 | 2009-07-03 | 245 | 2009-06-29 | 2009-07-03 | 5d | 6d |  |  | 교육교재 | 시스템사용교육 | 48648F780F9201F8E100800046140A10 | 07060716O410183 | P02-1 1.5.3 | 00000000000001277326 | DEFAULT |
| 247 | 7.4 | **시스템 인수인계** | 20d | 2009-06-08 | 2009-07-03 |  | 2009-06-08 | 2009-07-03 | 20d | 6d |  |  |  | 시스템 인수인계 | 48648F7A0F9201F8E100800046140A10 | 07060716O410184 | P02-1 1.7.2 | 00000000000001277327 | DEFAULT |
| 248 | 7.4.1 | 인수인계계획 수립 | 5d | 2009-06-08 | 2009-06-12 |  | 2009-06-08 | 2009-06-12 | 5d | 6d | 0d | start no earlier than 2009-06-08 | 인수인계계획서 | 시스템 인수인계 | 48648F7C0F9201F8E100800046140A10 | 07060716O410184 | P02-1 1.7.2 | 00000000000001277328 | DEFAULT |
| 249 | 7.4.2 | 인수인계 실시 | 15d | 2009-06-15 | 2009-07-03 | 248 | 2009-06-15 | 2009-07-03 | 15d | 6d |  | start no earlier than 2009-06-15 | 인수인계확인서 | 시스템 인수인계 | 48648F7E0F9201F8E100800046140A10 | 07060716O410184 | P02-1 1.7.2 | 00000000000001277329 | DEFAULT |
| 250 | 7.5 | **오픈 준비** | 5d | 2009-07-06 | 2009-07-10 |  | 2009-07-06 | 2009-07-10 | 5d | 1d |  |  |  | 컨버젼 및 릴리이즈 | 48648F660F9201F8E100800046140A10 | 07060716O410182 | P02-1 1.5.2 | 00000000000001277317 | DEFAULT |
| 251 | 7.5.1 | 데이터베이스 구축 | 5d | 2009-07-06 | 2009-07-10 |  | 2009-07-06 | 2009-07-10 | 5d | 1d |  | start no earlier than 2009-07-06 |  | 컨버젼 및 릴리이즈 | 48648F680F9201F8E100800046140A10 | 07060716O410182 | P02-1 1.5.2 | 00000000000001277318 | DEFAULT |
| 252 | 7.5.2 | 소프트웨어 설치 | 5d | 2009-07-06 | 2009-07-10 |  | 2009-07-06 | 2009-07-10 | 5d | 1d |  | start no earlier than 2009-07-06 |  | 컨버젼 및 릴리이즈 | 48648F6A0F9201F8E100800046140A10 | 07060716O410182 | P02-1 1.5.2 | 00000000000001277319 | DEFAULT |
| 253 | 7.5.3 | 데이터컨버전 | 5d | 2009-07-06 | 2009-07-10 |  | 2009-07-06 | 2009-07-10 | 5d | 1d |  | start no earlier than 2009-07-06 |  | 컨버젼 및 릴리이즈 | 48648F6C0F9201F8E100800046140A10 | 07060716O410182 | P02-1 1.5.2 | 00000000000001277320 | DEFAULT |
| 254 | 7.5.4 | 시스템 릴리이즈 | 1d | 2009-07-10 | 2009-07-10 |  | 2009-07-10 | 2009-07-10 | 1d | 1d |  | start no earlier than 2009-07-10 |  | 컨버젼 및 릴리이즈 | 48648F700F9201F8E100800046140A10 | 07060716O410182 | P02-1 1.5.2 | 00000000000001277322 | DEFAULT |

| ID | WBS | Task | Duration | Start | Finish | Baseline start | Baseline finish | Baseline duration | Total slack | Constraint | Text20 | Text26 |
| --- | --- | --- | --- | --- | --- | --- | --- | --- | --- | --- | --- | --- |
| 255 | 8 | **Go Live** | 1d | 2009-07-13 | 2009-07-13 | 2009-07-13 | 2009-07-13 | 1d | 0d |  | 컨버젼 및 릴리이즈 | P02-1 1.5.2 |
| 256 | 8.1 | 시스템 최종 오픈 | 1d | 2009-07-13 | 2009-07-13 | 2009-07-13 | 2009-07-13 | 1d | 0d | start no earlier than 2009-07-13 |  |  |
