# 11.RBMS

Schedule from MS Project, 2008-07-23 to 2009-07-13, status date 2008-12-12, A marks actual dates.
HSIC-0820606

## Calendars

- All Working Day Calendar: Mon-Fri 08:00-12:00, 13:00-17:00; Sat-Sun off. Exceptions (off unless hours are given): 2008-08-15, 2008-09-15, 2008-10-03, 2008-12-25, 2009-01-01, 2009-01-26 to 2009-01-27, 2009-05-05.
- 한국: Mon-Fri 08:00-12:00, 13:00-17:00; Sat-Sun off. Exceptions (off unless hours are given): 2008-08-15, 2008-09-13 to 2008-09-15, 2008-10-03, 2008-12-25, 2009-01-01, 2009-01-25 to 2009-01-27, 2009-03-01, 2009-05-01 to 2009-05-02, 2009-05-05, 2009-06-06.

## Schedule

| ID | WBS | Task | Duration | Start | Finish | Predecessors | Complete | Remaining | Baseline start | Baseline finish | Baseline duration | Total slack | Constraint | Calendar | Text20 | Text22 | Text25 | Text26 | Text27 | Text28 | Text30 |
| --- | --- | --- | --- | --- | --- | --- | --- | --- | --- | --- | --- | --- | --- | --- | --- | --- | --- | --- | --- | --- | --- |
| 1 | 1 | **Inception** | 6d | 2008-07-23 A | 2008-07-30 A |  | 100% |  | 2008-07-23 | 2008-07-30 | 6d |  |  | All Working Day Calendar | 프로젝트 착수 | 48648EC80F9201F8E100800046140A10 | 07061114O410023 | P02-1 1.1 | 00000000000001277238 | DEFAULT |  |
| 2 | 1.1 | **착수준비** | 6d | 2008-07-23 A | 2008-07-30 A |  | 100% |  | 2008-07-23 | 2008-07-30 | 6d |  |  | All Working Day Calendar | 착수준비 | 48648ECA0F9201F8E100800046140A10 | 07061114O410024 | P02-1 1.1.1 | 00000000000001277239 | DEFAULT |  |
| 3 | 1.1.1 | 업무범위 정의 | 3d | 2008-07-23 A | 2008-07-25 A |  | 100% |  | 2008-07-23 | 2008-07-25 | 3d |  | start no earlier than 2008-07-23 | All Working Day Calendar | 착수준비 | 48648ECC0F9201F8E100800046140A10 | 07061114O410024 | P02-1 1.1.1 | 00000000000001277240 | DEFAULT |  |
| 4 | 1.1.2 | 업무파트 WBS 정의 | 3d | 2008-07-28 A | 2008-07-30 A | 3 | 100% |  | 2008-07-28 | 2008-07-30 | 3d |  | start no earlier than 2008-07-23 | All Working Day Calendar | 착수준비 | 48648ECE0F9201F8E100800046140A10 | 07061114O410024 | P02-1 1.1.1 | 00000000000001277241 | DEFAULT | WBS |
| 5 | 2 | **Data Input and Validation** | 216d | 2008-07-28 A | 2009-06-05 |  | 56% | 93.99d | 2008-07-28 | 2009-07-03 | 236d | 26d |  |  | 분석 |  |  | P02-1 1.2 |  |  |  |
| 6 | 2.1 | **현행업무 및 시스템분석** | 14d | 2008-07-28 A | 2008-08-14 A |  | 100% |  | 2008-07-28 | 2008-08-14 | 14d |  |  |  | 현황평가 |  |  | P02-1 1.2.2 |  |  |  |
| 7 | 2.1.1 | 상품기초 및 구조분석을 위한 자료수집 | 14d | 2008-07-28 A | 2008-08-14 A |  | 100% |  | 2008-07-28 | 2008-08-14 | 14d |  | start no earlier than 2008-07-28 |  | 현황평가 |  |  | P02-1 1.2.2 |  |  |  |
| 8 | 2.1.2 | 상품 및 보험 재고조사 | 14d | 2008-07-28 A | 2008-08-14 A |  | 100% |  | 2008-07-28 | 2008-08-14 | 14d |  | start no earlier than 2008-07-28 |  | 현황평가 |  |  | P02-1 1.2.2 |  |  |  |
| 9 | 2.1.3 | 우선순위 선정 | 14d | 2008-07-28 A | 2008-08-14 A |  | 100% |  | 2008-07-28 | 2008-08-14 | 14d |  | start no earlier than 2008-07-28 |  | 현황평가 |  |  | P02-1 1.2.2 |  |  |  |
| 10 | 2.2 | **데이터 정의** | 82d | 2008-08-04 A | 2008-11-28 A |  | 100% |  | 2008-08-04 | 2008-11-28 | 82d |  |  |  | 패키지 요구사항정의 |  |  | P02-1 1.2.3 |  |  |  |
| 11 | 2.2.1 | **기초TB 입력을 위한 정의** | 19d | 2008-08-04 A | 2008-08-29 A |  | 100% |  | 2008-08-04 | 2008-08-29 | 19d |  |  |  | 패키지 요구사항정의 |  |  | P02-1 1.2.3 |  |  |  |
| 12 | 2.2.1.1 | 준비금KEY | 19d | 2008-08-04 A | 2008-08-29 A |  | 100% |  | 2008-08-04 | 2008-08-29 | 19d |  | start no earlier than 2008-08-04 |  | 패키지 요구사항정의 |  |  | P02-1 1.2.3 |  |  |  |
| 13 | 2.2.1.2 | 자연식위험보험료 | 19d | 2008-08-04 A | 2008-08-29 A |  | 100% |  | 2008-08-04 | 2008-08-29 | 19d |  | start no earlier than 2008-08-04 |  | 패키지 요구사항정의 |  |  | P02-1 1.2.3 |  |  |  |
| 14 | 2.2.1.3 | 분할급부 | 19d | 2008-08-04 A | 2008-08-29 A |  | 100% |  | 2008-08-04 | 2008-08-29 | 19d |  | start no earlier than 2008-08-04 |  | 패키지 요구사항정의 |  |  | P02-1 1.2.3 |  |  |  |
| 15 | 2.2.2 | **RD입력을 위한 정의** | 19d | 2008-08-04 A | 2008-08-29 A |  | 100% |  | 2008-08-04 | 2008-08-29 | 19d |  |  |  | 패키지 요구사항정의 |  |  | P02-1 1.2.3 |  |  | RD 정의서 |
| 16 | 2.2.2.1 | 상품 | 19d | 2008-08-04 A | 2008-08-29 A |  | 100% |  | 2008-08-04 | 2008-08-29 | 19d |  | start no earlier than 2008-08-04 |  | 패키지 요구사항정의 |  |  | P02-1 1.2.3 |  |  |  |
| 17 | 2.2.2.2 | 신계약 | 19d | 2008-08-04 A | 2008-08-29 A |  | 100% |  | 2008-08-04 | 2008-08-29 | 19d |  | start no earlier than 2008-08-04 |  | 패키지 요구사항정의 |  |  | P02-1 1.2.3 |  |  |  |
| 18 | 2.2.2.3 | 입금/보전 | 19d | 2008-08-04 A | 2008-08-29 A |  | 100% |  | 2008-08-04 | 2008-08-29 | 19d |  | start no earlier than 2008-08-04 |  | 패키지 요구사항정의 |  |  | P02-1 1.2.3 |  |  |  |
| 19 | 2.2.2.4 | 지급/Claim | 19d | 2008-08-04 A | 2008-08-29 A |  | 100% |  | 2008-08-04 | 2008-08-29 | 19d |  | start no earlier than 2008-08-04 |  | 패키지 요구사항정의 |  |  | P02-1 1.2.3 |  |  |  |
| 20 | 2.2.3 | **Rule Data 추가정의 및 최종확정** | 15d | 2008-11-10 A | 2008-11-28 A |  | 100% |  | 2008-11-10 | 2008-11-28 | 15d |  |  |  | 패키지 요구사항정의 |  |  | P02-1 1.2.3 |  |  | RD 정의서 |
| 21 | 2.2.3.1 | 상품 | 15d | 2008-11-10 A | 2008-11-28 A |  | 100% |  | 2008-11-10 | 2008-11-28 | 15d |  | start no earlier than 2008-11-10 |  | 패키지 요구사항정의 |  |  | P02-1 1.2.3 |  |  |  |
| 22 | 2.2.3.2 | 신계약 | 15d | 2008-11-10 A | 2008-11-28 A |  | 100% |  | 2008-11-10 | 2008-11-28 | 15d |  | start no earlier than 2008-11-10 |  | 패키지 요구사항정의 |  |  | P02-1 1.2.3 |  |  |  |
| 23 | 2.2.3.3 | 입금/보전 | 15d | 2008-11-10 A | 2008-11-28 A |  | 100% |  | 2008-11-10 | 2008-11-28 | 15d |  | start no earlier than 2008-11-10 |  | 패키지 요구사항정의 |  |  | P02-1 1.2.3 |  |  |  |
| 24 | 2.2.3.4 | 지급/Claim | 15d | 2008-11-10 A | 2008-11-28 A |  | 100% |  | 2008-11-10 | 2008-11-28 | 15d |  | start no earlier than 2008-11-10 |  | 패키지 요구사항정의 |  |  | P02-1 1.2.3 |  |  |  |

| ID | WBS | Task | Duration | Start | Finish | Predecessors | Complete | Remaining | Baseline start | Baseline finish | Baseline duration | Total slack | Free slack | Constraint | Text20 | Text26 |
| --- | --- | --- | --- | --- | --- | --- | --- | --- | --- | --- | --- | --- | --- | --- | --- | --- |
| 25 | 2.3 | **데이터 입력 및 검증** | 202d | 2008-08-18 A | 2009-06-05 |  | 47% | 106.34d | 2008-08-18 | 2009-05-22 | 192d | 26d |  |  | 현황평가 | P02-1 1.2.2 |
| 26 | 2.3.1 | **기초TB 기준 입력** | 104d | 2008-09-01 A | 2009-01-30 |  | 64% | 37.79d | 2008-09-01 | 2009-01-30 | 104d | 114d |  |  | 패키지 요구사항정의 | P02-1 1.2.3 |
| 27 | 2.3.1.1 | 준비금KEY | 104d | 2008-09-01 A | 2009-01-30 |  | 50% | 52d | 2008-09-01 | 2009-01-30 | 104d | 114d |  | start no earlier than 2008-09-01 | 패키지 요구사항정의 | P02-1 1.2.3 |
| 28 | 2.3.1.2 | 자연식위험보험료 | 104d | 2008-09-01 A | 2009-01-30 |  | 61% | 40.56d | 2008-09-01 | 2009-01-30 | 104d | 114d |  | start no earlier than 2008-09-01 | 패키지 요구사항정의 | P02-1 1.2.3 |
| 29 | 2.3.1.3 | 분할급부 | 104d | 2008-09-01 A | 2009-01-30 |  | 80% | 20.8d | 2008-09-01 | 2009-01-30 | 104d | 114d |  | start no earlier than 2008-09-01 | 패키지 요구사항정의 | P02-1 1.2.3 |
| 30 | 2.3.2 | **Rule Data 입력(10%)** | 29d | 2008-08-18 A | 2008-09-26 A |  | 100% |  | 2008-08-18 | 2008-09-26 | 29d |  |  |  | 패키지 요구사항정의 | P02-1 1.2.3 |
| 31 | 2.3.2.1 | 상품 | 29d | 2008-08-18 A | 2008-09-26 A |  | 100% |  | 2008-08-18 | 2008-09-26 | 29d |  |  | start no earlier than 2008-08-18 | 패키지 요구사항정의 | P02-1 1.2.3 |
| 32 | 2.3.2.2 | 신계약 | 29d | 2008-08-18 A | 2008-09-26 A |  | 100% |  | 2008-08-18 | 2008-09-26 | 29d |  |  | start no earlier than 2008-08-18 | 패키지 요구사항정의 | P02-1 1.2.3 |
| 33 | 2.3.2.3 | 입금/보전 | 29d | 2008-08-18 A | 2008-09-26 A |  | 100% |  | 2008-08-18 | 2008-09-26 | 29d |  |  | start no earlier than 2008-08-18 | 패키지 요구사항정의 | P02-1 1.2.3 |
| 34 | 2.3.2.4 | 지급/Claim | 29d | 2008-08-18 A | 2008-09-26 A |  | 100% |  | 2008-08-18 | 2008-09-26 | 29d |  |  | start no earlier than 2008-08-18 | 패키지 요구사항정의 | P02-1 1.2.3 |
| 35 | 2.3.3 | **Rule Data 입력 및 검증(30%) - 누적 40%** | 44d | 2008-09-29 A | 2008-11-28 A |  | 100% |  | 2008-09-29 | 2008-11-28 | 44d |  |  |  | 테스트 설계 | P02-1 1.3.3 |
| 36 | 2.3.3.1 | 상품 | 44d | 2008-09-29 A | 2008-11-28 A | 30 | 100% |  | 2008-09-29 | 2008-11-28 | 44d |  |  | start no earlier than 2008-09-16 | 테스트 설계 | P02-1 1.3.3 |
| 37 | 2.3.3.2 | 신계약 | 44d | 2008-09-29 A | 2008-11-28 A |  | 100% |  | 2008-09-29 | 2008-11-28 | 44d |  |  | start no earlier than 2008-09-29 | 테스트 설계 | P02-1 1.3.3 |
| 38 | 2.3.3.3 | 입금/보전 | 44d | 2008-09-29 A | 2008-11-28 A |  | 100% |  | 2008-09-29 | 2008-11-28 | 44d |  |  | start no earlier than 2008-09-29 | 테스트 설계 | P02-1 1.3.3 |
| 39 | 2.3.3.4 | 지급/Claim | 44d | 2008-09-29 A | 2008-11-28 A |  | 100% |  | 2008-09-29 | 2008-11-28 | 44d |  |  | start no earlier than 2008-09-29 | 테스트 설계 | P02-1 1.3.3 |
| 40 | 2.3.4 | **Rule Data 입력 및 검증(50%) - 누적 90%** | 71d | 2008-12-01 A | 2009-03-13 |  | 14% | 61.06d | 2008-12-01 | 2009-03-13 | 71d | 26d | 0d |  | 테스트실시 | P02-1 1.4.2 |
| 41 | 2.3.4.1 | 상품 | 71d | 2008-12-01 A | 2009-03-13 | 35 | 14% | 61.06d | 2008-12-01 | 2009-03-13 | 71d | 26d |  | start no earlier than 2008-12-01 | 테스트실시 | P02-1 1.4.2 |
| 42 | 2.3.4.2 | 신계약 | 71d | 2008-12-01 A | 2009-03-13 |  | 14% | 61.06d | 2008-12-01 | 2009-03-13 | 71d | 26d |  | start no earlier than 2008-12-01 | 테스트실시 | P02-1 1.4.2 |
| 43 | 2.3.4.3 | 입금/보전 | 71d | 2008-12-01 A | 2009-03-13 |  | 14% | 61.06d | 2008-12-01 | 2009-03-13 | 71d | 26d |  | start no earlier than 2008-12-01 | 테스트실시 | P02-1 1.4.2 |
| 44 | 2.3.4.4 | 지급/Claim | 71d | 2008-12-01 A | 2009-03-13 |  | 14% | 61.06d | 2008-12-01 | 2009-03-13 | 71d | 26d |  | start no earlier than 2008-12-01 | 테스트실시 | P02-1 1.4.2 |
| 45 | 2.3.5 | **Rule Data 입력 및 최종검증- 누적 100%** | 58d | 2009-03-16 | 2009-06-05 |  |  |  | 2009-03-30 | 2009-05-22 | 38d | 26d |  |  | 테스트실시 | P02-1 1.4.2 |
| 46 | 2.3.5.1 | 상품 | 58d | 2009-03-16 | 2009-06-05 | 40 |  |  | 2009-03-30 | 2009-05-22 | 38d | 26d |  | start no earlier than 2009-03-16 | 테스트실시 | P02-1 1.4.2 |
| 47 | 2.3.5.2 | 신계약 | 58d | 2009-03-16 | 2009-06-05 |  |  |  | 2009-03-30 | 2009-05-22 | 38d | 26d |  | start no earlier than 2009-03-16 | 테스트실시 | P02-1 1.4.2 |
| 48 | 2.3.5.3 | 입금/보전 | 58d | 2009-03-16 | 2009-06-05 |  |  |  | 2009-03-30 | 2009-05-22 | 38d | 26d |  | start no earlier than 2009-03-16 | 테스트실시 | P02-1 1.4.2 |
| 49 | 2.3.5.4 | 지급/Claim | 58d | 2009-03-16 | 2009-06-05 |  |  |  | 2009-03-30 | 2009-05-22 | 38d | 26d |  | start no earlier than 2009-03-16 | 테스트실시 | P02-1 1.4.2 |

| ID | WBS | Task | Duration | Start | Finish | Predecessors | Complete | Remaining | Baseline start | Baseline finish | Baseline duration | Total slack | Constraint | Calendar | Text20 | Text22 | Text25 | Text26 | Text27 | Text28 | Text30 |
| --- | --- | --- | --- | --- | --- | --- | --- | --- | --- | --- | --- | --- | --- | --- | --- | --- | --- | --- | --- | --- | --- |
| 50 | 3 | **RBMS Customizing** | 238d | 2008-07-25 A | 2009-07-03 |  | 74% | 60.99d | 2008-07-25 | 2009-07-03 | 238d | 6d |  | All Working Day Calendar | 분석 | 48648EFC0F9201F8E100800046140A10 | 07060716O410166 | P02-1 1.2 | 00000000000001277264 | DEFAULT |  |
| 51 | 3.1 | **교육 및 기능설명** | 19d | 2008-07-28 A | 2008-08-22 A |  | 100% |  | 2008-07-28 | 2008-08-22 | 19d |  |  | All Working Day Calendar | 현황평가 | 48648F080F9201F8E100800046140A10 | 07060716O410168 | P02-1 1.2.2 | 00000000000001277270 | DEFAULT |  |
| 52 | 3.1.1 | **교육** | 10d | 2008-07-28 A | 2008-08-08 A |  | 100% |  | 2008-07-28 | 2008-08-08 | 10d |  |  | All Working Day Calendar | 현황평가 | 48648F0A0F9201F8E100800046140A10 | 07060716O410168 | P02-1 1.2.2 | 00000000000001277271 | DEFAULT |  |
| 53 | 3.1.1.1 | 패키지 RBMS 시스템 교육 | 5d | 2008-07-28 A | 2008-08-01 A |  | 100% |  | 2008-07-28 | 2008-08-01 | 5d |  | start no earlier than 2008-07-28 | All Working Day Calendar | 현황평가 | 48648F0A0F9201F8E100800046140A10 | 07060716O410168 | P02-1 1.2.2 | 00000000000001277271 | DEFAULT |  |
| 54 | 3.1.1.2 | 상품구조, 속성, 규칙 활용 사례 교육 | 10d | 2008-07-28 A | 2008-08-08 A |  | 100% |  | 2008-07-28 | 2008-08-08 | 10d |  | start no earlier than 2008-07-28 |  | 현황평가 |  |  | P02-1 1.2.2 |  |  |  |
| 55 | 3.1.2 | **기능 상세화 설명** | 14d | 2008-08-04 A | 2008-08-22 A | 53 | 100% |  | 2008-08-04 | 2008-08-22 | 14d |  |  | All Working Day Calendar | 현황평가 | 48648F0C0F9201F8E100800046140A10 | 07060716O410168 | P02-1 1.2.2 | 00000000000001277272 | DEFAULT |  |
| 56 | 3.1.2.1 | 상품 및 속성 관리 | 14d | 2008-08-04 A | 2008-08-22 A |  | 100% |  | 2008-08-04 | 2008-08-22 | 14d |  | start no earlier than 2008-07-21 | All Working Day Calendar | 현황평가 | 48648F0A0F9201F8E100800046140A10 | 07060716O410168 | P02-1 1.2.2 | 00000000000001277271 | DEFAULT |  |
| 57 | 3.1.2.2 | 상품규칙관리 | 14d | 2008-08-04 A | 2008-08-22 A |  | 100% |  | 2008-08-04 | 2008-08-22 | 14d |  |  | All Working Day Calendar | 현황평가 | 48648F0A0F9201F8E100800046140A10 | 07060716O410168 | P02-1 1.2.2 | 00000000000001277271 | DEFAULT |  |
| 58 | 3.1.2.3 | 산출기초관리 | 14d | 2008-08-04 A | 2008-08-22 A |  | 100% |  | 2008-08-04 | 2008-08-22 | 14d |  |  |  | 현황평가 |  |  | P02-1 1.2.2 |  |  |  |
| 59 | 3.1.2.4 | 문서관리 | 14d | 2008-08-04 A | 2008-08-22 A |  | 100% |  | 2008-08-04 | 2008-08-22 | 14d |  |  |  | 현황평가 |  |  | P02-1 1.2.2 |  |  |  |
| 60 | 3.2 | **RBMS 시스템 셋팅** | 30d | 2008-07-25 A | 2008-09-05 A |  | 100% |  | 2008-07-25 | 2008-09-05 | 30d |  |  |  | 기술구조정의 |  |  | P02-1 1.2.5 |  |  |  |
| 61 | 3.2.1 | 패키지 시스템 셋팅 | 10d | 2008-08-18 A | 2008-08-29 A |  | 100% |  | 2008-08-18 | 2008-08-29 | 10d |  | start no earlier than 2008-08-18 |  | 기술구조정의 |  |  | P02-1 1.2.5 |  |  |  |
| 62 | 3.2.2 | 패키지 매뉴얼 제공 | 3d | 2008-08-27 A | 2008-08-29 A |  | 100% |  | 2008-08-27 | 2008-08-29 | 3d |  | start no earlier than 2008-08-27 |  | 기술구조정의 |  |  | P02-1 1.2.5 |  |  | 패키지 매뉴얼 |
| 63 | 3.2.3 | POC 지원 | 30d | 2008-07-25 A | 2008-09-05 A |  | 100% |  | 2008-07-25 | 2008-09-05 | 30d |  | start no earlier than 2008-07-25 |  | 기술구조정의 |  |  | P02-1 1.2.5 |  |  |  |
| 64 | 3.3 | **시스템 커스터마이징(1차개발)** | 19d | 2008-09-01 A | 2008-09-26 A |  | 100% |  | 2008-09-01 | 2008-09-26 | 19d |  |  |  | 패키지 요구사항정의 |  |  | P02-1 1.2.3 |  |  |  |
| 65 | 3.3.1 | **시스템 요구사항 정의** | 14d | 2008-09-01 A | 2008-09-19 A |  | 100% |  | 2008-09-01 | 2008-09-19 | 14d |  |  |  | 패키지 요구사항정의 |  |  | P02-1 1.2.3 |  |  |  |
| 66 | 3.3.1.1 | 상품 및 속성 관리 | 14d | 2008-09-01 A | 2008-09-19 A |  | 100% |  | 2008-09-01 | 2008-09-19 | 14d |  | start no earlier than 2008-09-01 |  | 패키지 요구사항정의 |  |  | P02-1 1.2.3 |  |  |  |
| 67 | 3.3.1.2 | 상품규칙관리 | 14d | 2008-09-01 A | 2008-09-19 A |  | 100% |  | 2008-09-01 | 2008-09-19 | 14d |  | start no earlier than 2008-09-01 |  | 패키지 요구사항정의 |  |  | P02-1 1.2.3 |  |  |  |
| 68 | 3.3.1.3 | 산출기초관리 | 14d | 2008-09-01 A | 2008-09-19 A |  | 100% |  | 2008-09-01 | 2008-09-19 | 14d |  | start no earlier than 2008-09-01 |  | 패키지 요구사항정의 |  |  | P02-1 1.2.3 |  |  |  |
| 69 | 3.3.1.4 | 문서관리 | 14d | 2008-09-01 A | 2008-09-19 A |  | 100% |  | 2008-09-01 | 2008-09-19 | 14d |  | start no earlier than 2008-09-01 |  | 패키지 요구사항정의 |  |  | P02-1 1.2.3 |  |  |  |
| 70 | 3.3.2 | **시스템 기능 설계** | 9d | 2008-09-16 A | 2008-09-26 A |  | 100% |  | 2008-09-16 | 2008-09-26 | 9d |  |  |  | 추가개발설계 |  |  | P02-1 1.3.1 |  |  |  |
| 71 | 3.3.2.1 | 상품 및 속성 관리 | 9d | 2008-09-16 A | 2008-09-26 A |  | 100% |  | 2008-09-16 | 2008-09-26 | 9d |  | start no earlier than 2008-09-16 |  | 추가개발설계 |  |  | P02-1 1.3.1 |  |  |  |
| 72 | 3.3.2.2 | 상품규칙관리 | 9d | 2008-09-16 A | 2008-09-26 A |  | 100% |  | 2008-09-16 | 2008-09-26 | 9d |  | start no earlier than 2008-09-16 |  | 추가개발설계 |  |  | P02-1 1.3.1 |  |  |  |
| 73 | 3.3.2.3 | 산출기초관리 | 9d | 2008-09-16 A | 2008-09-26 A |  | 100% |  | 2008-09-16 | 2008-09-26 | 9d |  | start no earlier than 2008-09-16 |  | 추가개발설계 |  |  | P02-1 1.3.1 |  |  |  |
| 74 | 3.3.2.4 | 문서관리 | 9d | 2008-09-16 A | 2008-09-26 A |  | 100% |  | 2008-09-16 | 2008-09-26 | 9d |  | start no earlier than 2008-09-16 |  | 추가개발설계 |  |  | P02-1 1.3.1 |  |  |  |
| 75 | 3.3.3 | 시스템 셋팅 | 5d | 2008-09-22 A | 2008-09-26 A |  | 100% |  | 2008-09-22 | 2008-09-26 | 5d |  | start no earlier than 2008-09-22 |  | 컨버젼 및 릴리이즈 |  |  | P02-1 1.5.2 |  |  |  |

| ID | WBS | Task | Duration | Start | Finish | Predecessors | Complete | Remaining | Baseline start | Baseline finish | Baseline duration | Total slack | Free slack | Constraint | Text20 | Text26 | Text30 |
| --- | --- | --- | --- | --- | --- | --- | --- | --- | --- | --- | --- | --- | --- | --- | --- | --- | --- |
| 76 | 3.4 | **시스템 커스터마이징(2차개발)** | 44d | 2008-09-29 A | 2008-11-28 A |  | 100% |  | 2008-09-29 | 2008-11-28 | 44d |  |  |  | 추가개발설계 | P02-1 1.3.1 |  |
| 77 | 3.4.1 | **시스템 요구사항 정의** | 24d | 2008-09-29 A | 2008-10-31 A |  | 100% |  | 2008-09-29 | 2008-10-31 | 24d |  |  |  | 패키지 요구사항정의 | P02-1 1.2.3 |  |
| 78 | 3.4.1.1 | 상품 및 속성 관리 | 24d | 2008-09-29 A | 2008-10-31 A |  | 100% |  | 2008-09-29 | 2008-10-31 | 24d |  |  | start no earlier than 2008-09-29 | 패키지 요구사항정의 | P02-1 1.2.3 |  |
| 79 | 3.4.1.2 | 상품규칙관리 | 24d | 2008-09-29 A | 2008-10-31 A |  | 100% |  | 2008-09-29 | 2008-10-31 | 24d |  |  | start no earlier than 2008-09-29 | 패키지 요구사항정의 | P02-1 1.2.3 |  |
| 80 | 3.4.1.3 | 산출기초관리 | 24d | 2008-09-29 A | 2008-10-31 A |  | 100% |  | 2008-09-29 | 2008-10-31 | 24d |  |  | start no earlier than 2008-09-29 | 패키지 요구사항정의 | P02-1 1.2.3 |  |
| 81 | 3.4.1.4 | 문서관리 | 24d | 2008-09-29 A | 2008-10-31 A |  | 100% |  | 2008-09-29 | 2008-10-31 | 24d |  |  | start no earlier than 2008-09-29 | 패키지 요구사항정의 | P02-1 1.2.3 |  |
| 82 | 3.4.2 | **시스템 기능 설계** | 15d | 2008-10-27 A | 2008-11-14 A |  | 100% |  | 2008-10-27 | 2008-11-14 | 15d |  |  |  | 추가개발설계 | P02-1 1.3.1 |  |
| 83 | 3.4.2.1 | 상품 및 속성 관리 | 15d | 2008-10-27 A | 2008-11-14 A |  | 100% |  | 2008-10-27 | 2008-11-14 | 15d |  |  | start no earlier than 2008-10-27 | 추가개발설계 | P02-1 1.3.1 |  |
| 84 | 3.4.2.2 | 상품규칙관리 | 15d | 2008-10-27 A | 2008-11-14 A |  | 100% |  | 2008-10-27 | 2008-11-14 | 15d |  |  | start no earlier than 2008-10-27 | 추가개발설계 | P02-1 1.3.1 |  |
| 85 | 3.4.2.3 | 산출기초관리 | 15d | 2008-10-27 A | 2008-11-14 A |  | 100% |  | 2008-10-27 | 2008-11-14 | 15d |  |  | start no earlier than 2008-10-27 | 추가개발설계 | P02-1 1.3.1 |  |
| 86 | 3.4.2.4 | 문서관리 | 15d | 2008-10-27 A | 2008-11-14 A |  | 100% |  | 2008-10-27 | 2008-11-14 | 15d |  |  | start no earlier than 2008-10-27 | 추가개발설계 | P02-1 1.3.1 |  |
| 87 | 3.4.3 | 시스템 셋팅 | 10d | 2008-11-17 A | 2008-11-28 A | 82 | 100% |  | 2008-11-17 | 2008-11-28 | 10d |  |  | start no earlier than 2008-09-22 | 컨버젼 및 릴리이즈 | P02-1 1.5.2 |  |
| 88 | 3.5 | **시스템 안정화 및 유지보수** | 149d | 2008-12-01 A | 2009-07-03 | 87 | 10% | 134.8d | 2008-12-01 | 2009-07-03 | 149d | 6d |  |  | 단계완료 | P02-1 1.6.8 |  |
| 89 | 3.5.1 | 시스템 안정화 및 유지보수 1차 | 71d | 2008-12-01 A | 2009-03-13 |  | 20% | 56.8d | 2008-12-01 | 2009-03-13 | 71d | 6d | 0d |  | 단계완료 | P02-1 1.6.8 |  |
| 90 | 3.5.2 | 시스템 안정화 및 유지보수 2차 | 78d | 2009-03-16 | 2009-07-03 | 89 |  |  | 2009-03-16 | 2009-07-03 | 78d | 6d |  |  | 단계완료 | P02-1 1.6.8 |  |
| 91 | 4 | **Rule Service** | 231d | 2008-08-04 A | 2009-07-03 |  | 34% | 153.1d | 2008-08-04 | 2009-07-03 | 231d | 6d |  |  | 분석 | P02-1 1.2 |  |
| 92 | 4.1 | **Rule Template 로딩** | 82d | 2008-08-04 A | 2008-11-28 A |  | 100% |  | 2008-08-04 | 2008-11-28 | 82d |  |  |  | 기술구조정의 | P02-1 1.2.5 |  |
| 93 | 4.1.1 | Template 작성항목정의 | 9d | 2008-08-04 A | 2008-08-14 A |  | 100% |  | 2008-08-04 | 2008-08-14 | 9d |  |  | start no earlier than 2008-08-04 | 기술구조정의 | P02-1 1.2.5 |  |
| 94 | 4.1.2 | 패키지 Template 배포 | 1d | 2008-08-20 A | 2008-08-20 A |  | 100% |  | 2008-08-20 | 2008-08-20 | 1d |  |  | start no earlier than 2008-08-20 | 기술구조정의 | P02-1 1.2.5 |  |
| 95 | 4.1.3 | 커스터마이징 Template 배포 | 1d | 2008-09-12 A | 2008-09-12 A |  | 100% |  | 2008-09-12 | 2008-09-12 | 1d |  |  | start no earlier than 2008-09-12 | 기술구조정의 | P02-1 1.2.5 |  |
| 96 | 4.1.4 | Template 1차 로딩 | 5d | 2008-09-22 A | 2008-09-26 A |  | 100% |  | 2008-09-22 | 2008-09-26 | 5d |  |  | start no earlier than 2008-09-22 | 기술구조정의 | P02-1 1.2.5 |  |
| 97 | 4.1.5 | Template 2차 로딩 | 5d | 2008-11-24 A | 2008-11-28 A |  | 100% |  | 2008-11-24 | 2008-11-28 | 5d |  |  | start no earlier than 2008-11-24 | 기술구조정의 | P02-1 1.2.5 |  |
| 98 | 4.2 | **Rule Service 모듈 적용** | 231d | 2008-08-04 A | 2009-07-03 |  | 31% | 158.32d | 2008-08-04 | 2009-07-03 | 231d | 6d |  |  | 현황평가 | P02-1 1.2.2 |  |
| 99 | 4.2.1 | **대상업무 분석** | 38d | 2008-08-04 A | 2008-09-26 A |  | 100% |  | 2008-08-04 | 2008-09-26 | 38d |  |  |  | 현황평가 | P02-1 1.2.2 |  |
| 100 | 4.2.1.1 | 패키지 Rule Service 분석 | 19d | 2008-08-04 A | 2008-08-29 A |  | 100% |  | 2008-08-04 | 2008-08-29 | 19d |  |  | start no earlier than 2008-08-04 | 현황평가 | P02-1 1.2.2 |  |
| 101 | 4.2.1.2 | Rule Service 제공 대상 선정 | 19d | 2008-09-01 A | 2008-09-26 A | 100 | 100% |  | 2008-09-01 | 2008-09-26 | 19d |  |  | start no earlier than 2008-09-01 | 현황평가 | P02-1 1.2.2 | Rule 명세서 |

| ID | WBS | Task | Duration | Start | Finish | Predecessors | Complete | Remaining | Baseline start | Baseline finish | Baseline duration | Total slack | Constraint | Text20 | Text26 |
| --- | --- | --- | --- | --- | --- | --- | --- | --- | --- | --- | --- | --- | --- | --- | --- |
| 102 | 4.2.2 | **Rule Service 모듈 설계 및 개발** | 193d | 2008-09-29 A | 2009-07-03 |  | 27% | 140.95d | 2008-09-29 | 2009-07-03 | 193d | 6d |  | 추가개발설계 | P02-1 1.3.1 |
| 103 | 4.2.2.1 | 보험료계산규칙 설계 | 44d | 2008-09-29 A | 2008-11-28 A | 101 | 100% |  | 2008-09-29 | 2008-11-28 | 44d |  |  | 추가개발설계 | P02-1 1.3.1 |
| 104 | 4.2.2.2 | 보험료계산규칙 개발/입력/단위테스트 | 71d | 2008-12-01 A | 2009-03-13 | 103 | 10% | 63.9d | 2008-12-01 | 2009-03-13 | 71d | 0d |  | 추가개발설계 | P02-1 1.3.1 |
| 105 | 4.2.2.3 | 보험료 일괄검증 | 78d | 2009-03-16 | 2009-07-03 | 104 |  |  | 2009-03-16 | 2009-07-03 | 78d | 6d |  | 추가개발설계 | P02-1 1.3.1 |
| 106 | 4.2.2.4 | 인수심사 규칙 설계 | 44d | 2008-09-29 A | 2008-11-28 A | 101 | 100% |  | 2008-09-29 | 2008-11-28 | 44d |  |  | 추가개발설계 | P02-1 1.3.1 |
| 107 | 4.2.2.5 | 인수심사 규칙 개발/입력/단위테스트 | 71d | 2008-12-01 A | 2009-03-13 | 103 | 10% | 63.9d | 2008-12-01 | 2009-03-13 | 71d | 84d | finish no earlier than 2009-03-13 | 추가개발설계 | P02-1 1.3.1 |
| 108 | 4.2.2.6 | 인수심사 규칙 통합테스트 | 78d | 2009-03-16 | 2009-07-03 | 104 |  |  | 2009-03-16 | 2009-07-03 | 78d | 6d | finish no earlier than 2009-07-03 | 추가개발설계 | P02-1 1.3.1 |
| 109 | 4.2.2.7 | 기타 Rule Service 대상 설계 | 44d | 2008-09-29 A | 2008-11-28 A | 101 | 100% |  | 2008-09-29 | 2008-11-28 | 44d |  |  | 추가개발설계 | P02-1 1.3.1 |
| 110 | 4.2.2.8 | 기타 Rule Service 대상 개발/입력/단위테스트 | 71d | 2008-12-01 A | 2009-03-13 | 103 | 14% | 61.06d | 2008-12-01 | 2009-03-13 | 71d | 84d | finish no earlier than 2009-03-13 | 추가개발설계 | P02-1 1.3.1 |
| 111 | 4.2.2.9 | 기타 Rule Service 대상 통합테스트 | 78d | 2009-03-16 | 2009-07-03 | 104 |  |  | 2009-03-16 | 2009-07-03 | 78d | 6d | finish no earlier than 2009-07-03 | 추가개발설계 | P02-1 1.3.1 |
| 112 | 5 | **테스트지원** | 84d | 2009-03-16 | 2009-07-13 |  |  |  | 2009-03-30 | 2009-07-03 | 68d | 0d |  | 개발 | P02-1 1.4 |
| 113 | 5.1 | E2E테스트 지원 | 20d | 2009-03-16 | 2009-04-10 | 104 |  |  | 2009-03-30 | 2009-05-22 | 38d | 0d |  | 테스트실시 | P02-1 1.4.2 |
| 114 | 5.2 | UAT 지원 | 38d | 2009-04-13 | 2009-06-05 | 113 |  |  |  |  |  | 0d |  |  |  |
| 115 | 5.3 | 시스템 안정화 지원 | 26d | 2009-06-08 | 2009-07-13 | 104, 114 |  |  | 2009-03-30 | 2009-07-03 | 68d | 0d |  | 테스트실시 | P02-1 1.4.2 |
