# 12.인프라_TA

Schedule from MS Project, 2008-07-28 to 2009-07-13, A marks actual dates.
HSIC-0820606

## Calendars

- All Working Day Calendar: Mon-Fri 08:00-12:00, 13:00-17:00; Sat-Sun off. Exceptions (off unless hours are given): 2008-08-15, 2008-09-15, 2008-10-03, 2008-12-25, 2009-01-01, 2009-01-26 to 2009-01-27, 2009-05-05.
- 한국: Mon-Fri 08:00-12:00, 13:00-17:00; Sat-Sun off. Exceptions (off unless hours are given): 2008-08-15, 2008-09-13 to 2008-09-15, 2008-10-03, 2008-12-25, 2009-01-01, 2009-01-25 to 2009-01-27, 2009-03-01, 2009-05-01 to 2009-05-02, 2009-05-05, 2009-06-06.

## Resources

| Resource |
| --- |
| TA |
| SA |
| IBM |
| QAO |
| RM |
| Tmax |
| TestDirector |
| StarTeam |
| QTP |
| CaliberRM |

## Schedule

| ID | WBS | Task | Duration | Start | Finish | Predecessors | Complete | Baseline start | Baseline finish | Baseline duration | Constraint | Calendar | Resources | Work | Actual work | Text20 | Text26 | Text22 | Text25 | Text27 | Text28 | Text30 | Text1 |
| --- | --- | --- | --- | --- | --- | --- | --- | --- | --- | --- | --- | --- | --- | --- | --- | --- | --- | --- | --- | --- | --- | --- | --- |
| 1 | 1 | **Inception** | 3d | 2008-07-28 A | 2008-07-30 A |  | 100% | 2008-07-28 | 2008-07-30 | 3d |  | All Working Day Calendar |  | 16h | 16h | 프로젝트 착수 | P02-1 1.1 |  |  |  |  |  |  |
| 2 | 1.1 | **착수준비** | 3d | 2008-07-28 A | 2008-07-30 A |  | 100% | 2008-07-28 | 2008-07-30 | 3d |  |  |  | 16h | 16h | 착수준비 | P02-1 1.1.1 |  |  |  |  |  |  |
| 3 | 1.1.1 | 업무범위 정의 | 1d | 2008-07-28 A | 2008-07-28 A |  | 100% | 2008-07-28 | 2008-07-28 | 1d | start no earlier than 2008-07-28 |  |  |  |  | 착수준비 | P02-1 1.1.1 |  |  |  |  |  |  |
| 4 | 1.1.2 | 업무파트 WBS 정의 | 2d | 2008-07-29 A | 2008-07-30 A | 3 | 100% | 2008-07-29 | 2008-07-30 | 2d |  | All Working Day Calendar | TA | 16h | 16h | 착수준비 | P02-1 1.1.1 | 48648EF80F9201F8E100800046140A10 | 07060716O410050 | 00000000000001277262 | DEFAULT | WBS |  |
| 5 | 2 | **PoC** | 33d | 2008-07-29 A | 2008-09-12 A |  | 100% | 2008-07-29 | 2008-09-12 | 33d |  | All Working Day Calendar |  | 368h | 368h | 분석 | P02-1 1.2 |  |  |  |  |  |  |
| 6 | 2.1 | **프로젝트PoC계획** | 1d | 2008-07-31 A | 2008-07-31 A |  | 100% | 2008-07-31 | 2008-07-31 | 1d |  | All Working Day Calendar |  | 8h | 8h | 기술구조정의 | P02-1 1.2.5 |  |  |  |  | PoC계획서 |  |
| 7 | 2.1.1 | PoC환경구축계획 | 1d | 2008-07-31 A | 2008-07-31 A | 1 | 100% | 2008-07-31 | 2008-07-31 | 1d |  | All Working Day Calendar | TA | 8h | 8h | 기술구조정의 | P02-1 1.2.5 |  |  |  |  |  |  |
| 8 | 2.2 | **프로젝트PoC수행(환경구축 후 1개월,선전환 일부 대상)** | 33d | 2008-07-29 A | 2008-09-12 A |  | 100% | 2008-07-29 | 2008-09-12 | 33d |  | All Working Day Calendar |  | 360h | 360h | 기술구조정의 | P02-1 1.2.5 |  |  |  |  |  |  |
| 9 | 2.2.1 | PoC 환경구축(TA : 8/1일까지) | 6d | 2008-08-01 A | 2008-08-08 A | 6 | 100% | 2008-08-01 | 2008-08-08 | 6d |  | All Working Day Calendar | TA | 48h | 48h | 기술구조정의 | P02-1 1.2.5 |  |  |  |  |  | PoC 계획서 |
| 10 | 2.2.2 | **PoC환경구축** | 7d | 2008-07-29 A | 2008-08-06 A |  | 100% | 2008-07-29 | 2008-08-06 | 7d |  | All Working Day Calendar |  | 120h | 120h | 기술구조정의 | P02-1 1.2.5 |  |  |  |  |  |  |
| 11 | 2.2.2.1 | HW 설치 및 환경구성 | 1d | 2008-07-29 A | 2008-07-29 A | 4SS | 100% | 2008-07-29 | 2008-07-29 | 1d | start no earlier than 2008-06-30 | All Working Day Calendar | TA | 8h | 8h | 기술구조정의 | P02-1 1.2.5 |  |  |  |  |  |  |
| 12 | 2.2.2.2 | **SW 설치 및 환경구성** | 6d | 2008-07-30 A | 2008-08-06 A |  | 100% | 2008-07-30 | 2008-08-06 | 6d |  | All Working Day Calendar |  | 112h | 112h | 기술구조정의 | P02-1 1.2.5 |  |  |  |  |  |  |
| 13 | 2.2.2.2.1 | DBMS 설치 | 1d | 2008-07-30 A | 2008-07-30 A | 11 | 100% | 2008-07-30 | 2008-07-30 | 1d | start no earlier than 2008-06-30 | All Working Day Calendar | TA | 8h | 8h | 기술구조정의 | P02-1 1.2.5 |  |  |  |  |  |  |
| 14 | 2.2.2.2.2 | WAS 설치 | 1d | 2008-07-31 A | 2008-07-31 A | 13 | 100% | 2008-07-31 | 2008-07-31 | 1d | start no earlier than 2008-06-30 | All Working Day Calendar | TA | 8h | 8h | 기술구조정의 | P02-1 1.2.5 |  |  |  |  |  |  |
| 15 | 2.2.2.2.3 | Framework 설치 및 검증 | 4d | 2008-08-01 A | 2008-08-06 A | 14 | 100% | 2008-08-01 | 2008-08-06 | 4d | start no earlier than 2008-06-30 | All Working Day Calendar | TA | 32h | 32h | 기술구조정의 | P02-1 1.2.5 |  |  |  |  |  |  |
| 16 | 2.2.2.2.4 | UI 설치 및 검증 | 4d | 2008-08-01 A | 2008-08-06 A | 15SS | 100% | 2008-08-01 | 2008-08-06 | 4d | start no earlier than 2008-06-30 | All Working Day Calendar | TA | 32h | 32h | 기술구조정의 | P02-1 1.2.5 |  |  |  |  |  |  |
| 17 | 2.2.2.2.5 | SPECTRUM DBIO 설치 및 검증 | 4d | 2008-08-01 A | 2008-08-06 A | 15SS | 100% | 2008-08-01 | 2008-08-06 | 4d | start no earlier than 2008-06-30 | All Working Day Calendar | TA | 32h | 32h | 기술구조정의 | P02-1 1.2.5 |  |  |  |  |  |  |
| 18 | 2.2.3 | PoC 개발 | 14d | 2008-08-11 A | 2008-08-29 A | 9 | 100% | 2008-08-11 | 2008-08-29 | 14d |  | All Working Day Calendar | SA | 112h | 112h | 기술구조정의 | P02-1 1.2.5 |  |  |  |  |  |  |
| 19 | 2.2.4 | PoC 연계검증 | 7d | 2008-09-01 A | 2008-09-09 A | 18 | 100% | 2008-09-01 | 2008-09-09 | 7d |  | All Working Day Calendar | SA | 56h | 56h | 기술구조정의 | P02-1 1.2.5 |  |  |  |  |  |  |
| 20 | 2.2.5 | PoC결과정리 | 2d | 2008-09-10 A | 2008-09-11 A | 19 | 100% | 2008-09-10 | 2008-09-11 | 2d |  | All Working Day Calendar | SA | 16h | 16h | 기술구조정의 | P02-1 1.2.5 |  |  |  |  | PoC결과서 |  |
| 21 | 2.2.6 | PoC결과보고 | 1d | 2008-09-12 A | 2008-09-12 A | 20 | 100% | 2008-09-12 | 2008-09-12 | 1d |  | All Working Day Calendar | SA | 8h | 8h | 기술구조정의 | P02-1 1.2.5 |  |  |  |  | PoC보고서 | PoC 결과서 |
| 22 | 3 | **Analysis** | 43d | 2008-07-28 A | 2008-09-26 A |  | 100% | 2008-07-28 | 2008-09-26 | 43d | start no earlier than 2008-07-28 | All Working Day Calendar |  | 376h | 376h | 분석 | P02-1 1.2 |  |  |  |  |  |  |
| 23 | 3.1 | **제품선정** | 15d | 2008-07-28 A | 2008-08-18 A |  | 100% | 2008-07-28 | 2008-08-18 | 15d |  | All Working Day Calendar |  |  |  | 패키지선정 | P02-1 1.2.1 |  |  |  |  |  |  |
| 24 | 3.1.1 | H/W 및 S/W 선정 | 14d | 2008-07-28 A | 2008-08-14 A |  | 100% | 2008-07-28 | 2008-08-14 | 14d |  | All Working Day Calendar |  |  |  | 패키지선정 | P02-1 1.2.1 |  |  |  |  |  |  |
| 25 | 3.1.2 | H/W 및 S/W 계약 | 1d | 2008-08-18 A | 2008-08-18 A | 24 | 100% | 2008-08-18 | 2008-08-18 | 1d |  | All Working Day Calendar |  |  |  | 패키지선정 | P02-1 1.2.1 |  |  |  |  |  |  |

Notes:
- 8: 환경구축 후 1개월
- 18: PoC환경구축일정에 따라 변동가능

| ID | WBS | Task | Duration | Start | Finish | Predecessors | Complete | Baseline start | Baseline finish | Baseline duration | Constraint | Calendar | Resources | Work | Actual work | Text1 | Text20 | Text26 | Text30 | Text2 |
| --- | --- | --- | --- | --- | --- | --- | --- | --- | --- | --- | --- | --- | --- | --- | --- | --- | --- | --- | --- | --- |
| 26 | 3.2 | **현행 시스템 분석** | 14d | 2008-08-19 A | 2008-09-05 A | 23 | 100% | 2008-08-19 | 2008-09-05 | 14d |  | All Working Day Calendar |  | 112h | 112h | 현행시스템분석서(현행기술구조도) | 현황평가 | P02-1 1.2.2 | 현행시스템분석서 |  |
| 27 | 3.2.1 | 하드웨어 구성 분석(서버,스토리지,백업장비 등) | 4d | 2008-08-19 A | 2008-08-22 A |  | 100% | 2008-08-19 | 2008-08-22 | 4d |  | All Working Day Calendar | TA | 32h | 32h | 하드웨어(시스템) 구성도 | 현황평가 | P02-1 1.2.2 |  |  |
| 28 | 3.2.2 | 소프트웨어 구성 분석(시스템별 제품구성) | 3d | 2008-08-25 A | 2008-08-27 A | 27 | 100% | 2008-08-25 | 2008-08-27 | 3d |  | All Working Day Calendar | TA | 24h | 24h | 소프트웨어(TBB) 구성도 | 현황평가 | P02-1 1.2.2 |  | SA와 협조 |
| 29 | 3.2.3 | 네트워크 구성 분석(스위치,보안장비 등) | 2d | 2008-08-28 A | 2008-08-29 A | 28 | 100% | 2008-08-28 | 2008-08-29 | 2d |  | All Working Day Calendar | TA | 16h | 16h | 네트워크 구성도(실장도) | 현황평가 | P02-1 1.2.2 |  |  |
| 30 | 3.2.4 | 기술 요구사항 정의 | 5d | 2008-09-01 A | 2008-09-05 A | 29 | 100% | 2008-09-01 | 2008-09-05 | 5d |  | All Working Day Calendar | TA | 40h | 40h | 요구사항정의서 | 현황평가 | P02-1 1.2.2 |  |  |
| 31 | 3.3 | **운영관리 시스템 구축 방안** | 10d | 2008-08-25 A | 2008-09-05 A |  | 100% | 2008-08-25 | 2008-09-05 | 10d |  |  |  | 80h | 80h |  |  |  | 운영관리시스템 구축 방안 |  |
| 32 | 3.3.1 | 현행 구현 환경 파악 | 5d | 2008-08-25 A | 2008-08-29 A |  | 100% | 2008-08-25 | 2008-08-29 | 5d | start no earlier than 2008-08-25 |  | TA | 40h | 40h |  |  |  |  |  |
| 33 | 3.3.2 | 도입 솔루션을 이용한 운영 환경 구성 방안 | 5d | 2008-09-01 A | 2008-09-05 A | 32 | 100% | 2008-09-01 | 2008-09-05 | 5d |  |  | TA | 40h | 40h |  |  |  |  |  |
| 34 | 3.4 | **기술 아키텍처 기본설계** | 19d | 2008-09-01 A | 2008-09-26 A |  | 100% | 2008-09-01 | 2008-09-26 | 19d |  | All Working Day Calendar |  | 152h | 152h | 시스템 청사진 | 기술구조정의 | P02-1 1.2.5 | 시스템청사진 | [전체공정매핑] 분석단계 기술구조정의에 맞추어야 하나… 인프라팀장(이용주수석)의 변경요청으로 개발단계로 변경 |
| 35 | 3.4.1 | **하드웨어 구성설계** | 19d | 2008-09-01 A | 2008-09-26 A |  | 100% | 2008-09-01 | 2008-09-26 | 19d |  | All Working Day Calendar |  | 152h | 152h | 시스템 구성도 | 추가개발설계 | P02-1 1.3.1 |  | 기술 아키텍처 정의서는 기본설계 시 시스템 청사진 내용을 포함한 세부 구성내역임 |
| 36 | 3.4.1.1 | 서버 구성 설계(명명규칙, 설치표준 포함) | 5d | 2008-09-01 A | 2008-09-05 A |  | 100% | 2008-09-01 | 2008-09-05 | 5d | start no earlier than 2008-09-01 | All Working Day Calendar | TA | 40h | 40h | 하드웨어구성도 | 추가개발설계 | P02-1 1.3.1 |  |  |
| 37 | 3.4.1.2 | 스토리지 구성 설계 | 2d | 2008-09-08 A | 2008-09-09 A | 36 | 100% | 2008-09-08 | 2008-09-09 | 2d |  | All Working Day Calendar | TA | 16h | 16h | 스토리지구성도 | 추가개발설계 | P02-1 1.3.1 |  | 하드웨어 구성 중 통합스토리지 관점에서 상세 구성을 반영(하드웨어 구성도에 포함하여도 무방함) |
| 38 | 3.4.1.3 | 백업장비 구성 설계(VTL, Tape Library) | 2d | 2008-09-10 A | 2008-09-11 A | 37 | 100% | 2008-09-10 | 2008-09-11 | 2d |  | All Working Day Calendar | TA | 16h | 16h | 소프트웨어 구성도(TBB) | 추가개발설계 | P02-1 1.3.1 |  |  |
| 39 | 3.4.1.4 | 네트워크 구성 기본 설계 | 1d | 2008-09-12 A | 2008-09-12 A | 38 | 100% | 2008-09-12 | 2008-09-12 | 1d |  | All Working Day Calendar | TA | 8h | 8h |  | 기술구조정의 | P02-1 1.2.5 |  |  |
| 40 | 3.4.1.5 | 부문별 상세설계 | 9d | 2008-09-16 A | 2008-09-26 A | 39 | 100% | 2008-09-16 | 2008-09-26 | 9d |  | All Working Day Calendar | TA | 72h | 72h |  | 기술구조정의 | P02-1 1.2.5 |  |  |
| 41 | 3.5 | **하드웨어 기본설치** | 8d | 2008-09-08 A | 2008-09-18 A |  | 100% | 2008-09-08 | 2008-09-18 | 8d |  |  |  | 32h | 32h |  |  |  |  |  |
| 42 | 3.5.1 | **기반공사** | 3d | 2008-09-08 A | 2008-09-10 A |  | 100% | 2008-09-08 | 2008-09-10 | 3d |  | All Working Day Calendar |  | 24h | 24h |  | 추가개발 프로그램코딩 | P02-1 1.4.1 |  |  |
| 43 | 3.5.1.1 | 전기/공조 공사(메트라이프생명 확인) | 1d | 2008-09-08 A | 2008-09-08 A |  | 100% | 2008-09-08 | 2008-09-08 | 1d | start no earlier than 2008-09-08 | All Working Day Calendar | TA | 8h | 8h |  | 추가개발 프로그램코딩 | P02-1 1.4.1 |  | 메트라이프생명 전산센터 환경 확인 필요 |
| 44 | 3.5.1.2 | 바닥보강/타공 공사(메트라이프생명 확인) | 1d | 2008-09-09 A | 2008-09-09 A | 43 | 100% | 2008-09-09 | 2008-09-09 | 1d |  | All Working Day Calendar | TA | 8h | 8h |  | 추가개발 프로그램코딩 | P02-1 1.4.1 |  | 메트라이프생명 전산센터 환경 확인 필요 |
| 45 | 3.5.1.3 | 케이블링 공사(사전포설) | 1d | 2008-09-10 A | 2008-09-10 A | 44 | 100% | 2008-09-10 | 2008-09-10 | 1d |  | All Working Day Calendar | TA | 8h | 8h |  | 추가개발 프로그램코딩 | P02-1 1.4.1 |  | 메트라이프생명 전산센터 환경 확인 필요 |
| 46 | 3.5.2 | **장비반입** | 1d | 2008-09-18 A | 2008-09-18 A | 42 | 100% | 2008-09-18 | 2008-09-18 | 1d |  | All Working Day Calendar |  | 8h | 8h |  | 추가개발 프로그램코딩 | P02-1 1.4.1 |  |  |
| 47 | 3.5.2.1 | 스토리지 및 네트워크 장비 반입 | 1d | 2008-09-18 A | 2008-09-18 A |  | 100% | 2008-09-18 | 2008-09-18 | 1d | finish no earlier than 2008-09-18 | All Working Day Calendar | TA | 8h | 8h |  | 추가개발 프로그램코딩 | P02-1 1.4.1 |  |  |
| 48 | 4 | **Design** | 44d | 2008-09-29 A | 2008-11-28 A | 22 | 100% | 2008-09-29 | 2008-12-05 | 49d |  | All Working Day Calendar |  | 672h | 672h |  | 설계 | P02-1 1.3 |  |  |
| 49 | 4.1 | **개발환경 및 운영인프라 구성** | 24d | 2008-09-29 A | 2008-10-31 A |  | 100% | 2008-09-29 | 2008-10-31 | 24d |  | All Working Day Calendar |  | 312h | 312h |  | 추가개발 프로그램코딩 | P02-1 1.4.1 | 설치결과서 |  |
| 50 | 4.1.1 | **하드웨어 인프라 구성** | 14d | 2008-09-29 A | 2008-10-17 A |  | 100% | 2008-09-29 | 2008-10-17 | 14d |  | All Working Day Calendar |  | 112h | 112h |  | 추가개발 프로그램코딩 | P02-1 1.4.1 |  |  |
| 51 | 4.1.1.1 | 서버구성 준비(설치일정 및 설치계획 수립) | 4d | 2008-09-29 A | 2008-10-02 A |  | 100% | 2008-09-29 | 2008-10-02 | 4d |  | All Working Day Calendar | TA | 32h | 32h |  | 추가개발 프로그램코딩 | P02-1 1.4.1 |  |  |
| 52 | 4.1.1.2 | 서버 파티션 구성 | 5d | 2008-10-06 A | 2008-10-10 A | 51 | 100% | 2008-10-06 | 2008-10-10 | 5d |  | All Working Day Calendar | TA | 40h | 40h |  | 추가개발 프로그램코딩 | P02-1 1.4.1 |  |  |
| 53 | 4.1.1.3 | 디스크 할당 및 서버별 OS설치, 네트워크 구성 | 5d | 2008-10-13 A | 2008-10-17 A | 52 | 100% | 2008-10-13 | 2008-10-17 | 5d |  | All Working Day Calendar | TA | 40h | 40h |  | 추가개발 프로그램코딩 | P02-1 1.4.1 |  |  |

| ID | WBS | Task | Duration | Start | Finish | Predecessors | Complete | Baseline start | Baseline finish | Baseline duration | Constraint | Deadline | Calendar | Resources | Work | Actual work | Text20 | Text26 | Text1 | Text30 |
| --- | --- | --- | --- | --- | --- | --- | --- | --- | --- | --- | --- | --- | --- | --- | --- | --- | --- | --- | --- | --- |
| 54 | 4.1.2 | **하드웨어 설치** | 10d | 2008-10-06 A | 2008-10-17 A |  | 100% | 2008-10-06 | 2008-10-17 | 10d |  |  | All Working Day Calendar |  | 120h | 120h | 추가개발 프로그램코딩 | P02-1 1.4.1 |  |  |
| 55 | 4.1.2.1 | 스토리지 설치 및 구성 | 10d | 2008-10-06 A | 2008-10-17 A |  | 100% | 2008-10-06 | 2008-10-17 | 10d | start no earlier than 2008-10-06 |  | All Working Day Calendar | TA | 80h | 80h | 추가개발 프로그램코딩 | P02-1 1.4.1 |  |  |
| 56 | 4.1.2.2 | 백업장비 설치(VTL, Tape Library) | 4d | 2008-10-13 A | 2008-10-16 A |  | 100% | 2008-10-13 | 2008-10-16 | 4d | start no earlier than 2008-10-13 |  | All Working Day Calendar | TA | 32h | 32h | 추가개발 프로그램코딩 | P02-1 1.4.1 |  |  |
| 57 | 4.1.2.3 | 네트워크장비 설치 | 1d | 2008-10-17 A | 2008-10-17 A | 56 | 100% | 2008-10-17 | 2008-10-17 | 1d |  |  | All Working Day Calendar | TA | 8h | 8h | 추가개발 프로그램코딩 | P02-1 1.4.1 |  |  |
| 58 | 4.1.3 | **개발환경 소프트웨어 설치** | 10d | 2008-10-20 A | 2008-10-31 A | 50 | 100% | 2008-10-20 | 2008-10-31 | 10d |  |  | All Working Day Calendar |  | 80h | 80h | 추가개발 프로그램코딩 | P02-1 1.4.1 |  |  |
| 59 | 4.1.3.1 | 개발 S/W 설치 | 10d | 2008-10-20 A | 2008-10-31 A |  | 100% | 2008-10-20 | 2008-10-31 | 10d |  |  | All Working Day Calendar | TA | 80h | 80h | 추가개발 프로그램코딩 | P02-1 1.4.1 |  |  |
| 60 | 4.2 | **기술 아키텍처 상세설계** | 39d | 2008-09-29 A | 2008-11-21 A |  | 100% | 2008-09-29 | 2008-11-21 | 39d |  |  | All Working Day Calendar |  | 272h | 272h | 추가개발설계 | P02-1 1.3.1 | 기술 아키텍처정의서 | 아키텍처설계서 |
| 61 | 4.2.1 | **시스템 구성 설계** | 39d | 2008-09-29 A | 2008-11-21 A |  | 100% | 2008-09-29 | 2008-11-21 | 39d |  |  | All Working Day Calendar |  | 112h | 112h | 추가개발설계 | P02-1 1.3.1 | 데이터베이스 구성도 |  |
| 62 | 4.2.1.1 | 데이터베이스 구성설계(초안) | 14d | 2008-09-29 A | 2008-10-17 A |  | 100% | 2008-09-29 | 2008-10-17 | 14d |  |  | All Working Day Calendar | TA | 112h | 112h | 추가개발설계 | P02-1 1.3.1 | SPM에 반영 |  |
| 63 | 4.2.1.2 | 데이타베이스 물리설계 | 25d | 2008-10-20 A | 2008-11-21 A |  | 100% | 2008-10-20 | 2008-11-21 | 25d | start no earlier than 2008-10-20 | 2008-11-21 |  |  |  |  |  |  |  |  |
| 64 | 4.2.2 | **백업 및 복구 방안 설계** | 5d | 2008-10-20 A | 2008-10-24 A |  | 100% | 2008-10-20 | 2008-10-24 | 5d |  |  | All Working Day Calendar |  | 40h | 40h | 추가개발설계 | P02-1 1.3.1 | 백업 및 복구 구성도 |  |
| 65 | 4.2.2.1 | 백업아키텍처 구성 설계 | 3d | 2008-10-20 A | 2008-10-22 A |  | 100% | 2008-10-20 | 2008-10-22 | 3d | start no earlier than 2008-10-20 |  | All Working Day Calendar | TA | 24h | 24h | 추가개발설계 | P02-1 1.3.1 |  |  |
| 66 | 4.2.2.2 | 백업 대상 및 절차 정의 | 1d | 2008-10-23 A | 2008-10-23 A | 65 | 100% | 2008-10-23 | 2008-10-23 | 1d |  |  | All Working Day Calendar | TA | 8h | 8h | 추가개발설계 | P02-1 1.3.1 |  |  |
| 67 | 4.2.2.3 | 복구 방안 및 절차 정의 | 1d | 2008-10-24 A | 2008-10-24 A | 66 | 100% | 2008-10-24 | 2008-10-24 | 1d |  |  | All Working Day Calendar | TA | 8h | 8h | 추가개발설계 | P02-1 1.3.1 |  |  |
| 68 | 4.2.3 | **장애대응 방안 설계** | 5d | 2008-10-27 A | 2008-10-31 A | 64 | 100% | 2008-10-27 | 2008-10-31 | 5d |  |  | All Working Day Calendar |  | 40h | 40h | 추가개발설계 | P02-1 1.3.1 | 장애대응 구성도 |  |
| 69 | 4.2.3.1 | 서버 장애대응 절차 정의 | 3d | 2008-10-27 A | 2008-10-29 A |  | 100% | 2008-10-27 | 2008-10-29 | 3d |  |  | All Working Day Calendar | TA | 24h | 24h | 추가개발설계 | P02-1 1.3.1 |  |  |
| 70 | 4.2.3.2 | 어플리케이션 장애대응 절차 정의 | 2d | 2008-10-30 A | 2008-10-31 A | 69 | 100% | 2008-10-30 | 2008-10-31 | 2d |  |  | All Working Day Calendar | TA | 16h | 16h | 추가개발설계 | P02-1 1.3.1 |  |  |
| 71 | 4.2.4 | **시스템 보안 설계** | 5d | 2008-11-03 A | 2008-11-07 A | 68 | 100% | 2008-11-03 | 2008-11-07 | 5d |  |  | All Working Day Calendar |  | 40h | 40h | 추가개발설계 | P02-1 1.3.1 | 보안계획서에 반영 |  |
| 72 | 4.2.4.1 | 서버보안 구성 설계(보안정책 정의) | 3d | 2008-11-03 A | 2008-11-05 A |  | 100% | 2008-11-03 | 2008-11-05 | 3d |  |  | All Working Day Calendar | TA | 24h | 24h | 추가개발설계 | P02-1 1.3.1 | 기술아키텍처정의서에 반영 |  |
| 73 | 4.2.4.2 | DB보안 구성 설계 | 2d | 2008-11-06 A | 2008-11-07 A | 72 | 100% | 2008-11-06 | 2008-11-07 | 2d |  |  | All Working Day Calendar | TA | 16h | 16h | 추가개발설계 | P02-1 1.3.1 | 기술아키텍처정의서에 반영 |  |
| 74 | 4.2.5 | **운영시스템 구성 설계** | 5d | 2008-11-10 A | 2008-11-14 A | 71 | 100% | 2008-11-10 | 2008-11-14 | 5d |  |  | All Working Day Calendar |  | 40h | 40h | 추가개발설계 | P02-1 1.3.1 |  |  |
| 75 | 4.2.5.1 | 업무 개시/마감 절차 정의 | 2d | 2008-11-10 A | 2008-11-11 A |  | 100% | 2008-11-10 | 2008-11-11 | 2d |  |  | All Working Day Calendar | TA | 16h | 16h | 추가개발설계 | P02-1 1.3.1 |  |  |
| 76 | 4.2.5.2 | 운영 조직 및 권한 정의 | 1d | 2008-11-12 A | 2008-11-12 A | 75 | 100% | 2008-11-12 | 2008-11-12 | 1d |  |  | All Working Day Calendar | TA | 8h | 8h | 추가개발설계 | P02-1 1.3.1 |  |  |
| 77 | 4.2.5.3 | 프로그램 검수/이전 절차 정의 | 2d | 2008-11-13 A | 2008-11-14 A | 76 | 100% | 2008-11-13 | 2008-11-14 | 2d |  |  | All Working Day Calendar | TA | 16h | 16h | 추가개발설계 | P02-1 1.3.1 |  |  |

Notes:
- 60: Text2: [전체공정매핑] 설계단계 전 착수하여 개발단계 착수 전에 종료하도록 함
- 61: Text2: 성격을 달리하는 DBMS(예를 들어 OLTP용, DW용, Repository용 등)가 있다면 상세 task 추가하여도 좋음
- 66: Text2: 기본적인 방안 및 대상은 TA가 선정할 수 있으나 최종 확인은 업무개발팀에 받아야 한다.
- 69: Text2: 장애 항목별 대응 시나리오를 작성한다.
- 70: Text2: 어플리케이션 장애는 물리적 장애와 성격이 다르다. 따라서 어플리케이션 중 장애에 대응하기 위하여 HA를 구성하여야 한다면 이는 업무개발팀과 협의하여야 한다. 장애대응은 자동화가 능사가 아니다. 따라서 수작업 대응 시나리오의 수립도 고려하여야 한다.
- 72: Text2: 서버보안은 일반 관리 항목을 설정 한 후 고객사 기준에 따르도록 한다.
- 73: Text2: 상동
- 74: Text2: 시스템 구축 이후 시범운영단계부터 적용 가능한 전체 시스템 통제를 위한 환경 구성
- 77: Text2: 형상관리, 변경관리 등과 연계됨. 고객사 환경파악이 필요함.

| ID | WBS | Task | Duration | Start | Finish | Predecessors | Complete | Remaining | Baseline start | Baseline finish | Baseline duration | Total slack | Free slack | Constraint | Calendar | Resources | Work | Actual work | Text1 | Text20 | Text26 | Text30 |
| --- | --- | --- | --- | --- | --- | --- | --- | --- | --- | --- | --- | --- | --- | --- | --- | --- | --- | --- | --- | --- | --- | --- |
| 78 | 4.3 | **시스템 테스트 계획 수립** | 5d | 2008-11-24 A | 2008-11-28 A | 60 | 100% |  | 2008-11-24 | 2008-11-28 | 5d |  |  |  | All Working Day Calendar |  | 88h | 88h | 장애대응 테스트 계획서 | 테스트실시 | P02-1 1.4.2 | 시스템테스트시나리오 |
| 79 | 4.3.1 | **장애 테스트 계획 수립** | 3d | 2008-11-24 A | 2008-11-26 A |  | 100% |  | 2008-11-24 | 2008-11-26 | 3d |  |  |  | All Working Day Calendar |  | 24h | 24h | 장애대응 테스트 계획서 | 테스트실시 | P02-1 1.4.2 |  |
| 80 | 4.3.1.1 | 서버 장애대응 테스트 시나리오 작성 | 1d | 2008-11-24 A | 2008-11-24 A |  | 100% |  | 2008-11-24 | 2008-11-24 | 1d |  |  |  | All Working Day Calendar | TA | 8h | 8h |  | 테스트실시 | P02-1 1.4.2 |  |
| 81 | 4.3.1.2 | WAS서버 장애대응 테스트 시나리오 작성 | 1d | 2008-11-25 A | 2008-11-25 A | 80 | 100% |  | 2008-11-25 | 2008-11-25 | 1d |  |  |  | All Working Day Calendar | TA | 8h | 8h |  | 테스트실시 | P02-1 1.4.2 |  |
| 82 | 4.3.1.3 | DB 장애대응 테스트 시나리오 작성 | 1d | 2008-11-26 A | 2008-11-26 A | 81 | 100% |  | 2008-11-26 | 2008-11-26 | 1d |  |  |  | All Working Day Calendar | TA | 8h | 8h |  | 테스트실시 | P02-1 1.4.2 |  |
| 83 | 4.3.2 | **백업/복구 테스트 계획 수립** | 2d | 2008-11-24 A | 2008-11-25 A | 79SS | 100% |  | 2008-11-24 | 2008-11-25 | 2d |  |  |  | All Working Day Calendar |  | 16h | 16h | 백업/복구 테스트 계획서 | 테스트실시 | P02-1 1.4.2 |  |
| 84 | 4.3.2.1 | 백업 테스트 시나리오 작성 | 1d | 2008-11-24 A | 2008-11-24 A |  | 100% |  | 2008-11-24 | 2008-11-24 | 1d |  |  | start no earlier than 2008-11-19 | All Working Day Calendar | TA | 8h | 8h |  | 테스트실시 | P02-1 1.4.2 |  |
| 85 | 4.3.2.2 | 복구 테스트 시나리오 작성 | 1d | 2008-11-25 A | 2008-11-25 A | 84 | 100% |  | 2008-11-25 | 2008-11-25 | 1d |  |  |  | All Working Day Calendar | TA | 8h | 8h |  | 테스트실시 | P02-1 1.4.2 |  |
| 86 | 4.3.3 | **성능 테스트 계획 수립** | 3d | 2008-11-26 A | 2008-11-28 A | 83 | 100% |  | 2008-11-26 | 2008-11-28 | 3d |  |  |  | All Working Day Calendar |  | 48h | 48h | 백업/복구 테스트 계획서 | 테스트실시 | P02-1 1.4.2 |  |
| 87 | 4.3.3.1 | 테스트 대상 프로그램 선정 | 3d | 2008-11-26 A | 2008-11-28 A |  | 100% |  | 2008-11-26 | 2008-11-28 | 3d |  |  |  | All Working Day Calendar | TA | 24h | 24h |  | 테스트실시 | P02-1 1.4.2 |  |
| 88 | 4.3.3.2 | 성능 테스트 시나리오 작성 | 3d | 2008-11-26 A | 2008-11-28 A |  | 100% |  | 2008-11-26 | 2008-11-28 | 3d |  |  |  | All Working Day Calendar | TA | 24h | 24h |  | 테스트실시 | P02-1 1.4.2 |  |
| 89 | 5 | **Build/Unit Test** | 71d | 2008-12-01 A | 2009-03-13 | 48 | 12% | 62.74d | 2008-12-01 | 2009-03-13 | 71d | 85d |  |  | All Working Day Calendar |  | 912h | 80h |  | 개발 | P02-1 1.4 |  |
| 90 | 5.1 | **운영환경 구성** | 19d | 2008-12-01 A | 2008-12-26 |  | 53% | 9d | 2008-12-01 | 2008-12-26 | 19d | 85d | 0d |  | All Working Day Calendar |  | 152h | 80h |  | 추가개발 프로그램코딩 | P02-1 1.4.1 | 설치결과서 |
| 91 | 5.1.1 | **운영환경 상세구성** | 10d | 2008-12-01 A | 2008-12-12 A |  | 100% |  | 2008-12-01 | 2008-12-12 | 10d |  |  |  | All Working Day Calendar |  | 80h | 80h |  | 추가개발 프로그램코딩 | P02-1 1.4.1 |  |
| 92 | 5.1.1.1 | 서버구성 환경준비 | 5d | 2008-12-01 A | 2008-12-05 A |  | 100% |  | 2008-12-01 | 2008-12-05 | 5d |  |  |  | All Working Day Calendar | TA | 40h | 40h |  | 추가개발 프로그램코딩 | P02-1 1.4.1 |  |
| 93 | 5.1.1.2 | 파티션별 상세 구성 | 5d | 2008-12-08 A | 2008-12-12 A | 92 | 100% |  | 2008-12-08 | 2008-12-12 | 5d |  |  |  | All Working Day Calendar | TA | 40h | 40h |  | 추가개발 프로그램코딩 | P02-1 1.4.1 |  |
| 94 | 5.1.2 | **운영환경 소프트웨어 설치** | 9d | 2008-12-15 | 2008-12-26 | 91 |  |  | 2008-12-15 | 2008-12-26 | 9d | 85d |  |  | All Working Day Calendar |  | 72h |  |  | 추가개발 프로그램코딩 | P02-1 1.4.1 |  |
| 95 | 5.1.2.1 | 운영 S/W 설치 | 9d | 2008-12-15 | 2008-12-26 |  |  |  | 2008-12-15 | 2008-12-26 | 9d | 85d |  |  | All Working Day Calendar | TA | 72h |  |  | 추가개발 프로그램코딩 | P02-1 1.4.1 |  |
| 96 | 5.2 | **시스템 테스트** | 52d | 2008-12-29 | 2009-03-13 | 90 |  |  | 2008-12-29 | 2009-03-13 | 52d | 85d |  |  | All Working Day Calendar |  | 640h |  |  | 테스트실시 | P02-1 1.4.2 | 시스템테스트결과서 |
| 97 | 5.2.1 | **장애대응 테스트** | 9d | 2008-12-29 | 2009-01-09 |  |  |  | 2008-12-29 | 2009-01-09 | 9d | 85d | 0d |  | All Working Day Calendar |  | 72h |  |  | 테스트실시 | P02-1 1.4.2 |  |
| 98 | 5.2.1.1 | 장애대응 테스트 환경 구성 | 2d | 2008-12-29 | 2008-12-30 |  |  |  | 2008-12-29 | 2008-12-30 | 2d | 85d | 0d |  | All Working Day Calendar | TA | 16h |  |  | 테스트실시 | P02-1 1.4.2 |  |
| 99 | 5.2.1.2 | DB 장애대응 테스트 | 1d | 2008-12-31 | 2008-12-31 | 98 |  |  | 2008-12-31 | 2008-12-31 | 1d | 85d | 0d |  | All Working Day Calendar | TA | 8h |  |  | 테스트실시 | P02-1 1.4.2 |  |
| 100 | 5.2.1.3 | WAS 장애대응 테스트 | 1d | 2009-01-02 | 2009-01-02 | 99 |  |  | 2009-01-02 | 2009-01-02 | 1d | 85d | 0d |  | All Working Day Calendar | TA | 8h |  | 장애대응 테스트 결과서 | 테스트실시 | P02-1 1.4.2 |  |
| 101 | 5.2.1.4 | EAI 장애대응 테스트 | 1d | 2009-01-05 | 2009-01-05 | 100 |  |  | 2009-01-05 | 2009-01-05 | 1d | 85d | 0d |  | All Working Day Calendar | TA | 8h |  | 장애대응 테스트 결과서 | 테스트실시 | P02-1 1.4.2 |  |
| 102 | 5.2.1.5 | 대외계 장애대응 테스트 | 1d | 2009-01-06 | 2009-01-06 | 101 |  |  | 2009-01-06 | 2009-01-06 | 1d | 85d | 0d |  | All Working Day Calendar | TA | 8h |  | 장애대응 테스트 결과서 | 테스트실시 | P02-1 1.4.2 |  |
| 103 | 5.2.1.6 | LDAP 장애대응 테스트 | 1d | 2009-01-07 | 2009-01-07 | 102 |  |  | 2009-01-07 | 2009-01-07 | 1d | 85d | 0d |  | All Working Day Calendar | TA | 8h |  | 장애대응 테스트 결과서 | 테스트실시 | P02-1 1.4.2 |  |
| 104 | 5.2.1.7 | 테스트결과 리뷰 및 보완 테스트 | 2d | 2009-01-08 | 2009-01-09 | 103 |  |  | 2009-01-08 | 2009-01-09 | 2d | 85d |  |  | All Working Day Calendar | TA | 16h |  | 장애대응 테스트 결과서 | 테스트실시 | P02-1 1.4.2 |  |

| ID | WBS | Task | Duration | Start | Finish | Predecessors | Baseline start | Baseline finish | Baseline duration | Total slack | Free slack | Calendar | Resources | Work | Text20 | Text26 | Text1 | Text2 |
| --- | --- | --- | --- | --- | --- | --- | --- | --- | --- | --- | --- | --- | --- | --- | --- | --- | --- | --- |
| 105 | 5.2.2 | **백업/복구 테스트** | 5d | 2009-01-12 | 2009-01-16 | 97 | 2009-01-12 | 2009-01-16 | 5d | 85d | 0d | All Working Day Calendar |  | 40h | 테스트실시 | P02-1 1.4.2 |  |  |
| 106 | 5.2.2.1 | 백업/복구 테스트 환경 구성 | 1d | 2009-01-12 | 2009-01-12 |  | 2009-01-12 | 2009-01-12 | 1d | 85d | 0d | All Working Day Calendar | TA | 8h | 테스트실시 | P02-1 1.4.2 |  |  |
| 107 | 5.2.2.2 | 백업/복구 테스트 수행(VTL, Tape Library 활용) | 2d | 2009-01-13 | 2009-01-14 | 106 | 2009-01-13 | 2009-01-14 | 2d | 85d | 0d | All Working Day Calendar | TA | 16h | 테스트실시 | P02-1 1.4.2 | 장애대응 테스트 결과서 |  |
| 108 | 5.2.2.3 | 테스트결과 리뷰 및 보완 테스트 | 2d | 2009-01-15 | 2009-01-16 | 107 | 2009-01-15 | 2009-01-16 | 2d | 85d |  | All Working Day Calendar | TA | 16h | 테스트실시 | P02-1 1.4.2 | 장애대응 테스트 결과서 |  |
| 109 | 5.2.3 | **성능 테스트** | 38d | 2009-01-19 | 2009-03-13 | 105 | 2009-01-19 | 2009-03-13 | 38d | 85d |  | All Working Day Calendar |  | 528h | 테스트실시 | P02-1 1.4.2 |  | 성능테스트와 부하분산테스트는 함께 실시할 수 있다. |
| 110 | 5.2.3.1 | **LDAP 성능테스트** | 5d | 2009-01-19 | 2009-01-23 |  | 2009-01-19 | 2009-01-23 | 5d | 85d | 0d | All Working Day Calendar | TA | 80h | 테스트실시 | P02-1 1.4.2 |  |  |
| 111 | 5.2.3.1.1 | 성능 테스트 환경 구성 | 1d | 2009-01-19 | 2009-01-19 |  | 2009-01-19 | 2009-01-19 | 1d | 85d | 0d | All Working Day Calendar | TA | 8h | 테스트실시 | P02-1 1.4.2 |  |  |
| 112 | 5.2.3.1.2 | 테스트 스크립트 작성 | 1d | 2009-01-20 | 2009-01-20 | 111 | 2009-01-20 | 2009-01-20 | 1d | 85d | 0d | All Working Day Calendar | TA | 8h | 테스트실시 | P02-1 1.4.2 |  |  |
| 113 | 5.2.3.1.3 | 성능 테스트 수행 | 1d | 2009-01-21 | 2009-01-21 | 112 | 2009-01-21 | 2009-01-21 | 1d | 85d | 0d | All Working Day Calendar | TA | 8h | 테스트실시 | P02-1 1.4.2 | 성능/부하 테스트 결과서 |  |
| 114 | 5.2.3.1.4 | 테스트결과 리뷰 및 보완테스트 | 2d | 2009-01-22 | 2009-01-23 | 113 | 2009-01-22 | 2009-01-23 | 2d | 85d |  | All Working Day Calendar | TA | 16h | 테스트실시 | P02-1 1.4.2 |  |  |
| 115 | 5.2.3.2 | **EAI 및 대외계 성능테스트** | 8d | 2009-01-28 | 2009-02-06 | 110 | 2009-01-28 | 2009-02-06 | 8d | 85d | 0d | All Working Day Calendar | TA | 128h | 테스트실시 | P02-1 1.4.2 |  |  |
| 116 | 5.2.3.2.1 | 성능 테스트 환경 구성 | 1d | 2009-01-28 | 2009-01-28 |  | 2009-01-28 | 2009-01-28 | 1d | 85d | 0d | All Working Day Calendar | TA | 8h | 테스트실시 | P02-1 1.4.2 |  |  |
| 117 | 5.2.3.2.2 | 테스트 스크립트 작성 | 2d | 2009-01-29 | 2009-01-30 | 116 | 2009-01-29 | 2009-01-30 | 2d | 85d | 0d | All Working Day Calendar | TA | 16h | 테스트실시 | P02-1 1.4.2 |  |  |
| 118 | 5.2.3.2.3 | 성능 테스트 수행 | 2d | 2009-02-02 | 2009-02-03 | 117 | 2009-02-02 | 2009-02-03 | 2d | 85d | 0d | All Working Day Calendar | TA | 16h | 테스트실시 | P02-1 1.4.2 | 성능/부하 테스트 결과서 |  |
| 119 | 5.2.3.2.4 | 테스트결과 리뷰 및 보완테스트 | 3d | 2009-02-04 | 2009-02-06 | 118 | 2009-02-04 | 2009-02-06 | 3d | 85d |  | All Working Day Calendar | TA | 24h | 테스트실시 | P02-1 1.4.2 |  |  |
| 120 | 5.2.3.3 | **기간계 성능테스트 1차** | 15d | 2009-02-09 | 2009-02-27 | 115 | 2009-02-09 | 2009-02-27 | 15d | 85d | 0d | All Working Day Calendar | TA | 240h | 테스트실시 | P02-1 1.4.2 |  |  |
| 121 | 5.2.3.3.1 | 성능 테스트 환경 구성 | 2d | 2009-02-09 | 2009-02-10 |  | 2009-02-09 | 2009-02-10 | 2d | 85d | 0d | All Working Day Calendar | TA | 16h | 테스트실시 | P02-1 1.4.2 |  |  |
| 122 | 5.2.3.3.2 | 테스트 스크립트 작성 | 5d | 2009-02-11 | 2009-02-17 | 121 | 2009-02-11 | 2009-02-17 | 5d | 85d | 0d | All Working Day Calendar | TA | 40h | 테스트실시 | P02-1 1.4.2 |  |  |
| 123 | 5.2.3.3.3 | 성능 테스트 수행 및 튜닝 | 3d | 2009-02-18 | 2009-02-20 | 122 | 2009-02-18 | 2009-02-20 | 3d | 85d | 0d | All Working Day Calendar | TA | 24h | 테스트실시 | P02-1 1.4.2 | 성능/부하 테스트 결과서 |  |
| 124 | 5.2.3.3.4 | 테스트결과 리뷰 및 개선안 도출 | 5d | 2009-02-23 | 2009-02-27 | 123 | 2009-02-23 | 2009-02-27 | 5d | 85d |  | All Working Day Calendar | TA | 40h | 테스트실시 | P02-1 1.4.2 |  |  |
| 125 | 5.2.3.4 | **기간계 성능테스트 2차** | 7d | 2009-03-02 | 2009-03-10 | 120 | 2009-03-02 | 2009-03-10 | 7d | 85d |  | All Working Day Calendar |  | 56h | 테스트실시 | P02-1 1.4.2 |  | 성능테스트와 부하분산테스트는 함께 실시할 수 있다. |
| 126 | 5.2.3.4.1 | 테스트 스크립트 점검 | 2d | 2009-03-02 | 2009-03-03 |  | 2009-03-02 | 2009-03-03 | 2d | 85d | 0d | All Working Day Calendar | TA | 16h | 테스트실시 | P02-1 1.4.2 |  |  |
| 127 | 5.2.3.4.2 | 성능 테스트 수행 및 튜닝 | 3d | 2009-03-04 | 2009-03-06 | 126 | 2009-03-04 | 2009-03-06 | 3d | 85d | 0d | All Working Day Calendar | TA | 24h | 테스트실시 | P02-1 1.4.2 | 성능/부하 테스트 결과서 |  |
| 128 | 5.2.3.4.3 | 테스트결과 리뷰 및 개선안 도출 | 2d | 2009-03-09 | 2009-03-10 | 127 | 2009-03-09 | 2009-03-10 | 2d | 85d | 0d | All Working Day Calendar | TA | 16h | 테스트실시 | P02-1 1.4.2 |  |  |
| 129 | 5.2.3.5 | 성능테스트 종합결과 정리 및 보완테스트 | 3d | 2009-03-11 | 2009-03-13 | 128 | 2009-03-11 | 2009-03-13 | 3d | 85d |  | All Working Day Calendar | TA | 24h | 테스트실시 | P02-1 1.4.2 |  |  |

| ID | WBS | Task | Duration | Start | Finish | Predecessors | Baseline start | Baseline finish | Baseline duration | Total slack | Free slack | Constraint | Calendar | Resources | Work | Text20 | Text26 | Text30 | Text22 | Text25 | Text27 | Text28 |
| --- | --- | --- | --- | --- | --- | --- | --- | --- | --- | --- | --- | --- | --- | --- | --- | --- | --- | --- | --- | --- | --- | --- |
| 130 | 5.3 | **2단계 제품도입** | 15d | 2009-02-09 | 2009-02-27 |  | 2009-02-09 | 2009-02-27 | 15d | 95d |  |  | All Working Day Calendar |  | 120h | 추가개발 프로그램코딩 | P02-1 1.4.1 | 설치결과서 |  |  |  |  |
| 131 | 5.3.1 | **하드웨어 설치** | 2d | 2009-02-09 | 2009-02-10 |  | 2009-02-09 | 2009-02-10 | 2d | 95d | 0d |  | All Working Day Calendar |  | 16h | 추가개발 프로그램코딩 | P02-1 1.4.1 |  |  |  |  |  |
| 132 | 5.3.1.1 | NT서버 설치(SMS, DB접근제어용) | 2d | 2009-02-09 | 2009-02-10 |  | 2009-02-09 | 2009-02-10 | 2d | 95d |  | start no earlier than 2009-02-09 | All Working Day Calendar | TA | 16h | 추가개발 프로그램코딩 | P02-1 1.4.1 |  |  |  |  |  |
| 133 | 5.3.2 | **소프트웨어 설치** | 13d | 2009-02-11 | 2009-02-27 | 131 | 2009-02-11 | 2009-02-27 | 13d | 95d |  |  | All Working Day Calendar |  | 104h | 추가개발 프로그램코딩 | P02-1 1.4.1 |  |  |  |  |  |
| 134 | 5.3.2.1 | CDC 설치 및 기능테스트 | 1d | 2009-02-11 | 2009-02-11 |  | 2009-02-11 | 2009-02-11 | 1d | 95d | 0d |  | All Working Day Calendar | TA | 8h | 추가개발 프로그램코딩 | P02-1 1.4.1 |  |  |  |  |  |
| 135 | 5.3.2.2 | 서버보안 설치 및 기능테스트 | 2d | 2009-02-12 | 2009-02-13 | 134 | 2009-02-12 | 2009-02-13 | 2d | 95d | 0d |  | All Working Day Calendar | TA | 16h | 추가개발 프로그램코딩 | P02-1 1.4.1 |  |  |  |  |  |
| 136 | 5.3.2.3 | DB접근제어 설치 및 기능테스트 | 1d | 2009-02-16 | 2009-02-16 | 135 | 2009-02-16 | 2009-02-16 | 1d | 95d | 0d |  | All Working Day Calendar | TA | 8h | 추가개발 프로그램코딩 | P02-1 1.4.1 |  |  |  |  |  |
| 137 | 5.3.2.4 | EAI 및 대외계 운영S/W 설치 및 기능테스트 | 2d | 2009-02-17 | 2009-02-18 | 136 | 2009-02-17 | 2009-02-18 | 2d | 95d | 0d |  | All Working Day Calendar | TA | 16h | 추가개발 프로그램코딩 | P02-1 1.4.1 |  |  |  |  |  |
| 138 | 5.3.2.5 | SMS설치 및 기능테스트 | 5d | 2009-02-19 | 2009-02-25 | 137 | 2009-02-19 | 2009-02-25 | 5d | 95d | 0d |  | All Working Day Calendar | TA | 40h | 추가개발 프로그램코딩 | P02-1 1.4.1 |  |  |  |  |  |
| 139 | 5.3.2.6 | 배치스케쥴러 설치 및 기능테스트 | 1d | 2009-02-26 | 2009-02-26 | 138 | 2009-02-26 | 2009-02-26 | 1d | 95d | 0d |  | All Working Day Calendar | TA | 8h | 추가개발 프로그램코딩 | P02-1 1.4.1 |  |  |  |  |  |
| 140 | 5.3.2.7 | 어플리케이션 영향분석 툴 설치 및 기능테스트 | 1d | 2009-02-27 | 2009-02-27 | 139 | 2009-02-27 | 2009-02-27 | 1d | 95d |  |  | All Working Day Calendar | TA | 8h | 추가개발 프로그램코딩 | P02-1 1.4.1 |  |  |  |  |  |
| 141 | 6 | **E2E Test(End to End Test)** | 20d | 2009-03-16 | 2009-04-10 |  | 2009-03-16 | 2009-04-10 | 20d | 65d |  |  | All Working Day Calendar |  | 24h | 테스트실시 | P02-1 1.4.2 |  | 48648F580F9201F8E100800046140A10 | 07060716O410179 | 00000000000001277310 | DEFAULT |
| 142 | 6.1 | 통합테스트 실시 지원 | 20d | 2009-03-16 | 2009-04-10 |  | 2009-03-16 | 2009-04-10 | 20d | 65d |  | start no earlier than 2009-03-16 | All Working Day Calendar |  |  | 테스트실시 | P02-1 1.4.2 |  | 48648F5A0F9201F8E100800046140A10 | 07060716O410179 | 00000000000001277311 | DEFAULT |
| 143 | 6.2 | **3단계 제품도입** | 1d | 2009-04-10 | 2009-04-10 |  | 2009-04-10 | 2009-04-10 | 1d | 65d |  |  | All Working Day Calendar |  | 24h | 추가개발 프로그램코딩 | P02-1 1.4.1 | 설치결과서 |  |  |  |  |
| 144 | 6.2.1 | **소프트웨어 설치** | 1d | 2009-04-10 | 2009-04-10 |  | 2009-04-10 | 2009-04-10 | 1d | 65d |  |  | All Working Day Calendar |  | 24h | 추가개발 프로그램코딩 | P02-1 1.4.1 |  |  |  |  |  |
| 145 | 6.2.1.1 | APM설치 및 기능테스트 | 1d | 2009-04-10 | 2009-04-10 |  | 2009-04-10 | 2009-04-10 | 1d | 65d | 0d | start no earlier than 2009-04-10 | All Working Day Calendar | TA | 8h | 추가개발 프로그램코딩 | P02-1 1.4.1 |  |  |  |  |  |
| 146 | 6.2.1.2 | ETL 추가라이센스 설치 및 기능테스트 | 1d | 2009-04-10 | 2009-04-10 | 145SS | 2009-04-10 | 2009-04-10 | 1d | 65d |  |  | All Working Day Calendar | TA | 8h | 추가개발 프로그램코딩 | P02-1 1.4.1 |  |  |  |  |  |
| 147 | 6.2.1.3 | 온라인도움말 솔루션 설치 및 기능테스트 | 1d | 2009-04-10 | 2009-04-10 | 145SS | 2009-04-10 | 2009-04-10 | 1d | 65d |  |  | All Working Day Calendar | TA | 8h | 추가개발 프로그램코딩 | P02-1 1.4.1 |  |  |  |  |  |
| 148 | 7 | **UAT(User Acceptance Test)** | 38d | 2009-04-13 | 2009-06-05 |  | 2009-04-13 | 2009-06-05 | 38d | 1d | 0d |  |  |  |  |  |  |  |  |  |  |  |
| 149 | 7.1 | 사용자테스트 실시 지원 | 38d | 2009-04-13 | 2009-06-05 |  | 2009-04-13 | 2009-06-05 | 38d | 1d |  | start no earlier than 2009-04-13 |  |  |  |  |  |  |  |  |  |  |
| 150 | 8 | **ORT(Operation Readiness Test)** | 25d | 2009-06-08 | 2009-07-10 | 148 | 2009-06-08 | 2009-07-10 | 25d | 1d |  |  | All Working Day Calendar |  |  | 구현 | P02-1 1.5 |  | 48648F5E0F9201F8E100800046140A10 | 07060716O410180 | 00000000000001277313 | DEFAULT |
| 151 | 8.1 | **구현계획수립** | 5d | 2009-06-08 | 2009-06-12 |  | 2009-06-08 | 2009-06-12 | 5d | 6d |  |  | All Working Day Calendar |  |  | 구현계획수립 | P02-1 1.5.1 |  | 48648F600F9201F8E100800046140A10 | 07060716O410181 | 00000000000001277314 | DEFAULT |
| 152 | 8.1.1 | 릴리이즈및비상계획수립 지원 | 5d | 2009-06-08 | 2009-06-12 |  | 2009-06-08 | 2009-06-12 | 5d | 21d |  | start no earlier than 2009-05-25 | All Working Day Calendar |  |  | 구현계획수립 | P02-1 1.5.1 |  | 48648F620F9201F8E100800046140A10 | 07060716O410181 | 00000000000001277315 | DEFAULT |
| 153 | 8.1.2 | 교육훈련계획수립 지원 | 5d | 2009-06-08 | 2009-06-12 |  | 2009-06-08 | 2009-06-12 | 5d | 6d | 0d | start no earlier than 2009-06-01 | All Working Day Calendar |  |  | 구현계획수립 | P02-1 1.5.1 |  | 48648F640F9201F8E100800046140A10 | 07060716O410181 | 00000000000001277316 | DEFAULT |

| ID | WBS | Task | Duration | Start | Finish | Predecessors | Baseline start | Baseline finish | Baseline duration | Total slack | Free slack | Constraint | Calendar | Text20 | Text22 | Text25 | Text26 | Text27 | Text28 | Text30 |
| --- | --- | --- | --- | --- | --- | --- | --- | --- | --- | --- | --- | --- | --- | --- | --- | --- | --- | --- | --- | --- |
| 154 | 8.2 | **시범운영** | 25d | 2009-06-08 | 2009-07-10 |  | 2009-06-08 | 2009-07-10 | 25d | 1d |  |  | All Working Day Calendar | 시범운영 | 48648F7A0F9201F8E100800046140A10 | 07060716O410184 | P02-1 1.5.4 | 00000000000001277327 | DEFAULT |  |
| 155 | 8.2.1 | 시범운영계획 수립 지원 | 5d | 2009-06-08 | 2009-06-12 |  | 2009-06-08 | 2009-06-12 | 5d | 21d |  | start no earlier than 2009-06-08 | All Working Day Calendar | 시범운영 | 48648F7C0F9201F8E100800046140A10 | 07060716O410184 | P02-1 1.5.4 | 00000000000001277328 | DEFAULT |  |
| 156 | 8.2.2 | 시범운영 실시 지원 | 25d | 2009-06-08 | 2009-07-10 |  | 2009-06-08 | 2009-07-10 | 25d | 1d |  | start no earlier than 2009-06-08 | All Working Day Calendar | 시범운영 | 48648F7E0F9201F8E100800046140A10 | 07060716O410184 | P02-1 1.5.4 | 00000000000001277329 | DEFAULT |  |
| 157 | 8.3 | **시스템사용교육** | 15d | 2009-06-15 | 2009-07-03 |  | 2009-06-15 | 2009-07-03 | 15d | 6d |  |  | All Working Day Calendar | 시스템사용교육 | 48648F720F9201F8E100800046140A10 | 07060716O410183 | P02-1 1.5.3 | 00000000000001277323 | DEFAULT |  |
| 158 | 8.3.1 | 운영매뉴얼 작성 | 10d | 2009-06-15 | 2009-06-26 | 153 | 2009-06-15 | 2009-06-26 | 10d | 6d | 0d | start no earlier than 2009-06-15 | All Working Day Calendar | 시스템사용교육 | 48648F760F9201F8E100800046140A10 | 07060716O410183 | P02-1 1.5.3 | 00000000000001277325 | DEFAULT | 운영매뉴얼 |
| 159 | 8.3.2 | 운영자교육 실시 | 5d | 2009-06-29 | 2009-07-03 | 158 | 2009-06-29 | 2009-07-03 | 5d | 6d |  |  | All Working Day Calendar | 시스템사용교육 | 48648F780F9201F8E100800046140A10 | 07060716O410183 | P02-1 1.5.3 | 00000000000001277326 | DEFAULT | 교육교재 |
| 160 | 8.4 | **시스템 인수인계** | 20d | 2009-06-08 | 2009-07-03 |  | 2009-06-08 | 2009-07-03 | 20d | 6d |  |  | All Working Day Calendar | 시스템 인수인계 | 48648F7A0F9201F8E100800046140A10 | 07060716O410184 | P02-1 1.7.2 | 00000000000001277327 | DEFAULT |  |
| 161 | 8.4.1 | 인수인계계획 수립 | 5d | 2009-06-08 | 2009-06-12 |  | 2009-06-08 | 2009-06-12 | 5d | 6d | 0d | start no earlier than 2009-06-08 | All Working Day Calendar | 시스템 인수인계 | 48648F7C0F9201F8E100800046140A10 | 07060716O410184 | P02-1 1.7.2 | 00000000000001277328 | DEFAULT | 인수인계계획서 |
| 162 | 8.4.2 | 인수인계 실시 | 15d | 2009-06-15 | 2009-07-03 | 161 | 2009-06-15 | 2009-07-03 | 15d | 6d |  | start no earlier than 2009-06-15 | All Working Day Calendar | 시스템 인수인계 | 48648F7E0F9201F8E100800046140A10 | 07060716O410184 | P02-1 1.7.2 | 00000000000001277329 | DEFAULT | 인수인계확인서 |
| 163 | 8.5 | **오픈 준비** | 5d | 2009-07-06 | 2009-07-10 |  | 2009-07-06 | 2009-07-10 | 5d | 0d |  |  | All Working Day Calendar | 컨버젼 및 릴리이즈 | 48648F660F9201F8E100800046140A10 | 07060716O410182 | P02-1 1.5.2 | 00000000000001277317 | DEFAULT |  |
| 164 | 8.5.1 | 데이터베이스 구축 | 5d | 2009-07-06 | 2009-07-10 |  | 2009-07-06 | 2009-07-10 | 5d | 0d |  | start no earlier than 2009-07-06 | All Working Day Calendar | 컨버젼 및 릴리이즈 | 48648F680F9201F8E100800046140A10 | 07060716O410182 | P02-1 1.5.2 | 00000000000001277318 | DEFAULT |  |
| 165 | 8.5.2 | 소프트웨어 설치 | 5d | 2009-07-06 | 2009-07-10 |  | 2009-07-06 | 2009-07-10 | 5d | 0d |  | start no earlier than 2009-07-06 | All Working Day Calendar | 컨버젼 및 릴리이즈 | 48648F6A0F9201F8E100800046140A10 | 07060716O410182 | P02-1 1.5.2 | 00000000000001277319 | DEFAULT |  |
| 166 | 8.5.3 | 데이터컨버전 | 5d | 2009-07-06 | 2009-07-10 |  | 2009-07-06 | 2009-07-10 | 5d | 0d |  | start no earlier than 2009-07-06 | All Working Day Calendar | 컨버젼 및 릴리이즈 | 48648F6C0F9201F8E100800046140A10 | 07060716O410182 | P02-1 1.5.2 | 00000000000001277320 | DEFAULT |  |
| 167 | 8.5.4 | 시스템 릴리이즈 | 1d | 2009-07-10 | 2009-07-10 |  | 2009-07-10 | 2009-07-10 | 1d | 0d |  | start no earlier than 2009-07-10 | All Working Day Calendar | 컨버젼 및 릴리이즈 | 48648F700F9201F8E100800046140A10 | 07060716O410182 | P02-1 1.5.2 | 00000000000001277322 | DEFAULT |  |
| 168 | 9 | **Go Live** | 1d | 2009-07-13 | 2009-07-13 | 163 | 2009-07-13 | 2009-07-13 | 1d | 0d |  |  |  | 컨버젼 및 릴리이즈 |  |  | P02-1 1.5.2 |  |  |  |
| 169 | 9.1 | 시스템 최종 오픈 | 1d | 2009-07-13 | 2009-07-13 |  | 2009-07-13 | 2009-07-13 | 1d | 0d |  | start no earlier than 2009-07-13 |  |  |  |  |  |  |  |  |
