# 인프라_SA 통합

Schedule from MS Project, 2008-07-21 to 2009-08-10, status date 2008-12-12, costs in %, A marks actual dates.
HSIC-0820606

## Calendars

- 한국: Mon-Fri 08:00-12:00, 13:00-17:00; Sat-Sun off. Exceptions (off unless hours are given): 2008-08-15, 2008-09-13 to 2008-09-15, 2008-10-03, 2008-12-25, 2009-01-01, 2009-01-25 to 2009-01-27, 2009-03-01, 2009-05-01 to 2009-05-02, 2009-05-05, 2009-06-06.

## Resources

| Resource | Rate | Cost per use |
| --- | --- | --- |
| PM | 1 | 1 |
| QAO | 1 | 1 |
| PL | 1 | 1 |
| SA | 1 |  |
| TA | 1 |  |
| F/W | 1 |  |
| UI | 1 |  |
| 개발팀 | 1 |  |
| FW | 1 |  |
| DBIO | 1 |  |
| SA.F/W | 1 |  |
| IBM | 1 |  |
| Tmax | 1 |  |
| PJT | 1 |  |
| NCRM | 1 |  |
| StarTeam | 1 |  |
| CaliberRM | 1 |  |
| TestDirector | 1 |  |
| 생보기술지원파트 | 1 |  |
| RM | 1 |  |
| QTP | 1 |  |
| EAI | 1 |  |
| AnyLink | 1 |  |
| 메타블루 | 1 |  |
| Tivoli | 1 |  |
| Syncsort | 1 |  |
| Rule | 1 |  |
| Printing | 1 |  |
| 이미지 | 1 |  |
| 시스템공통 | 1 |  |
| SA.레포팅 | 1 |  |
| SA.프린팅 | 1 |  |
| DBA | 1 |  |
| 데이터이행 | 1 |  |
| SSO | 1 |  |
| 디지카이트 | 1 |  |
| MetLife | 1 |  |
| WSCUP | 1 |  |
| Tmax | 1 |  |

## Schedule

| ID | WBS | Task | Duration | Start | Finish | Predecessors | Complete | Remaining | Baseline start | Baseline finish | Baseline duration | Total slack | Constraint | Resources | Work | Actual work | Cost | Baseline cost | Actual cost | Text20 | Text26 | Text30 | Text2 |
| --- | --- | --- | --- | --- | --- | --- | --- | --- | --- | --- | --- | --- | --- | --- | --- | --- | --- | --- | --- | --- | --- | --- | --- |
| 1 | 1 | **13.인프라_SA** | 245d | 2008-07-23 A | 2009-07-13 |  | 56% | 106.89d | 2008-07-23 | 2009-07-13 | 245d | 20d |  |  | 18764h | 12509.2h | 18,777 | 18,777 | 12,515.17 |  |  |  |  |
| 2 | 1.1 | **착수단계** | 3d | 2008-07-23 A | 2008-07-25 A | 404SS | 100% |  | 2008-07-23 | 2008-07-25 | 3d |  |  |  | 32h | 32h | 32 | 32 | 32 | 프로젝트 착수 | P02-1 1.1 |  |  |
| 3 | 1.1.1 | **착수준비** | 3d | 2008-07-23 A | 2008-07-25 A |  | 100% |  | 2008-07-23 | 2008-07-25 | 3d |  |  |  | 32h | 32h | 32 | 32 | 32 | 착수준비 | P02-1 1.1.1 |  |  |
| 4 | 1.1.1.1 | 업무범위 정의 | 2d | 2008-07-23 A | 2008-07-24 A |  | 100% |  | 2008-07-23 | 2008-07-24 | 2d |  |  | SA | 16h | 16h | 16 | 16 | 16 | 착수준비 | P02-1 1.1.1 |  |  |
| 5 | 1.1.1.2 | WBS 정의 | 2d | 2008-07-24 A | 2008-07-25 A |  | 100% |  | 2008-07-24 | 2008-07-25 | 2d |  | start no earlier than 2008-07-24 | SA | 16h | 16h | 16 | 16 | 16 | 착수준비 | P02-1 1.1.1 | WBS |  |
| 6 | 1.2 | **PoC(전환아키텍처검증)** | 32d | 2008-07-23 A | 2008-09-05 A |  | 100% |  | 2008-07-23 | 2008-09-05 | 32d |  |  | SA | 2288h | 2288h | 2,288 | 2,288 | 2,288 | 분석 | P02-1 1.2 |  |  |
| 7 | 1.2.1 | **프로젝트PoC계획** | 2d | 2008-07-23 A | 2008-07-24 A |  | 100% |  | 2008-07-23 | 2008-07-24 | 2d |  |  |  | 32h | 32h | 32 | 32 | 32 | 기술구조정의 | P02-1 1.2.5 |  |  |
| 8 | 1.2.1.1 | PoC환경구축계획 | 1d | 2008-07-23 A | 2008-07-23 A | 404SS | 100% |  | 2008-07-23 | 2008-07-23 | 1d |  |  | TA | 8h | 8h | 8 | 8 | 8 | 기술구조정의 | P02-1 1.2.5 |  |  |
| 9 | 1.2.1.2 | PoC범위/대상 | 1d | 2008-07-23 A | 2008-07-23 A | 8SS | 100% |  | 2008-07-23 | 2008-07-23 | 1d |  |  | SA | 8h | 8h | 8 | 8 | 8 | 기술구조정의 | P02-1 1.2.5 |  |  |
| 10 | 1.2.1.3 | PoC수행전략 수립 | 1d | 2008-07-24 A | 2008-07-24 A | 9 | 100% |  | 2008-07-24 | 2008-07-24 | 1d |  |  | SA; TA | 16h | 16h | 16 | 16 | 16 | 기술구조정의 | P02-1 1.2.5 |  |  |
| 11 | 1.2.2 | **프로젝트PoC수행(환경구축 후 1개월)** | 30d | 2008-07-25 A | 2008-09-05 A |  | 100% |  | 2008-07-25 | 2008-09-05 | 30d |  |  | SA | 2000h | 2000h | 2,000 | 2,000 | 2,000 | 기술구조정의 | P02-1 1.2.5 |  | 프로토타이핑 개발가이드 |
| 12 | 1.2.2.1 | PoC 환경구축(TA : 8/1일까지) | 6d | 2008-07-25 A | 2008-08-01 A | 7 | 100% |  | 2008-07-25 | 2008-08-01 | 6d |  |  | TA | 48h | 48h | 48 | 48 | 48 | 기술구조정의 | P02-1 1.2.5 | PoC환경(H/W,S/W구성도) | 프로토타이핑 수행계획서 |
| 13 | 1.2.2.2 | **PoC환경구축확인** | 5d | 2008-07-28 A | 2008-08-01 A |  | 100% |  | 2008-07-28 | 2008-08-01 | 5d |  |  | SA | 240h | 240h | 240 | 240 | 240 | 기술구조정의 | P02-1 1.2.5 |  |  |
| 14 | 1.2.2.2.1 | HW 설치 및 환경구성 확인 | 5d | 2008-07-28 A | 2008-08-01 A | 12FF | 100% |  | 2008-07-28 | 2008-08-01 | 5d |  | start no earlier than 2008-06-30 | SA | 40h | 40h | 40 | 40 | 40 | 기술구조정의 | P02-1 1.2.5 |  | 프로토타이핑 수행계획서 |
| 15 | 1.2.2.2.2 | **SW 설치 및 환경구성확인** | 5d | 2008-07-28 A | 2008-08-01 A |  | 100% |  | 2008-07-28 | 2008-08-01 | 5d |  |  | SA | 160h | 160h | 160 | 160 | 160 | 기술구조정의 | P02-1 1.2.5 |  | 프로토타이핑 수행계획서 |
| 16 | 1.2.2.2.2.1 | UI 설치 및 환경 구성 확인 | 5d | 2008-07-28 A | 2008-08-01 A | 12FF | 100% |  | 2008-07-28 | 2008-08-01 | 5d |  | start no earlier than 2008-06-30 | SA | 40h | 40h | 40 | 40 | 40 | 기술구조정의 | P02-1 1.2.5 |  | 프로토타이핑 수행계획서 |
| 17 | 1.2.2.2.2.2 | Framework 설치 및 환경 구성 확인 | 5d | 2008-07-28 A | 2008-08-01 A | 12FF | 100% |  | 2008-07-28 | 2008-08-01 | 5d |  | start no earlier than 2008-06-30 | SA | 40h | 40h | 40 | 40 | 40 | 기술구조정의 | P02-1 1.2.5 |  | 프로토타이핑 수행계획서 |
| 18 | 1.2.2.2.2.3 | SPECTRUM DBIO 설치 및 환경 구성 확인 | 5d | 2008-07-28 A | 2008-08-01 A | 12FF | 100% |  | 2008-07-28 | 2008-08-01 | 5d |  | start no earlier than 2008-06-30 | SA | 40h | 40h | 40 | 40 | 40 | 기술구조정의 | P02-1 1.2.5 |  | 프로토타이핑 수행계획서 |
| 19 | 1.2.2.3 | **PoC 개발** | 14d | 2008-08-04 A | 2008-08-22 A | 12 | 100% |  | 2008-08-04 | 2008-08-22 | 14d |  |  | SA | 1120h | 1120h | 1,120 | 1,120 | 1,120 | 기술구조정의 | P02-1 1.2.5 | PoC연계 소스,결과서(화면-ProFrame) |  |
| 20 | 1.2.2.3.1 | 화면/어플리케이션 개발 | 14d | 2008-08-04 A | 2008-08-22 A |  | 100% |  | 2008-08-04 | 2008-08-22 | 14d |  | start no earlier than 2007-03-26 | SA; DBIO; F/W; UI; 시스템공통 | 560h | 560h | 560 | 560 | 560 | 기술구조정의 | P02-1 1.2.5 |  | Batch 개발 가이드 |
| 21 | 1.2.2.3.2 | SPECTRUM DB I/O 모듈 생성 | 14d | 2008-08-04 A | 2008-08-22 A |  | 100% |  | 2008-08-04 | 2008-08-22 | 14d |  | start no earlier than 2007-03-26 | SA; DBIO; F/W; 시스템공통 | 448h | 448h | 448 | 448 | 448 | 기술구조정의 | P02-1 1.2.5 |  | Batch 개발 가이드 |
| 22 | 1.2.2.4 | **PoC 연계검증** | 7d | 2008-08-25 A | 2008-09-02 A | 19 | 100% |  | 2008-08-25 | 2008-09-02 | 7d |  |  | SA | 280h | 280h | 280 | 280 | 280 | 기술구조정의 | P02-1 1.2.5 |  |  |
| 23 | 1.2.2.4.1 | 화면/어플리케이션/DB IO 모듈 연계 | 7d | 2008-08-25 A | 2008-09-02 A |  | 100% |  | 2008-08-25 | 2008-09-02 | 7d |  | start no earlier than 2007-04-02 | SA; F/W; DBIO; 시스템공통 | 224h | 224h | 224 | 224 | 224 | 기술구조정의 | P02-1 1.2.5 |  | Batch 개발 템플릿 |
| 24 | 1.2.2.5 | PoC결과정리 | 2d | 2008-09-03 A | 2008-09-04 A | 22 | 100% |  | 2008-09-03 | 2008-09-04 | 2d |  |  | SA; F/W; UI; DBIO | 64h | 64h | 64 | 64 | 64 | 기술구조정의 | P02-1 1.2.5 | PoC결과서 |  |
| 25 | 1.2.2.6 | PoC결과보고 | 1d | 2008-09-05 A | 2008-09-05 A | 24 | 100% |  | 2008-09-05 | 2008-09-05 | 1d |  |  | SA | 8h | 8h | 8 | 8 | 8 | 기술구조정의 | P02-1 1.2.5 | PoC보고서 |  |

Notes:
- 11: 선전환 대상 중, 일부 소스 대상
- 19: PoC환경구축일정에 따라 변동가능
- 21: DBIO 변경부분 검토

| ID | WBS | Task | Duration | Start | Finish | Predecessors | Complete | Remaining | Baseline start | Baseline finish | Baseline duration | Total slack | Constraint | Resources | Work | Actual work | Cost | Baseline cost | Actual cost | Text20 | Text26 | Text30 | Text2 |
| --- | --- | --- | --- | --- | --- | --- | --- | --- | --- | --- | --- | --- | --- | --- | --- | --- | --- | --- | --- | --- | --- | --- | --- |
| 26 | 1.3 | **선전환(아키텍처전환/개발)** | 87d | 2008-07-28 A | 2008-11-28 |  | 99% | 0d | 2008-07-28 | 2008-11-28 | 87d | 0d |  | SA | 2664h | 2589.17h | 2,664 | 2,664 | 2,589.17 | 분석 | P02-1 1.2 |  |  |
| 27 | 1.3.1 | 전환계획수립 | 5d | 2008-07-28 A | 2008-08-01 A | 406SS | 100% |  | 2008-07-28 | 2008-08-01 | 5d |  |  | SA | 40h | 40h | 40 | 40 | 40 | 기술구조정의 | P02-1 1.2.5 |  |  |
| 28 | 1.3.2 | 전환대상 소스확보 | 5d | 2008-07-28 A | 2008-08-01 A | 406SS | 100% |  | 2008-07-28 | 2008-08-01 | 5d |  |  | SA | 40h | 40h | 40 | 40 | 40 | 기술구조정의 | P02-1 1.2.5 | 전환대상 소스 |  |
| 29 | 1.3.3 | **전환도구확보** | 10d | 2008-08-04 A | 2008-08-18 A | 28 | 100% |  | 2008-08-04 | 2008-08-18 | 10d |  |  | SA | 400h | 400h | 400 | 400 | 400 | 기술구조정의 | P02-1 1.2.5 |  |  |
| 30 | 1.3.3.1 | DBIO(Oracle->DB2) | 10d | 2008-08-04 A | 2008-08-18 A |  | 100% |  | 2008-08-04 | 2008-08-18 | 10d |  |  | SA; 생보기술지원파트 | 160h | 160h | 160 | 160 | 160 | 기술구조정의 | P02-1 1.2.5 |  |  |
| 31 | 1.3.3.2 | DB Object 전환-SP,Function,Java Batch(Oracle->DB2) | 10d | 2008-08-04 A | 2008-08-18 A |  | 100% |  | 2008-08-04 | 2008-08-18 | 10d |  | start no earlier than 2008-08-04 | SA; 메타블루 | 160h | 160h | 160 | 160 | 160 | 기술구조정의 | P02-1 1.2.5 |  |  |
| 32 | 1.3.4 | **모의테스트** | 2d | 2008-08-19 A | 2008-08-20 A | 29 | 100% |  | 2008-08-19 | 2008-08-20 | 2d |  |  | SA | 80h | 80h | 80 | 80 | 80 | 기술구조정의 | P02-1 1.2.5 |  |  |
| 33 | 1.3.4.1 | DBIO(Oracle->DB2) | 2d | 2008-08-19 A | 2008-08-20 A |  | 100% |  | 2008-08-19 | 2008-08-20 | 2d |  |  | SA; 생보기술지원파트 | 32h | 32h | 32 | 32 | 32 | 기술구조정의 | P02-1 1.2.5 |  |  |
| 34 | 1.3.4.2 | DB Object 전환-SP,Function,Java Batch(Oracle->DB2) | 2d | 2008-08-19 A | 2008-08-20 A |  | 100% |  | 2008-08-19 | 2008-08-20 | 2d |  | start no earlier than 2008-08-18 | SA; 메타블루 | 32h | 32h | 32 | 32 | 32 | 기술구조정의 | P02-1 1.2.5 |  |  |
| 35 | 1.3.5 | **전환도구보완** | 2d | 2008-08-21 A | 2008-08-22 A | 32 | 100% |  | 2008-08-21 | 2008-08-22 | 2d |  |  | SA | 80h | 80h | 80 | 80 | 80 | 기술구조정의 | P02-1 1.2.5 |  |  |
| 36 | 1.3.5.1 | DBIO(Oracle->DB2) | 2d | 2008-08-21 A | 2008-08-22 A |  | 100% |  | 2008-08-21 | 2008-08-22 | 2d |  | finish no earlier than 2008-07-25 | SA; 생보기술지원파트 | 32h | 32h | 32 | 32 | 32 | 기술구조정의 | P02-1 1.2.5 |  |  |
| 37 | 1.3.5.2 | DB Object 전환-SP,Function,Java Batch(Oracle->DB2) | 2d | 2008-08-21 A | 2008-08-22 A |  | 100% |  | 2008-08-21 | 2008-08-22 | 2d |  |  | SA; 메타블루 | 32h | 32h | 32 | 32 | 32 | 기술구조정의 | P02-1 1.2.5 |  |  |
| 38 | 1.3.6 | DB Object 전환-SP,Function,Java Batch(Oracle->DB2) | 22d | 2008-08-04 A | 2008-09-03 A |  | 100% |  | 2008-08-04 | 2008-09-03 | 22d |  | start no earlier than 2008-08-04 | 메타블루 | 176h | 176h | 176 | 176 | 176 |  |  |  |  |
| 39 | 1.3.7 | **UI전환/개발** | 83d | 2008-08-01 A | 2008-11-28 A |  | 100% |  | 2008-08-01 | 2008-11-28 | 83d |  |  | SA | 1152h | 1152h | 1,152 | 1,152 | 1,152 | 기술구조정의 | P02-1 1.2.5 |  |  |
| 40 | 1.3.7.1 | 화면전환 | 20d | 2008-08-01 A | 2008-08-29 A |  | 100% |  | 2008-08-01 | 2008-08-29 | 20d |  | start no earlier than 2008-08-18 | 디지카이트 | 160h | 160h | 160 | 160 | 160 | 기술구조정의 | P02-1 1.2.5 |  |  |
| 41 | 1.3.7.2 | 스크립트전환-Type Check | 21d | 2008-09-01 A | 2008-09-30 A |  | 100% |  | 2008-09-01 | 2008-09-30 | 21d |  | finish no earlier than 2008-09-30 | 디지카이트 | 168h | 168h | 168 | 168 | 168 |  |  |  |  |
| 42 | 1.3.7.3 | 기반설계(전환표준/개발표준/유형별 개발가이드) | 15d | 2008-10-13 A | 2008-10-31 A |  | 100% |  | 2008-10-13 | 2008-10-31 | 15d |  | finish no earlier than 2008-10-31 | 디지카이트 | 120h | 120h | 120 | 120 | 120 |  |  |  |  |
| 43 | 1.3.7.4 | UI전환/개발(선개발업무-고객/업무공통/상품/대외계/신계약) | 20d | 2008-11-03 A | 2008-11-28 A |  | 100% |  | 2008-11-03 | 2008-11-28 | 20d |  | finish no earlier than 2008-11-28 | 디지카이트 | 160h | 160h | 160 | 160 | 160 |  |  |  |  |
| 44 | 1.4 | **Analyze** | 45d | 2008-07-28 A | 2008-09-30 A |  | 100% |  | 2008-07-28 | 2008-09-30 | 45d |  |  | SA | 1352h | 1352h | 1,353 | 1,353 | 1,353 | 분석 | P02-1 1.2 |  |  |
| 45 | 1.4.1 | 개발 표준 명명규칙 정의 | 7d | 2008-07-28 A | 2008-08-05 A | 406SS | 100% |  | 2008-07-28 | 2008-08-05 | 7d |  | finish no earlier than 2007-02-13 | SA; QAO | 112h | 112h | 113 | 113 | 113 | 기술구조정의 | P02-1 1.2.5 | 개발표준 명명규칙 | 개발 표준 명명규칙 정의서 |
| 46 | 1.4.2 | **SW 아키텍처 정의** | 45d | 2008-07-28 A | 2008-09-30 A | 404 | 100% |  | 2008-07-28 | 2008-09-30 | 45d |  |  | SA | 648h | 648h | 648 | 648 | 648 | 기술구조정의 | P02-1 1.2.5 | 시스템청사진(아키텍처정의서) |  |
| 47 | 1.4.2.1 | 시스템 분석 및 환경 이해 | 3d | 2008-07-28 A | 2008-07-30 A |  | 100% |  | 2008-07-28 | 2008-07-30 | 3d |  |  | SA | 24h | 24h | 24 | 24 | 24 | 기술구조정의 | P02-1 1.2.5 |  |  |
| 48 | 1.4.2.2 | 아키텍처 분석 | 2d | 2008-07-31 A | 2008-08-01 A | 47 | 100% |  | 2008-07-31 | 2008-08-01 | 2d |  |  | SA | 16h | 16h | 16 | 16 | 16 | 기술구조정의 | P02-1 1.2.5 |  |  |
| 49 | 1.4.2.3 | 온라인 아키텍처 정의 | 5d | 2008-08-25 A | 2008-08-29 A | 48 | 100% |  | 2008-08-25 | 2008-08-29 | 5d |  |  | SA | 40h | 40h | 40 | 40 | 40 | 기술구조정의 | P02-1 1.2.5 |  |  |
| 50 | 1.4.2.4 | 온라인 아키텍처 Review(POC결과반영) | 10d | 2008-09-01 A | 2008-09-12 A | 49 | 100% |  | 2008-09-01 | 2008-09-12 | 10d |  |  | SA | 80h | 80h | 80 | 80 | 80 |  |  |  |  |
| 51 | 1.4.2.5 | 배치 아키텍처 정의(배치유형/배치처리흐름/유형별적용기준/프로그램구성) | 16d | 2008-09-08 A | 2008-09-30 A |  | 100% |  | 2008-09-08 | 2008-09-30 | 16d |  | finish no earlier than 2008-09-30 | SA | 128h | 128h | 128 | 128 | 128 | 기술구조정의 | P02-1 1.2.5 |  |  |

Notes:
- 26: 소스확보 등의 사전 여부에 따라 변동가능
- 30: 엔진개발(Oracle->DB2기반,생보기술지원파트)
- 31: MetaBlue 전환도구 활용

| ID | WBS | Task | Duration | Start | Finish | Predecessors | Complete | Baseline start | Baseline finish | Baseline duration | Constraint | Resources | Work | Actual work | Cost | Baseline cost | Actual cost | Text2 | Text20 | Text26 | Text30 |
| --- | --- | --- | --- | --- | --- | --- | --- | --- | --- | --- | --- | --- | --- | --- | --- | --- | --- | --- | --- | --- | --- |
| 52 | 1.4.3 | **SW 아키텍처 설계 가이드(교육)** | 3d | 2008-09-24 A | 2008-09-26 A |  | 100% | 2008-09-24 | 2008-09-26 | 3d |  | SA | 192h | 192h | 192 | 192 | 192 | 개발 표준 명명규칙 정의서 | 기술구조정의 | P02-1 1.2.5 |  |
| 53 | 1.4.3.1 | UI Layer 설계 가이드 | 3d | 2008-09-24 A | 2008-09-26 A | 406FF | 100% | 2008-09-24 | 2008-09-26 | 3d |  | SA; UI | 48h | 48h | 48 | 48 | 48 |  | 기술구조정의 | P02-1 1.2.5 |  |
| 54 | 1.4.3.2 | Business Logic Layer 설계 가이드 | 3d | 2008-09-24 A | 2008-09-26 A | 406FF | 100% | 2008-09-24 | 2008-09-26 | 3d |  | SA; F/W | 48h | 48h | 48 | 48 | 48 |  | 기술구조정의 | P02-1 1.2.5 |  |
| 55 | 1.4.3.3 | 대내외 연계 Layer 설계 가이드 | 3d | 2008-09-24 A | 2008-09-26 A | 406FF | 100% | 2008-09-24 | 2008-09-26 | 3d |  | SA | 24h | 24h | 24 | 24 | 24 |  | 기술구조정의 | P02-1 1.2.5 |  |
| 56 | 1.4.3.4 | DB Access Layer 설계 가이드 | 3d | 2008-09-24 A | 2008-09-26 A | 406FF | 100% | 2008-09-24 | 2008-09-26 | 3d |  | SA; TA | 48h | 48h | 48 | 48 | 48 |  | 기술구조정의 | P02-1 1.2.5 |  |
| 57 | 1.4.4 | 설계단계 SPM 작성 지원(QAO지원) | 5d | 2008-09-22 A | 2008-09-26 A | 406FF | 100% | 2008-09-22 | 2008-09-26 | 5d |  | SA | 40h | 40h | 40 | 40 | 40 |  | 기술구조정의 | P02-1 1.2.5 | 설계단계 SPM |
| 58 | 1.5 | **Design** | 44d | 2008-09-29 A | 2008-11-28 A |  | 100% | 2008-09-29 | 2008-11-28 | 44d |  | SA | 6248h | 6248h | 6,253 | 6,253 | 6,253 |  | 설계 | P02-1 1.3 |  |
| 59 | 1.5.1 | **개발표준 수립 및 개발가이드 작성** | 24d | 2008-09-29 A | 2008-10-31 A | 407SS | 100% | 2008-09-29 | 2008-10-31 | 24d |  |  | 3840h | 3840h | 3,840 | 3,840 | 3,840 |  | 추가개발설계 | P02-1 1.3.1 | 개발SPM |
| 60 | 1.5.1.1 | 개발표준 명명규칙 교육 | 2d | 2008-09-29 A | 2008-09-30 A | 407SS | 100% | 2008-09-29 | 2008-09-30 | 2d | start no earlier than 2007-09-10 | SA; 개발팀 | 32h | 32h | 32 | 32 | 32 |  | 추가개발설계 | P02-1 1.3.1 |  |
| 61 | 1.5.1.2 | **어플리케이션/배치 개발 표준 작성** | 17d | 2008-10-01 A | 2008-10-24 A |  | 100% | 2008-10-01 | 2008-10-24 | 17d |  |  | 352h | 352h | 352 | 352 | 352 |  | 추가개발설계 | P02-1 1.3.1 | 교육자료/표준소스(템플릿)/SPM(Java) |
| 62 | 1.5.1.2.1 | Java 개발 표준 작성 | 17d | 2008-10-01 A | 2008-10-24 A | 60 | 100% | 2008-10-01 | 2008-10-24 | 17d | start no earlier than 2008-09-15 | SA; F/W | 272h | 272h | 272 | 272 | 272 |  | 추가개발설계 | P02-1 1.3.1 |  |
| 63 | 1.5.1.2.2 | SQL 개발 표준 작성 | 5d | 2008-10-09 A | 2008-10-15 A | 62FF | 100% | 2008-10-09 | 2008-10-15 | 5d | start no earlier than 2008-09-15 | SA; F/W | 80h | 80h | 80 | 80 | 80 |  | 추가개발설계 | P02-1 1.3.1 |  |
| 64 | 1.5.1.3 | **화면/어플리케이션 연계 표준 수립** | 17d | 2008-10-01 A | 2008-10-24 A |  | 100% | 2008-10-01 | 2008-10-24 | 17d |  |  | 816h | 816h | 816 | 816 | 816 |  | 추가개발설계 | P02-1 1.3.1 | 교육자료/표준소스(템플릿)/SPM(NCRM-ProFrame) |
| 65 | 1.5.1.3.1 | 전문표준 정의 | 17d | 2008-10-01 A | 2008-10-24 A | 60 | 100% | 2008-10-01 | 2008-10-24 | 17d | start no earlier than 2007-03-12 | SA; F/W; UI | 408h | 408h | 408 | 408 | 408 | Application 개발 가이드 | 추가개발설계 | P02-1 1.3.1 |  |
| 66 | 1.5.1.3.2 | 화면/어플리케션 연계 표준 수립 | 17d | 2008-10-01 A | 2008-10-24 A | 65FF | 100% | 2008-10-01 | 2008-10-24 | 17d | start no earlier than 2007-03-19 | SA; F/W; UI | 408h | 408h | 408 | 408 | 408 | Application 개발 템플릿 | 추가개발설계 | P02-1 1.3.1 |  |
| 67 | 1.5.1.4 | **어플리케이션 개발가이드 작성 및 템플릿 개발** | 17d | 2008-10-01 A | 2008-10-24 A |  | 100% | 2008-10-01 | 2008-10-24 | 17d |  |  | 544h | 544h | 544 | 544 | 544 |  | 추가개발설계 | P02-1 1.3.1 | 교육자료/표준소스(템플릿)/SPM(Java,ProFrame) |
| 68 | 1.5.1.4.1 | 어플리케이션 개발가이드 작성 | 17d | 2008-10-01 A | 2008-10-24 A | 60 | 100% | 2008-10-01 | 2008-10-24 | 17d | start no earlier than 2007-04-02 | SA.F/W; 시스템공통 | 272h | 272h | 272 | 272 | 272 | Batch 개발 가이드 | 추가개발설계 | P02-1 1.3.1 |  |
| 69 | 1.5.1.4.2 | 어플리케이션 템플릿 개발 | 17d | 2008-10-01 A | 2008-10-24 A |  | 100% | 2008-10-01 | 2008-10-24 | 17d | start no earlier than 2008-10-01 | SA.F/W; 시스템공통 | 272h | 272h | 272 | 272 | 272 | Batch 개발 템플릿 | 추가개발설계 | P02-1 1.3.1 |  |
| 70 | 1.5.1.5 | **배치개발 가이드 작성 및 템플릿 개발** | 17d | 2008-10-01 A | 2008-10-24 A |  | 100% | 2008-10-01 | 2008-10-24 | 17d |  |  | 976h | 976h | 976 | 976 | 976 |  | 추가개발설계 | P02-1 1.3.1 | 교육자료/표준소스(템플릿)/SPM(배치) |
| 71 | 1.5.1.5.1 | 배치 어플리케이션 개발 가이드 작성 | 17d | 2008-10-01 A | 2008-10-24 A | 60 | 100% | 2008-10-01 | 2008-10-24 | 17d | start no earlier than 2007-04-23 | SA; F/W | 272h | 272h | 272 | 272 | 272 | Batch 개발 가이드 | 추가개발설계 | P02-1 1.3.1 |  |
| 72 | 1.5.1.5.2 | Sorting 툴 가이드 작성 | 5d | 2008-10-01 A | 2008-10-08 A | 71FF | 100% | 2008-10-01 | 2008-10-08 | 5d | start no earlier than 2007-04-23 | SA; Syncsort | 80h | 80h | 80 | 80 | 80 | Batch 개발 가이드 | 추가개발설계 | P02-1 1.3.1 |  |
| 73 | 1.5.1.5.3 | 배치스케줄러 가이드 작성 | 5d | 2008-10-01 A | 2008-10-08 A | 71FF | 100% | 2008-10-01 | 2008-10-08 | 5d | start no earlier than 2007-04-23 | SA; Tivoli | 80h | 80h | 80 | 80 | 80 | Batch 개발 가이드 | 추가개발설계 | P02-1 1.3.1 |  |
| 74 | 1.5.1.5.4 | 배치 템플릿 개발 | 17d | 2008-10-01 A | 2008-10-24 A | 71FF | 100% | 2008-10-01 | 2008-10-24 | 17d | start no earlier than 2007-05-07 | SA; Tivoli; F/W; Syncsort | 544h | 544h | 544 | 544 | 544 | Batch 개발 템플릿 | 추가개발설계 | P02-1 1.3.1 |  |
| 75 | 1.5.1.6 | **프린팅 개발가이드 작성 및 템플릿 개발** | 10d | 2008-10-13 A | 2008-10-24 A |  | 100% | 2008-10-13 | 2008-10-24 | 10d |  |  | 320h | 320h | 320 | 320 | 320 |  | 추가개발설계 | P02-1 1.3.1 | 교육자료/표준소스(템플릿)/SPM(프린팅) |
| 76 | 1.5.1.6.1 | 프린팅 개발가이드 작성 | 10d | 2008-10-13 A | 2008-10-24 A |  | 100% | 2008-10-13 | 2008-10-24 | 10d | start no earlier than 2008-10-13 | SA.프린팅; 시스템공통 | 160h | 160h | 160 | 160 | 160 | Batch 개발 가이드 | 추가개발설계 | P02-1 1.3.1 |  |
| 77 | 1.5.1.6.2 | 프린팅 템플릿 개발 | 10d | 2008-10-13 A | 2008-10-24 A | 76FF | 100% | 2008-10-13 | 2008-10-24 | 10d | start no earlier than 2007-04-16 | SA.프린팅; 시스템공통 | 160h | 160h | 160 | 160 | 160 | Batch 개발 템플릿 | 추가개발설계 | P02-1 1.3.1 |  |

| ID | WBS | Task | Duration | Start | Finish | Predecessors | Complete | Baseline start | Baseline finish | Baseline duration | Constraint | Resources | Work | Actual work | Cost | Baseline cost | Actual cost | Text20 | Text26 | Text30 | Text2 | Text10 |
| --- | --- | --- | --- | --- | --- | --- | --- | --- | --- | --- | --- | --- | --- | --- | --- | --- | --- | --- | --- | --- | --- | --- |
| 78 | 1.5.1.7 | **레포팅 개발가이드 작성 및 템플릿 개발** | 10d | 2008-10-13 A | 2008-10-24 A |  | 100% | 2008-10-13 | 2008-10-24 | 10d |  |  | 320h | 320h | 320 | 320 | 320 | 추가개발설계 | P02-1 1.3.1 | 교육자료/표준소스(템플릿)/SPM(리포팅) |  |  |
| 79 | 1.5.1.7.1 | 레포팅 개발가이드 작성 | 10d | 2008-10-13 A | 2008-10-24 A |  | 100% | 2008-10-13 | 2008-10-24 | 10d | start no earlier than 2008-10-13 | SA.레포팅; 시스템공통 | 160h | 160h | 160 | 160 | 160 | 추가개발설계 | P02-1 1.3.1 |  | Batch 개발 가이드 |  |
| 80 | 1.5.1.7.2 | 레포팅 템플릿 개발 | 10d | 2008-10-13 A | 2008-10-24 A | 79FF | 100% | 2008-10-13 | 2008-10-24 | 10d | start no earlier than 2007-04-16 | SA.레포팅; 시스템공통 | 160h | 160h | 160 | 160 | 160 | 추가개발설계 | P02-1 1.3.1 |  | Batch 개발 템플릿 |  |
| 81 | 1.5.1.8 | **화면개발 표준 및 화면개발 가이드 작성** | 15d | 2008-10-13 A | 2008-10-31 A |  | 100% | 2008-10-13 | 2008-10-31 | 15d |  |  | 480h | 480h | 480 | 480 | 480 | 추가개발설계 | P02-1 1.3.1 | 교육자료/표준소스(템플릿)/SPM(NCRM) |  |  |
| 82 | 1.5.1.8.1 | 화면개발 표준 수립 | 15d | 2008-10-13 A | 2008-10-31 A |  | 100% | 2008-10-13 | 2008-10-31 | 15d | start no earlier than 2008-10-13 | SA; UI | 240h | 240h | 240 | 240 | 240 | 추가개발설계 | P02-1 1.3.1 |  |  |  |
| 83 | 1.5.1.8.2 | 화면개발 가이드 작성 | 15d | 2008-10-13 A | 2008-10-31 A | 82SS | 100% | 2008-10-13 | 2008-10-31 | 15d | start no earlier than 2007-03-19 | SA; UI | 240h | 240h | 240 | 240 | 240 | 추가개발설계 | P02-1 1.3.1 |  | UI 화면표준, UI 화면개발 가이드 |  |
| 84 | 1.5.2 | 개발환경 구성 | 10d | 2008-10-20 A | 2008-10-31 A |  | 100% | 2008-10-20 | 2008-10-31 | 10d | start no earlier than 2008-10-20 | TA | 80h | 80h | 80 | 80 | 80 | 추가개발설계 | P02-1 1.3.1 |  |  |  |
| 85 | 1.1 | **개발환경 구성확인** | 5d | 2008-10-27 A | 2008-10-31 A |  | 100% | 2008-10-27 | 2008-10-31 | 5d |  | SA; F/W | 1000h | 1000h | 1,000 | 1,000 | 1,000 | 추가개발설계 | P02-1 1.3.1 |  |  | 한길수 |
| 86 | 1.1 | **HW/SW 솔루션 설치 및 환경 구성 확인** | 5d | 2008-10-27 A | 2008-10-31 A |  | 100% | 2008-10-27 | 2008-10-31 | 5d |  | SA; F/W | 840h | 840h | 840 | 840 | 840 | 추가개발설계 | P02-1 1.3.1 | H/W,SW구성도(개발환경)정의 및 교육자료 |  | 한길수 |
| 87 | 1.1 | HW 설치 및 환경 구성 확인 | 5d | 2008-10-27 A | 2008-10-31 A | 84SS | 100% | 2008-10-27 | 2008-10-31 | 5d | start no earlier than 2008-10-27 | SA; TA | 80h | 80h | 80 | 80 | 80 | 추가개발설계 | P02-1 1.3.1 |  |  | 한길수 |
| 88 | 1.1 | **SW 설치 및 환경 구성 확인** | 5d | 2008-10-27 A | 2008-10-31 A |  | 100% | 2008-10-27 | 2008-10-31 | 5d |  | SA; F/W; TA | 680h | 680h | 680 | 680 | 680 | 추가개발설계 | P02-1 1.3.1 |  |  | 한길수 |
| 89 | 1.1 | UI 및 UI Adaptor 환경 구성 확인 | 5d | 2008-10-27 A | 2008-10-31 A | 87SS | 100% | 2008-10-27 | 2008-10-31 | 5d | start no earlier than 2007-04-09 | SA; TA | 80h | 80h | 80 | 80 | 80 | 추가개발설계 | P02-1 1.3.1 | UI(개발환경)정의 및 교육자료 |  | 한길수 |
| 90 | 1.1 | Proframe 통합개발서버 환경 구성 확인 | 5d | 2008-10-27 A | 2008-10-31 A | 87SS | 100% | 2008-10-27 | 2008-10-31 | 5d | start no earlier than 2007-04-09 | SA; TA | 80h | 80h | 80 | 80 | 80 | 추가개발설계 | P02-1 1.3.1 | ProFrame(개발환경)정의 및 교육자료 |  | 한길수 |
| 91 | 1.1 | SPECTRUM DBIO 서버 환경 구성 확인 | 5d | 2008-10-27 A | 2008-10-31 A | 87SS | 100% | 2008-10-27 | 2008-10-31 | 5d | start no earlier than 2007-04-09 | SA; TA | 80h | 80h | 80 | 80 | 80 | 추가개발설계 | P02-1 1.3.1 | Spectrum DBIO(개발환경)정의 및 교육자료 |  | 한길수 |
| 92 | 1.1 | RULE Engine 서버 환경 구성 확인 | 5d | 2008-10-27 A | 2008-10-31 A | 87SS | 100% | 2008-10-27 | 2008-10-31 | 5d | start no earlier than 2007-04-09 | SA; TA | 80h | 80h | 80 | 80 | 80 | 추가개발설계 | P02-1 1.3.1 | Rule Engine(개발환경)정의 및 교육자료 |  | 한길수 |
| 93 | 1.1 | 레포팅 서버 환경 구성 확인 | 5d | 2008-10-27 A | 2008-10-31 A | 87SS | 100% | 2008-10-27 | 2008-10-31 | 5d | start no earlier than 2007-04-09 | SA; TA | 80h | 80h | 80 | 80 | 80 | 추가개발설계 | P02-1 1.3.1 | 레포팅서버(개발환경)정의 및 교육자료 |  | 한길수 |
| 94 | 1.1 | 프린팅 서버 환경 구성 확인 | 5d | 2008-10-27 A | 2008-10-31 A | 87SS | 100% | 2008-10-27 | 2008-10-31 | 5d | start no earlier than 2007-04-09 | SA; TA | 80h | 80h | 80 | 80 | 80 | 추가개발설계 | P02-1 1.3.1 | 프린팅서버(개발환경)정의 및 교육자료 |  | 한길수 |
| 95 | 1.1 | 메타관리서버 환경 구성 확인 | 5d | 2008-10-27 A | 2008-10-31 A | 87SS | 100% | 2008-10-27 | 2008-10-31 | 5d | start no earlier than 2007-04-09 | SA; TA | 80h | 80h | 80 | 80 | 80 | 추가개발설계 | P02-1 1.3.1 | 메타관리서버(개발환경)정의 및 교육자료 |  | 한길수 |
| 96 | 1.1 | 개발자 Development tool 설치 및 환경 구성 확인 | 5d | 2008-10-27 A | 2008-10-31 A | 87SS | 100% | 2008-10-27 | 2008-10-31 | 5d | start no earlier than 2007-04-09 | SA; TA | 80h | 80h | 80 | 80 | 80 | 추가개발설계 | P02-1 1.3.1 | 개발자 Development tool 설치가이드 및 교육자료 |  | 한길수 |
| 97 | 1.5.4 | 이관(선전환환경->개발환경)지원 | 5d | 2008-10-27 A | 2008-10-31 A | 87SS | 100% | 2008-10-27 | 2008-10-31 | 5d |  | TA; SA | 80h | 80h | 80 | 80 | 80 | 추가개발설계 | P02-1 1.3.1 |  |  |  |
| 98 | 1.5.5 | **개발 표준 교육** | 6d | 2008-11-03 A | 2008-11-10 A |  | 100% | 2008-11-03 | 2008-11-10 | 6d |  |  | 376h | 376h | 376 | 376 | 376 | 추가개발설계 | P02-1 1.3.1 |  |  |  |
| 99 | 1.5.5.1 | 개발환경 및 개발SPM 교육 | 3d | 2008-11-03 A | 2008-11-05 A | 407FF-17d | 100% | 2008-11-03 | 2008-11-05 | 3d | start no earlier than 2007-05-21 | SA; FW; 개발팀; UI | 96h | 96h | 96 | 96 | 96 | 추가개발설계 | P02-1 1.3.1 |  |  |  |
| 100 | 1.5.5.2 | 화면 개발가이드 교육 | 3d | 2008-11-03 A | 2008-11-05 A | 99SS | 100% | 2008-11-03 | 2008-11-05 | 3d | start no earlier than 2007-04-02 | SA; UI; 개발팀 | 72h | 72h | 72 | 72 | 72 | 추가개발설계 | P02-1 1.3.1 |  |  |  |
| 101 | 1.5.5.3 | 어플리케이션 개발가이드 교육 | 3d | 2008-11-03 A | 2008-11-05 A | 99SS | 100% | 2008-11-03 | 2008-11-05 | 3d | start no earlier than 2007-05-28 | SA; FW; 개발팀 | 72h | 72h | 72 | 72 | 72 | 추가개발설계 | P02-1 1.3.1 |  |  |  |
| 102 | 1.5.5.4 | 프린팅 및 레포팅 개발가이드 교육 | 3d | 2008-11-03 A | 2008-11-05 A | 99SS | 100% | 2008-11-03 | 2008-11-05 | 3d |  | SA; 개발팀 | 48h | 48h | 48 | 48 | 48 | 추가개발설계 | P02-1 1.3.1 |  |  |  |
| 103 | 1.5.5.5 | 배치개발 가이드 교육 | 1d | 2008-11-10 A | 2008-11-10 A |  | 100% | 2008-11-10 | 2008-11-10 | 1d | start no earlier than 2008-11-10 | SA; 개발팀 | 16h | 16h | 16 | 16 | 16 | 추가개발설계 | P02-1 1.3.1 |  |  |  |
| 104 | 1.5.5.6 | 대내외 연계 개발가이드 교육 | 3d | 2008-11-03 A | 2008-11-05 A | 99SS | 100% | 2008-11-03 | 2008-11-05 | 3d |  | SA; UI; Tmax | 72h | 72h | 72 | 72 | 72 | 추가개발설계 | P02-1 1.3.1 |  |  |  |

Notes:
- 84: 환경구축(설치):TA

| ID | WBS | Task | Duration | Start | Finish | Predecessors | Complete | Baseline start | Baseline finish | Baseline duration | Total slack | Free slack | Constraint | Resources | Work | Actual work | Cost | Baseline cost | Actual cost | Text20 | Text26 | Text30 |
| --- | --- | --- | --- | --- | --- | --- | --- | --- | --- | --- | --- | --- | --- | --- | --- | --- | --- | --- | --- | --- | --- | --- |
| 105 | 1.5.6 | **IDE/형상관리계획** | 10d | 2008-11-03 A | 2008-11-14 A |  | 100% | 2008-11-03 | 2008-11-14 | 10d |  |  |  | QAO | 400h | 400h | 405 | 405 | 405 | 추가개발설계 | P02-1 1.3.1 |  |
| 106 | 1.5.6.1 | 형상관리대상 Item정의 | 10d | 2008-11-03 A | 2008-11-14 A |  | 100% | 2008-11-03 | 2008-11-14 | 10d |  |  | start no earlier than 2008-11-03 | QAO | 80h | 80h | 81 | 81 | 81 | 추가개발설계 | P02-1 1.3.1 |  |
| 107 | 1.5.6.2 | Versioning규칙 | 10d | 2008-11-03 A | 2008-11-14 A |  | 100% | 2008-11-03 | 2008-11-14 | 10d |  |  | start no earlier than 2008-11-03 | QAO | 80h | 80h | 81 | 81 | 81 | 추가개발설계 | P02-1 1.3.1 |  |
| 108 | 1.5.6.3 | 형상관리정책/프로세스 정의(IDE/StarTeam연계) | 10d | 2008-11-03 A | 2008-11-14 A |  | 100% | 2008-11-03 | 2008-11-14 | 10d |  |  | start no earlier than 2008-11-03 | QAO | 80h | 80h | 81 | 81 | 81 | 추가개발설계 | P02-1 1.3.1 | 형상관리-IDE연계 프로세스 |
| 109 | 1.5.6.4 | 형상관리환경정의 | 10d | 2008-11-03 A | 2008-11-14 A |  | 100% | 2008-11-03 | 2008-11-14 | 10d |  |  | start no earlier than 2008-11-03 | QAO | 80h | 80h | 81 | 81 | 81 | 추가개발설계 | P02-1 1.3.1 |  |
| 110 | 1.5.7 | **기술아키텍처상세설계** | 15d | 2008-11-10 A | 2008-11-28 A |  | 100% | 2008-11-10 | 2008-11-28 | 15d |  |  |  |  | 120h | 120h | 120 | 120 | 120 |  |  |  |
| 111 | 1.5.7.1 | 아키텍처상세설계서작성 | 15d | 2008-11-10 A | 2008-11-28 A |  | 100% | 2008-11-10 | 2008-11-28 | 15d |  |  | finish no earlier than 2008-11-21 | SA | 120h | 120h | 120 | 120 | 120 |  |  |  |
| 112 | 1.6 | **Build/Unit Test** | 57d | 2008-12-19 | 2009-03-13 | 58 |  | 2008-12-19 | 2009-03-13 | 57d | 104d |  |  |  | 3772h |  | 3,779 | 3,779 |  | 개발 | P02-1 1.4 |  |
| 113 | 1.6.1 | **코드리뷰 지원** | 57d | 2008-12-19 | 2009-03-13 |  |  | 2008-12-19 | 2009-03-13 | 57d | 104d |  |  |  | 912h |  | 912 | 912 |  | 추가개발 프로그램코딩 | P02-1 1.4.1 |  |
| 114 | 1.6.1.1 | 코드리뷰 | 57d | 2008-12-19 | 2009-03-13 |  |  | 2008-12-19 | 2009-03-13 | 57d | 104d |  | start no earlier than 2008-12-19 | SA | 456h |  | 456 | 456 |  | 추가개발 프로그램코딩 | P02-1 1.4.1 | 인스펙션결과서 |
| 115 | 1.6.1.2 | 코드리뷰 오류사항 조치 지원 | 57d | 2008-12-19 | 2009-03-13 | 408SS |  | 2008-12-19 | 2009-03-13 | 57d | 104d |  | start no earlier than 2008-12-19 | SA | 456h |  | 456 | 456 |  | 추가개발 프로그램코딩 | P02-1 1.4.1 |  |
| 116 | 1.6.2 | **성능테스트 지원** | 38d | 2009-01-12 | 2009-03-06 |  |  | 2009-01-12 | 2009-03-06 | 38d | 109d |  |  | TA; SA | 1192h |  | 1,192 | 1,192 |  | 테스트실시 | P02-1 1.4.2 |  |
| 117 | 1.6.2.1 | 성능테스트 계획수립 | 5d | 2009-01-12 | 2009-01-16 |  |  | 2009-01-12 | 2009-01-16 | 5d | 109d | 0d | start no earlier than 2009-01-12 | TA | 40h |  | 40 | 40 |  | 테스트실시 | P02-1 1.4.2 | 성능테스트 계획서 |
| 118 | 1.6.2.2 | 성능테스트 요건대상 프로그램 조사 | 8d | 2009-01-19 | 2009-01-30 | 117 |  | 2009-01-19 | 2009-01-30 | 8d | 109d | 0d | start no earlier than 2007-12-03 | SA | 64h |  | 64 | 64 |  | 테스트실시 | P02-1 1.4.2 |  |
| 119 | 1.6.2.3 | 성능테스트 요건대상 프로그램 코드리뷰 및 모니터링 | 10d | 2009-02-02 | 2009-02-13 | 118 |  | 2009-02-02 | 2009-02-13 | 10d | 109d | 0d | start no earlier than 2007-12-03 | TA; SA | 160h |  | 160 | 160 |  | 테스트실시 | P02-1 1.4.2 |  |
| 120 | 1.6.2.4 | 성능테스트 | 10d | 2009-02-16 | 2009-02-27 | 119 |  | 2009-02-16 | 2009-02-27 | 10d | 109d | 0d | start no earlier than 2007-12-03 | TA; SA | 160h |  | 160 | 160 |  | 테스트실시 | P02-1 1.4.2 | 성능테스트결과서 |
| 121 | 1.6.2.5 | 어플리케이션 튜닝 | 5d | 2009-03-02 | 2009-03-06 | 120 |  | 2009-03-02 | 2009-03-06 | 5d | 109d |  | start no earlier than 2007-12-03 | TA [200%]; SA [200%] | 160h |  | 160 | 160 |  | 테스트실시 | P02-1 1.4.2 |  |
| 122 | 1.6.3 | **ETE테스트 환경 확인** | 15d | 2009-02-23 | 2009-03-13 |  |  | 2009-02-23 | 2009-03-13 | 15d | 104d |  |  | TA | 720h |  | 720 | 720 |  | 테스트실시 | P02-1 1.4.2 |  |
| 123 | 1.6.3.1 | 빌드 관리 지원 | 10d | 2009-03-02 | 2009-03-13 | 408FF |  | 2009-03-02 | 2009-03-13 | 10d | 104d |  | finish no earlier than 2007-10-19 | SA; F/W; TA | 240h |  | 240 | 240 |  | 테스트실시 | P02-1 1.4.2 |  |
| 124 | 1.6.3.2 | 통합테스트 환경 점검 | 15d | 2009-02-23 | 2009-03-13 | 408FF |  | 2009-02-23 | 2009-03-13 | 15d | 104d |  | finish no earlier than 2007-10-31 | SA; F/W; TA | 360h |  | 360 | 360 |  | 테스트실시 | P02-1 1.4.2 |  |
| 125 | 1.6.4 | **요구사항-개발-테스트-형상관리환경구축지원** | 40.5d | 2009-01-05 | 2009-03-04 |  |  | 2009-01-05 | 2009-03-04 | 40.5d | 111.5d |  |  |  | 868h |  | 875 | 875 |  |  |  |  |
| 126 | 1.6.4.1 | **테스트공정관리계획** | 12.5d | 2009-01-05 | 2009-01-21 |  |  | 2009-01-05 | 2009-01-21 | 12.5d | 111.5d | 0d |  | QAO | 380h |  | 384 | 384 |  | 추가개발설계 | P02-1 1.3.1 | 테스트공정관리계획서 |
| 127 | 1.6.4.1.1 | 테스트관리대상 Item정의 | 5d | 2009-01-05 | 2009-01-09 |  |  | 2009-01-05 | 2009-01-09 | 5d | 111.5d | 0d | start no earlier than 2009-01-05 | QAO | 40h |  | 41 | 41 |  | 추가개발설계 | P02-1 1.3.1 |  |
| 128 | 1.6.4.1.2 | 테스트수행/관리프로세스 정의(RM/IDE/TestDirector/StarTeam연계) | 5d | 2009-01-12 | 2009-01-16 | 127 |  | 2009-01-12 | 2009-01-16 | 5d | 111.5d | 0d |  | QAO; RM; Tmax; TestDirector; StarTeam | 200h |  | 201 | 201 |  | 추가개발설계 | P02-1 1.3.1 |  |
| 129 | 1.6.4.1.3 | 테스트자동화(QTP)활용협의 | 2.5d | 2009-01-19 | 2009-01-21 | 128 |  | 2009-01-19 | 2009-01-21 | 2.5d | 111.5d |  |  | QAO; QTP | 40h |  | 41 | 41 |  | 추가개발설계 | P02-1 1.3.1 |  |

Notes:
- 114: 코딩표준 기준 리뷰
- 115: 코딩표준 기준 리뷰
- 129: UAT목적.현업중심.현재ITO대상 중심

| ID | WBS | Task | Duration | Start | Finish | Predecessors | Baseline start | Baseline finish | Baseline duration | Total slack | Free slack | Constraint | Resources | Work | Cost | Baseline cost | Text20 | Text26 | Text30 | Text22 | Text25 | Text27 | Text28 |
| --- | --- | --- | --- | --- | --- | --- | --- | --- | --- | --- | --- | --- | --- | --- | --- | --- | --- | --- | --- | --- | --- | --- | --- |
| 130 | 1.6.4.2 | **요구사항-개발-테스트-형상관리환경구축** | 8d | 2009-01-21 | 2009-02-04 |  | 2009-01-21 | 2009-02-04 | 8d | 111.5d | 0d |  | QAO | 328h | 329 | 329 | 추가개발설계 | P02-1 1.3.1 | 요구사항-개발-테스트-형상 연계 프로세스, 환경정의서 |  |  |  |  |
| 131 | 1.6.4.2.1 | CaliberRM(Requirement Management) 환경구축 | 3d | 2009-01-21 | 2009-01-28 | 126 | 2009-01-21 | 2009-01-28 | 3d | 111.5d | 0d |  | CaliberRM; TA | 48h | 48 | 48 | 추가개발설계 | P02-1 1.3.1 |  |  |  |  |  |
| 132 | 1.6.4.2.2 | TestDirector(테스트공정관리) 환경 구축 | 3d | 2009-01-28 | 2009-02-02 | 131 | 2009-01-28 | 2009-02-02 | 3d | 113.5d |  |  | TestDirector; TA | 48h | 48 | 48 | 추가개발설계 | P02-1 1.3.1 |  |  |  |  |  |
| 133 | 1.6.4.2.3 | TestAutomation(QTP) 환경 구축 | 3d | 2009-01-21 | 2009-01-28 | 131FF | 2009-01-21 | 2009-01-28 | 3d | 111.5d | 0d |  | QTP; TA | 48h | 48 | 48 | 추가개발설계 | P02-1 1.3.1 |  |  |  |  |  |
| 134 | 1.6.4.2.4 | StarTeam(형상관리) 환경 구축 | 5d | 2009-01-28 | 2009-02-04 | 133 | 2009-01-28 | 2009-02-04 | 5d | 111.5d |  |  | StarTeam; TA; Tmax | 120h | 120 | 120 | 추가개발설계 | P02-1 1.3.1 |  |  |  |  |  |
| 135 | 1.6.4.3 | 공정관리환경검증(요구사항-개발-테스트-형상) | 10d | 2009-02-04 | 2009-02-18 | 130 | 2009-02-04 | 2009-02-18 | 10d | 111.5d | 0d |  | QAO | 80h | 81 | 81 | 추가개발설계 | P02-1 1.3.1 |  |  |  |  |  |
| 136 | 1.6.4.4 | 공정관리환경 적용 및 이슈대응 | 10d | 2009-02-18 | 2009-03-04 | 135 | 2009-02-18 | 2009-03-04 | 10d | 111.5d |  | start no earlier than 2008-11-03 | QAO | 80h | 81 | 81 | 추가개발설계 | P02-1 1.3.1 |  |  |  |  |  |
| 137 | 1.6.5 | **단계완료** | 10d | 2009-03-02 | 2009-03-13 |  | 2009-03-02 | 2009-03-13 | 10d | 104d |  |  |  | 80h | 80 | 80 | 단계완료 | P02-1 1.6.8 |  | 48648FB40F9201F8E100800046140A10 | 07060716O410080 | 00000000000001277356 | DEFAULT |
| 138 | 1.6.5.1 | 개발소스 Inspection | 5d | 2009-03-02 | 2009-03-06 |  | 2009-03-02 | 2009-03-06 | 5d | 104d | 0d | start no earlier than 2009-03-02 | SA | 40h | 40 | 40 | 단계완료 | P02-1 1.6.8 | 인스펙션결과서 | 48648FB60F9201F8E100800046140A10 | 07060716O410080 | 00000000000001277357 | DEFAULT |
| 139 | 1.6.5.2 | 고객승인 획득 | 5d | 2009-03-09 | 2009-03-13 | 138 | 2009-03-09 | 2009-03-13 | 5d | 104d |  |  | PJT | 40h | 40 | 40 | 단계완료 | P02-1 1.6.8 | 고객인수확인서(PAD) | 48648FBA0F9201F8E100800046140A10 | 07060716O410080 | 00000000000001277359 | DEFAULT |
| 140 | 1.7 | **End To End Test** | 20d | 2009-03-16 | 2009-04-10 |  | 2009-03-16 | 2009-04-10 | 20d | 44d | 0d |  |  | 240h | 240 | 240 | 개발 | P02-1 1.4 |  |  |  |  |  |
| 141 | 1.7.1 | **통합테스트 실시** | 20d | 2009-03-16 | 2009-04-10 |  | 2009-03-16 | 2009-04-10 | 20d | 44d |  |  |  | 160h | 160 | 160 | 테스트실시 | P02-1 1.4.2 |  |  |  |  |  |
| 142 | 1.7.1.1 | 통합 테스트 지원(1차) | 10d | 2009-03-16 | 2009-03-27 | 409SS | 2009-03-16 | 2009-03-27 | 10d | 44d | 0d | start no earlier than 2008-01-01 | SA.F/W | 80h | 80 | 80 | 테스트실시 | P02-1 1.4.2 |  |  |  |  |  |
| 143 | 1.7.1.2 | 통합 테스트 지원(2차) | 10d | 2009-03-30 | 2009-04-10 | 142 | 2009-03-30 | 2009-04-10 | 10d | 44d |  |  | SA.F/W | 80h | 80 | 80 |  |  |  |  |  |  |  |
| 144 | 1.7.2 | 어플리케이션 모니터링 및 튜닝 | 10d | 2009-03-30 | 2009-04-10 | 409SS | 2009-03-30 | 2009-04-10 | 10d | 44d |  | start no earlier than 2009-03-30 | TA | 80h | 80 | 80 | 테스트실시 | P02-1 1.4.2 |  |  |  |  |  |
| 145 | 1.8 | **UAT Test** | 39d | 2009-04-13 | 2009-06-08 |  | 2009-04-13 | 2009-06-08 | 39d | 44d |  |  |  | 1256h | 1,256 | 1,256 |  |  |  |  |  |  |  |
| 146 | 1.8.1 | UAT Test 실시 | 40d | 2009-04-13 | 2009-06-08 | 140 | 2009-04-13 | 2009-06-08 | 40d | 44d | 0d |  | MetLife | 320h | 320 | 320 |  |  |  |  |  |  |  |
| 147 | 1.8.2 | UAT Test 지원 | 39d | 2009-04-13 | 2009-06-05 | 146SS | 2009-04-13 | 2009-06-05 | 39d | 45d |  |  | SA; F/W | 624h | 624 | 624 |  |  |  |  |  |  |  |
| 148 | 1.8.3 | 어플리케이션 모니터링 및 튜닝 | 39d | 2009-04-13 | 2009-06-05 | 146SS | 2009-04-13 | 2009-06-05 | 39d | 45d |  |  | TA | 312h | 312 | 312 |  |  |  |  |  |  |  |
| 149 | 1.9 | **ORT** | 25d | 2009-06-08 | 2009-07-10 |  | 2009-06-08 | 2009-07-10 | 25d | 15d |  |  |  | 832h | 832 | 832 | 구현 | P02-1 1.5 |  |  |  |  |  |
| 150 | 1.9.1 | **구현계획수립** | 5d | 2009-06-08 | 2009-06-12 |  | 2009-06-08 | 2009-06-12 | 5d | 41d |  |  |  | 160h | 160 | 160 | 구현계획수립 | P02-1 1.5.1 |  |  |  |  |  |
| 151 | 1.9.1.1 | 릴리이즈및비상계획수립 | 5d | 2009-06-08 | 2009-06-12 | 411SS | 2009-06-08 | 2009-06-12 | 5d | 41d |  | start no earlier than 2009-05-25 | SA; TA | 80h | 80 | 80 | 구현계획수립 | P02-1 1.5.1 | 구현계획서 |  |  |  |  |
| 152 | 1.9.1.2 | 교육훈련계획수립 | 5d | 2009-06-08 | 2009-06-12 | 411SS | 2009-06-08 | 2009-06-12 | 5d | 41d |  | start no earlier than 2009-06-01 | SA; TA | 80h | 80 | 80 | 구현계획수립 | P02-1 1.5.1 | 교육계획서 |  |  |  |  |
| 153 | 1.9.2 | **시범운영** | 25d | 2009-06-08 | 2009-07-10 |  | 2009-06-08 | 2009-07-10 | 25d | 15d |  |  |  | 240h | 240 | 240 | 시범운영 | P02-1 1.5.4 |  | 48648F7A0F9201F8E100800046140A10 | 07060716O410184 | 00000000000001277327 | DEFAULT |
| 154 | 1.9.2.1 | 시범운영계획수립 | 5d | 2009-06-08 | 2009-06-12 | 411SS | 2009-06-08 | 2009-06-12 | 5d | 15d | 0d | start no earlier than 2009-05-25 | PJT | 40h | 40 | 40 | 시범운영 | P02-1 1.5.4 | 시범운영계획서 | 48648F7C0F9201F8E100800046140A10 | 07060716O410184 | 00000000000001277328 | DEFAULT |
| 155 | 1.9.2.2 | 시범운영실시(인수테스트병행) | 25d | 2009-06-08 | 2009-07-10 | 411SS | 2009-06-08 | 2009-07-10 | 25d | 21d |  |  | PJT | 200h | 200 | 200 | 시범운영 | P02-1 1.5.4 | 시범운영일지 | 48648F7E0F9201F8E100800046140A10 | 07060716O410184 | 00000000000001277329 | DEFAULT |

Notes:
- 139: PJT공통

| ID | WBS | Task | Type | Duration | Start | Finish | Predecessors | Baseline start | Baseline finish | Baseline duration | Total slack | Free slack | Constraint | Resources | Work | Cost | Baseline cost | Text20 | Text22 | Text25 | Text26 | Text27 | Text28 | Text30 |
| --- | --- | --- | --- | --- | --- | --- | --- | --- | --- | --- | --- | --- | --- | --- | --- | --- | --- | --- | --- | --- | --- | --- | --- | --- |
| 156 | 1.9.3 | **시스템 인수인계** |  | 25d | 2009-06-08 | 2009-07-10 |  | 2009-06-08 | 2009-07-10 | 25d | 21d |  |  |  | 240h | 240 | 240 | 시스템 인수인계 | 48648F7A0F9201F8E100800046140A10 | 07060716O410184 | P02-1 1.7.2 | 00000000000001277327 | DEFAULT |  |
| 157 | 1.9.3.1 | 인수인계계획 수립 |  | 5d | 2009-06-08 | 2009-06-12 |  | 2009-06-08 | 2009-06-12 | 5d | 21d | 0d | start no earlier than 2009-06-08 | PJT | 40h | 40 | 40 | 시스템 인수인계 | 48648F7C0F9201F8E100800046140A10 | 07060716O410184 | P02-1 1.7.2 | 00000000000001277328 | DEFAULT | 시스템인수인계계획서 |
| 158 | 1.9.3.2 | 인수인계 실시 |  | 25d | 2009-06-08 | 2009-07-10 | 157SS | 2009-06-08 | 2009-07-10 | 25d | 21d |  |  | PJT | 200h | 200 | 200 |  |  |  |  |  |  |  |
| 159 | 1.9.4 | **초기데이터 구축 및 릴리이즈** |  | 5d | 2009-07-06 | 2009-07-10 |  | 2009-07-06 | 2009-07-10 | 5d | 21d | 0d |  |  | 96h | 96 | 96 | 컨버젼 및 릴리이즈 |  |  | P02-1 1.5.2 |  |  |  |
| 160 | 1.9.4.1 | 소프트웨어 설치 |  | 5d | 2009-07-06 | 2009-07-10 | 412SS | 2009-07-06 | 2009-07-10 | 5d | 21d | 0d |  | SA; TA | 80h | 80 | 80 | 컨버젼 및 릴리이즈 |  |  | P02-1 1.5.2 |  |  |  |
| 161 | 1.9.4.2 | 시스템 릴리이즈 |  | 1d | 2009-07-10 | 2009-07-10 | 160FF | 2009-07-10 | 2009-07-10 | 1d | 21d |  |  | SA; TA | 16h | 16 | 16 | 컨버젼 및 릴리이즈 |  |  | P02-1 1.5.2 |  |  |  |
| 162 | 1.9.5 | 오픈시나리오정의 |  | 4d | 2009-07-06 | 2009-07-09 | 159SS | 2009-07-06 | 2009-07-09 | 4d | 20d | 0d |  | SA; TA; PJT | 96h | 96 | 96 | 컨버젼 및 릴리이즈 |  |  | P02-1 1.5.2 |  |  |  |
| 163 | 1.10 | **오픈환경준비** |  | 2d | 2009-07-10 | 2009-07-13 |  | 2009-07-10 | 2009-07-13 | 2d | 20d |  |  |  | 80h | 80 | 80 | 컨버젼 및 릴리이즈 |  |  | P02-1 1.5.2 |  |  |  |
| 164 | 1.10.1 | **개발 및 운영서버 동기화** |  | 2d | 2009-07-10 | 2009-07-13 | 162 | 2009-07-10 | 2009-07-13 | 2d | 20d |  |  |  | 80h | 80 | 80 | 컨버젼 및 릴리이즈 |  |  | P02-1 1.5.2 |  |  |  |
| 165 | 1.10.1.1 | WAS |  | 2d | 2009-07-10 | 2009-07-13 |  | 2009-07-10 | 2009-07-13 | 2d | 20d |  |  | SA | 16h | 16 | 16 | 컨버젼 및 릴리이즈 |  |  | P02-1 1.5.2 |  |  |  |
| 166 | 1.10.1.2 | EAI/대외계 |  | 2d | 2009-07-10 | 2009-07-13 |  | 2009-07-10 | 2009-07-13 | 2d | 20d |  |  | SA; TA | 32h | 32 | 32 | 컨버젼 및 릴리이즈 |  |  | P02-1 1.5.2 |  |  |  |
| 167 | 1.10.1.3 | SSO |  | 2d | 2009-07-10 | 2009-07-13 |  | 2009-07-10 | 2009-07-13 | 2d | 20d |  |  | SA; SSO | 32h | 32 | 32 | 컨버젼 및 릴리이즈 |  |  | P02-1 1.5.2 |  |  |  |
| 168 | 1.11 | **Go Live** |  | 0d | 2009-07-13 | 2009-07-13 |  | 2009-07-13 | 2009-07-13 | 0d | 21d |  |  |  |  |  |  | 컨버젼 및 릴리이즈 |  |  | P02-1 1.5.2 |  |  |  |
| 169 | 1.11.1 | **오픈환경확인** |  | 0d | 2009-07-13 | 2009-07-13 |  | 2009-07-13 | 2009-07-13 | 0d | 21d |  |  |  |  |  |  | 컨버젼 및 릴리이즈 |  |  | P02-1 1.5.2 |  |  |  |
| 170 | 1.11.1.1 | **WAS** |  | 0d | 2009-07-13 | 2009-07-13 |  | 2009-07-13 | 2009-07-13 | 0d | 21d |  |  |  |  |  |  | 컨버젼 및 릴리이즈 |  |  | P02-1 1.5.2 |  |  |  |
| 171 | 1.11.1.1.1 | Web Contents 확인(HTML,JS,CSS,Image) | milestone | 0d | 2009-07-13 | 2009-07-13 | 413SS | 2009-07-13 | 2009-07-13 | 0d | 21d |  |  | SA |  |  |  | 컨버젼 및 릴리이즈 |  |  | P02-1 1.5.2 |  |  |  |
| 172 | 1.11.1.1.2 | Configuration 확인 | milestone | 0d | 2009-07-13 | 2009-07-13 | 413SS | 2009-07-13 | 2009-07-13 | 0d | 21d |  |  | SA |  |  |  | 컨버젼 및 릴리이즈 |  |  | P02-1 1.5.2 |  |  |  |
| 173 | 1.11.1.1.3 | Session 기능 확인 | milestone | 0d | 2009-07-13 | 2009-07-13 | 413SS | 2009-07-13 | 2009-07-13 | 0d | 21d |  |  | SA |  |  |  | 컨버젼 및 릴리이즈 |  |  | P02-1 1.5.2 |  |  |  |
| 174 | 1.11.1.1.4 | Daemon 확인 | milestone | 0d | 2009-07-13 | 2009-07-13 | 413SS | 2009-07-13 | 2009-07-13 | 0d | 21d |  |  | SA |  |  |  | 컨버젼 및 릴리이즈 |  |  | P02-1 1.5.2 |  |  |  |
| 175 | 1.11.1.1.5 | DB Connection 확인 | milestone | 0d | 2009-07-13 | 2009-07-13 | 413SS | 2009-07-13 | 2009-07-13 | 0d | 21d |  |  | SA |  |  |  | 컨버젼 및 릴리이즈 |  |  | P02-1 1.5.2 |  |  |  |
| 176 | 1.11.1.2 | **EAI/대외계** |  | 0d | 2009-07-13 | 2009-07-13 |  | 2009-07-13 | 2009-07-13 | 0d | 21d |  |  |  |  |  |  | 컨버젼 및 릴리이즈 |  |  | P02-1 1.5.2 |  |  |  |
| 177 | 1.11.1.2.1 | 내부연계테스트 | milestone | 0d | 2009-07-13 | 2009-07-13 | 413SS | 2009-07-13 | 2009-07-13 | 0d | 21d |  |  | SA; TA |  |  |  | 컨버젼 및 릴리이즈 |  |  | P02-1 1.5.2 |  |  |  |
| 178 | 1.11.1.2.2 | 기관라인 확인 | milestone | 0d | 2009-07-13 | 2009-07-13 | 413SS | 2009-07-13 | 2009-07-13 | 0d | 21d |  |  | SA; TA |  |  |  | 컨버젼 및 릴리이즈 |  |  | P02-1 1.5.2 |  |  |  |
| 179 | 1.11.1.3 | **SSO** |  | 0d | 2009-07-13 | 2009-07-13 |  | 2009-07-13 | 2009-07-13 | 0d | 21d |  |  |  |  |  |  | 컨버젼 및 릴리이즈 |  |  | P02-1 1.5.2 |  |  |  |
| 180 | 1.11.1.3.1 | 로그인 접속 테스트 | milestone | 0d | 2009-07-13 | 2009-07-13 | 413SS | 2009-07-13 | 2009-07-13 | 0d | 21d |  |  | SA; TA |  |  |  | 컨버젼 및 릴리이즈 |  |  | P02-1 1.5.2 |  |  |  |
| 181 | 1.11.1.4 | 화면 및 메뉴 확인 | milestone | 0d | 2009-07-13 | 2009-07-13 |  | 2009-07-13 | 2009-07-13 | 0d | 21d |  | start no earlier than 2009-07-13 | PJT |  |  |  | 컨버젼 및 릴리이즈 |  |  | P02-1 1.5.2 |  |  |  |

| ID | WBS | Task | Duration | Start | Finish | Predecessors | Complete | Remaining | Baseline start | Baseline finish | Baseline duration | Total slack | Constraint | Resources | Work | Actual work | Cost | Baseline cost | Actual cost | Text20 | Text26 |
| --- | --- | --- | --- | --- | --- | --- | --- | --- | --- | --- | --- | --- | --- | --- | --- | --- | --- | --- | --- | --- | --- |
| 182 | 2 | **14.인프라_Framework** | 247d | 2008-07-28 A | 2009-07-20 |  | 33% | 165.66d | 2008-07-28 | 2009-07-20 | 247d | 15d |  |  | 8280h | 3132.16h | 8,280 | 8,280 | 3,132.16 |  |  |
| 183 | 2.1 | **Analyze** | 43d | 2008-07-28 A | 2008-09-26 A |  | 100% |  | 2008-07-28 | 2008-09-26 | 43d |  |  |  | 760h | 760h | 760 | 760 | 760 | 분석 | P02-1 1.2 |
| 184 | 2.1.1 | **Framework 요건분석** | 43d | 2008-07-28 A | 2008-09-26 A |  | 100% |  | 2008-07-28 | 2008-09-26 | 43d |  |  |  | 760h | 760h | 760 | 760 | 760 | 기술구조정의 | P02-1 1.2.5 |
| 185 | 2.1.1.1 | **POC** | 29d | 2008-07-28 A | 2008-09-05 A |  | 100% |  | 2008-07-28 | 2008-09-05 | 29d |  |  |  | 424h | 424h | 424 | 424 | 424 | 기술구조정의 | P02-1 1.2.5 |
| 186 | 2.1.1.1.1 | NCRM 분석 | 10d | 2008-07-28 A | 2008-08-08 A |  | 100% |  | 2008-07-28 | 2008-08-08 | 10d |  | start no earlier than 2008-07-28 | Tmax | 80h | 80h | 80 | 80 | 80 | 기술구조정의 | P02-1 1.2.5 |
| 187 | 2.1.1.1.2 | DB I/O 분석 | 4d | 2008-08-11 A | 2008-08-14 A | 186 | 100% |  | 2008-08-11 | 2008-08-14 | 4d |  |  | Tmax | 32h | 32h | 32 | 32 | 32 | 기술구조정의 | P02-1 1.2.5 |
| 188 | 2.1.1.1.3 | innoRules 분석 | 2d | 2008-08-18 A | 2008-08-19 A | 187 | 100% |  | 2008-08-18 | 2008-08-19 | 2d |  |  | Tmax | 16h | 16h | 16 | 16 | 16 | 기술구조정의 | P02-1 1.2.5 |
| 189 | 2.1.1.1.4 | NCRM 연계 정의 | 12d | 2008-08-20 A | 2008-09-04 A | 188 | 100% |  | 2008-08-20 | 2008-09-04 | 12d |  |  | Tmax | 96h | 96h | 96 | 96 | 96 | 기술구조정의 | P02-1 1.2.5 |
| 190 | 2.1.1.1.5 | DB I/O 연계 정의 | 12d | 2008-08-20 A | 2008-09-04 A | 189SS | 100% |  | 2008-08-20 | 2008-09-04 | 12d |  |  | Tmax | 96h | 96h | 96 | 96 | 96 | 기술구조정의 | P02-1 1.2.5 |
| 191 | 2.1.1.1.6 | innoRules 연계 정의 | 12d | 2008-08-20 A | 2008-09-04 A | 189SS | 100% |  | 2008-08-20 | 2008-09-04 | 12d |  |  | Tmax | 96h | 96h | 96 | 96 | 96 | 기술구조정의 | P02-1 1.2.5 |
| 192 | 2.1.1.1.7 | POC 정리 | 1d | 2008-09-05 A | 2008-09-05 A | 191 | 100% |  | 2008-09-05 | 2008-09-05 | 1d |  |  | Tmax | 8h | 8h | 8 | 8 | 8 | 기술구조정의 | P02-1 1.2.5 |
| 193 | 2.1.1.2 | **요구사항정의** | 7d | 2008-07-28 A | 2008-08-05 A |  | 100% |  | 2008-07-28 | 2008-08-05 | 7d |  |  | Tmax | 112h | 112h | 112 | 112 | 112 | 현황평가 | P02-1 1.2.2 |
| 194 | 2.1.1.2.1 | Framework 업무범위 정의 | 5d | 2008-07-28 A | 2008-08-01 A |  | 100% |  | 2008-07-28 | 2008-08-01 | 5d |  | start no earlier than 2008-07-28 | Tmax | 40h | 40h | 40 | 40 | 40 | 현황평가 | P02-1 1.2.2 |
| 195 | 2.1.1.2.2 | 시스템 분석 | 2d | 2008-08-04 A | 2008-08-05 A | 194 | 100% |  | 2008-08-04 | 2008-08-05 | 2d |  |  | Tmax | 16h | 16h | 16 | 16 | 16 | 현황평가 | P02-1 1.2.2 |
| 196 | 2.1.1.3 | **Fit/Gap 분석** | 7d | 2008-09-08 A | 2008-09-17 A |  | 100% |  | 2008-09-08 | 2008-09-17 | 7d |  |  | Tmax | 112h | 112h | 112 | 112 | 112 | 매핑 | P02-1 1.2.4 |
| 197 | 2.1.1.3.1 | Framework 아키텍쳐 구축방향 분석 | 3d | 2008-09-08 A | 2008-09-10 A | 192 | 100% |  | 2008-09-08 | 2008-09-10 | 3d |  |  | Tmax | 24h | 24h | 24 | 24 | 24 | 매핑 | P02-1 1.2.4 |
| 198 | 2.1.1.3.2 | 요구사항과 현 Framework과의 Gap 도출 | 2d | 2008-09-11 A | 2008-09-12 A | 197 | 100% |  | 2008-09-11 | 2008-09-12 | 2d |  |  | Tmax | 16h | 16h | 16 | 16 | 16 | 매핑 | P02-1 1.2.4 |
| 199 | 2.1.1.3.3 | Gap을 줄이기 위한 방안 마련 | 2d | 2008-09-16 A | 2008-09-17 A | 198 | 100% |  | 2008-09-16 | 2008-09-17 | 2d |  |  | Tmax | 16h | 16h | 16 | 16 | 16 | 매핑 | P02-1 1.2.4 |
| 200 | 2.1.1.4 | **표준정의** | 3d | 2008-09-18 A | 2008-09-22 A |  | 100% |  | 2008-09-18 | 2008-09-22 | 3d |  |  | Tmax | 48h | 48h | 48 | 48 | 48 | 기술구조정의 | P02-1 1.2.5 |
| 201 | 2.1.1.4.1 | ProFrame과 관련된 코드 정의 | 1d | 2008-09-18 A | 2008-09-18 A | 199 | 100% |  | 2008-09-18 | 2008-09-18 | 1d |  |  | Tmax | 8h | 8h | 8 | 8 | 8 | 기술구조정의 | P02-1 1.2.5 |
| 202 | 2.1.1.4.2 | ProFrame과 관련된 Naming 대상 정의 | 1d | 2008-09-19 A | 2008-09-19 A | 201 | 100% |  | 2008-09-19 | 2008-09-19 | 1d |  |  | Tmax | 8h | 8h | 8 | 8 | 8 | 기술구조정의 | P02-1 1.2.5 |
| 203 | 2.1.1.4.3 | ProFrame과 관련된 Naming Rule 정의 | 1d | 2008-09-22 A | 2008-09-22 A | 202 | 100% |  | 2008-09-22 | 2008-09-22 | 1d |  |  | Tmax | 8h | 8h | 8 | 8 | 8 | 기술구조정의 | P02-1 1.2.5 |
| 204 | 2.1.1.5 | **프레임웍 구성요소 정의** | 4d | 2008-09-23 A | 2008-09-26 A |  | 100% |  | 2008-09-23 | 2008-09-26 | 4d |  |  | Tmax | 64h | 64h | 64 | 64 | 64 | 기술구조정의 | P02-1 1.2.5 |
| 205 | 2.1.1.5.1 | 프로젝트에 포함된 구성요소 정의 | 2d | 2008-09-23 A | 2008-09-24 A | 203 | 100% |  | 2008-09-23 | 2008-09-24 | 2d |  |  | Tmax | 16h | 16h | 16 | 16 | 16 | 기술구조정의 | P02-1 1.2.5 |
| 206 | 2.1.1.5.2 | 프레임워크 연동범위 정의 | 2d | 2008-09-25 A | 2008-09-26 A | 205 | 100% |  | 2008-09-25 | 2008-09-26 | 2d |  |  | Tmax | 16h | 16h | 16 | 16 | 16 | 기술구조정의 | P02-1 1.2.5 |

| ID | WBS | Task | Duration | Start | Finish | Predecessors | Complete | Baseline start | Baseline finish | Baseline duration | Resources | Work | Actual work | Cost | Baseline cost | Actual cost | Text20 | Text26 |
| --- | --- | --- | --- | --- | --- | --- | --- | --- | --- | --- | --- | --- | --- | --- | --- | --- | --- | --- |
| 207 | 2.2 | **Design** | 44d | 2008-09-29 A | 2008-11-28 A |  | 100% | 2008-09-29 | 2008-11-28 | 44d | Tmax | 1736h | 1736h | 1,736 | 1,736 | 1,736 | 설계 | P02-1 1.3 |
| 208 | 2.2.1 | **어플리케이션 및 배치 개발 표준 수립** | 23d | 2008-09-29 A | 2008-10-30 A |  | 100% | 2008-09-29 | 2008-10-30 | 23d | Tmax | 496h | 496h | 496 | 496 | 496 | 추가개발설계 | P02-1 1.3.1 |
| 209 | 2.2.1.1 | 개발 표준 명명규칙 정의 | 11d | 2008-09-29 A | 2008-10-14 A | 206 | 100% | 2008-09-29 | 2008-10-14 | 11d | Tmax | 88h | 88h | 88 | 88 | 88 | 추가개발설계 | P02-1 1.3.1 |
| 210 | 2.2.1.2 | **어플리케이션 개발 표준 작성** | 8d | 2008-10-15 A | 2008-10-24 A |  | 100% | 2008-10-15 | 2008-10-24 | 8d | Tmax | 192h | 192h | 192 | 192 | 192 | 추가개발설계 | P02-1 1.3.1 |
| 211 | 2.2.1.2.1 | **Framework 개발표준** | 3d | 2008-10-15 A | 2008-10-17 A |  | 100% | 2008-10-15 | 2008-10-17 | 3d | Tmax | 48h | 48h | 48 | 48 | 48 | 추가개발설계 | P02-1 1.3.1 |
| 212 | 2.2.1.2.1.1 | 프로프레임 범위의 아키텍처 표준 | 3d | 2008-10-15 A | 2008-10-17 A | 209 | 100% | 2008-10-15 | 2008-10-17 | 3d | Tmax | 24h | 24h | 24 | 24 | 24 | 추가개발설계 | P02-1 1.3.1 |
| 213 | 2.2.1.2.2 | **Framework 연동업무 아키텍처 표준** | 5d | 2008-10-20 A | 2008-10-24 A |  | 100% | 2008-10-20 | 2008-10-24 | 5d | Tmax | 80h | 80h | 80 | 80 | 80 | 추가개발설계 | P02-1 1.3.1 |
| 214 | 2.2.1.2.2.1 | NCRM 연동 아키텍처 설계 및 검증 | 2d | 2008-10-20 A | 2008-10-21 A | 212 | 100% | 2008-10-20 | 2008-10-21 | 2d | Tmax | 16h | 16h | 16 | 16 | 16 | 추가개발설계 | P02-1 1.3.1 |
| 215 | 2.2.1.2.2.2 | 배치 아키텍처 설계 및 검증 | 3d | 2008-10-22 A | 2008-10-24 A | 214 | 100% | 2008-10-22 | 2008-10-24 | 3d | Tmax | 24h | 24h | 24 | 24 | 24 | 추가개발설계 | P02-1 1.3.1 |
| 216 | 2.2.1.3 | Spectrum-DBIO 연동 아키텍처 설계 및 검증 | 2d | 2008-10-27 A | 2008-10-28 A | 215 | 100% | 2008-10-27 | 2008-10-28 | 2d | Tmax | 16h | 16h | 16 | 16 | 16 | 추가개발설계 | P02-1 1.3.1 |
| 217 | 2.2.1.4 | ProFrame-EAI 연계 아키텍처 설계 및 검증 | 2d | 2008-10-29 A | 2008-10-30 A | 216 | 100% | 2008-10-29 | 2008-10-30 | 2d | Tmax | 16h | 16h | 16 | 16 | 16 | 추가개발설계 | P02-1 1.3.1 |
| 218 | 2.2.2 | **Framework 개발자 가이드 및 템플릿 개발** | 5d | 2008-10-27 A | 2008-10-31 A |  | 100% | 2008-10-27 | 2008-10-31 | 5d | Tmax | 568h | 568h | 568 | 568 | 568 | 추가개발설계 | P02-1 1.3.1 |
| 219 | 2.2.2.1 | **ProFrame Studio 설치 가이드 작성** | 5d | 2008-10-27 A | 2008-10-31 A |  | 100% | 2008-10-27 | 2008-10-31 | 5d | Tmax | 80h | 80h | 80 | 80 | 80 | 추가개발설계 | P02-1 1.3.1 |
| 220 | 2.2.2.1.1 | 사용 매뉴얼 및 Update 가이드 보완 | 5d | 2008-10-27 A | 2008-10-31 A |  | 100% | 2008-10-27 | 2008-10-31 | 5d | Tmax | 40h | 40h | 40 | 40 | 40 | 추가개발설계 | P02-1 1.3.1 |
| 221 | 2.2.2.2 | **어플리케이션 개발 가이드 작성** | 5d | 2008-10-27 A | 2008-10-31 A |  | 100% | 2008-10-27 | 2008-10-31 | 5d | Tmax | 120h | 120h | 120 | 120 | 120 | 추가개발설계 | P02-1 1.3.1 |
| 222 | 2.2.2.2.1 | 예외 처리 및 메시지처리 가이드 작성 | 5d | 2008-10-27 A | 2008-10-31 A | 220SS | 100% | 2008-10-27 | 2008-10-31 | 5d | Tmax | 40h | 40h | 40 | 40 | 40 | 추가개발설계 | P02-1 1.3.1 |
| 223 | 2.2.2.2.2 | 유형별 가이드 보완 | 5d | 2008-10-27 A | 2008-10-31 A | 220SS | 100% | 2008-10-27 | 2008-10-31 | 5d | Tmax | 40h | 40h | 40 | 40 | 40 | 추가개발설계 | P02-1 1.3.1 |
| 224 | 2.2.2.3 | **배치 개발가이드 작성** | 5d | 2008-10-27 A | 2008-10-31 A | 220SS | 100% | 2008-10-27 | 2008-10-31 | 5d | Tmax | 120h | 120h | 120 | 120 | 120 | 추가개발설계 | P02-1 1.3.1 |
| 225 | 2.2.2.3.1 | 예외 처리 및 메시지처리 가이드 작성 | 5d | 2008-10-27 A | 2008-10-31 A | 220SS | 100% | 2008-10-27 | 2008-10-31 | 5d | Tmax | 40h | 40h | 40 | 40 | 40 | 추가개발설계 | P02-1 1.3.1 |
| 226 | 2.2.2.3.2 | 유형별 가이드 보완 | 5d | 2008-10-27 A | 2008-10-31 A | 220SS | 100% | 2008-10-27 | 2008-10-31 | 5d | Tmax | 40h | 40h | 40 | 40 | 40 | 추가개발설계 | P02-1 1.3.1 |
| 227 | 2.2.2.4 | **거래 유형별 템플릿 작성** | 5d | 2008-10-27 A | 2008-10-31 A | 220SS | 100% | 2008-10-27 | 2008-10-31 | 5d | Tmax | 200h | 200h | 200 | 200 | 200 | 추가개발설계 | P02-1 1.3.1 |
| 228 | 2.2.2.4.1 | UI 연동 검증 및 템플릿 작성 | 5d | 2008-10-27 A | 2008-10-31 A | 220SS | 100% | 2008-10-27 | 2008-10-31 | 5d | Tmax | 40h | 40h | 40 | 40 | 40 | 추가개발설계 | P02-1 1.3.1 |
| 229 | 2.2.2.4.2 | DBIO 연동 검증 및 템플릿 작성 | 5d | 2008-10-27 A | 2008-10-31 A | 220SS | 100% | 2008-10-27 | 2008-10-31 | 5d | Tmax | 40h | 40h | 40 | 40 | 40 | 추가개발설계 | P02-1 1.3.1 |
| 230 | 2.2.2.4.3 | Rule 연동 검증 및 템플릿 작성 | 5d | 2008-10-27 A | 2008-10-31 A | 220SS | 100% | 2008-10-27 | 2008-10-31 | 5d | Tmax | 40h | 40h | 40 | 40 | 40 | 추가개발설계 | P02-1 1.3.1 |
| 231 | 2.2.2.4.4 | 대내 연동 검증 및 템플릿 작성 | 5d | 2008-10-27 A | 2008-10-31 A | 220SS | 100% | 2008-10-27 | 2008-10-31 | 5d | Tmax | 40h | 40h | 40 | 40 | 40 | 추가개발설계 | P02-1 1.3.1 |
| 232 | 2.2.2.5 | 배치 유형별 템플릿 작성 | 5d | 2008-10-27 A | 2008-10-31 A | 220SS | 100% | 2008-10-27 | 2008-10-31 | 5d | Tmax | 40h | 40h | 40 | 40 | 40 | 추가개발설계 | P02-1 1.3.1 |

| ID | WBS | Task | Duration | Start | Finish | Predecessors | Complete | Remaining | Baseline start | Baseline finish | Baseline duration | Total slack | Free slack | Constraint | Resources | Work | Actual work | Cost | Baseline cost | Actual cost | Text20 | Text26 | Text30 |
| --- | --- | --- | --- | --- | --- | --- | --- | --- | --- | --- | --- | --- | --- | --- | --- | --- | --- | --- | --- | --- | --- | --- | --- |
| 233 | 2.2.3 | **개발자 Framework 교육** | 3d | 2008-11-03 A | 2008-11-05 A |  | 100% |  | 2008-11-03 | 2008-11-05 | 3d |  |  |  | Tmax | 48h | 48h | 48 | 48 | 48 | 추가개발설계 | P02-1 1.3.1 |  |
| 234 | 2.2.3.1 | 개발자 Framework 교육 | 3d | 2008-11-03 A | 2008-11-05 A | 232 | 100% |  | 2008-11-03 | 2008-11-05 | 3d |  |  |  | Tmax | 24h | 24h | 24 | 24 | 24 | 추가개발설계 | P02-1 1.3.1 |  |
| 235 | 2.2.4 | **교육 후 지원** | 17d | 2008-11-06 A | 2008-11-28 A |  | 100% |  | 2008-11-06 | 2008-11-28 | 17d |  |  |  |  | 272h | 272h | 272 | 272 | 272 |  |  |  |
| 236 | 2.2.4.1 | 개발환경설정 및 개발지원 | 17d | 2008-11-06 A | 2008-11-28 A | 233 | 100% |  | 2008-11-06 | 2008-11-28 | 17d |  |  |  | Tmax | 136h | 136h | 136 | 136 | 136 |  |  |  |
| 237 | 2.2.4.2 | 교육자료작성지원 | 17d | 2008-11-06 A | 2008-11-28 A | 233 | 100% |  | 2008-11-06 | 2008-11-28 | 17d |  |  |  | Tmax | 136h | 136h | 136 | 136 | 136 |  |  |  |
| 238 | 2.3 | **Build/Unit Test** | 71d | 2008-12-01 A | 2009-03-13 |  | 14% | 61.06d | 2008-12-01 | 2009-03-13 | 71d | 15d | 0d |  | Tmax | 4544h | 636.16h | 4,544 | 4,544 | 636.16 | 개발 | P02-1 1.4 |  |
| 239 | 2.3.1 | Online개발 기술지원 | 71d | 2008-12-01 A | 2009-03-13 | 234 | 14% | 61.06d | 2008-12-01 | 2009-03-13 | 71d | 15d |  | start no earlier than 2008-12-01 | Tmax | 568h | 79.52h | 568 | 568 | 79.52 | 추가개발 프로그램코딩 | P02-1 1.4.1 |  |
| 240 | 2.3.2 | 배치개발 기술지원 | 71d | 2008-12-01 A | 2009-03-13 | 234 | 14% | 61.06d | 2008-12-01 | 2009-03-13 | 71d | 15d |  | start no earlier than 2008-12-01 | Tmax | 568h | 79.52h | 568 | 568 | 79.52 |  |  |  |
| 241 | 2.3.3 | 연계 기술지원(NCRM-ProFrame) | 71d | 2008-12-01 A | 2009-03-13 | 234 | 14% | 61.06d | 2008-12-01 | 2009-03-13 | 71d | 15d |  | start no earlier than 2008-12-01 | Tmax | 568h | 79.52h | 568 | 568 | 79.52 | 추가개발 프로그램코딩 | P02-1 1.4.1 |  |
| 242 | 2.3.4 | 연계 기술지원(Spectrum-ProFrame) | 71d | 2008-12-01 A | 2009-03-13 | 234 | 14% | 61.06d | 2008-12-01 | 2009-03-13 | 71d | 15d |  | start no earlier than 2008-12-01 | Tmax | 568h | 79.52h | 568 | 568 | 79.52 |  |  |  |
| 243 | 2.3.5 | 연계 기술지원(Rule-ProFrame) | 71d | 2008-12-01 A | 2009-03-13 | 234 | 14% | 61.06d | 2008-12-01 | 2009-03-13 | 71d | 15d |  | start no earlier than 2008-12-01 | Tmax | 568h | 79.52h | 568 | 568 | 79.52 |  |  |  |
| 244 | 2.3.6 | 연계 기술지원(EAI-ProFrame) | 71d | 2008-12-01 A | 2009-03-13 | 234 | 14% | 61.06d | 2008-12-01 | 2009-03-13 | 71d | 15d |  | start no earlier than 2008-12-01 | Tmax | 568h | 79.52h | 568 | 568 | 79.52 |  |  |  |
| 245 | 2.3.7 | 빌드/배포환경 기술지원 | 71d | 2008-12-01 A | 2009-03-13 | 234 | 14% | 61.06d | 2008-12-01 | 2009-03-13 | 71d | 15d |  | start no earlier than 2008-12-01 | Tmax | 568h | 79.52h | 568 | 568 | 79.52 |  |  |  |
| 246 | 2.4 | **End To End Test** | 20d | 2009-03-16 | 2009-04-10 |  |  |  | 2009-03-16 | 2009-04-10 | 20d | 15d | 0d |  | Tmax | 320h |  | 320 | 320 |  | 테스트실시 | P02-1 1.4.2 |  |
| 247 | 2.4.1 | ETE테스트 지원 | 20d | 2009-03-16 | 2009-04-10 | 238 |  |  | 2009-03-16 | 2009-04-10 | 20d | 15d |  |  | Tmax | 160h |  | 160 | 160 |  | 테스트실시 | P02-1 1.4.2 |  |
| 248 | 2.5 | **UAT Test** | 38d | 2009-04-13 | 2009-06-05 |  |  |  | 2009-04-13 | 2009-06-05 | 38d | 15d | 0d |  | Tmax | 472h |  | 472 | 472 |  | 테스트실시 | P02-1 1.4.2 |  |
| 249 | 2.5.1 | UAT테스트 지원 | 38d | 2009-04-13 | 2009-06-05 | 246 |  |  | 2009-04-13 | 2009-06-05 | 38d | 15d |  |  | Tmax | 160h |  | 160 | 160 |  | 테스트실시 | P02-1 1.4.2 |  |
| 250 | 2.6 | **ORT** | 25d | 2009-06-08 | 2009-07-10 |  |  |  | 2009-06-08 | 2009-07-10 | 25d | 15d | 0d |  | Tmax | 400h |  | 400 | 400 |  | 구현 | P02-1 1.5 |  |
| 251 | 2.6.1 | 시범운영 지원 | 25d | 2009-06-08 | 2009-07-10 | 248 |  |  | 2009-06-08 | 2009-07-10 | 25d | 15d |  |  | Tmax | 200h |  | 200 | 200 |  | 시범운영 | P02-1 1.5.4 |  |
| 252 | 2.7 | Framework 기술지원 | 6d | 2009-07-13 | 2009-07-20 | 250 |  |  | 2009-07-13 | 2009-07-20 | 6d | 15d |  |  | Tmax | 48h |  | 48 | 48 |  | 구현 | P02-1 1.5 |  |
| 253 | 3 | **15.인프라_UI** | 261d? | 2008-07-21 A | 2009-07-31 |  | 38% | 160.92d? | 2008-07-21 | 2009-07-31 | 261d? | 6d |  |  |  | 7526.56h | 3856.01h | 7,526.56 | 7,526.56 | 3,856.01 |  |  |  |
| 254 | 3.1 | **Analyze** | 29d | 2008-07-28 A | 2008-09-05 A |  | 100% |  | 2008-07-28 | 2008-09-05 | 29d |  |  |  |  | 544h | 544h | 544 | 544 | 544 | 분석 | P02-1 1.2 |  |
| 255 | 3.1.1 | **UI 아키텍처 요건분석** | 5d | 2008-07-28 A | 2008-08-01 A |  | 100% |  | 2008-07-28 | 2008-08-01 | 5d |  |  |  |  | 40h | 40h | 40 | 40 | 40 | 패키지 요구사항정의 | P02-1 1.2.3 |  |
| 256 | 3.1.1.1 | 요구사항정의 | 2d | 2008-07-28 A | 2008-07-29 A |  | 100% |  | 2008-07-28 | 2008-07-29 | 2d |  |  | start no earlier than 2008-07-28 | NCRM | 16h | 16h | 16 | 16 | 16 | 패키지 요구사항정의 | P02-1 1.2.3 | 요구사항정의서 |
| 257 | 3.1.1.2 | Control Fit/Gap 분석 | 3d | 2008-07-30 A | 2008-08-01 A | 256 | 100% |  | 2008-07-30 | 2008-08-01 | 3d |  |  |  | NCRM | 24h | 24h | 24 | 24 | 24 | 패키지 요구사항정의 | P02-1 1.2.3 |  |

| ID | WBS | Task | Duration | Start | Finish | Predecessors | Complete | Remaining | Baseline start | Baseline finish | Baseline duration | Total slack | Free slack | Constraint | Resources | Work | Actual work | Cost | Baseline cost | Actual cost | Text20 | Text26 |
| --- | --- | --- | --- | --- | --- | --- | --- | --- | --- | --- | --- | --- | --- | --- | --- | --- | --- | --- | --- | --- | --- | --- |
| 258 | 3.1.2 | **POC** | 29d | 2008-07-28 A | 2008-09-05 A |  | 100% |  | 2008-07-28 | 2008-09-05 | 29d |  |  |  | NCRM | 504h | 504h | 504 | 504 | 504 | 기술구조정의 | P02-1 1.2.5 |
| 259 | 3.1.2.1 | POC 환경 구축 및 검증 | 10d | 2008-07-28 A | 2008-08-08 A | 256SS | 100% |  | 2008-07-28 | 2008-08-08 | 10d |  |  |  | NCRM | 80h | 80h | 80 | 80 | 80 | 기술구조정의 | P02-1 1.2.5 |
| 260 | 3.1.2.2 | POC 패턴별 화면 템플리트 작성 | 5d | 2008-07-28 A | 2008-08-01 A | 259SS | 100% |  | 2008-07-28 | 2008-08-01 | 5d |  |  |  | NCRM | 40h | 40h | 40 | 40 | 40 | 기술구조정의 | P02-1 1.2.5 |
| 261 | 3.1.2.3 | POC 화면 개발 | 14d | 2008-08-11 A | 2008-08-29 A | 259 | 100% |  | 2008-08-11 | 2008-08-29 | 14d |  |  |  | NCRM | 112h | 112h | 112 | 112 | 112 | 기술구조정의 | P02-1 1.2.5 |
| 262 | 3.1.2.4 | POC 수행 및 결과정리 | 5d | 2008-09-01 A | 2008-09-05 A | 261 | 100% |  | 2008-09-01 | 2008-09-05 | 5d |  |  |  | NCRM | 40h | 40h | 40 | 40 | 40 | 기술구조정의 | P02-1 1.2.5 |
| 263 | 3.2 | **Design** | 88.91d | 2008-07-21 A | 2008-11-25 A |  | 100% |  | 2008-07-21 | 2008-11-25 | 88.91d |  |  |  | NCRM | 2462.56h | 2462.56h | 2,462.56 | 2,462.56 | 2,462.56 | 설계 | P02-1 1.3 |
| 264 | 3.2.1 | **UI 디자인** | 85d | 2008-07-21 A | 2008-11-19 A |  | 100% |  | 2008-07-21 | 2008-11-19 | 85d |  |  |  | NCRM | 912h | 912h | 912 | 912 | 912 | 추가개발설계 | P02-1 1.3.1 |
| 265 | 3.2.1.1 | UI 디자인 설계 | 3d | 2008-07-21 A | 2008-07-23 A |  | 100% |  | 2008-07-21 | 2008-07-23 | 3d |  |  |  | NCRM | 24h | 24h | 24 | 24 | 24 | 추가개발설계 | P02-1 1.3.1 |
| 266 | 3.2.1.2 | UI 디자인 요구사항 작성 | 2d | 2008-07-24 A | 2008-07-25 A | 265 | 100% |  | 2008-07-24 | 2008-07-25 | 2d |  |  |  | NCRM | 16h | 16h | 16 | 16 | 16 | 추가개발설계 | P02-1 1.3.1 |
| 267 | 3.2.1.3 | UI 디자인 시안 작성 | 3d | 2008-07-28 A | 2008-07-30 A | 266 | 100% |  | 2008-07-28 | 2008-07-30 | 3d |  |  |  | NCRM | 24h | 24h | 24 | 24 | 24 | 추가개발설계 | P02-1 1.3.1 |
| 268 | 3.2.1.4 | UI 화면레이아웃 작성 | 5d | 2008-07-31 A | 2008-08-06 A | 267 | 100% |  | 2008-07-31 | 2008-08-06 | 5d |  |  |  | NCRM | 40h | 40h | 40 | 40 | 40 | 추가개발설계 | P02-1 1.3.1 |
| 269 | 3.2.1.5 | UI 디자인 작업(1차) | 3d | 2008-08-07 A | 2008-08-11 A | 268 | 100% |  | 2008-08-07 | 2008-08-11 | 3d |  |  |  | NCRM | 24h | 24h | 24 | 24 | 24 | 추가개발설계 | P02-1 1.3.1 |
| 270 | 3.2.1.6 | UI 디자인 작업 지원(2차) | 10d | 2008-11-03 A | 2008-11-14 A |  | 100% |  | 2008-11-03 | 2008-11-14 | 10d |  |  | start no earlier than 2008-11-03 | NCRM | 80h | 80h | 80 | 80 | 80 | 추가개발 프로그램코딩 | P02-1 1.4.1 |
| 271 | 3.2.1.7 | UI 디자인 작업 지원(3차) | 3d | 2008-11-17 A | 2008-11-19 A | 270 | 100% |  | 2008-11-17 | 2008-11-19 | 3d |  |  |  | NCRM | 24h | 24h | 24 | 24 | 24 | 추가개발 프로그램코딩 | P02-1 1.4.1 |
| 272 | 3.2.2 | **UI 개발** | 72.91d | 2008-08-12 A | 2008-11-25 A |  | 100% |  | 2008-08-12 | 2008-11-25 | 72.91d |  |  |  | NCRM | 839.28h | 839.28h | 839.28 | 839.28 | 839.28 | 추가개발설계 | P02-1 1.3.1 |
| 273 | 3.2.2.1 | UI 개발 표준 작성 | 4d | 2008-08-12 A | 2008-08-18 A |  | 100% |  | 2008-08-12 | 2008-08-18 | 4d |  |  |  | NCRM | 32h | 32h | 32 | 32 | 32 | 추가개발설계 | P02-1 1.3.1 |
| 274 | 3.2.2.2 | 패턴별 UI 화면 템플릿 개발 | 5d | 2008-08-19 A | 2008-08-25 A | 273 | 100% |  | 2008-08-19 | 2008-08-25 | 5d |  |  |  | NCRM | 40h | 40h | 40 | 40 | 40 | 추가개발설계 | P02-1 1.3.1 |
| 275 | 3.2.2.3 | UI 개발 가이드 작성 | 2d | 2008-08-26 A | 2008-08-27 A | 274 | 100% |  | 2008-08-26 | 2008-08-27 | 2d |  |  |  | NCRM | 16h | 16h | 16 | 16 | 16 | 추가개발설계 | P02-1 1.3.1 |
| 276 | 3.2.2.4 | UI 개발자 교육 | 1d | 2008-08-28 A | 2008-08-28 A | 275 | 100% |  | 2008-08-28 | 2008-08-28 | 1d |  |  |  | NCRM | 8h | 8h | 8 | 8 | 8 | 추가개발설계 | P02-1 1.3.1 |
| 277 | 3.2.2.5 | UI 화면레이아웃 작성 | 5d | 2008-08-29 A | 2008-09-04 A | 276 | 100% |  | 2008-08-29 | 2008-09-04 | 5d |  |  |  | NCRM | 40h | 40h | 40 | 40 | 40 | 추가개발설계 | P02-1 1.3.1 |
| 278 | 3.2.2.6 | UI 화면 개발(1차) | 4d | 2008-09-05 A | 2008-09-10 A | 277 | 100% |  | 2008-09-05 | 2008-09-10 | 4d |  |  |  | NCRM | 32h | 32h | 32 | 32 | 32 | 추가개발설계 | P02-1 1.3.1 |
| 279 | 3.2.2.7 | UI 기술 지원 | 4d | 2008-09-11 A | 2008-09-17 A | 278 | 100% |  | 2008-09-11 | 2008-09-17 | 4d |  |  |  | NCRM | 32h | 32h | 32 | 32 | 32 | 추가개발설계 | P02-1 1.3.1 |
| 280 | 3.2.2.8 | UI 화면개발(업무공통) | 16.91d | 2008-11-03 A | 2008-11-25 A |  | 100% |  | 2008-11-03 | 2008-11-25 | 16.91d |  |  | finish no earlier than 2008-11-28 | NCRM | 56h | 56h | 56 | 56 | 56 | 추가개발 프로그램코딩 | P02-1 1.4.1 |
| 281 | 3.3 | **Build/Unit Test** | 74.09d? | 2008-11-25 A | 2009-03-13 |  | 27% | 53.9d? | 2008-11-25 | 2009-03-13 | 74.09d? | 6d | 0d |  | NCRM | 3064h | 849.45h | 3,064 | 3,064 | 849.45 | 개발 | P02-1 1.4 |
| 282 | 3.3.1 | 배포모듈 작업 및 테스트 | 5d | 2008-11-25 A | 2008-12-02 A | 280 | 100% |  | 2008-11-25 | 2008-12-02 | 5d |  |  |  | NCRM | 40h | 40h | 40 | 40 | 40 | 추가개발 프로그램코딩 | P02-1 1.4.1 |
| 283 | 3.3.2 | UI 메뉴구성 | 5d | 2008-12-02 A | 2008-12-09 A | 282 | 100% |  | 2008-12-02 | 2008-12-09 | 5d |  |  |  | NCRM | 40h | 40h | 40 | 40 | 40 | 추가개발 프로그램코딩 | P02-1 1.4.1 |

| ID | WBS | Task | Duration | Start | Finish | Predecessors | Complete | Remaining | Baseline start | Baseline finish | Baseline duration | Total slack | Free slack | Constraint | Resources | Work | Actual work | Cost | Baseline cost | Actual cost | Text20 | Text26 |
| --- | --- | --- | --- | --- | --- | --- | --- | --- | --- | --- | --- | --- | --- | --- | --- | --- | --- | --- | --- | --- | --- | --- |
| 284 | 3.3.3 | **공통기능 구현(로그인/아웃,메시지,환경설정)** | 20d | 2008-12-01 A | 2008-12-29 |  | 64% | 7.27d | 2008-12-01 | 2008-12-29 | 20d | 52d | 0d |  | NCRM | 600h | 381.82h | 600 | 600 | 381.82 |  |  |
| 285 | 3.3.3.1 | 메모장 | 5d | 2008-12-01 A | 2008-12-05 A |  | 100% |  | 2008-12-01 | 2008-12-05 | 5d |  |  | start no earlier than 2008-12-01 | NCRM | 40h | 40h | 40 | 40 | 40 |  |  |
| 286 | 3.3.3.2 | 화면/팝업 윈도우 타이틀 구분 | 5d | 2008-12-01 A | 2008-12-05 A |  | 100% |  | 2008-12-01 | 2008-12-05 | 5d |  |  | start no earlier than 2008-12-01 | NCRM | 40h | 40h | 40 | 40 | 40 |  |  |
| 287 | 3.3.3.3 | Timer(접속지속시간,로그인시간,현재시간) | 5d | 2008-12-01 A | 2008-12-05 A |  | 100% |  | 2008-12-01 | 2008-12-05 | 5d |  |  | start no earlier than 2008-12-01 | NCRM | 40h | 40h | 40 | 40 | 40 |  |  |
| 288 | 3.3.3.4 | 마이메뉴 구현(등록,리스트,Tree) | 5d | 2008-12-08 A | 2008-12-12 A |  | 100% |  | 2008-12-08 | 2008-12-12 | 5d |  |  | start no earlier than 2008-12-08 | NCRM | 40h | 40h | 40 | 40 | 40 |  |  |
| 289 | 3.3.3.5 | 화면검색기능 구현 | 5d | 2008-12-08 A | 2008-12-12 A |  | 100% |  | 2008-12-08 | 2008-12-12 | 5d |  |  | start no earlier than 2008-12-08 | NCRM | 40h | 40h | 40 | 40 | 40 |  |  |
| 290 | 3.3.3.6 | 메시지 공지 | 5d | 2008-12-08 A | 2008-12-12 A |  | 100% |  | 2008-12-08 | 2008-12-12 | 5d |  |  | start no earlier than 2008-12-08 | NCRM | 40h | 40h | 40 | 40 | 40 |  |  |
| 291 | 3.3.3.7 | 로그인 사용자정보 display | 5d | 2008-12-08 A | 2008-12-12 A |  | 100% |  | 2008-12-08 | 2008-12-12 | 5d |  |  | start no earlier than 2008-12-08 | NCRM | 40h | 40h | 40 | 40 | 40 |  |  |
| 292 | 3.3.3.8 | 로그아웃 처리 | 10d | 2008-12-15 | 2008-12-29 |  |  |  | 2008-12-15 | 2008-12-29 | 10d | 52d |  | start no earlier than 2008-12-15 | NCRM | 80h |  | 80 | 80 |  |  |  |
| 293 | 3.3.3.9 | 최초페이지 설정 기능 | 5d | 2008-12-15 | 2008-12-19 |  |  |  | 2008-12-15 | 2008-12-19 | 5d | 57d |  | start no earlier than 2008-12-15 | NCRM | 40h |  | 40 | 40 |  |  |  |
| 294 | 3.3.3.10 | UI환경설정화면 | 5d | 2008-12-15 | 2008-12-19 |  |  |  | 2008-12-15 | 2008-12-19 | 5d | 57d |  | start no earlier than 2008-12-15 | NCRM | 40h |  | 40 | 40 |  |  |  |
| 295 | 3.3.4 | UI 사용자권한 적용 | 5d | 2008-12-30 | 2009-01-06 | 284 |  |  | 2008-12-30 | 2009-01-06 | 5d | 52d |  |  | NCRM | 40h |  | 40 | 40 |  | 추가개발 프로그램코딩 | P02-1 1.4.1 |
| 296 | 3.3.5 | **외부연계** | 5d | 2009-01-12 | 2009-01-16 |  |  |  | 2009-01-12 | 2009-01-16 | 5d | 44d |  |  | NCRM | 120h |  | 120 | 120 |  |  |  |
| 297 | 3.3.5.1 | 개발원 | 5d | 2009-01-12 | 2009-01-16 |  |  |  | 2009-01-12 | 2009-01-16 | 5d | 44d |  | start no earlier than 2009-01-12 | NCRM | 40h |  | 40 | 40 |  |  |  |
| 298 | 3.3.5.2 | 생보협회 | 5d | 2009-01-12 | 2009-01-16 |  |  |  | 2009-01-12 | 2009-01-16 | 5d | 44d |  | start no earlier than 2009-01-12 | NCRM | 40h |  | 40 | 40 |  |  |  |
| 299 | 3.3.6 | **솔루션연계** | 15d? | 2009-01-05 | 2009-01-23 |  |  |  | 2009-01-05 | 2009-01-23 | 15d? | 39d |  |  | NCRM | 440h |  | 440 | 440 |  |  |  |
| 300 | 3.3.6.1 | 무양식(WSCup) | 10d? | 2009-01-05 | 2009-01-16 |  |  |  | 2009-01-05 | 2009-01-16 | 10d? | 44d |  | start no earlier than 2009-01-05 | NCRM | 80h |  | 80 | 80 |  |  |  |
| 301 | 3.3.6.2 | 보고서(Report Designer) | 10d? | 2009-01-05 | 2009-01-16 |  |  |  | 2009-01-05 | 2009-01-16 | 10d? | 44d |  | start no earlier than 2009-01-05 | NCRM | 80h |  | 80 | 80 |  |  |  |
| 302 | 3.3.6.3 | 스캔이미지(FileNet) | 15d | 2009-01-05 | 2009-01-23 |  |  |  | 2009-01-05 | 2009-01-23 | 15d | 39d |  | start no earlier than 2009-01-05 | NCRM | 120h |  | 120 | 120 |  |  |  |
| 303 | 3.3.6.4 | Magics연계(신계약업무) | 5d | 2009-01-05 | 2009-01-09 |  |  |  | 2009-01-05 | 2009-01-09 | 5d | 49d |  | start no earlier than 2009-01-05 | NCRM | 40h |  | 40 | 40 |  |  |  |
| 304 | 3.3.7 | **온라인레퍼런스 및 템플릿 보완** | 5d | 2008-12-15 | 2008-12-19 |  |  |  | 2008-12-15 | 2008-12-19 | 5d | 62d |  |  |  | 80h |  | 80 | 80 |  |  |  |
| 305 | 3.3.7.1 | 온라인 레퍼런스 추가/보완 | 5d | 2008-12-15 | 2008-12-19 |  |  |  | 2008-12-15 | 2008-12-19 | 5d | 62d |  | start no earlier than 2008-12-15 | NCRM | 40h |  | 40 | 40 |  |  |  |
| 306 | 3.3.7.2 | 템플릿보완(표준화면 및 UI Element) | 5d | 2008-12-15 | 2008-12-19 |  |  |  | 2008-12-15 | 2008-12-19 | 5d | 62d |  | start no earlier than 2008-12-15 | NCRM | 40h |  | 40 | 40 |  |  |  |
| 307 | 3.3.8 | UI 화면 개발(전체업무) | 71d | 2008-11-25 A | 2009-03-10 | 280 | 27% | 51.83d | 2008-11-25 | 2009-03-10 | 71d | 9.09d |  |  | NCRM | 568h | 153.36h | 568 | 568 | 153.36 | 추가개발 프로그램코딩 | P02-1 1.4.1 |
| 308 | 3.3.9 | UI 기술지원 | 71d | 2008-12-01 A | 2009-03-13 | 280 | 14% | 61.06d | 2008-12-01 | 2009-03-13 | 71d | 6d |  |  | NCRM | 568h | 79.52h | 568 | 568 | 79.52 | 추가개발 프로그램코딩 | P02-1 1.4.1 |

| ID | WBS | Task | Duration | Start | Finish | Predecessors | Complete | Remaining | Baseline start | Baseline finish | Baseline duration | Total slack | Free slack | Constraint | Resources | Work | Actual work | Cost | Baseline cost | Actual cost | Text20 | Text26 | Text30 |
| --- | --- | --- | --- | --- | --- | --- | --- | --- | --- | --- | --- | --- | --- | --- | --- | --- | --- | --- | --- | --- | --- | --- | --- |
| 309 | 3.4 | **End To End Test** | 20d | 2009-03-16 | 2009-04-10 |  |  |  | 2009-03-16 | 2009-04-10 | 20d | 6d | 0d |  | NCRM | 320h |  | 320 | 320 |  | 테스트실시 | P02-1 1.4.2 |  |
| 310 | 3.4.1 | ETE테스트 지원 | 20d | 2009-03-16 | 2009-04-10 | 281 |  |  | 2009-03-16 | 2009-04-10 | 20d | 6d |  |  | NCRM | 160h |  | 160 | 160 |  | 테스트실시 | P02-1 1.4.2 |  |
| 311 | 3.5 | **UAT Test** | 38d | 2009-04-13 | 2009-06-05 |  |  |  | 2009-04-13 | 2009-06-05 | 38d | 6d | 0d |  | NCRM | 616h |  | 616 | 616 |  | 테스트실시 | P02-1 1.4.2 |  |
| 312 | 3.5.1 | UAT테스트 지원 | 38d | 2009-04-13 | 2009-06-05 | 309 |  |  | 2009-04-13 | 2009-06-05 | 38d | 6d |  |  | NCRM | 304h |  | 304 | 304 |  | 테스트실시 | P02-1 1.4.2 |  |
| 313 | 3.6 | **ORT** | 25d | 2009-06-08 | 2009-07-10 |  |  |  | 2009-06-08 | 2009-07-10 | 25d | 6d | 0d |  | NCRM | 400h |  | 400 | 400 |  | 구현 | P02-1 1.5 |  |
| 314 | 3.6.1 | 시범운영 지원 | 25d | 2009-06-08 | 2009-07-10 | 311 |  |  | 2009-06-08 | 2009-07-10 | 25d | 6d |  |  | NCRM | 200h |  | 200 | 200 |  | 시범운영 | P02-1 1.5.4 |  |
| 315 | 3.7 | NCRM 기술지원 | 15d | 2009-07-13 | 2009-07-31 | 313 |  |  | 2009-07-13 | 2009-07-31 | 15d | 6d |  |  | NCRM | 120h |  | 120 | 120 |  | 구현 | P02-1 1.5 |  |
| 316 | 4 | **16.인프라_DBIO** | 235d | 2008-08-13 A | 2009-07-20 |  | 42% | 137.01d | 2008-08-13 | 2009-07-20 | 235d | 15d |  |  |  | 5320h | 1974.56h | 5,320 | 5,320 | 1,974.56 |  |  |  |
| 317 | 4.1 | **Analyze** | 33d | 2008-08-13 A | 2008-09-30 A |  | 100% |  | 2008-08-13 | 2008-09-30 | 33d |  |  |  |  | 432h | 432h | 432 | 432 | 432 | 분석 | P02-1 1.2 |  |
| 318 | 4.1.1 | **POC** | 17d | 2008-08-13 A | 2008-09-05 A |  | 100% |  | 2008-08-13 | 2008-09-05 | 17d |  |  |  |  | 136h | 136h | 136 | 136 | 136 | 기술구조정의 | P02-1 1.2.5 |  |
| 319 | 4.1.1.1 | SPECTRUM 설치 및 검증 | 2d | 2008-08-13 A | 2008-08-14 A |  | 100% |  | 2008-08-13 | 2008-08-14 | 2d |  |  | start no earlier than 2008-08-13 | DBIO | 16h | 16h | 16 | 16 | 16 | 기술구조정의 | P02-1 1.2.5 |  |
| 320 | 4.1.1.2 | DBIO DB2 GEN | 2d | 2008-08-18 A | 2008-08-19 A | 319 | 100% |  | 2008-08-18 | 2008-08-19 | 2d |  |  |  | DBIO | 16h | 16h | 16 | 16 | 16 | 기술구조정의 | P02-1 1.2.5 |  |
| 321 | 4.1.1.3 | POC 결과정리 | 13d | 2008-08-20 A | 2008-09-05 A | 320 | 100% |  | 2008-08-20 | 2008-09-05 | 13d |  |  |  | DBIO | 104h | 104h | 104 | 104 | 104 | 기술구조정의 | P02-1 1.2.5 |  |
| 322 | 4.1.2 | **요구사항정의** | 9d | 2008-09-08 A | 2008-09-19 A |  | 100% |  | 2008-09-08 | 2008-09-19 | 9d |  |  |  | DBIO | 144h | 144h | 144 | 144 | 144 | 패키지 요구사항정의 | P02-1 1.2.3 |  |
| 323 | 4.1.2.1 | SPECTRUM 기능 요건 정의 | 2d | 2008-09-08 A | 2008-09-09 A | 321 | 100% |  | 2008-09-08 | 2008-09-09 | 2d |  |  | start no earlier than 2008-08-13 | DBIO | 16h | 16h | 16 | 16 | 16 | 패키지 요구사항정의 | P02-1 1.2.3 | 요구사항정의서 |
| 324 | 4.1.2.2 | DBIO 기능 요건 정의 | 3d | 2008-09-10 A | 2008-09-12 A | 323 | 100% |  | 2008-09-10 | 2008-09-12 | 3d |  |  |  | DBIO | 24h | 24h | 24 | 24 | 24 | 패키지 요구사항정의 | P02-1 1.2.3 | 요구사항정의서 |
| 325 | 4.1.2.3 | 설계단계 SPM 작성 | 4d | 2008-09-16 A | 2008-09-19 A | 324 | 100% |  | 2008-09-16 | 2008-09-19 | 4d |  |  |  | DBIO | 32h | 32h | 32 | 32 | 32 | 패키지 요구사항정의 | P02-1 1.2.3 | 표준및절차매뉴얼 |
| 326 | 4.1.3 | **SPECTRUM Customizing** | 14d | 2008-09-10 A | 2008-09-30 A |  | 100% |  | 2008-09-10 | 2008-09-30 | 14d |  |  |  |  | 152h | 152h | 152 | 152 | 152 |  |  |  |
| 327 | 4.1.3.1 | SPECTRUM 환경구성 및 커스터마이징(1차) | 12d | 2008-09-10 A | 2008-09-26 A |  | 100% |  | 2008-09-10 | 2008-09-26 | 12d |  |  | start no earlier than 2008-09-10 | DBIO | 96h | 96h | 96 | 96 | 96 |  |  |  |
| 328 | 4.1.3.2 | **소스컨버전** | 7d | 2008-09-22 A | 2008-09-30 A |  | 100% |  | 2008-09-22 | 2008-09-30 | 7d |  |  |  |  | 56h | 56h | 56 | 56 | 56 |  |  |  |
| 329 | 4.1.3.2.1 | DBIO 모듈 일괄 선 전환 작업(수작업 제외) | 7d | 2008-09-22 A | 2008-09-30 A |  | 100% |  | 2008-09-22 | 2008-09-30 | 7d |  |  | finish no earlier than 2008-09-30 | DBIO | 56h | 56h | 56 | 56 | 56 |  |  |  |
| 330 | 4.2 | **Design** | 44d | 2008-09-29 A | 2008-11-28 A |  | 100% |  | 2008-09-29 | 2008-11-28 | 44d |  |  |  | DBIO | 1304h | 1304h | 1,304 | 1,304 | 1,304 | 설계 | P02-1 1.3 |  |
| 331 | 4.2.1 | **SPECTRUM Customizing** | 29d | 2008-09-29 A | 2008-11-07 A |  | 100% |  | 2008-09-29 | 2008-11-07 | 29d |  |  |  |  | 312h | 312h | 312 | 312 | 312 |  |  |  |
| 332 | 4.2.1.1 | SPECTRUM 환경구성 및 커스터마이징(2차) | 4d | 2008-09-29 A | 2008-10-02 A | 327 | 100% |  | 2008-09-29 | 2008-10-02 | 4d |  |  |  | DBIO | 32h | 32h | 32 | 32 | 32 |  |  |  |
| 333 | 4.2.1.2 | SPECTRUM Customizing Test | 15d | 2008-10-06 A | 2008-10-24 A | 332 | 100% |  | 2008-10-06 | 2008-10-24 | 15d |  |  |  | DBIO | 120h | 120h | 120 | 120 | 120 |  |  |  |
| 334 | 4.2.1.3 | 메타데이터 인터페이스 구축/검증(Metaminer-Spectrum) | 20d | 2008-10-13 A | 2008-11-07 A |  | 100% |  | 2008-10-13 | 2008-11-07 | 20d |  |  | start no earlier than 2008-10-13 | DBIO | 160h | 160h | 160 | 160 | 160 |  |  |  |
| 335 | 4.2.2 | DBIO 모듈 전환 작업(수작업 모듈) | 40d | 2008-10-06 A | 2008-11-28 A |  | 100% |  | 2008-10-06 | 2008-11-28 | 40d |  |  | start no earlier than 2008-10-06 | DBIO | 320h | 320h | 320 | 320 | 320 |  |  |  |
| 336 | 4.2.3 | 데이터 물리모델 검토(Occurrence Rule/Index) | 32d | 2008-10-16 A | 2008-11-28 A |  | 100% |  | 2008-10-16 | 2008-11-28 | 32d |  |  | start no earlier than 2008-10-16 | DBIO | 256h | 256h | 256 | 256 | 256 | 추가개발설계 | P02-1 1.3.1 |  |

Notes:
- 329: 오지선과장(9/24일까지) 일괄전환작업예정
- 333: DBIO 생성패턴별
- 334: MetaMiner 스케줄 연계

| ID | WBS | Task | Duration | Start | Finish | Predecessors | Complete | Remaining | Baseline start | Baseline finish | Baseline duration | Total slack | Free slack | Constraint | Resources | Work | Actual work | Cost | Baseline cost | Actual cost | Text20 | Text26 | Text30 |
| --- | --- | --- | --- | --- | --- | --- | --- | --- | --- | --- | --- | --- | --- | --- | --- | --- | --- | --- | --- | --- | --- | --- | --- |
| 337 | 4.2.4 | **개발자교육** | 8d | 2008-10-27 A | 2008-11-05 A |  | 100% |  | 2008-10-27 | 2008-11-05 | 8d |  |  |  |  | 64h | 64h | 64 | 64 | 64 |  |  |  |
| 338 | 4.2.4.1 | 자료작성_DB I/O모듈 제작절차 및 변경관리절차 | 5d | 2008-10-27 A | 2008-10-31 A |  | 100% |  | 2008-10-27 | 2008-10-31 | 5d |  |  | start no earlier than 2008-10-20 | DBIO | 40h | 40h | 40 | 40 | 40 | 추가개발설계 | P02-1 1.3.1 | DBIO 요청서 |
| 339 | 4.2.4.2 | 교육_DBIO 모듈 요청서 작성 및 신청절차/변경 | 3d | 2008-11-03 A | 2008-11-05 A | 338 | 100% |  | 2008-11-03 | 2008-11-05 | 3d |  |  |  | DBIO | 24h | 24h | 24 | 24 | 24 |  |  |  |
| 340 | 4.3 | **Build/Unit Test** | 71d | 2008-12-01 A | 2009-03-13 |  | 14% | 61.06d | 2008-12-01 | 2009-03-13 | 71d | 104d |  |  | DBIO | 1704h | 238.56h | 1,704 | 1,704 | 238.56 | 개발 | P02-1 1.4 |  |
| 341 | 4.3.1 | DB I/O 모듈 설계 | 71d | 2008-12-01 A | 2009-03-13 | 407 | 14% | 61.06d | 2008-12-01 | 2009-03-13 | 71d | 104d | 0d |  | DBIO | 568h | 79.52h | 568 | 568 | 79.52 | 추가개발 프로그램코딩 | P02-1 1.4.1 | 프로그램사양서 |
| 342 | 4.3.2 | DB I/O 모듈 제작/단위테스트 | 71d | 2008-12-01 A | 2009-03-13 | 341SS | 14% | 61.06d | 2008-12-01 | 2009-03-13 | 71d | 104d |  |  | DBIO | 568h | 79.52h | 568 | 568 | 79.52 | 추가개발 프로그램코딩 | P02-1 1.4.1 |  |
| 343 | 4.4 | **ETE Test** | 20d | 2009-03-16 | 2009-04-10 |  |  |  | 2009-03-16 | 2009-04-10 | 20d | 45d | 0d |  | DBIO | 320h |  | 320 | 320 |  | 테스트실시 | P02-1 1.4.2 |  |
| 344 | 4.4.1 | 통합테스트 결과반영(DBIO 신규/변경 설계/제작/테스트) | 20d | 2009-03-16 | 2009-04-10 | 409SS |  |  | 2009-03-16 | 2009-04-10 | 20d | 45d |  |  | DBIO | 160h |  | 160 | 160 |  | 테스트실시 | P02-1 1.4.2 | 통합테스트결과 |
| 345 | 4.5 | **UAT Test** | 38d | 2009-04-13 | 2009-06-05 | 343 |  |  | 2009-04-13 | 2009-06-05 | 38d | 45d |  |  |  | 312h |  | 312 | 312 |  |  |  |  |
| 346 | 4.5.1 | 사용자테스트 결과반영(DBIO 신규/변경 설계/제작/테스트) | 39d | 2009-04-13 | 2009-06-05 | 410SS |  |  | 2009-04-13 | 2009-06-05 | 39d | 45d |  |  | DBIO | 312h |  | 312 | 312 |  |  |  |  |
| 347 | 4.6 | **ORT** | 25d | 2009-06-08 | 2009-07-10 |  |  |  | 2009-06-08 | 2009-07-10 | 25d | 15d | 0d |  | DBIO | 1200h |  | 1,200 | 1,200 |  | 구현 | P02-1 1.5 |  |
| 348 | 4.6.1 | **시범운영** | 25d | 2009-06-08 | 2009-07-10 |  |  |  | 2009-06-08 | 2009-07-10 | 25d | 15d |  |  | DBIO | 440h |  | 440 | 440 |  | 시범운영 | P02-1 1.5.4 |  |
| 349 | 4.6.1.1 | 시범운영 계획수립 | 5d | 2009-06-08 | 2009-06-12 | 154SS |  |  | 2009-06-08 | 2009-06-12 | 5d | 35d |  | finish no earlier than 2009-05-29 | DBIO | 40h |  | 40 | 40 |  | 시범운영 | P02-1 1.5.4 | 시범운영계획서 |
| 350 | 4.6.1.2 | 시범운영 실시 | 25d | 2009-06-08 | 2009-07-10 | 154SS |  |  | 2009-06-08 | 2009-07-10 | 25d | 15d |  | start no earlier than 2009-06-01 | DBIO | 200h |  | 200 | 200 |  | 시범운영 | P02-1 1.5.4 |  |
| 351 | 4.6.2 | **시스템사용 교육** | 10d | 2009-06-08 | 2009-06-19 |  |  |  | 2009-06-08 | 2009-06-19 | 10d | 30d |  |  | DBIO | 240h |  | 240 | 240 |  | 시스템사용교육 | P02-1 1.5.3 |  |
| 352 | 4.6.2.1 | 사용자매뉴얼 작성 | 10d | 2009-06-08 | 2009-06-19 |  |  |  | 2009-06-08 | 2009-06-19 | 10d | 30d |  | start no earlier than 2009-06-08 | DBIO | 80h |  | 80 | 80 |  | 시스템사용교육 | P02-1 1.5.3 | 사용자매뉴얼 |
| 353 | 4.6.2.2 | 운영자매뉴얼 작성 | 10d | 2009-06-08 | 2009-06-19 |  |  |  | 2009-06-08 | 2009-06-19 | 10d | 30d |  | start no earlier than 2009-06-08 | DBIO | 80h |  | 80 | 80 |  | 시스템사용교육 | P02-1 1.5.3 | 운영자매뉴얼 |
| 354 | 4.6.3 | **시스템 인수인계** | 20d | 2009-06-08 | 2009-07-03 |  |  |  | 2009-06-08 | 2009-07-03 | 20d | 20d |  |  | DBIO | 320h |  | 320 | 320 |  | 시스템 인수인계 | P02-1 1.7.2 |  |
| 355 | 4.6.3.1 | 인수인계 계획수립 | 5d | 2009-06-08 | 2009-06-12 |  |  |  | 2009-06-08 | 2009-06-12 | 5d | 35d |  | start no earlier than 2009-06-08 | DBIO | 40h |  | 40 | 40 |  | 시스템 인수인계 | P02-1 1.7.2 | 인수인계계획서 |
| 356 | 4.6.3.2 | 인수인계실시 | 15d | 2009-06-15 | 2009-07-03 |  |  |  | 2009-06-15 | 2009-07-03 | 15d | 20d |  | start no earlier than 2009-06-15 | DBIO | 120h |  | 120 | 120 |  | 시스템 인수인계 | P02-1 1.7.2 |  |
| 357 | 4.7 | SPECTRUM 기술지원 | 6d | 2009-07-13 | 2009-07-20 | 347 |  |  | 2009-07-13 | 2009-07-20 | 6d | 15d |  |  | DBIO | 48h |  | 48 | 48 |  | 구현 | P02-1 1.5 |  |
| 358 | 5 | **18.인프라_무양식** | 160d | 2008-12-22 | 2009-08-10 |  |  |  | 2008-12-22 | 2009-08-10 | 160d | 0d |  |  |  | 3440h |  | 3,440 | 3,440 |  |  |  |  |
| 359 | 5.1 | **Build/Unit Test** | 71d | 2008-12-22 | 2009-04-03 |  |  |  | 2008-12-22 | 2009-04-03 | 71d | 0d |  |  | WSCUP | 2056h |  | 2,056 | 2,056 |  | 개발 | P02-1 1.4 |  |
| 360 | 5.1.1 | **환경구성** | 6d | 2008-12-22 | 2008-12-30 |  |  |  | 2008-12-22 | 2008-12-30 | 6d | 0d |  |  | WSCUP | 160h |  | 160 | 160 |  | 분석 | P02-1 1.2 |  |
| 361 | 5.1.1.1 | **솔루션 이해** | 1d | 2008-12-22 | 2008-12-22 |  |  |  | 2008-12-22 | 2008-12-22 | 1d | 0d |  |  | WSCUP | 16h |  | 16 | 16 |  | 현황평가 | P02-1 1.2.2 |  |
| 362 | 5.1.1.1.1 | 솔루션 소개 및 적용기준 가이드 | 1d | 2008-12-22 | 2008-12-22 |  |  |  | 2008-12-22 | 2008-12-22 | 1d | 0d |  | start no earlier than 2008-12-22 | WSCUP | 8h |  | 8 | 8 |  | 현황평가 | P02-1 1.2.2 |  |

| ID | WBS | Task | Duration | Start | Finish | Predecessors | Baseline start | Baseline finish | Baseline duration | Total slack | Resources | Work | Cost | Baseline cost | Text20 | Text26 | Text30 |
| --- | --- | --- | --- | --- | --- | --- | --- | --- | --- | --- | --- | --- | --- | --- | --- | --- | --- |
| 363 | 5.1.1.2 | **개발환경 구성** | 1d | 2008-12-22 | 2008-12-22 |  | 2008-12-22 | 2008-12-22 | 1d | 70d | WSCUP | 16h | 16 | 16 | 현황평가 | P02-1 1.2.2 |  |
| 364 | 5.1.1.2.1 | 소프트웨어 설치 | 1d | 2008-12-22 | 2008-12-22 | 362SS | 2008-12-22 | 2008-12-22 | 1d | 70d | WSCUP | 8h | 8 | 8 | 현황평가 | P02-1 1.2.2 |  |
| 365 | 5.1.1.3 | **현황파악** | 1d | 2008-12-23 | 2008-12-23 |  | 2008-12-23 | 2008-12-23 | 1d | 0d | WSCUP | 16h | 16 | 16 | 현황평가 | P02-1 1.2.2 |  |
| 366 | 5.1.1.3.1 | 현행시스템 및 출력물 분석 | 1d | 2008-12-23 | 2008-12-23 | 362 | 2008-12-23 | 2008-12-23 | 1d | 0d | WSCUP | 8h | 8 | 8 | 현황평가 | P02-1 1.2.2 | Business System Requirement |
| 367 | 5.1.1.4 | **무양식 요건 분석** | 4d | 2008-12-24 | 2008-12-30 |  | 2008-12-24 | 2008-12-30 | 4d | 0d | WSCUP | 64h | 64 | 64 | 패키지 요구사항정의 | P02-1 1.2.3 |  |
| 368 | 5.1.1.4.1 | To-Be 업무 분석 | 1d | 2008-12-24 | 2008-12-24 | 366 | 2008-12-24 | 2008-12-24 | 1d | 0d | WSCUP | 8h | 8 | 8 | 패키지 요구사항정의 | P02-1 1.2.3 | 현업요구사항정의서 |
| 369 | 5.1.1.4.2 | 업무 출력물 분석 | 1d | 2008-12-26 | 2008-12-26 | 368 | 2008-12-26 | 2008-12-26 | 1d | 0d | WSCUP | 8h | 8 | 8 | 패키지 요구사항정의 | P02-1 1.2.3 | 현업요구사항정의서 |
| 370 | 5.1.1.4.3 | 야간증권발행 업무 분석 | 1d | 2008-12-29 | 2008-12-29 | 369 | 2008-12-29 | 2008-12-29 | 1d | 0d | WSCUP | 8h | 8 | 8 | 패키지 요구사항정의 | P02-1 1.2.3 | 현업요구사항정의서 |
| 371 | 5.1.1.4.4 | 적용파트 담당자 인터뷰 | 1d | 2008-12-30 | 2008-12-30 | 370 | 2008-12-30 | 2008-12-30 | 1d | 0d | WSCUP | 8h | 8 | 8 | 패키지 요구사항정의 | P02-1 1.2.3 | 회의록 |
| 372 | 5.1.2 | **인터페이스 개발** | 15d | 2008-12-31 | 2009-01-21 |  | 2008-12-31 | 2009-01-21 | 15d | 0d | WSCUP | 528h | 528 | 528 | 설계 | P02-1 1.3 |  |
| 373 | 5.1.2.1 | **인터페이스 개발** | 2d | 2008-12-31 | 2009-01-02 |  | 2008-12-31 | 2009-01-02 | 2d | 0d | WSCUP | 40h | 40 | 40 | 패키지 요구사항정의 | P02-1 1.2.3 |  |
| 374 | 5.1.2.1.1 | NCRM 인테페이스 분석 및 개발 | 2d | 2008-12-31 | 2009-01-02 | 371 | 2008-12-31 | 2009-01-02 | 2d | 0d | WSCUP | 16h | 16 | 16 | 패키지 요구사항정의 | P02-1 1.2.3 |  |
| 375 | 5.1.2.1.2 | 이미지시스템 인터페이스 분석 및 개발 (2차원바코드) | 1d | 2008-12-31 | 2008-12-31 | 371 | 2008-12-31 | 2008-12-31 | 1d | 64d | WSCUP | 8h | 8 | 8 | 패키지 요구사항정의 | P02-1 1.2.3 |  |
| 376 | 5.1.2.2 | 시스템 구조 정의 | 1d | 2008-12-31 | 2008-12-31 | 371 | 2008-12-31 | 2008-12-31 | 1d | 64d | WSCUP | 8h | 8 | 8 | 기술구조정의 | P02-1 1.2.5 |  |
| 377 | 5.1.2.3 | **인터페이스 테스트** | 1d | 2009-01-05 | 2009-01-05 |  | 2009-01-05 | 2009-01-05 | 1d | 0d | WSCUP | 24h | 24 | 24 | 테스트 설계 | P02-1 1.3.3 |  |
| 378 | 5.1.2.3.1 | NCRM 인터페이스 테스트 | 1d | 2009-01-05 | 2009-01-05 | 374 | 2009-01-05 | 2009-01-05 | 1d | 62d | WSCUP | 8h | 8 | 8 | 테스트 설계 | P02-1 1.3.3 |  |
| 379 | 5.1.2.3.2 | 이미지시스템 인터페이스 테스트 (2차원바코드) | 1d | 2009-01-05 | 2009-01-05 | 374 | 2009-01-05 | 2009-01-05 | 1d | 0d | WSCUP | 8h | 8 | 8 | 테스트 설계 | P02-1 1.3.3 |  |
| 380 | 5.1.2.4 | API 개발자 교육 | 1d | 2009-01-06 | 2009-01-06 | 379 | 2009-01-06 | 2009-01-06 | 1d | 0d | WSCUP | 8h | 8 | 8 | 추가개발설계 | P02-1 1.3.1 |  |
| 381 | 5.1.2.5 | **시스템 설계** | 10d | 2009-01-07 | 2009-01-20 |  | 2009-01-07 | 2009-01-20 | 10d | 0d | WSCUP | 320h | 320 | 320 | 추가개발설계 | P02-1 1.3.1 |  |
| 382 | 5.1.2.5.1 | **데이터베이스 설계** | 2d | 2009-01-07 | 2009-01-08 |  | 2009-01-07 | 2009-01-08 | 2d | 0d | WSCUP | 48h | 48 | 48 | 추가개발설계 | P02-1 1.3.1 |  |
| 383 | 5.1.2.5.1.1 | 테이블목록 작성 | 2d | 2009-01-07 | 2009-01-08 | 380 | 2009-01-07 | 2009-01-08 | 2d | 0d | WSCUP | 16h | 16 | 16 | 추가개발설계 | P02-1 1.3.1 | 테이블목록 |
| 384 | 5.1.2.5.1.2 | 테이블정의서 작성 | 2d | 2009-01-07 | 2009-01-08 | 383SS | 2009-01-07 | 2009-01-08 | 2d | 0d | WSCUP | 16h | 16 | 16 | 추가개발설계 | P02-1 1.3.1 | 테이블정의서 |
| 385 | 5.1.2.5.2 | **프로그램 설계** | 3d | 2009-01-09 | 2009-01-13 |  | 2009-01-09 | 2009-01-13 | 3d | 0d | WSCUP | 72h | 72 | 72 | 추가개발설계 | P02-1 1.3.1 |  |
| 386 | 5.1.2.5.2.1 | 프로그램목록 작성 | 3d | 2009-01-09 | 2009-01-13 | 384 | 2009-01-09 | 2009-01-13 | 3d | 0d | WSCUP | 24h | 24 | 24 | 추가개발설계 | P02-1 1.3.1 | 프로그램목록 |
| 387 | 5.1.2.5.2.2 | 프로그램사양서 작성 | 3d | 2009-01-09 | 2009-01-13 | 386SS | 2009-01-09 | 2009-01-13 | 3d | 0d | WSCUP | 24h | 24 | 24 | 추가개발설계 | P02-1 1.3.1 | 프로그램사양서 |

| ID | WBS | Task | Type | Duration | Start | Finish | Predecessors | Complete | Remaining | Baseline start | Baseline finish | Baseline duration | Total slack | Free slack | Constraint | Resources | Work | Actual work | Cost | Baseline cost | Actual cost | Text20 | Text26 | Text30 |
| --- | --- | --- | --- | --- | --- | --- | --- | --- | --- | --- | --- | --- | --- | --- | --- | --- | --- | --- | --- | --- | --- | --- | --- | --- |
| 388 | 5.1.2.5.3 | **인터페이스 설계** |  | 5d | 2009-01-14 | 2009-01-20 |  |  |  | 2009-01-14 | 2009-01-20 | 5d | 0d |  |  | WSCUP | 120h |  | 120 | 120 |  | 추가개발설계 | P02-1 1.3.1 |  |
| 389 | 5.1.2.5.3.1 | 인터페이스목록 작성 |  | 5d | 2009-01-14 | 2009-01-20 | 387 |  |  | 2009-01-14 | 2009-01-20 | 5d | 0d |  |  | WSCUP | 40h |  | 40 | 40 |  | 추가개발설계 | P02-1 1.3.1 | 인터페이스목록 |
| 390 | 5.1.2.5.3.2 | 인터페이스사양서 작성 |  | 5d | 2009-01-14 | 2009-01-20 | 389SS |  |  | 2009-01-14 | 2009-01-20 | 5d | 0d |  |  | WSCUP | 40h |  | 40 | 40 |  | 추가개발설계 | P02-1 1.3.1 | 인터페이스정의서 |
| 391 | 5.1.2.6 | 개발 상세 계획 수립 |  | 1d | 2009-01-21 | 2009-01-21 | 390 |  |  | 2009-01-21 | 2009-01-21 | 1d | 0d |  |  | WSCUP | 8h |  | 8 | 8 |  | 추가개발설계 | P02-1 1.3.1 |  |
| 392 | 5.1.3 | **추가개발 및 패키지 커스터마이징** |  | 50d | 2009-01-22 | 2009-04-03 |  |  |  | 2009-01-22 | 2009-04-03 | 50d | 0d |  |  | WSCUP | 800h |  | 800 | 800 |  | 추가개발 프로그램코딩 | P02-1 1.4.1 |  |
| 393 | 5.1.3.1 | 출력물 디자인 및 개발 |  | 30d | 2009-01-22 | 2009-03-06 | 391 |  |  | 2009-01-22 | 2009-03-06 | 30d | 0d |  |  | WSCUP | 240h |  | 240 | 240 |  | 추가개발 프로그램코딩 | P02-1 1.4.1 | 프로그램 소스 |
| 394 | 5.1.3.2 | 야간증권발행 |  | 10d | 2009-03-09 | 2009-03-20 | 393 |  |  | 2009-03-09 | 2009-03-20 | 10d | 0d |  |  | WSCUP | 80h |  | 80 | 80 |  | 추가개발 프로그램코딩 | P02-1 1.4.1 | 프로그램 소스 |
| 395 | 5.1.3.3 | 이미지시스템 인터페이스(2차원바코드) |  | 10d | 2009-03-23 | 2009-04-03 | 394 |  |  | 2009-03-23 | 2009-04-03 | 10d | 0d |  |  | WSCUP | 80h |  | 80 | 80 |  | 추가개발 프로그램코딩 | P02-1 1.4.1 |  |
| 396 | 5.2 | **End To End Test** |  | 20d | 2009-04-06 | 2009-05-04 |  |  |  | 2009-04-06 | 2009-05-04 | 20d | 0d |  |  | WSCUP | 328h |  | 328 | 328 |  | 테스트실시 | P02-1 1.4.2 |  |
| 397 | 5.2.1 | ETE테스트 지원 |  | 20d | 2009-04-06 | 2009-05-04 | 359 |  |  | 2009-04-06 | 2009-05-04 | 20d | 0d |  |  | WSCUP | 160h |  | 160 | 160 |  | 테스트실시 | P02-1 1.4.2 |  |
| 398 | 5.3 | **UAT Test** |  | 38d | 2009-05-06 | 2009-06-26 |  |  |  | 2009-05-06 | 2009-06-26 | 38d | 0d |  |  | WSCUP | 608h |  | 608 | 608 |  | 테스트실시 | P02-1 1.4.2 |  |
| 399 | 5.3.1 | UAT테스트 지원 |  | 38d | 2009-05-06 | 2009-06-26 | 396 |  |  | 2009-05-06 | 2009-06-26 | 38d | 0d |  |  | WSCUP | 304h |  | 304 | 304 |  | 테스트실시 | P02-1 1.4.2 |  |
| 400 | 5.4 | **ORT** |  | 25d | 2009-06-29 | 2009-07-31 |  |  |  | 2009-06-29 | 2009-07-31 | 25d | 0d |  |  | WSCUP | 400h |  | 400 | 400 |  | 구현 | P02-1 1.5 |  |
| 401 | 5.4.1 | 시범운영 지원 |  | 25d | 2009-06-29 | 2009-07-31 | 398 |  |  | 2009-06-29 | 2009-07-31 | 25d | 0d |  |  | WSCUP | 200h |  | 200 | 200 |  | 시범운영 | P02-1 1.5.4 |  |
| 402 | 5.5 | 무양식시스템 기술지원 |  | 6d | 2009-08-03 | 2009-08-10 | 400 |  |  | 2009-08-03 | 2009-08-10 | 6d | 0d |  |  | WSCUP | 48h |  | 48 | 48 |  | 구현 | P02-1 1.5 |  |
| 403 | 6 | **PJT마일스톤** |  | 244d | 2008-07-23 A | 2009-07-13 |  | 51% | 119.27d | 2008-07-23 | 2009-07-13 | 244d | 21d |  |  |  | 2456h | 1255.52h | 2,456 | 2,456 | 1,255.52 |  |  |  |
| 404 | 6.1 | PJT착수 |  | 3d | 2008-07-23 A | 2008-07-25 A |  | 100% |  | 2008-07-23 | 2008-07-25 | 3d |  |  | start no earlier than 2008-07-23 | PJT | 24h | 24h | 24 | 24 | 24 | 단계착수 | P02-1 1.6.1 | PJT수행계획서 |
| 405 | 6.2 | 선전환(아키텍처전환) |  | 57d | 2008-07-28 A | 2008-10-17 A | 404SS+3d | 100% |  | 2008-07-28 | 2008-10-17 | 57d |  |  |  | PJT | 456h | 456h | 456 | 456 | 456 | 기술구조정의 | P02-1 1.2.5 | 전환계획서, 전환가이드, 전환결과서(C->Java) |
| 406 | 6.3 | Analyze(GAP분석,2개월) |  | 43d | 2008-07-28 A | 2008-09-26 A | 404SS+3d | 100% |  | 2008-07-28 | 2008-09-26 | 43d |  |  | finish no earlier than 2008-09-19 | PJT | 344h | 344h | 344 | 344 | 344 | 매핑 | P02-1 1.2.4 | 시스템청사진 |
| 407 | 6.4 | Design(설계,2개월) |  | 44d | 2008-09-29 A | 2008-11-28 A | 406 | 100% |  | 2008-09-29 | 2008-11-28 | 44d |  |  | finish no earlier than 2008-11-21 | PJT | 352h | 352h | 352 | 352 | 352 | 추가개발설계 | P02-1 1.3.1 | 설계서(업무 및 컨버전) |
| 408 | 6.5 | Build/Unit Test(개발,4개월) |  | 71d | 2008-12-01 A | 2009-03-13 | 407 | 14% | 61.06d | 2008-12-01 | 2009-03-13 | 71d | 20d | 0d |  | PJT | 568h | 79.52h | 568 | 568 | 79.52 | 추가개발 프로그램코딩 | P02-1 1.4.1 | 인스펙션결과서 |
| 409 | 6.6 | ETE Test(통합테스트,2개월) |  | 20d | 2009-03-16 | 2009-04-10 | 408 |  |  | 2009-03-16 | 2009-04-10 | 20d | 20d | 0d |  | PJT | 160h |  | 160 | 160 |  | 테스트실시 | P02-1 1.4.2 | 테스트시나리오,결과서 |
| 410 | 6.7 | UAT Test(사용자테스트) |  | 39d | 2009-04-13 | 2009-06-05 | 409 |  |  | 2009-04-13 | 2009-06-05 | 39d | 20d | 0d |  | PJT | 312h |  | 312 | 312 |  |  |  |  |
| 411 | 6.8 | ORT(시범운영,2개월) |  | 25d | 2009-06-08 | 2009-07-10 | 410 |  |  | 2009-06-08 | 2009-07-10 | 25d | 21d | 0d | finish no earlier than 2009-07-03 | PJT | 200h |  | 200 | 200 |  | 시범운영 | P02-1 1.5.4 | 구현계획서,오픈시나리오 |
| 412 | 6.9 | 오픈준비 |  | 5d | 2009-07-06 | 2009-07-10 |  |  |  | 2009-07-06 | 2009-07-10 | 5d | 21d | 0d | start no earlier than 2009-07-06 | PJT | 40h |  | 40 | 40 |  | 구현계획수립 | P02-1 1.5.1 |  |
| 413 | 6.10 | 시스템오픈 | milestone | 0d | 2009-07-13 | 2009-07-13 |  |  |  | 2009-07-13 | 2009-07-13 | 0d | 21d | 0d | start no earlier than 2009-07-13 | PJT |  |  |  |  |  | 컨버젼 및 릴리이즈 | P02-1 1.5.2 |  |

Notes:
- 405: UI(MiPlatform->NCRM), DBIO(Oracle->DB2), SP(Oracle->DB2), Rule(Oracle->DB2)
- 406: Gap분석은 없음(신규개발)
