# 14.Channel Interface

Schedule from MS Project, 2008-08-13 to 2009-07-13, status date 2008-12-12, costs in %, A marks actual dates.
HSIC-0820606

## Calendars

- 한국: Mon-Fri 08:00-12:00, 13:00-17:00; Sat-Sun off. Exceptions (off unless hours are given): 2008-08-15, 2008-09-13 to 2008-09-14, 2008-09-15 08:00-12:00, 13:00-17:00, 2008-10-03, 2008-12-25, 2009-01-01, 2009-01-25 to 2009-01-27, 2009-03-01, 2009-05-01 to 2009-05-02, 2009-05-05, 2009-06-06.

## Resources

| Resource | Rate |
| --- | --- |
| 이송연 | 1 |
| 고형석 | 1 |
| 권미희 | 1 |
| 최소영 | 1 |
| 강윤선 | 1 |
| 채널인터페이스 | 1 |
| 채널 대내파트 | 1 |
| 체널 대외파트 | 1 |

## Schedule

| ID | WBS | Task | Duration | Start | Finish | Predecessors | Complete | Baseline start | Baseline finish | Baseline duration | Constraint | Deadline | Resources | Work | Actual work | Cost | Baseline cost | Actual cost | Text30 |
| --- | --- | --- | --- | --- | --- | --- | --- | --- | --- | --- | --- | --- | --- | --- | --- | --- | --- | --- | --- |
| 1 | 1 | **Analysis** | 32d | 2008-08-13 A | 2008-09-26 A |  | 100% | 2008-08-13 | 2008-09-26 | 32d |  |  |  | 792h | 792h | 792 | 792 | 792 |  |
| 2 | 1.1 | **인터페이스 일정계획 수립** | 12d | 2008-08-13 A | 2008-08-29 A |  | 100% | 2008-08-13 | 2008-08-29 | 12d |  |  |  | 104h | 104h | 104 | 104 | 104 |  |
| 3 | 1.1.1 | WBS 작업 정의 | 12d | 2008-08-13 A | 2008-08-29 A |  | 100% | 2008-08-13 | 2008-08-29 | 12d | finish no earlier than 2008-08-29 | 2008-08-13 | 이송연 [108.3%] | 104h | 104h | 104 | 104 | 104 |  |
| 4 | 1.2 | **인터페이스 표준 수립** | 20d | 2008-09-01 A | 2008-09-26 A |  | 100% | 2008-09-01 | 2008-09-26 | 20d |  |  |  | 664h | 664h | 664 | 664 | 664 |  |
| 5 | 1.2.1 | **표준개발 가이드 수립[대내/외 공동작업]** | 10d | 2008-09-01 A | 2008-09-12 A |  | 100% | 2008-09-01 | 2008-09-12 | 10d |  |  |  | 160h | 160h | 160 | 160 | 160 |  |
| 6 | 1.2.1.1 | 표준 개발 가이드 작성 | 10d | 2008-09-01 A | 2008-09-12 A |  | 100% | 2008-09-01 | 2008-09-12 | 10d | finish no earlier than 2008-09-12 |  | 고형석; 권미희 | 160h | 160h | 160 | 160 | 160 | 표준화 정의서[공통]:표준개발가이드 |
| 7 | 1.2.2 | **인터페이스 페턴정의[대내/외 공동작업]** | 8d | 2008-09-08 A | 2008-09-17 A |  | 100% | 2008-09-08 | 2008-09-17 | 8d |  |  |  | 128h | 128h | 128 | 128 | 128 |  |
| 8 | 1.2.2.1 | 인터페이스 구성 전략 | 8d | 2008-09-08 A | 2008-09-17 A |  | 100% | 2008-09-08 | 2008-09-17 | 8d | finish no earlier than 2008-09-17 |  | 고형석 [114.3%]; 권미희 [114.3%] | 128h | 128h | 128 | 128 | 128 | 인터페이스 구성전략:시스템구성전략 |
| 9 | 1.2.3 | **내부인터페이스 표준화** | 19d | 2008-09-02 A | 2008-09-26 A |  | 100% | 2008-09-02 | 2008-09-26 | 19d |  |  |  | 304h | 304h | 304 | 304 | 304 |  |
| 10 | 1.2.3.1 | MetLife XML 표준 검토 | 4d | 2008-09-02 A | 2008-09-05 A |  | 100% | 2008-09-02 | 2008-09-05 | 4d | finish no earlier than 2008-09-05 |  | 고형석; 권미희 | 64h | 64h | 64 | 64 | 64 |  |
| 11 | 1.2.3.2 | 내부연계 표준화(표준 연계방안) | 15d | 2008-09-08 A | 2008-09-26 A | 10 | 100% | 2008-09-08 | 2008-09-26 | 15d | finish no earlier than 2008-09-19 | 2008-09-24 | 고형석 [107.1%]; 권미희 [107.1%] | 240h | 240h | 240 | 240 | 240 | 표준화 정의서[대내]:내부연계 표준화정의서 |
| 12 | 1.2.4 | **대외인터페이스 표준화 [KS-NET]** | 10d | 2008-09-10 A | 2008-09-23 A |  | 100% | 2008-09-10 | 2008-09-23 | 10d |  |  |  | 72h | 72h | 72 | 72 | 72 |  |
| 13 | 1.2.4.1 | 통신 프로토콜 분석 | 8d | 2008-09-10 A | 2008-09-19 A |  | 100% | 2008-09-10 | 2008-09-19 | 8d | finish no earlier than 2008-09-19 |  | 고형석 [114.3%] | 64h | 64h | 64 | 64 | 64 |  |
| 14 | 1.2.4.2 | 대외계 적용방안 수립 | 1d | 2008-09-23 A | 2008-09-23 A |  | 100% | 2008-09-23 | 2008-09-23 | 1d | finish no earlier than 2008-09-23 |  | 고형석 | 8h | 8h | 8 | 8 | 8 | 표준화 정의서[대외]:KS-Net 연계방안 표준화정의서 |
| 15 | 1.3 | **분석단계완료** | 5d | 2008-09-22 A | 2008-09-26 A |  | 100% | 2008-09-22 | 2008-09-26 | 5d |  |  |  | 24h | 24h | 24 | 24 | 24 |  |
| 16 | 1.3.1 | 단계 산출물 정리 | 3d | 2008-09-22 A | 2008-09-24 A |  | 100% | 2008-09-22 | 2008-09-24 | 3d | finish no earlier than 2008-09-24 |  | 채널인터페이스 | 24h | 24h | 24 | 24 | 24 |  |
| 17 | 1.3.2 | 고객 검토 실시 | 1d | 2008-09-25 A | 2008-09-25 A | 16 | 100% | 2008-09-25 | 2008-09-25 | 1d | finish no earlier than 2008-09-25 |  |  |  |  |  |  |  |  |
| 18 | 1.3.3 | 고객 승인 획득 | 1d | 2008-09-26 A | 2008-09-26 A | 17 | 100% | 2008-09-26 | 2008-09-26 | 1d |  |  |  |  |  |  |  |  | 고객 인수 확인서 |
| 19 | 2 | **Design** | 44d | 2008-09-29 A | 2008-11-28 A |  | 100% | 2008-09-29 | 2008-11-28 | 44d |  |  |  | 2354.4h | 2354.4h | 2,354.4 | 2,354.4 | 2,354.4 |  |
| 20 | 2.1 | **솔루션 교육** | 3d | 2008-10-06 A | 2008-10-08 A |  | 100% | 2008-10-06 | 2008-10-08 | 3d |  |  |  | 24h | 24h | 24 | 24 | 24 |  |
| 21 | 2.1.1 | webMethods 솔루션 교육 | 2d | 2008-10-06 A | 2008-10-07 A |  | 100% | 2008-10-06 | 2008-10-07 | 2d |  |  | 권미희 | 16h | 16h | 16 | 16 | 16 | 교육자료-WMAdmin, WMDeveloper, I-Chain |
| 22 | 2.1.2 | 표준연계방안 교육 | 1d | 2008-10-08 A | 2008-10-08 A |  | 100% | 2008-10-08 | 2008-10-08 | 1d | start no earlier than 2008-10-08 |  | 최소영 | 8h | 8h | 8 | 8 | 8 |  |
| 23 | 2.2 | **개발환경 구축** | 32d | 2008-10-02 A | 2008-11-17 A |  | 100% | 2008-10-02 | 2008-11-17 | 32d |  |  |  | 206.4h | 206.4h | 206.4 | 206.4 | 206.4 |  |
| 24 | 2.2.1 | POC 환경 솔루션 설치 | 5d | 2008-10-02 A | 2008-10-09 A |  | 100% | 2008-10-02 | 2008-10-09 | 5d | finish no earlier than 2008-10-10 |  | 권미희 | 46.4h | 46.4h | 46.4 | 46.4 | 46.4 |  |
| 25 | 2.2.2 | 개발환경 테스트(PSR,IIB 간 WebService IF) | 5d | 2008-10-20 A | 2008-10-24 A |  | 100% | 2008-10-20 | 2008-10-24 | 5d | finish no earlier than 2008-10-24 |  | 권미희 | 40h | 40h | 40 | 40 | 40 | webService 테스트 결과서,표준 템플릿 |
| 26 | 2.2.3 | 개발 솔루션 설치 및 환경구성 | 6d | 2008-11-06 A | 2008-11-13 A |  | 100% | 2008-11-06 | 2008-11-13 | 6d | start no earlier than 2008-11-06 |  | 권미희; 강윤선 | 96h | 96h | 96 | 96 | 96 | WebMethods, Ichain 설치과정서, 설치확인결과서 |
| 27 | 2.2.4 | 개발 패키지 구성 | 3d | 2008-11-13 A | 2008-11-17 A |  | 100% | 2008-11-13 | 2008-11-17 | 3d | start no earlier than 2008-11-13 |  | 권미희 | 24h | 24h | 24 | 24 | 24 |  |

| ID | WBS | Task | Duration | Start | Finish | Predecessors | Complete | Baseline start | Baseline finish | Baseline duration | Constraint | Resources | Work | Actual work | Cost | Baseline cost | Actual cost | Text30 |
| --- | --- | --- | --- | --- | --- | --- | --- | --- | --- | --- | --- | --- | --- | --- | --- | --- | --- | --- |
| 28 | 2.3 | **모니터링 정책 수립** | 7d | 2008-10-06 A | 2008-10-14 A |  | 100% | 2008-10-06 | 2008-10-14 | 7d |  |  | 56h | 56h | 56 | 56 | 56 |  |
| 29 | 2.3.1 | 모니터링 마스터 데이터 정의 | 3d | 2008-10-06 A | 2008-10-08 A |  | 100% | 2008-10-06 | 2008-10-08 | 3d | finish no earlier than 2008-10-08 | 강윤선 | 24h | 24h | 24 | 24 | 24 | I-Chain 모니터링 서비스 구성방안 |
| 30 | 2.3.2 | 시스템 그룹 및 물리적 시스템 정의 | 4d | 2008-10-09 A | 2008-10-14 A |  | 100% | 2008-10-09 | 2008-10-14 | 4d | finish no earlier than 2008-10-14 | 강윤선 | 32h | 32h | 32 | 32 | 32 |  |
| 31 | 2.4 | **인터페이스 현황 정리** | 24d | 2008-09-29 A | 2008-10-31 A |  | 100% | 2008-09-29 | 2008-10-31 | 24d |  |  | 200h | 200h | 200 | 200 | 200 |  |
| 32 | 2.4.1 | 모듈별 인터페이스 조사 | 24d | 2008-09-29 A | 2008-10-31 A |  | 100% | 2008-09-29 | 2008-10-31 | 24d | start no earlier than 2008-09-29 | 최소영 | 200h | 200h | 200 | 200 | 200 | 인터페이스 목록 |
| 33 | 2.5 | **시스템 구성 설계** | 10d | 2008-10-13 A | 2008-10-24 A |  | 100% | 2008-10-13 | 2008-10-24 | 10d |  |  | 80h | 80h | 80 | 80 | 80 |  |
| 34 | 2.5.1 | 인터페이스 시스템 아키텍처 | 10d | 2008-10-13 A | 2008-10-24 A |  | 100% | 2008-10-13 | 2008-10-24 | 10d | start no earlier than 2008-10-13 | 최소영 | 80h | 80h | 80 | 80 | 80 | 시스템 아키텍쳐 정의서 |
| 35 | 2.6 | **대내외 인터페이스 설계 및 지원** | 18d | 2008-11-03 A | 2008-11-26 A |  | 100% | 2008-11-03 | 2008-11-26 | 18d |  |  | 1336h | 1336h | 1,336 | 1,336 | 1,336 | 기능정의서 |
| 36 | 2.6.1 | PSR(상품) | 17d | 2008-11-03 A | 2008-11-25 A |  | 100% | 2008-11-03 | 2008-11-25 | 17d | finish no earlier than 2008-11-14 | 채널 대내파트 | 136h | 136h | 136 | 136 | 136 |  |
| 37 | 2.6.2 | PSR(고객) | 17d | 2008-11-03 A | 2008-11-25 A |  | 100% | 2008-11-03 | 2008-11-25 | 17d | finish no earlier than 2008-11-14 | 채널 대내파트 | 136h | 136h | 136 | 136 | 136 |  |
| 38 | 2.6.3 | PSR(신계약) | 18d | 2008-11-03 A | 2008-11-26 A |  | 100% | 2008-11-03 | 2008-11-26 | 18d | finish no earlier than 2008-11-14 | 채널 대내파트 | 144h | 144h | 144 | 144 | 144 |  |
| 39 | 2.6.4 | PSR(수금) | 13d | 2008-11-10 A | 2008-11-26 A |  | 100% | 2008-11-10 | 2008-11-26 | 13d | start no earlier than 2008-11-10 | 채널 대내파트 | 104h | 104h | 104 | 104 | 104 |  |
| 40 | 2.6.5 | PSR(계약변경) | 18d | 2008-11-03 A | 2008-11-26 A |  | 100% | 2008-11-03 | 2008-11-26 | 18d | finish no earlier than 2008-11-14 | 채널 대내파트 | 144h | 144h | 144 | 144 | 144 |  |
| 41 | 2.6.6 | PSR(지급) | 18d | 2008-11-03 A | 2008-11-26 A |  | 100% | 2008-11-03 | 2008-11-26 | 18d | start no earlier than 2008-11-03 | 채널 대내파트 | 144h | 144h | 144 | 144 | 144 |  |
| 42 | 2.6.7 | PSR(공통) | 18d | 2008-11-03 A | 2008-11-26 A |  | 100% | 2008-11-03 | 2008-11-26 | 18d | start no earlier than 2008-11-03 | 채널 대내파트 | 144h | 144h | 144 | 144 | 144 |  |
| 43 | 2.6.8 | PSR(CLAIM) | 18d | 2008-11-03 A | 2008-11-26 A |  | 100% | 2008-11-03 | 2008-11-26 | 18d | finish no earlier than 2008-11-14 | 채널 대내파트 | 144h | 144h | 144 | 144 | 144 |  |
| 44 | 2.6.9 | PSR(변액) | 12d | 2008-11-10 A | 2008-11-25 A |  | 100% | 2008-11-10 | 2008-11-25 | 12d | start no earlier than 2008-11-10 | 채널 대내파트 | 96h | 96h | 96 | 96 | 96 |  |
| 45 | 2.6.10 | PSR(대외계) | 18d | 2008-11-03 A | 2008-11-26 A |  | 100% | 2008-11-03 | 2008-11-26 | 18d | finish no earlier than 2008-11-21 | 채널 대내파트 | 144h | 144h | 144 | 144 | 144 |  |
| 46 | 2.7 | **대외 인터페이스 통신 모듈 설계** | 39d | 2008-09-29 A | 2008-11-21 A |  | 100% | 2008-09-29 | 2008-11-21 | 39d |  |  | 452h | 452h | 452 | 452 | 452 |  |
| 47 | 2.7.1 | KS-NET 통신모듈 구성 | 14d | 2008-09-29 A | 2008-10-17 A |  | 100% | 2008-09-29 | 2008-10-17 | 14d | start no earlier than 2008-09-29 | 체널 대외파트 | 112h | 112h | 112 | 112 | 112 | 모듈 사용가이드 |
| 48 | 2.7.2 | 생보협회 | 10d | 2008-10-20 A | 2008-10-31 A |  | 100% | 2008-10-20 | 2008-10-31 | 10d | start no earlier than 2008-10-20 | 체널 대외파트 | 80h | 80h | 80 | 80 | 80 | 표준화 정의서[대외]:생보협회 연계방안 |
| 49 | 2.7.3 | 금결원(KFTC) | 10d | 2008-10-20 A | 2008-10-31 A |  | 100% | 2008-10-20 | 2008-10-31 | 10d | start no earlier than 2008-10-20 | 체널 대외파트 | 80h | 80h | 80 | 80 | 80 | 표준화 정의서[대외]:금결원 연계방안 |
| 50 | 2.7.4 | KDI | 5d | 2008-11-17 A | 2008-11-21 A | 49 | 100% | 2008-11-17 | 2008-11-21 | 5d | start no earlier than 2008-11-17 | 체널 대외파트 | 40h | 40h | 40 | 40 | 40 | 표준화 정의서[대외]:KDI 연계방안 |
| 51 | 2.7.5 | 사무수탁사 | 5d | 2008-11-10 A | 2008-11-14 A |  | 100% | 2008-11-10 | 2008-11-14 | 5d | start no earlier than 2008-11-10 | 체널 대외파트 | 40h | 40h | 40 | 40 | 40 | 표준화 정의서[대외]:사무수탁사 연계방안 |
| 52 | 2.7.6 | KIS | 5d | 2008-11-17 A | 2008-11-21 A |  | 100% | 2008-11-17 | 2008-11-21 | 5d | start no earlier than 2008-11-10 | 체널 대외파트 | 40h | 40h | 40 | 40 | 40 | 표준화 정의서[대외]:KIS 연계방안 |
| 53 | 2.7.7 | 파라메딕(경희,차,준) | 5d | 2008-11-03 A | 2008-11-07 A |  | 100% | 2008-11-03 | 2008-11-07 | 5d | start no earlier than 2008-11-07 | 체널 대외파트 | 20h | 20h | 20 | 20 | 20 | 표준화 정의서[대외]:파라메딕 연계방안 |
| 54 | 2.7.8 | Milliman | 5d | 2008-11-03 A | 2008-11-07 A |  | 100% | 2008-11-03 | 2008-11-07 | 5d | start no earlier than 2008-11-07 | 체널 대외파트 | 40h | 40h | 40 | 40 | 40 | 표준화 정의서[대외]:Milliman 연계방안 |

| ID | WBS | Task | Duration | Start | Finish | Predecessors | Complete | Remaining | Baseline start | Baseline finish | Baseline duration | Total slack | Constraint | Resources | Work | Actual work | Cost | Baseline cost | Actual cost | Text30 |
| --- | --- | --- | --- | --- | --- | --- | --- | --- | --- | --- | --- | --- | --- | --- | --- | --- | --- | --- | --- | --- |
| 55 | 2.8 | **설계단계완료** | 5d | 2008-11-24 A | 2008-11-28 A |  | 100% |  | 2008-11-24 | 2008-11-28 | 5d |  |  |  |  |  |  |  |  |  |
| 56 | 2.8.1 | 단계 산출물 정리 | 2d | 2008-11-24 A | 2008-11-25 A |  | 100% |  | 2008-11-24 | 2008-11-25 | 2d |  | start no earlier than 2008-11-24 |  |  |  |  |  |  |  |
| 57 | 2.8.2 | 고객 검토 실시 | 2d | 2008-11-26 A | 2008-11-27 A | 56 | 100% |  | 2008-11-26 | 2008-11-27 | 2d |  | start no earlier than 2008-09-26 |  |  |  |  |  |  |  |
| 58 | 2.8.3 | 고객 승인 획득 | 1d | 2008-11-28 A | 2008-11-28 A | 57 | 100% |  | 2008-11-28 | 2008-11-28 | 1d |  |  |  |  |  |  |  |  | 고객 인수 확인서 |
| 59 | 3 | **Build/Unit Test** | 88d | 2008-11-24 A | 2009-03-31 |  | 4% | 84.83d | 2008-11-24 | 2009-03-31 | 88d | 72d |  |  | 1224h | 299.28h | 1,224 | 1,224 | 299.28 |  |
| 60 | 3.1 | 인터페이스 개발 일정 수립 | 13d | 2008-11-26 A | 2008-12-12 |  | 70% | 3.9d | 2008-11-26 | 2008-12-12 | 13d | 145d | start no earlier than 2008-11-26 | 최소영 | 104h | 72.8h | 104 | 104 | 72.8 | 인터페이스 목록 |
| 61 | 3.2 | **대외 인터페이스 통신 모듈 설계** | 18d | 2009-01-05 | 2009-01-30 |  |  |  | 2009-01-05 | 2009-01-30 | 18d | 114d |  |  | 472h |  | 472 | 472 |  |  |
| 62 | 3.2.1 | CIC | 5d | 2009-01-05 | 2009-01-09 | 48 |  |  | 2009-01-05 | 2009-01-09 | 5d | 127d | finish no earlier than 2009-01-09 | 체널 대외파트 | 40h |  | 40 | 40 |  | 표준화 정의서[대외]:CIC 연계방안 |
| 63 | 3.2.2 | KOSCOM | 18d | 2009-01-05 | 2009-01-30 |  |  |  | 2009-01-05 | 2009-01-30 | 18d | 114d | finish no earlier than 2009-01-30 | 체널 대외파트 | 144h |  | 144 | 144 |  | 표준화 정의서[대외]:KOSCOM 연계방안 |
| 64 | 3.2.3 | KBP | 18d | 2009-01-05 | 2009-01-30 |  |  |  | 2009-01-05 | 2009-01-30 | 18d | 114d | finish no earlier than 2009-01-30 | 체널 대외파트 | 144h |  | 144 | 144 |  | 표준화 정의서[대외]:KBP 연계방안 |
| 65 | 3.2.4 | e-Value | 18d | 2009-01-05 | 2009-01-30 |  |  |  | 2009-01-05 | 2009-01-30 | 18d | 114d | finish no earlier than 2009-01-30 | 체널 대외파트 | 144h |  | 144 | 144 |  | 표준화 정의서[대외]:e-Value 연계방안 |
| 66 | 3.3 | **서비스 개발[인터페이스 단위로 반복 수행]** | 88d | 2008-11-24 A | 2009-03-31 |  | 3% | 85.4d | 2008-11-24 | 2009-03-31 | 88d | 72d |  |  | 624h | 226.48h | 624 | 624 | 226.48 |  |
| 67 | 3.3.1 | **대내 채널 인터페이스** | 73d | 2008-12-15 | 2009-03-31 |  |  |  | 2008-12-15 | 2009-03-31 | 73d | 13d |  |  |  |  |  |  |  |  |
| 68 | 3.3.1.1 | **인터페이스 서비스 개발** | 73d | 2008-12-15 | 2009-03-31 |  |  |  | 2008-12-15 | 2009-03-31 | 73d | 72d |  |  |  |  |  |  |  | 소스코드 |
| 69 | 3.3.1.1.1 | PSR(상품) | 17d | 2009-02-02 | 2009-02-24 |  |  |  | 2009-02-02 | 2009-02-24 | 17d | 97d | start no earlier than 2009-02-02 |  |  |  |  |  |  |  |
| 70 | 3.3.1.1.2 | PSR(고객) | 37d | 2009-01-05 | 2009-02-26 |  |  |  | 2009-01-05 | 2009-02-26 | 37d | 95d | start no earlier than 2009-01-05 |  |  |  |  |  |  |  |
| 71 | 3.3.1.1.3 | PSR(신계약) | 6d | 2009-02-20 | 2009-02-27 |  |  |  | 2009-02-20 | 2009-02-27 | 6d | 94d | start no earlier than 2009-02-20 |  |  |  |  |  |  |  |
| 72 | 3.3.1.1.4 | PSR(수금) | 29d | 2009-01-16 | 2009-02-27 |  |  |  | 2009-01-16 | 2009-02-27 | 29d | 94d | start no earlier than 2009-01-16 |  |  |  |  |  |  |  |
| 73 | 3.3.1.1.5 | PSR(계약변경) | 34d | 2009-01-09 | 2009-02-27 |  |  |  | 2009-01-09 | 2009-02-27 | 34d | 94d | start no earlier than 2009-01-09 |  |  |  |  |  |  |  |
| 74 | 3.3.1.1.6 | PSR(지급) | 23d | 2009-01-28 | 2009-02-27 |  |  |  | 2009-01-28 | 2009-02-27 | 23d | 94d | start no earlier than 2009-01-28 |  |  |  |  |  |  |  |
| 75 | 3.3.1.1.7 | PSR(CLAIM) | 17d | 2009-02-05 | 2009-02-27 |  |  |  | 2009-02-05 | 2009-02-27 | 17d | 94d | start no earlier than 2009-02-05 |  |  |  |  |  |  |  |
| 76 | 3.3.1.1.8 | PSR(변액) | 12d | 2009-02-09 | 2009-02-24 |  |  |  | 2009-02-09 | 2009-02-24 | 12d | 97d | start no earlier than 2009-02-09 |  |  |  |  |  |  |  |
| 77 | 3.3.1.1.9 | PSR(대외계) | 8d | 2008-12-15 | 2008-12-24 |  |  |  | 2008-12-15 | 2008-12-24 | 8d | 137d | start no earlier than 2008-12-15 |  |  |  |  |  |  |  |
| 78 | 3.3.1.1.10 | PSR(업무공통,마감) | 56d | 2009-01-05 | 2009-03-25 |  |  |  | 2009-01-05 | 2009-03-25 | 56d | 76d | start no earlier than 2009-01-05 |  |  |  |  |  |  |  |
| 79 | 3.3.1.1.11 | NFSS | 60d | 2009-01-05 | 2009-03-31 |  |  |  | 2009-01-05 | 2009-03-31 | 60d | 72d | start no earlier than 2009-01-05 |  |  |  |  |  |  |  |

| ID | WBS | Task | Duration | Start | Finish | Complete | Remaining | Baseline start | Baseline finish | Baseline duration | Total slack | Constraint | Deadline | Resources | Work | Actual work | Cost | Baseline cost | Actual cost | Text30 |
| --- | --- | --- | --- | --- | --- | --- | --- | --- | --- | --- | --- | --- | --- | --- | --- | --- | --- | --- | --- | --- |
| 80 | 3.3.1.2 | **단위 테스트 실시** | 73d | 2008-12-15 | 2009-03-31 |  |  | 2008-12-15 | 2009-03-31 | 73d | 13d |  |  |  |  |  |  |  |  | 단위테스트결과 |
| 81 | 3.3.1.2.1 | PSR(상품) | 17d | 2009-02-02 | 2009-02-24 |  |  | 2009-02-02 | 2009-02-24 | 17d | 97d | start no earlier than 2009-02-02 |  |  |  |  |  |  |  |  |
| 82 | 3.3.1.2.2 | PSR(고객) | 37d | 2009-01-05 | 2009-02-26 |  |  | 2009-01-05 | 2009-02-26 | 37d | 95d | start no earlier than 2009-01-05 |  |  |  |  |  |  |  |  |
| 83 | 3.3.1.2.3 | PSR(신계약) | 6d | 2009-02-20 | 2009-02-27 |  |  | 2009-02-20 | 2009-02-27 | 6d | 94d | start no earlier than 2009-02-20 |  |  |  |  |  |  |  |  |
| 84 | 3.3.1.2.4 | PSR(수금) | 29d | 2009-01-16 | 2009-02-27 |  |  | 2009-01-16 | 2009-02-27 | 29d | 94d | start no earlier than 2009-01-16 |  |  |  |  |  |  |  |  |
| 85 | 3.3.1.2.5 | PSR(계약변경) | 34d | 2009-01-09 | 2009-02-27 |  |  | 2009-01-09 | 2009-02-27 | 34d | 94d | start no earlier than 2009-01-09 |  |  |  |  |  |  |  |  |
| 86 | 3.3.1.2.6 | PSR(지급) | 23d | 2009-01-28 | 2009-02-27 |  |  | 2009-01-28 | 2009-02-27 | 23d | 94d | start no earlier than 2009-01-28 |  |  |  |  |  |  |  |  |
| 87 | 3.3.1.2.7 | PSR(CLAIM) | 17d | 2009-02-05 | 2009-02-27 |  |  | 2009-02-05 | 2009-02-27 | 17d | 94d | start no earlier than 2009-02-05 |  |  |  |  |  |  |  |  |
| 88 | 3.3.1.2.8 | PSR(변액) | 12d | 2009-02-09 | 2009-02-24 |  |  | 2009-02-09 | 2009-02-24 | 12d | 97d | start no earlier than 2009-02-09 |  |  |  |  |  |  |  |  |
| 89 | 3.3.1.2.9 | PSR(대외계) | 8d | 2008-12-15 | 2008-12-24 |  |  | 2008-12-15 | 2008-12-24 | 8d | 137d | start no earlier than 2008-12-15 |  |  |  |  |  |  |  |  |
| 90 | 3.3.1.2.10 | PSR(업무공통,마감) | 56d | 2009-01-05 | 2009-03-25 |  |  | 2009-01-05 | 2009-03-25 | 56d | 0d | start no earlier than 2009-01-05 | 2009-03-25 |  |  |  |  |  |  |  |
| 91 | 3.3.1.2.11 | NFSS | 60d | 2009-01-05 | 2009-03-31 |  |  | 2009-01-05 | 2009-03-31 | 60d | 72d | start no earlier than 2009-01-05 |  |  |  |  |  |  |  |  |
| 92 | 3.3.2 | **대외 채널 인터페이스** | 88d | 2008-11-24 A | 2009-03-31 | 8% | 81.12d | 2008-11-24 | 2009-03-31 | 88d | 72d |  |  |  | 624h | 226.48h | 624 | 624 | 226.48 |  |
| 93 | 3.3.2.1 | **대외채널 어댑터 개발** | 51d | 2008-11-24 A | 2009-02-06 | 35% | 33.39d | 2008-11-24 | 2009-02-06 | 51d | 109d |  |  |  | 624h | 226.48h | 624 | 624 | 226.48 | 소스코드 |
| 94 | 3.3.2.1.1 | KS-NET | 10d | 2008-11-24 A | 2008-12-05 A | 100% |  | 2008-11-24 | 2008-12-05 | 10d |  | start no earlier than 2008-11-24 |  | 체널 대외파트 | 80h | 80h | 80 | 80 | 80 |  |
| 95 | 3.3.2.1.2 | 생보협회(온라인) | 9d | 2008-12-15 A | 2008-12-26 | 3% | 8.75d | 2008-12-15 | 2008-12-19 | 5d | 136d | finish no earlier than 2008-12-26 |  | 체널 대외파트 | 40h | 2h | 40 | 40 | 2 |  |
| 96 | 3.3.2.1.3 | 생보협회(배치) | 5d | 2009-02-02 | 2009-02-06 |  |  | 2009-02-02 | 2009-02-06 | 5d | 109d | start no earlier than 2009-02-02 |  | 체널 대외파트 | 40h |  | 40 | 40 |  |  |
| 97 | 3.3.2.1.4 | 금결원(KFTC) | 13d | 2008-12-03 A | 2008-12-19 | 62% | 4.94d | 2008-12-03 | 2008-12-19 | 13d | 140d | start no earlier than 2008-12-03 |  | 체널 대외파트 | 104h | 64.48h | 104 | 104 | 64.48 |  |
| 98 | 3.3.2.1.5 | KDI(보험개발원) | 10d | 2008-12-01 A | 2008-12-12 A | 100% |  | 2008-12-01 | 2008-12-12 | 10d |  | start no earlier than 2008-12-01 |  | 체널 대외파트 | 80h | 80h | 80 | 80 | 80 |  |
| 99 | 3.3.2.1.6 | CIC | 5d | 2009-02-02 | 2009-02-06 |  |  | 2009-02-02 | 2009-02-06 | 5d | 109d | start no earlier than 2009-02-02 |  | 체널 대외파트 | 40h |  | 40 | 40 |  |  |
| 100 | 3.3.2.1.7 | 사무수탁사 | 5d | 2008-12-19 | 2008-12-26 |  |  | 2008-12-19 | 2008-12-26 | 5d | 136d | finish no earlier than 2008-12-26 |  | 체널 대외파트 | 40h |  | 40 | 40 |  |  |
| 101 | 3.3.2.1.8 | 파라메딕(경희,차,준) | 5d | 2008-12-29 | 2009-01-05 |  |  | 2008-12-29 | 2009-01-05 | 5d | 131d | start no earlier than 2008-12-29 |  | 체널 대외파트 | 40h |  | 40 | 40 |  |  |
| 102 | 3.3.2.1.9 | Milliman | 5d | 2009-01-05 | 2009-01-09 |  |  | 2009-01-05 | 2009-01-09 | 5d | 127d | start no earlier than 2009-01-05 |  | 체널 대외파트 | 40h |  | 40 | 40 |  |  |
| 103 | 3.3.2.1.10 | KOSCOM | 5d | 2009-01-05 | 2009-01-09 |  |  | 2009-01-05 | 2009-01-09 | 5d | 127d | start no earlier than 2009-01-05 |  | 체널 대외파트 | 40h |  | 40 | 40 |  |  |
| 104 | 3.3.2.1.11 | KBP | 5d | 2009-01-05 | 2009-01-09 |  |  | 2009-01-05 | 2009-01-09 | 5d | 127d | start no earlier than 2009-01-05 |  | 체널 대외파트 | 40h |  | 40 | 40 |  |  |
| 105 | 3.3.2.1.12 | e-Value | 5d | 2009-01-05 | 2009-01-09 |  |  | 2009-01-05 | 2009-01-09 | 5d | 127d | start no earlier than 2009-01-05 |  | 체널 대외파트 | 40h |  | 40 | 40 |  |  |

| ID | WBS | Task | Duration | Start | Finish | Predecessors | Baseline start | Baseline finish | Baseline duration | Total slack | Free slack | Constraint | Resources | Work | Cost | Baseline cost | Text30 |
| --- | --- | --- | --- | --- | --- | --- | --- | --- | --- | --- | --- | --- | --- | --- | --- | --- | --- |
| 106 | 3.3.2.2 | **인터페이스 서비스 개발** | 73d | 2008-12-15 | 2009-03-31 |  | 2008-12-15 | 2009-03-31 | 73d | 72d |  |  |  |  |  |  | 소스코드 |
| 107 | 3.3.2.2.1 | PSR(고객) | 37d | 2009-01-05 | 2009-02-26 |  | 2009-01-05 | 2009-02-26 | 37d | 95d |  | start no earlier than 2009-01-05 |  |  |  |  |  |
| 108 | 3.3.2.2.2 | PSR(대외계) | 8d | 2008-12-15 | 2008-12-24 |  | 2008-12-15 | 2008-12-24 | 8d | 137d |  | start no earlier than 2008-12-15 |  |  |  |  |  |
| 109 | 3.3.2.2.3 | PSR(변액) | 12d | 2009-02-09 | 2009-02-24 |  | 2009-02-09 | 2009-02-24 | 12d | 97d |  | start no earlier than 2009-02-09 |  |  |  |  |  |
| 110 | 3.3.2.2.4 | PSR(신계약) | 6d | 2009-02-20 | 2009-02-27 |  | 2009-02-20 | 2009-02-27 | 6d | 94d |  | start no earlier than 2009-02-20 |  |  |  |  |  |
| 111 | 3.3.2.2.5 | PSR(CLAIM) | 17d | 2009-02-05 | 2009-02-27 |  | 2009-02-05 | 2009-02-27 | 17d | 94d |  | start no earlier than 2009-02-05 |  |  |  |  |  |
| 112 | 3.3.2.2.6 | NFSS | 60d | 2009-01-05 | 2009-03-31 |  | 2009-01-05 | 2009-03-31 | 60d | 72d |  | start no earlier than 2009-01-05 |  |  |  |  |  |
| 113 | 3.3.2.3 | **단위 테스트 실시** | 73d | 2008-12-15 | 2009-03-31 |  | 2008-12-15 | 2009-03-31 | 73d | 72d |  |  |  |  |  |  | 단위테스트결과 |
| 114 | 3.3.2.3.1 | PSR(고객) | 37d | 2009-01-05 | 2009-02-26 |  | 2009-01-05 | 2009-02-26 | 37d | 95d |  | start no earlier than 2009-01-05 |  |  |  |  |  |
| 115 | 3.3.2.3.2 | PSR(대외계) | 8d | 2008-12-15 | 2008-12-24 |  | 2008-12-15 | 2008-12-24 | 8d | 137d |  | start no earlier than 2008-12-15 |  |  |  |  |  |
| 116 | 3.3.2.3.3 | PSR(변액) | 12d | 2009-02-09 | 2009-02-24 |  | 2009-02-09 | 2009-02-24 | 12d | 97d |  | start no earlier than 2009-02-09 |  |  |  |  |  |
| 117 | 3.3.2.3.4 | PSR(신계약) | 6d | 2009-02-20 | 2009-02-27 |  | 2009-02-20 | 2009-02-27 | 6d | 94d |  | start no earlier than 2009-02-20 |  |  |  |  |  |
| 118 | 3.3.2.3.5 | PSR(CLAIM) | 17d | 2009-02-05 | 2009-02-27 |  | 2009-02-05 | 2009-02-27 | 17d | 94d |  | start no earlier than 2009-02-05 |  |  |  |  |  |
| 119 | 3.3.2.3.6 | NFSS | 60d | 2009-01-05 | 2009-03-31 |  | 2009-01-05 | 2009-03-31 | 60d | 72d |  | start no earlier than 2009-01-05 |  |  |  |  |  |
| 120 | 3.4 | **개발단계완료** | 5d | 2009-03-09 | 2009-03-13 |  | 2009-03-09 | 2009-03-13 | 5d | 84d |  |  |  | 24h | 24 | 24 |  |
| 121 | 3.4.1 | 단계 산출물 정리 | 3d | 2009-03-09 | 2009-03-11 |  | 2009-03-09 | 2009-03-11 | 3d | 84d | 0d | finish no earlier than 2009-03-11 | 채널인터페이스 | 24h | 24 | 24 |  |
| 122 | 3.4.2 | 고객 검토 실시 | 1d | 2009-03-12 | 2009-03-12 | 121 | 2009-03-12 | 2009-03-12 | 1d | 84d | 0d | finish no earlier than 2009-03-12 |  |  |  |  |  |
| 123 | 3.4.3 | 고객 승인 획득 | 1d | 2009-03-13 | 2009-03-13 | 122 | 2009-03-13 | 2009-03-13 | 1d | 84d |  | finish no earlier than 2009-03-13 |  |  |  |  | 고객 인수 확인서 |
| 124 | 4 | **E2E Test(End to End Test)** | 48d | 2009-03-16 | 2009-05-22 |  | 2009-03-16 | 2009-05-22 | 48d | 36d |  |  |  | 3800h | 3,800 | 3,800 |  |
| 125 | 4.1 | **대내 인터페이스 통합 테스트 지원** | 48d | 2009-03-16 | 2009-05-22 |  | 2009-03-16 | 2009-05-22 | 48d | 36d |  |  |  | 1760h | 1,760 | 1,760 |  |
| 126 | 4.1.1 | PSR(상품) | 20d | 2009-03-16 | 2009-04-10 |  | 2009-03-16 | 2009-04-10 | 20d | 64d |  | finish no earlier than 2009-04-10 | 채널 대내파트 | 160h | 160 | 160 |  |
| 127 | 4.1.2 | PSR(고객) | 20d | 2009-03-16 | 2009-04-10 |  | 2009-03-16 | 2009-04-10 | 20d | 64d |  | start no earlier than 2009-03-16 | 채널 대내파트 | 160h | 160 | 160 |  |
| 128 | 4.1.3 | PSR(신계약) | 20d | 2009-03-16 | 2009-04-10 |  | 2009-03-16 | 2009-04-10 | 20d | 64d |  | finish no earlier than 2009-04-10 | 채널 대내파트 | 160h | 160 | 160 |  |
| 129 | 4.1.4 | PSR(수금) | 40d | 2009-03-26 | 2009-05-22 |  | 2009-03-26 | 2009-05-22 | 40d | 36d |  | finish no earlier than 2009-05-22 | 채널 대내파트 | 320h | 320 | 320 |  |
| 130 | 4.1.5 | PSR(계약변경) | 20d | 2009-03-16 | 2009-04-10 |  | 2009-03-16 | 2009-04-10 | 20d | 64d |  | finish no earlier than 2009-04-10 | 채널 대내파트 | 160h | 160 | 160 |  |
| 131 | 4.1.6 | PSR(지급) | 20d | 2009-03-16 | 2009-04-10 |  | 2009-03-16 | 2009-04-10 | 20d | 64d |  | finish no earlier than 2009-04-10 | 채널 대내파트 | 160h | 160 | 160 |  |
| 132 | 4.1.7 | PSR(CLAIM) | 20d | 2009-03-16 | 2009-04-10 |  | 2009-03-16 | 2009-04-10 | 20d | 64d |  | finish no earlier than 2009-04-10 | 채널 대내파트 | 160h | 160 | 160 |  |
| 133 | 4.1.8 | PSR(변액) | 20d | 2009-03-16 | 2009-04-10 |  | 2009-03-16 | 2009-04-10 | 20d | 64d |  | finish no earlier than 2009-04-10 | 채널 대내파트 | 160h | 160 | 160 |  |
| 134 | 4.1.9 | PSR(대외계) | 20d | 2009-03-16 | 2009-04-10 |  | 2009-03-16 | 2009-04-10 | 20d | 64d |  | finish no earlier than 2009-04-10 | 채널 대내파트 | 160h | 160 | 160 |  |
| 135 | 4.1.10 | NFSS | 20d | 2009-03-16 | 2009-04-10 |  | 2009-03-16 | 2009-04-10 | 20d | 64d |  | finish no earlier than 2009-04-10 | 채널 대내파트 | 160h | 160 | 160 |  |

| ID | WBS | Task | Duration | Start | Finish | Baseline start | Baseline finish | Baseline duration | Total slack | Constraint | Resources | Work | Cost | Baseline cost | Text30 |
| --- | --- | --- | --- | --- | --- | --- | --- | --- | --- | --- | --- | --- | --- | --- | --- |
| 136 | 4.2 | **대외 인터페이스 통합 테스트 지원** | 20d | 2009-03-16 | 2009-04-10 | 2009-03-16 | 2009-04-10 | 20d | 64d |  |  | 1920h | 1,920 | 1,920 |  |
| 137 | 4.2.1 | KS-NET | 20d | 2009-03-16 | 2009-04-10 | 2009-03-16 | 2009-04-10 | 20d | 64d | finish no earlier than 2009-04-10 | 체널 대외파트 | 160h | 160 | 160 |  |
| 138 | 4.2.2 | 생보협회 | 20d | 2009-03-16 | 2009-04-10 | 2009-03-16 | 2009-04-10 | 20d | 64d | finish no earlier than 2009-04-10 | 체널 대외파트 | 160h | 160 | 160 |  |
| 139 | 4.2.3 | 금결원(KFTC) | 20d | 2009-03-16 | 2009-04-10 | 2009-03-16 | 2009-04-10 | 20d | 64d | finish no earlier than 2009-04-10 | 체널 대외파트 | 160h | 160 | 160 |  |
| 140 | 4.2.4 | KDI | 20d | 2009-03-16 | 2009-04-10 | 2009-03-16 | 2009-04-10 | 20d | 64d | finish no earlier than 2009-04-10 | 체널 대외파트 | 160h | 160 | 160 |  |
| 141 | 4.2.5 | CIC | 20d | 2009-03-16 | 2009-04-10 | 2009-03-16 | 2009-04-10 | 20d | 64d | finish no earlier than 2009-04-10 | 체널 대외파트 | 160h | 160 | 160 |  |
| 142 | 4.2.6 | 사무수탁사 | 20d | 2009-03-16 | 2009-04-10 | 2009-03-16 | 2009-04-10 | 20d | 64d | finish no earlier than 2009-04-10 | 체널 대외파트 | 160h | 160 | 160 |  |
| 143 | 4.2.7 | KIS | 20d | 2009-03-16 | 2009-04-10 | 2009-03-16 | 2009-04-10 | 20d | 64d | finish no earlier than 2009-04-10 | 체널 대외파트 | 160h | 160 | 160 |  |
| 144 | 4.2.8 | 파라메딕(경희,차,준) | 20d | 2009-03-16 | 2009-04-10 | 2009-03-16 | 2009-04-10 | 20d | 64d | finish no earlier than 2009-04-10 | 체널 대외파트 | 160h | 160 | 160 |  |
| 145 | 4.2.9 | Milliman | 20d | 2009-03-16 | 2009-04-10 | 2009-03-16 | 2009-04-10 | 20d | 64d | finish no earlier than 2009-04-10 | 체널 대외파트 | 160h | 160 | 160 |  |
| 146 | 4.2.10 | KOSCOM | 20d | 2009-03-16 | 2009-04-10 | 2009-03-16 | 2009-04-10 | 20d | 64d | finish no earlier than 2009-04-10 | 체널 대외파트 | 160h | 160 | 160 |  |
| 147 | 4.2.11 | KBP | 20d | 2009-03-16 | 2009-04-10 | 2009-03-16 | 2009-04-10 | 20d | 64d | finish no earlier than 2009-04-10 | 체널 대외파트 | 160h | 160 | 160 |  |
| 148 | 4.2.12 | e-Value | 20d | 2009-03-16 | 2009-04-10 | 2009-03-16 | 2009-04-10 | 20d | 64d | finish no earlier than 2009-04-10 | 체널 대외파트 | 160h | 160 | 160 |  |
| 149 | 4.3 | **운영자 산출물 작성** | 15d | 2009-03-23 | 2009-04-10 | 2009-03-23 | 2009-04-10 | 15d | 64d |  |  | 120h | 120 | 120 |  |
| 150 | 4.3.1 | 운영매뉴얼 작성 | 5d | 2009-03-23 | 2009-03-27 | 2009-03-23 | 2009-03-27 | 5d | 74d | start no earlier than 2009-03-23 | 채널인터페이스 | 40h | 40 | 40 | 운영매뉴얼 |
| 151 | 4.3.2 | 운영환경 설정 가이드 | 5d | 2009-04-06 | 2009-04-10 | 2009-04-06 | 2009-04-10 | 5d | 64d | finish no earlier than 2009-04-10 | 고형석; 권미희 | 80h | 80 | 80 | 환경설정 가이드 |
| 152 | 5 | **UAT(User Acceptance Test) 지원** | 115d | 2008-12-19 | 2009-06-05 | 2008-12-19 | 2009-06-05 | 115d | 26d |  |  | 7328h | 7,328 | 7,328 |  |
| 153 | 5.1 | **대내 연계** | 40d | 2009-04-09 | 2009-06-05 | 2009-04-09 | 2009-06-05 | 40d | 26d |  |  | 2880h | 2,880 | 2,880 |  |
| 154 | 5.1.1 | 계약변경 | 40d | 2009-04-09 | 2009-06-05 | 2009-04-09 | 2009-06-05 | 40d | 26d | finish no earlier than 2009-06-05 | 채널 대내파트 | 320h | 320 | 320 |  |
| 155 | 5.1.2 | 고객 | 40d | 2009-04-09 | 2009-06-05 | 2009-04-09 | 2009-06-05 | 40d | 26d | finish no earlier than 2009-06-05 | 채널 대내파트 | 320h | 320 | 320 |  |
| 156 | 5.1.3 | 변액 | 40d | 2009-04-09 | 2009-06-05 | 2009-04-09 | 2009-06-05 | 40d | 26d | finish no earlier than 2009-06-05 | 채널 대내파트 | 320h | 320 | 320 |  |
| 157 | 5.1.4 | 상품 | 40d | 2009-04-09 | 2009-06-05 | 2009-04-09 | 2009-06-05 | 40d | 26d | finish no earlier than 2009-06-05 | 채널 대내파트 | 320h | 320 | 320 |  |
| 158 | 5.1.5 | 수금 | 40d | 2009-04-09 | 2009-06-05 | 2009-04-09 | 2009-06-05 | 40d | 26d | finish no earlier than 2009-06-05 | 채널 대내파트 | 320h | 320 | 320 |  |
| 159 | 5.1.6 | 신계약 | 40d | 2009-04-09 | 2009-06-05 | 2009-04-09 | 2009-06-05 | 40d | 26d | finish no earlier than 2009-06-05 | 채널 대내파트 | 320h | 320 | 320 |  |
| 160 | 5.1.7 | 지급 | 40d | 2009-04-09 | 2009-06-05 | 2009-04-09 | 2009-06-05 | 40d | 26d | finish no earlier than 2009-06-05 | 채널 대내파트 | 320h | 320 | 320 |  |
| 161 | 5.1.8 | Claim | 40d | 2009-04-09 | 2009-06-05 | 2009-04-09 | 2009-06-05 | 40d | 26d | finish no earlier than 2009-06-05 | 채널 대내파트 | 320h | 320 | 320 |  |
| 162 | 5.1.9 | 기타 Legacy 시스템 | 40d | 2009-04-09 | 2009-06-05 | 2009-04-09 | 2009-06-05 | 40d | 26d | finish no earlier than 2009-06-05 | 채널 대내파트 | 320h | 320 | 320 |  |

| ID | WBS | Task | Duration | Start | Finish | Baseline start | Baseline finish | Baseline duration | Total slack | Constraint | Resources | Work | Cost | Baseline cost | Text30 |
| --- | --- | --- | --- | --- | --- | --- | --- | --- | --- | --- | --- | --- | --- | --- | --- |
| 163 | 5.2 | **대외 연계** | 38d | 2009-04-13 | 2009-06-05 | 2009-04-13 | 2009-06-05 | 38d | 26d |  |  | 3648h | 3,648 | 3,648 |  |
| 164 | 5.2.1 | KS-NET | 38d | 2009-04-13 | 2009-06-05 | 2009-04-13 | 2009-06-05 | 38d | 26d | finish no earlier than 2009-06-05 | 체널 대외파트 | 304h | 304 | 304 |  |
| 165 | 5.2.2 | 생보협회 | 38d | 2009-04-13 | 2009-06-05 | 2009-04-13 | 2009-06-05 | 38d | 26d | finish no earlier than 2009-06-05 | 체널 대외파트 | 304h | 304 | 304 |  |
| 166 | 5.2.3 | 금결원(KFTC) | 38d | 2009-04-13 | 2009-06-05 | 2009-04-13 | 2009-06-05 | 38d | 26d | finish no earlier than 2009-06-05 | 체널 대외파트 | 304h | 304 | 304 |  |
| 167 | 5.2.4 | KDI | 38d | 2009-04-13 | 2009-06-05 | 2009-04-13 | 2009-06-05 | 38d | 26d | finish no earlier than 2009-06-05 | 체널 대외파트 | 304h | 304 | 304 |  |
| 168 | 5.2.5 | CIC | 38d | 2009-04-13 | 2009-06-05 | 2009-04-13 | 2009-06-05 | 38d | 26d | finish no earlier than 2009-06-05 | 체널 대외파트 | 304h | 304 | 304 |  |
| 169 | 5.2.6 | 사무수탁사 | 38d | 2009-04-13 | 2009-06-05 | 2009-04-13 | 2009-06-05 | 38d | 26d | finish no earlier than 2009-06-05 | 체널 대외파트 | 304h | 304 | 304 |  |
| 170 | 5.2.7 | KIS | 38d | 2009-04-13 | 2009-06-05 | 2009-04-13 | 2009-06-05 | 38d | 26d | finish no earlier than 2009-06-05 | 체널 대외파트 | 304h | 304 | 304 |  |
| 171 | 5.2.8 | 파라메딕(경희,차,준) | 38d | 2009-04-13 | 2009-06-05 | 2009-04-13 | 2009-06-05 | 38d | 26d | finish no earlier than 2009-06-05 | 체널 대외파트 | 304h | 304 | 304 |  |
| 172 | 5.2.9 | Milliman | 38d | 2009-04-13 | 2009-06-05 | 2009-04-13 | 2009-06-05 | 38d | 26d | finish no earlier than 2009-06-05 | 체널 대외파트 | 304h | 304 | 304 |  |
| 173 | 5.2.10 | KOSCOM | 38d | 2009-04-13 | 2009-06-05 | 2009-04-13 | 2009-06-05 | 38d | 26d | finish no earlier than 2009-06-05 | 체널 대외파트 | 304h | 304 | 304 |  |
| 174 | 5.2.11 | KBP | 38d | 2009-04-13 | 2009-06-05 | 2009-04-13 | 2009-06-05 | 38d | 26d | finish no earlier than 2009-06-05 | 체널 대외파트 | 304h | 304 | 304 |  |
| 175 | 5.2.12 | e-Value | 38d | 2009-04-13 | 2009-06-05 | 2009-04-13 | 2009-06-05 | 38d | 26d | finish no earlier than 2009-06-05 | 체널 대외파트 | 304h | 304 | 304 |  |
| 176 | 5.3 | **운영이관** | 115d | 2008-12-19 | 2009-06-05 | 2008-12-19 | 2009-06-05 | 115d | 26d |  |  | 528h | 528 | 528 |  |
| 177 | 5.3.1 | 운영환경 솔루션 설치 | 14d | 2008-12-19 | 2009-01-09 | 2008-12-19 | 2009-01-09 | 14d | 127d | finish no earlier than 2009-01-09 | 최소영; 권미희 | 224h | 224 | 224 | 솔루션 설치 결과서 |
| 178 | 5.3.2 | 운영이관 | 19d | 2009-05-12 | 2009-06-05 | 2009-05-12 | 2009-06-05 | 19d | 26d | finish no earlier than 2009-06-05 | 고형석; 권미희 | 304h | 304 | 304 |  |
| 179 | 5.4 | **운영자 교육** | 15d | 2009-04-30 | 2009-05-22 | 2009-04-30 | 2009-05-22 | 15d | 36d |  |  | 120h | 120 | 120 |  |
| 180 | 5.4.1 | 솔루션 교육 | 10d | 2009-04-30 | 2009-05-15 | 2009-04-30 | 2009-05-15 | 10d | 41d | finish no earlier than 2009-05-15 | 권미희 | 80h | 80 | 80 | webMethods 교육결과서 |
| 181 | 5.4.2 | 운영자 교육 | 5d | 2009-05-18 | 2009-05-22 | 2009-05-18 | 2009-05-22 | 5d | 36d | finish no earlier than 2009-05-22 | 최소영 | 40h | 40 | 40 | 운영자 교육 결과서 |
| 182 | 5.5 | **시스템안정화** | 15d | 2009-05-18 | 2009-06-05 | 2009-05-18 | 2009-06-05 | 15d | 26d |  |  | 152h | 152 | 152 |  |
| 183 | 5.5.1 | 성능테스트 계획 수립 | 7d | 2009-05-18 | 2009-05-26 | 2009-05-18 | 2009-05-26 | 7d | 34d | start no earlier than 2009-05-18 | 최소영 | 56h | 56 | 56 | 성능테스트 계획서 |
| 184 | 5.5.2 | 성능테스트 수행 | 1d | 2009-05-27 | 2009-05-27 | 2009-05-27 | 2009-05-27 | 1d | 33d | start no earlier than 2009-05-27 | 최소영; 고형석; 권미희 | 24h | 24 | 24 | 성능테스트 결과서 |
| 185 | 5.5.3 | 시스템 안정화 | 3d | 2009-06-03 | 2009-06-05 | 2009-06-03 | 2009-06-05 | 3d | 26d | finish no earlier than 2009-06-05 | 최소영; 고형석; 권미희 | 72h | 72 | 72 | 운영 체크리스트 |
| 186 | 6 | **ORT(Operation Readiness Test)** | 25d | 2009-06-08 | 2009-07-10 | 2009-06-08 | 2009-07-10 | 25d | 1d |  |  | 4456h | 4,456 | 4,456 |  |
| 187 | 6.1 | **대내 연계** | 25d | 2009-06-08 | 2009-07-10 | 2009-06-08 | 2009-07-10 | 25d | 1d |  |  | 1800h | 1,800 | 1,800 |  |
| 188 | 6.1.1 | 계약변경 | 25d | 2009-06-08 | 2009-07-10 | 2009-06-08 | 2009-07-10 | 25d | 1d | finish no earlier than 2009-07-10 | 채널 대내파트 | 200h | 200 | 200 |  |
| 189 | 6.1.2 | 고객 | 25d | 2009-06-08 | 2009-07-10 | 2009-06-08 | 2009-07-10 | 25d | 1d | finish no earlier than 2009-07-10 | 채널 대내파트 | 200h | 200 | 200 |  |
| 190 | 6.1.3 | 변액 | 25d | 2009-06-08 | 2009-07-10 | 2009-06-08 | 2009-07-10 | 25d | 1d | finish no earlier than 2009-07-10 | 채널 대내파트 | 200h | 200 | 200 |  |
| 191 | 6.1.4 | 상품 | 25d | 2009-06-08 | 2009-07-10 | 2009-06-08 | 2009-07-10 | 25d | 1d | finish no earlier than 2009-07-10 | 채널 대내파트 | 200h | 200 | 200 |  |
| 192 | 6.1.5 | 수금 | 25d | 2009-06-08 | 2009-07-10 | 2009-06-08 | 2009-07-10 | 25d | 1d | finish no earlier than 2009-07-10 | 채널 대내파트 | 200h | 200 | 200 |  |
| 193 | 6.1.6 | 신계약 | 25d | 2009-06-08 | 2009-07-10 | 2009-06-08 | 2009-07-10 | 25d | 1d | finish no earlier than 2009-07-10 | 채널 대내파트 | 200h | 200 | 200 |  |
| 194 | 6.1.7 | 지급 | 25d | 2009-06-08 | 2009-07-10 | 2009-06-08 | 2009-07-10 | 25d | 1d | finish no earlier than 2009-07-10 | 채널 대내파트 | 200h | 200 | 200 |  |
| 195 | 6.1.8 | Claim | 25d | 2009-06-08 | 2009-07-10 | 2009-06-08 | 2009-07-10 | 25d | 1d | finish no earlier than 2009-07-10 | 채널 대내파트 | 200h | 200 | 200 |  |
| 196 | 6.1.9 | 기타 Legacy 시스템 | 25d | 2009-06-08 | 2009-07-10 | 2009-06-08 | 2009-07-10 | 25d | 1d | finish no earlier than 2009-07-10 | 채널 대내파트 | 200h | 200 | 200 |  |

| ID | WBS | Task | Duration | Start | Finish | Baseline start | Baseline finish | Baseline duration | Total slack | Constraint | Resources | Work | Cost | Baseline cost |
| --- | --- | --- | --- | --- | --- | --- | --- | --- | --- | --- | --- | --- | --- | --- |
| 197 | 6.2 | **대외 연계** | 25d | 2009-06-08 | 2009-07-10 | 2009-06-08 | 2009-07-10 | 25d | 1d |  |  | 2400h | 2,400 | 2,400 |
| 198 | 6.2.1 | KS-NET | 25d | 2009-06-08 | 2009-07-10 | 2009-06-08 | 2009-07-10 | 25d | 1d | finish no earlier than 2009-07-10 | 체널 대외파트 | 200h | 200 | 200 |
| 199 | 6.2.2 | 생보협회 | 25d | 2009-06-08 | 2009-07-10 | 2009-06-08 | 2009-07-10 | 25d | 1d | finish no earlier than 2009-07-10 | 체널 대외파트 | 200h | 200 | 200 |
| 200 | 6.2.3 | 금결원(KFTC) | 25d | 2009-06-08 | 2009-07-10 | 2009-06-08 | 2009-07-10 | 25d | 1d | finish no earlier than 2009-07-10 | 체널 대외파트 | 200h | 200 | 200 |
| 201 | 6.2.4 | KDI | 25d | 2009-06-08 | 2009-07-10 | 2009-06-08 | 2009-07-10 | 25d | 1d | finish no earlier than 2009-07-10 | 체널 대외파트 | 200h | 200 | 200 |
| 202 | 6.2.5 | CIC | 25d | 2009-06-08 | 2009-07-10 | 2009-06-08 | 2009-07-10 | 25d | 1d | finish no earlier than 2009-07-10 | 체널 대외파트 | 200h | 200 | 200 |
| 203 | 6.2.6 | 사무수탁사 | 25d | 2009-06-08 | 2009-07-10 | 2009-06-08 | 2009-07-10 | 25d | 1d | finish no earlier than 2009-07-10 | 체널 대외파트 | 200h | 200 | 200 |
| 204 | 6.2.7 | KIS | 25d | 2009-06-08 | 2009-07-10 | 2009-06-08 | 2009-07-10 | 25d | 1d | finish no earlier than 2009-07-10 | 체널 대외파트 | 200h | 200 | 200 |
| 205 | 6.2.8 | 파라메딕(경희,차,준) | 25d | 2009-06-08 | 2009-07-10 | 2009-06-08 | 2009-07-10 | 25d | 1d | finish no earlier than 2009-07-10 | 체널 대외파트 | 200h | 200 | 200 |
| 206 | 6.2.9 | Milliman | 25d | 2009-06-08 | 2009-07-10 | 2009-06-08 | 2009-07-10 | 25d | 1d | finish no earlier than 2009-07-10 | 체널 대외파트 | 200h | 200 | 200 |
| 207 | 6.2.10 | KOSCOM | 25d | 2009-06-08 | 2009-07-10 | 2009-06-08 | 2009-07-10 | 25d | 1d | finish no earlier than 2009-07-10 | 체널 대외파트 | 200h | 200 | 200 |
| 208 | 6.2.11 | KBP | 25d | 2009-06-08 | 2009-07-10 | 2009-06-08 | 2009-07-10 | 25d | 1d | finish no earlier than 2009-07-10 | 체널 대외파트 | 200h | 200 | 200 |
| 209 | 6.2.12 | e-Value | 25d | 2009-06-08 | 2009-07-10 | 2009-06-08 | 2009-07-10 | 25d | 1d | finish no earlier than 2009-07-10 | 체널 대외파트 | 200h | 200 | 200 |
| 210 | 6.3 | **오픈 준비** | 4d | 2009-07-06 | 2009-07-09 | 2009-07-06 | 2009-07-09 | 4d | 2d |  |  | 256h | 256 | 256 |
| 211 | 6.3.1 | 외부 회선 접속 테스트 | 4d | 2009-07-06 | 2009-07-09 | 2009-07-06 | 2009-07-09 | 4d | 2d | start no earlier than 2009-07-06 | 고형석 | 32h | 32 | 32 |
| 212 | 6.3.2 | 내부 IP 접속 테스트 | 4d | 2009-07-06 | 2009-07-09 | 2009-07-06 | 2009-07-09 | 4d | 2d | finish no earlier than 2009-07-09 | 권미희 | 32h | 32 | 32 |
| 213 | 6.3.3 | 어뎁터 연계 테스트 | 4d | 2009-07-06 | 2009-07-09 | 2009-07-06 | 2009-07-09 | 4d | 2d | finish no earlier than 2009-07-09 | 고형석; 권미희 | 64h | 64 | 64 |
| 214 | 6.3.4 | 시스템 설정 확인 | 4d | 2009-07-06 | 2009-07-09 | 2009-07-06 | 2009-07-09 | 4d | 2d | finish no earlier than 2009-07-09 | 고형석; 권미희 | 64h | 64 | 64 |
| 215 | 6.3.5 | Package 운영 이관 및 등록 확인 | 4d | 2009-07-06 | 2009-07-09 | 2009-07-06 | 2009-07-09 | 4d | 2d | finish no earlier than 2009-07-09 | 고형석; 권미희 | 64h | 64 | 64 |
| 216 | 7 | **Go Live** | 2d | 2009-07-10 | 2009-07-13 | 2008-07-23 | 2009-07-13 | 246d? | 0d |  |  | 16h | 16 | 16 |
| 217 | 7.1 | 내부 통합 시스템 오픈 | 2d | 2009-07-10 | 2009-07-13 | 2009-07-10 | 2009-07-13 | 2d | 0d | start no earlier than 2009-07-10 | 채널인터페이스 | 16h | 16 | 16 |
