# 15.인프라_이미지

Schedule from MS Project, 2008-10-06 to 2009-07-13, status date 2008-12-12, A marks actual dates.
HSIC-0820606

## Calendars

- 한국: Mon-Fri 08:00-12:00, 13:00-17:00; Sat-Sun off. Exceptions (off unless hours are given): 2008-12-25, 2009-01-01, 2009-01-25 to 2009-01-27, 2009-03-01, 2009-05-01 to 2009-05-02, 2009-05-05, 2009-06-06.

## Resources

| Resource | Rate | Cost per use |
| --- | --- | --- |
| PM | 1 | 1 |
| QAO | 1 | 1 |
| PL | 1 | 1 |
| SA | 1 |  |
| TA | 1 |  |
| F/W | 1 |  |
| UI | 1 |  |
| 개발팀 | 1 |  |
| FW | 1 |  |
| DBIO | 1 |  |
| SA.F/W | 1 |  |
| IBM | 1 |  |
| Tmax | 1 |  |
| PJT | 1 |  |
| NCRM | 1 |  |
| StarTeam | 1 |  |
| CaliberRM | 1 |  |
| TestDirector | 1 |  |
| 생보기술지원파트 | 1 |  |
| RM | 1 |  |
| QTP | 1 |  |
| EAI | 1 |  |
| AnyLink | 1 |  |
| 메타블루 | 1 |  |
| Tivoli | 1 |  |
| Syncsort | 1 |  |
| Rule | 1 |  |
| Printing | 1 |  |
| 이미지 | 1 |  |
| 시스템공통 | 1 |  |
| SA.레포팅 | 1 |  |
| SA.프린팅 | 1 |  |
| DBA | 1 |  |
| 데이터이행 | 1 |  |
| SSO | 1 |  |
| 디지카이트 | 1 |  |

## Schedule

| ID | WBS | Task | Duration | Start | Finish | Predecessors | Complete | Baseline start | Baseline finish | Baseline duration | Constraint | Text20 | Text26 | Text30 |
| --- | --- | --- | --- | --- | --- | --- | --- | --- | --- | --- | --- | --- | --- | --- |
| 1 | 1 | **Analysis** | 17d | 2008-10-06 A | 2008-10-28 A |  | 100% | 2008-10-06 | 2008-10-28 | 17d |  | 분석 | P02-1 1.2 |  |
| 2 | 1.1 | **이미지 일정계획 수립** | 3d | 2008-10-06 A | 2008-10-08 A |  | 100% | 2008-10-06 | 2008-10-08 | 3d |  | 현황평가 | P02-1 1.2.2 |  |
| 3 | 1.1.1 | WBS 작업 정의 | 2d | 2008-10-06 A | 2008-10-07 A |  | 100% | 2008-10-06 | 2008-10-07 | 2d |  | 현황평가 | P02-1 1.2.2 | WBS |
| 4 | 1.1.2 | WBS 선후행 관계 및 일정 계획 수립 | 1d | 2008-10-08 A | 2008-10-08 A | 3 | 100% | 2008-10-08 | 2008-10-08 | 1d |  | 현황평가 | P02-1 1.2.2 | WBS |
| 5 | 1.2 | **현황파악** | 6d | 2008-10-13 A | 2008-10-20 A |  | 100% | 2008-10-13 | 2008-10-20 | 6d |  | 현황평가 | P02-1 1.2.2 |  |
| 6 | 1.2.1 | 현행시스템 분석 | 1d | 2008-10-13 A | 2008-10-13 A |  | 100% | 2008-10-13 | 2008-10-13 | 1d | start no earlier than 2008-10-06 | 현황평가 | P02-1 1.2.2 |  |
| 7 | 1.2.2 | To-Be 업무 분석 | 1d | 2008-10-14 A | 2008-10-14 A | 6 | 100% | 2008-10-14 | 2008-10-14 | 1d |  | 현황평가 | P02-1 1.2.2 |  |
| 8 | 1.2.3 | **인터뷰 실시** | 4d | 2008-10-15 A | 2008-10-20 A |  | 100% | 2008-10-15 | 2008-10-20 | 4d |  | 현황평가 | P02-1 1.2.2 |  |
| 9 | 1.2.3.1 | 신계약 담당자 | 1d | 2008-10-15 A | 2008-10-15 A | 7 | 100% | 2008-10-15 | 2008-10-15 | 1d |  | 현황평가 | P02-1 1.2.2 |  |
| 10 | 1.2.3.2 | 지급 담당자 | 1d | 2008-10-15 A | 2008-10-15 A | 9SS | 100% | 2008-10-15 | 2008-10-15 | 1d |  | 현황평가 | P02-1 1.2.2 |  |
| 11 | 1.2.3.3 | 사고보험금지급 담당자 | 1d | 2008-10-16 A | 2008-10-16 A | 10 | 100% | 2008-10-16 | 2008-10-16 | 1d |  | 현황평가 | P02-1 1.2.2 |  |
| 12 | 1.2.3.4 | 계약변경/수금 담당자 | 1d | 2008-10-20 A | 2008-10-20 A | 11SS | 100% | 2008-10-20 | 2008-10-20 | 1d | start no earlier than 2008-10-20 | 현황평가 | P02-1 1.2.2 |  |
| 13 | 1.3 | **요구사항 정의** | 3d | 2008-10-17 A | 2008-10-21 A |  | 100% | 2008-10-17 | 2008-10-21 | 3d |  | 패키지 요구사항정의 | P02-1 1.2.3 |  |
| 14 | 1.3.1 | **현업요구사항정의서 작성** | 2d | 2008-10-17 A | 2008-10-20 A |  | 100% | 2008-10-17 | 2008-10-20 | 2d |  | 패키지 요구사항정의 | P02-1 1.2.3 |  |
| 15 | 1.3.1.1 | 기능요구사항정의 | 1d | 2008-10-17 A | 2008-10-17 A | 11 | 100% | 2008-10-17 | 2008-10-17 | 1d |  | 패키지 요구사항정의 | P02-1 1.2.3 | 현업요구사항정의서 |
| 16 | 1.3.1.2 | 기술요구사항정의 | 1d | 2008-10-17 A | 2008-10-17 A | 15SS | 100% | 2008-10-17 | 2008-10-17 | 1d |  | 패키지 요구사항정의 | P02-1 1.2.3 | 현업요구사항정의서 |
| 17 | 1.3.1.3 | 타시스템 인터페이스 요구사항 정의 | 1d | 2008-10-20 A | 2008-10-20 A | 16 | 100% | 2008-10-20 | 2008-10-20 | 1d |  | 패키지 요구사항정의 | P02-1 1.2.3 | 현업요구사항정의서 |
| 18 | 1.3.1.4 | 시스템 기본 요건 요구사항 정의 | 1d | 2008-10-20 A | 2008-10-20 A | 17SS | 100% | 2008-10-20 | 2008-10-20 | 1d |  | 패키지 요구사항정의 | P02-1 1.2.3 | 현업요구사항정의서 |
| 19 | 1.3.2 | 현업요구사항정의서 검토 | 1d | 2008-10-21 A | 2008-10-21 A | 18 | 100% | 2008-10-21 | 2008-10-21 | 1d |  | 패키지 요구사항정의 | P02-1 1.2.3 |  |
| 20 | 1.4 | **As-Is/To-Be시스템 GAP 분석** | 4d | 2008-10-22 A | 2008-10-27 A |  | 100% | 2008-10-22 | 2008-10-27 | 4d |  | 매핑 | P02-1 1.2.4 |  |
| 21 | 1.4.1 | To-Be 프로세스 정의 | 2d | 2008-10-22 A | 2008-10-23 A | 19 | 100% | 2008-10-22 | 2008-10-23 | 2d |  | 매핑 | P02-1 1.2.4 |  |
| 22 | 1.4.2 | Gap 분석 | 2d | 2008-10-24 A | 2008-10-27 A | 21 | 100% | 2008-10-24 | 2008-10-27 | 2d |  | 매핑 | P02-1 1.2.4 |  |
| 23 | 1.5 | 시스템 구조 정의 | 1d | 2008-10-28 A | 2008-10-28 A | 22 | 100% | 2008-10-28 | 2008-10-28 | 1d |  | 기술구조정의 | P02-1 1.2.5 |  |
| 24 | 2 | **Design** | 26d | 2008-10-24 A | 2008-11-28 A |  | 100% | 2008-10-24 | 2008-11-28 | 26d |  | 설계 | P02-1 1.3 |  |
| 25 | 2.1 | **시스템 설계** | 9d | 2008-10-29 A | 2008-11-10 A |  | 100% | 2008-10-29 | 2008-11-10 | 9d |  | 추가개발설계 | P02-1 1.3.1 |  |
| 26 | 2.1.1 | 데이터 코드 설계 | 7d | 2008-10-29 A | 2008-11-06 A | 23 | 100% | 2008-10-29 | 2008-11-06 | 7d |  | 추가개발설계 | P02-1 1.3.1 | 데이터코드정의서 |
| 27 | 2.1.2 | 메뉴구조 정의 | 6d | 2008-10-30 A | 2008-11-06 A | 26 | 100% | 2008-10-30 | 2008-11-06 | 6d |  | 추가개발설계 | P02-1 1.3.1 | 메뉴구조도 |
| 28 | 2.1.3 | 프로그램 설계 | 5d | 2008-10-31 A | 2008-11-06 A |  | 100% | 2008-10-31 | 2008-11-06 | 5d | start no earlier than 2008-10-31 | 추가개발설계 | P02-1 1.3.1 | 프로그램사양서 |
| 29 | 2.1.4 | 인터페이스 설계 | 2d | 2008-11-07 A | 2008-11-10 A | 28 | 100% | 2008-11-07 | 2008-11-10 | 2d |  | 추가개발설계 | P02-1 1.3.1 | 인터페이스정의서 |

| ID | WBS | Task | Duration | Start | Finish | Predecessors | Complete | Remaining | Baseline start | Baseline finish | Baseline duration | Total slack | Free slack | Constraint | Text20 | Text26 | Text30 | Text22 | Text25 | Text27 | Text28 |
| --- | --- | --- | --- | --- | --- | --- | --- | --- | --- | --- | --- | --- | --- | --- | --- | --- | --- | --- | --- | --- | --- |
| 30 | 2.2 | **UI 설계** | 5d | 2008-11-07 A | 2008-11-13 A |  | 100% |  | 2008-11-07 | 2008-11-13 | 5d |  |  |  | 추가개발설계 | P02-1 1.3.1 |  |  |  |  |  |
| 31 | 2.2.1 | 화면 설계 | 5d | 2008-11-07 A | 2008-11-13 A | 28 | 100% |  | 2008-11-07 | 2008-11-13 | 5d |  |  |  | 추가개발설계 | P02-1 1.3.1 | 페이지레이아웃 |  |  |  |  |
| 32 | 2.3 | 컨버젼설계 | 2d | 2008-11-07 A | 2008-11-10 A | 28 | 100% |  | 2008-11-07 | 2008-11-10 | 2d |  |  |  | 컨버젼 설계 | P02-1 1.3.2 | 컨버전사양서 |  |  |  |  |
| 33 | 2.4 | **개발환경 구성** | 1d | 2008-10-24 A | 2008-10-24 A |  | 100% |  | 2008-10-24 | 2008-10-24 | 1d |  |  |  | 테스트 설계 | P02-1 1.3.3 |  |  |  |  |  |
| 34 | 2.4.1 | 소프트웨어 설치 및 서버 환경설정 | 1d | 2008-10-24 A | 2008-10-24 A |  | 100% |  | 2008-10-24 | 2008-10-24 | 1d |  |  | start no earlier than 2008-10-24 | 테스트 설계 | P02-1 1.3.3 |  |  |  |  |  |
| 35 | 2.5 | **테스트 설계** | 1d | 2008-11-14 A | 2008-11-14 A |  | 100% |  | 2008-11-14 | 2008-11-14 | 1d |  |  |  | 테스트 설계 | P02-1 1.3.3 |  |  |  |  |  |
| 36 | 2.5.1 | 테스트계획 수립 | 1d | 2008-11-14 A | 2008-11-14 A | 31 | 100% |  | 2008-11-14 | 2008-11-14 | 1d |  |  |  | 테스트 설계 | P02-1 1.3.3 |  |  |  |  |  |
| 37 | 2.6 | **단계완료** | 8d | 2008-11-19 A | 2008-11-28 A |  | 100% |  | 2008-11-19 | 2008-11-28 | 8d |  |  |  | 단계완료 | P02-1 1.6.8 |  |  |  |  |  |
| 38 | 2.6.1 | 요구사항추적표 작성 | 1d | 2008-11-19 A | 2008-11-19 A |  | 100% |  | 2008-11-19 | 2008-11-19 | 1d |  |  | start no earlier than 2008-08-14 | 단계완료 | P02-1 1.6.8 | 요구사항추적표 |  |  |  |  |
| 39 | 2.6.2 | 설계단계산출물 정리(Inspection) | 3d | 2008-11-20 A | 2008-11-24 A | 38 | 100% |  | 2008-11-20 | 2008-11-24 | 3d |  |  | start no earlier than 2008-08-18 | 단계완료 | P02-1 1.6.8 | 인스펙션결과서 |  |  |  |  |
| 40 | 2.6.3 | 고객검토 실시 | 4d | 2008-11-25 A | 2008-11-28 A | 39 | 100% |  | 2008-11-25 | 2008-11-28 | 4d |  |  | start no earlier than 2008-08-21 | 단계완료 | P02-1 1.6.8 | 고객검토결과서 |  |  |  |  |
| 41 | 2.6.4 | 고객승인 획득 | 1d | 2008-11-28 A | 2008-11-28 A | 39FF | 100% |  | 2008-11-28 | 2008-11-28 | 1d |  |  | start no earlier than 2008-11-28 | 단계완료 | P02-1 1.6.8 |  |  |  |  |  |
| 42 | 3 | **Build/Unit Test** | 71d | 2008-12-01 A | 2009-03-13 |  | 10% | 63.6d | 2008-12-01 | 2009-03-13 | 71d | 84d |  |  | 추가개발 프로그램코딩 | P02-1 1.4.1 |  |  |  |  |  |
| 43 | 3.1 | **추가개발/패키지 커스터마이징 및 Unit Test** | 61d | 2008-12-01 A | 2009-02-27 |  | 16% | 51d | 2008-12-01 | 2009-02-27 | 61d | 54d | 0d |  | 추가개발 프로그램코딩 | P02-1 1.4.1 | 소스코드 및 단위테스트결과 | 48648F540F9201F8E100800046140A10 | 07060716O410178 | 00000000000001277308 | DEFAULT |
| 44 | 3.1.1 | 개발 1주차(개발착수준비) | 5d | 2008-12-01 A | 2008-12-05 A |  | 100% |  | 2008-12-01 | 2008-12-05 | 5d |  |  | start no earlier than 2008-12-01 | 추가개발 프로그램코딩 | P02-1 1.4.1 |  | 48648F0A0F9201F8E100800046140A10 | 07060716O410168 | 00000000000001277271 | DEFAULT |
| 45 | 3.1.2 | 개발 2주차(SCAN / 이미지등록) | 5d | 2008-12-08 A | 2008-12-12 A | 44 | 100% |  | 2008-12-08 | 2008-12-12 | 5d |  |  | start no earlier than 2008-12-01 | 추가개발 프로그램코딩 | P02-1 1.4.1 |  | 48648F0A0F9201F8E100800046140A10 | 07060716O410168 | 00000000000001277271 | DEFAULT |
| 46 | 3.1.3 | 개발 3주차(SCAN / 이미지등록) | 5d | 2008-12-15 | 2008-12-19 | 45 |  |  | 2008-12-15 | 2008-12-19 | 5d | 54d | 0d | start no earlier than 2008-07-21 | 추가개발 프로그램코딩 | P02-1 1.4.1 |  | 48648F0A0F9201F8E100800046140A10 | 07060716O410168 | 00000000000001277271 | DEFAULT |
| 47 | 3.1.4 | 개발 4주차(SCAN / 이미지등록) | 4d | 2008-12-22 | 2008-12-26 | 46 |  |  | 2008-12-22 | 2008-12-26 | 4d | 54d | 0d | start no earlier than 2008-11-17 | 추가개발 프로그램코딩 | P02-1 1.4.1 | 소스코드 및 단위테스트결과 | 48648F0A0F9201F8E100800046140A10 | 07060716O410168 | 00000000000001277271 | DEFAULT |
| 48 | 3.1.5 | 개발 5주차(SCAN / 이미지등록) | 4d | 2008-12-29 | 2009-01-02 | 47 |  |  | 2008-12-29 | 2009-01-02 | 4d | 54d | 0d | start no earlier than 2008-12-01 | 추가개발 프로그램코딩 | P02-1 1.4.1 | 소스코드 및 단위테스트결과 | 48648F0A0F9201F8E100800046140A10 | 07060716O410168 | 00000000000001277271 | DEFAULT |
| 49 | 3.1.6 | 개발 6주차(SCAN/이미지등록) | 5d | 2009-01-05 | 2009-01-09 | 48 |  |  | 2009-01-05 | 2009-01-09 | 5d | 54d | 0d | start no earlier than 2008-12-01 | 추가개발 프로그램코딩 | P02-1 1.4.1 | 소스코드 및 단위테스트결과 | 48648F0A0F9201F8E100800046140A10 | 07060716O410168 | 00000000000001277271 | DEFAULT |
| 50 | 3.1.7 | 개발 7주차(SCAN/이미지등록) | 5d | 2009-01-12 | 2009-01-16 | 49 |  |  | 2009-01-12 | 2009-01-16 | 5d | 54d | 0d | start no earlier than 2008-12-01 | 추가개발 프로그램코딩 | P02-1 1.4.1 | 소스코드 및 단위테스트결과 | 48648F0A0F9201F8E100800046140A10 | 07060716O410168 | 00000000000001277271 | DEFAULT |
| 51 | 3.1.8 | 개발 8주차(SCAN) | 5d | 2009-01-19 | 2009-01-23 | 50 |  |  | 2009-01-19 | 2009-01-23 | 5d | 54d | 0d | start no earlier than 2008-07-21 | 추가개발 프로그램코딩 | P02-1 1.4.1 |  | 48648F0A0F9201F8E100800046140A10 | 07060716O410168 | 00000000000001277271 | DEFAULT |
| 52 | 3.1.9 | 개발 9주차(SCAN) | 3d | 2009-01-28 | 2009-01-30 | 51 |  |  | 2009-01-28 | 2009-01-30 | 3d | 54d | 0d | start no earlier than 2008-11-17 | 추가개발 프로그램코딩 | P02-1 1.4.1 |  | 48648F0A0F9201F8E100800046140A10 | 07060716O410168 | 00000000000001277271 | DEFAULT |
| 53 | 3.1.10 | 개발 10주차(SCAN / 이미지조회) | 5d | 2009-02-02 | 2009-02-06 | 52 |  |  | 2009-02-02 | 2009-02-06 | 5d | 54d | 0d | start no earlier than 2008-12-01 | 추가개발 프로그램코딩 | P02-1 1.4.1 |  | 48648F0A0F9201F8E100800046140A10 | 07060716O410168 | 00000000000001277271 | DEFAULT |
| 54 | 3.1.11 | 개발 11주차(SCAN / 이미지조회) | 5d | 2009-02-09 | 2009-02-13 | 53 |  |  | 2009-02-09 | 2009-02-13 | 5d | 54d | 0d | start no earlier than 2008-12-01 | 추가개발 프로그램코딩 | P02-1 1.4.1 |  | 48648F0A0F9201F8E100800046140A10 | 07060716O410168 | 00000000000001277271 | DEFAULT |
| 55 | 3.1.12 | 개발 12주차(SCAN / 이미지조회) | 5d | 2009-02-16 | 2009-02-20 | 54 |  |  | 2009-02-16 | 2009-02-20 | 5d | 54d | 0d | start no earlier than 2008-12-01 | 추가개발 프로그램코딩 | P02-1 1.4.1 | 소스코드 및 단위테스트결과 | 48648F0A0F9201F8E100800046140A10 | 07060716O410168 | 00000000000001277271 | DEFAULT |
| 56 | 3.1.13 | 개발 13주차(SCAN / 이미지조회) | 5d | 2009-02-23 | 2009-02-27 | 55 |  |  | 2009-02-23 | 2009-02-27 | 5d | 54d |  | start no earlier than 2008-12-01 | 추가개발 프로그램코딩 | P02-1 1.4.1 | 소스코드 및 단위테스트결과 | 48648F0A0F9201F8E100800046140A10 | 07060716O410168 | 00000000000001277271 | DEFAULT |

| ID | WBS | Task | Duration | Start | Finish | Predecessors | Complete | Remaining | Baseline start | Baseline finish | Baseline duration | Total slack | Free slack | Constraint | Text20 | Text22 | Text25 | Text26 | Text27 | Text28 | Text30 |
| --- | --- | --- | --- | --- | --- | --- | --- | --- | --- | --- | --- | --- | --- | --- | --- | --- | --- | --- | --- | --- | --- |
| 57 | 3.2 | **테스트시나리오 작성** | 61d | 2008-12-01 A | 2009-02-27 |  | 8% | 56d | 2008-12-01 | 2009-02-27 | 61d | 94d |  |  | 추가개발 프로그램코딩 | 48648F540F9201F8E100800046140A10 | 07060716O410178 | P02-1 1.4.1 | 00000000000001277308 | DEFAULT | 테스트시나리오 |
| 58 | 3.2.1 | 테스트착수준비 | 5d | 2008-12-01 A | 2008-12-05 A |  | 100% |  | 2008-12-01 | 2008-12-05 | 5d |  |  | start no earlier than 2008-12-01 |  |  |  |  |  |  |  |
| 59 | 3.2.2 | 테스트목록 및 일정 확정 | 28d | 2008-12-08 | 2009-01-16 | 58 |  |  | 2008-12-08 | 2009-01-16 | 28d | 94d | 0d | finish no earlier than 2009-01-16 | 추가개발 프로그램코딩 | 48648F0A0F9201F8E100800046140A10 | 07060716O410168 | P02-1 1.4.1 | 00000000000001277271 | DEFAULT | 테스트목록 |
| 60 | 3.2.3 | UAT시나리오 작성 - 비즈니스모듈1 | 5d | 2009-01-19 | 2009-01-23 | 59 |  |  | 2009-01-19 | 2009-01-23 | 5d | 94d | 0d | start no earlier than 2008-12-01 | 추가개발 프로그램코딩 | 48648F0A0F9201F8E100800046140A10 | 07060716O410168 | P02-1 1.4.1 | 00000000000001277271 | DEFAULT | UAT시나리오(E2E테스트시나리오) |
| 61 | 3.2.4 | UAT시나리오 작성 - 비즈니스모듈2 | 3d | 2009-01-28 | 2009-01-30 | 60 |  |  | 2009-01-28 | 2009-01-30 | 3d | 94d | 0d | start no earlier than 2008-07-21 | 추가개발 프로그램코딩 | 48648F0A0F9201F8E100800046140A10 | 07060716O410168 | P02-1 1.4.1 | 00000000000001277271 | DEFAULT | UAT시나리오(E2E테스트시나리오) |
| 62 | 3.2.5 | UAT시나리오 작성 - 비즈니스모듈3 | 5d | 2009-02-02 | 2009-02-06 | 61 |  |  | 2009-02-02 | 2009-02-06 | 5d | 94d | 0d | start no earlier than 2008-11-17 | 추가개발 프로그램코딩 | 48648F0A0F9201F8E100800046140A10 | 07060716O410168 | P02-1 1.4.1 | 00000000000001277271 | DEFAULT | UAT시나리오(E2E테스트시나리오) |
| 63 | 3.2.6 | UAT시나리오 작성 - 비즈니스모듈4 | 5d | 2009-02-09 | 2009-02-13 | 62 |  |  | 2009-02-09 | 2009-02-13 | 5d | 94d | 0d | start no earlier than 2008-12-01 | 추가개발 프로그램코딩 | 48648F0A0F9201F8E100800046140A10 | 07060716O410168 | P02-1 1.4.1 | 00000000000001277271 | DEFAULT | UAT시나리오(E2E테스트시나리오) |
| 64 | 3.2.7 | UAT시나리오 작성 - 비즈니스모듈5 | 5d | 2009-02-16 | 2009-02-20 | 63 |  |  | 2009-02-16 | 2009-02-20 | 5d | 94d | 0d | start no earlier than 2008-12-01 | 추가개발 프로그램코딩 | 48648F0A0F9201F8E100800046140A10 | 07060716O410168 | P02-1 1.4.1 | 00000000000001277271 | DEFAULT | UAT시나리오(E2E테스트시나리오) |
| 65 | 3.2.8 | UAT시나리오 작성 - 비즈니스모듈6 | 5d | 2009-02-23 | 2009-02-27 | 64 |  |  | 2009-02-23 | 2009-02-27 | 5d | 94d |  | start no earlier than 2008-12-01 | 추가개발 프로그램코딩 | 48648F0A0F9201F8E100800046140A10 | 07060716O410168 | P02-1 1.4.1 | 00000000000001277271 | DEFAULT | UAT시나리오(E2E테스트시나리오) |
| 66 | 3.3 | **사전 E2E Test 실시** | 10d | 2009-03-02 | 2009-03-13 | 43 |  |  | 2009-03-02 | 2009-03-13 | 10d | 54d |  |  | 테스트실시 | 48648F560F9201F8E100800046140A10 | 07060716O410178 | P02-1 1.4.2 | 00000000000001277309 | DEFAULT | 테스트결과 |
| 67 | 3.3.1 | 사전 E2E Test - 주요프로세스1 | 5d | 2009-03-02 | 2009-03-06 |  |  |  | 2009-03-02 | 2009-03-06 | 5d | 54d | 0d | start no earlier than 2008-12-01 | 테스트실시 | 48648F0A0F9201F8E100800046140A10 | 07060716O410168 | P02-1 1.4.2 | 00000000000001277271 | DEFAULT |  |
| 68 | 3.3.2 | 사전 E2E Test - 주요프로세스2 | 5d | 2009-03-09 | 2009-03-13 | 67 |  |  | 2009-03-09 | 2009-03-13 | 5d | 54d | 0d | start no earlier than 2008-12-01 | 테스트실시 | 48648F0A0F9201F8E100800046140A10 | 07060716O410168 | P02-1 1.4.2 | 00000000000001277271 | DEFAULT |  |
| 69 | 3.4 | **개발단계 품질검증 및 단계완료** | 57d | 2008-12-19 | 2009-03-13 |  |  |  | 2008-12-19 | 2009-03-13 | 57d | 84d |  |  | 단계완료 | 48648FB40F9201F8E100800046140A10 | 07060716O410080 | P02-1 1.6.8 | 00000000000001277356 | DEFAULT |  |
| 70 | 3.4.1 | **Code Inspection 실시 및 보완** | 52d | 2008-12-19 | 2009-03-06 |  |  |  | 2008-12-19 | 2009-03-06 | 52d | 84d | 0d |  |  |  |  |  |  |  | Code Inspection 결과서 |
| 71 | 3.4.1.1 | Code Inspection 1차 | 1d | 2008-12-19 | 2008-12-19 |  |  |  | 2008-12-19 | 2008-12-19 | 1d | 135d |  | start no earlier than 2008-12-19 | 단계완료 | 48648FB60F9201F8E100800046140A10 | 07060716O410080 | P02-1 1.6.8 | 00000000000001277357 | DEFAULT |  |
| 72 | 3.4.1.2 | Code Inspection 2차 | 1d | 2009-01-02 | 2009-01-02 |  |  |  | 2009-01-02 | 2009-01-02 | 1d | 127d |  | start no earlier than 2009-01-02 | 단계완료 | 48648FB60F9201F8E100800046140A10 | 07060716O410080 | P02-1 1.6.8 | 00000000000001277357 | DEFAULT |  |
| 73 | 3.4.1.3 | Code Inspection 3차 | 1d | 2009-01-16 | 2009-01-16 |  |  |  | 2009-01-16 | 2009-01-16 | 1d | 117d |  | start no earlier than 2009-01-16 | 단계완료 | 48648FB60F9201F8E100800046140A10 | 07060716O410080 | P02-1 1.6.8 | 00000000000001277357 | DEFAULT |  |
| 74 | 3.4.1.4 | Code Inspection 4차 | 1d | 2009-01-30 | 2009-01-30 |  |  |  | 2009-01-30 | 2009-01-30 | 1d | 109d |  | start no earlier than 2009-01-30 | 단계완료 | 48648FB60F9201F8E100800046140A10 | 07060716O410080 | P02-1 1.6.8 | 00000000000001277357 | DEFAULT |  |
| 75 | 3.4.1.5 | Code Inspection 5차 | 1d | 2009-02-13 | 2009-02-13 |  |  |  | 2009-02-13 | 2009-02-13 | 1d | 99d |  | start no earlier than 2009-02-13 | 단계완료 | 48648FB60F9201F8E100800046140A10 | 07060716O410080 | P02-1 1.6.8 | 00000000000001277357 | DEFAULT |  |
| 76 | 3.4.1.6 | Code Inspection 6차 | 1d | 2009-02-20 | 2009-02-20 |  |  |  | 2009-02-20 | 2009-02-20 | 1d | 94d |  | start no earlier than 2009-02-20 | 단계완료 | 48648FB60F9201F8E100800046140A10 | 07060716O410080 | P02-1 1.6.8 | 00000000000001277357 | DEFAULT |  |
| 77 | 3.4.1.7 | Code Inspection 7차 | 1d | 2009-03-06 | 2009-03-06 |  |  |  | 2009-03-06 | 2009-03-06 | 1d | 84d |  | start no earlier than 2009-03-06 |  |  |  |  |  |  |  |
| 78 | 3.4.2 | 요구사항추적표 작성 | 5d | 2009-03-09 | 2009-03-13 | 70 |  |  | 2009-03-09 | 2009-03-13 | 5d | 84d |  |  |  |  |  |  |  |  | 요구사항추적표 |
| 79 | 4 | **E2E Test(End to End Test)** | 20d | 2009-03-16 | 2009-04-10 | 68 |  |  | 2009-03-16 | 2009-04-10 | 20d | 54d | 0d |  | 테스트실시 | 48648F580F9201F8E100800046140A10 | 07060716O410179 | P02-1 1.4.2 | 00000000000001277310 | DEFAULT |  |
| 80 | 4.1 | E2E 테스트 실시1 | 10d | 2009-03-16 | 2009-03-27 |  |  |  | 2009-03-16 | 2009-03-27 | 10d | 54d | 0d | start no earlier than 2009-03-16 | 테스트실시 | 48648F5A0F9201F8E100800046140A10 | 07060716O410179 | P02-1 1.4.2 | 00000000000001277311 | DEFAULT | 테스트시나리오(결과) |
| 81 | 4.2 | 테스트 결과확인 및 보완1 | 5d | 2009-03-23 | 2009-03-27 |  |  |  | 2009-03-23 | 2009-03-27 | 5d | 64d |  | start no earlier than 2009-03-23 |  |  |  |  |  |  | 테스트시나리오(결과) |
| 82 | 4.3 | E2E 테스트 실시2 | 10d | 2009-03-30 | 2009-04-10 | 80 |  |  | 2009-03-30 | 2009-04-10 | 10d | 54d |  |  |  |  |  |  |  |  | 테스트시나리오(결과) |
| 83 | 4.4 | 테스트 결과확인 및 보완2 | 5d | 2009-04-06 | 2009-04-10 |  |  |  | 2009-04-06 | 2009-04-10 | 5d | 54d |  | start no earlier than 2009-04-06 |  |  |  |  |  |  | 테스트시나리오(결과) |

| ID | WBS | Task | Duration | Start | Finish | Predecessors | Baseline start | Baseline finish | Baseline duration | Total slack | Free slack | Constraint | Text30 | Text20 | Text22 | Text25 | Text26 | Text27 | Text28 |
| --- | --- | --- | --- | --- | --- | --- | --- | --- | --- | --- | --- | --- | --- | --- | --- | --- | --- | --- | --- |
| 84 | 5 | **개발 및 Test 검수** | 10d | 2009-04-13 | 2009-04-24 | 79 | 2009-04-13 | 2009-04-24 | 10d | 54d |  |  |  |  |  |  |  |  |  |
| 85 | 5.1 | 테스트결과제출 | 5d | 2009-04-13 | 2009-04-17 |  | 2009-04-13 | 2009-04-17 | 5d | 54d | 0d |  | E2E테스트결과, 시스템테스트결과서 |  |  |  |  |  |  |
| 86 | 5.2 | 고객 테스트결과 확인 | 3d | 2009-04-20 | 2009-04-22 | 85 | 2009-04-20 | 2009-04-22 | 3d | 54d | 0d |  | 고객검토결과서 |  |  |  |  |  |  |
| 87 | 5.3 | 고객승인 획득 | 2d | 2009-04-23 | 2009-04-24 | 86 | 2009-04-23 | 2009-04-24 | 2d | 54d |  |  | 고객인수확인서(PAD) |  |  |  |  |  |  |
| 88 | 6 | **UAT(User Acceptance Test)** | 38d | 2009-04-13 | 2009-06-05 |  | 2009-04-13 | 2009-06-05 | 38d | 26d |  |  |  |  |  |  |  |  |  |
| 89 | 6.1 | 사용자테스트 실시 | 38d | 2009-04-13 | 2009-06-05 |  | 2009-04-13 | 2009-06-05 | 38d | 26d |  | start no earlier than 2009-04-13 | 사용자테스트결과 |  |  |  |  |  |  |
| 90 | 6.2 | 사용자매뉴얼 작성 | 10d | 2009-04-23 | 2009-05-08 |  | 2009-04-23 | 2009-05-08 | 10d | 46d |  | start no earlier than 2009-04-23 | 사용자매뉴얼 |  |  |  |  |  |  |
| 91 | 6.3 | 사용자교육 실시 | 20d | 2009-05-11 | 2009-06-05 |  | 2009-05-11 | 2009-06-05 | 20d | 26d |  | start no earlier than 2009-05-11 | 교육교재 |  |  |  |  |  |  |
| 92 | 7 | **ORT(Operation Readiness Test)** | 35d | 2009-05-25 | 2009-07-10 |  | 2009-05-25 | 2009-07-10 | 35d | 1d |  |  |  | 구현 | 48648F5E0F9201F8E100800046140A10 | 07060716O410180 | P02-1 1.5 | 00000000000001277313 | DEFAULT |
| 93 | 7.1 | **구현계획수립** | 10d | 2009-05-25 | 2009-06-05 |  | 2009-05-25 | 2009-06-05 | 10d | 16d |  |  |  | 구현계획수립 | 48648F600F9201F8E100800046140A10 | 07060716O410181 | P02-1 1.5.1 | 00000000000001277314 | DEFAULT |
| 94 | 7.1.1 | 릴리이즈및비상계획수립 | 5d | 2009-05-25 | 2009-05-29 |  | 2009-05-25 | 2009-05-29 | 5d | 31d |  | start no earlier than 2009-05-25 | 구현계획서 | 구현계획수립 | 48648F620F9201F8E100800046140A10 | 07060716O410181 | P02-1 1.5.1 | 00000000000001277315 | DEFAULT |
| 95 | 7.1.2 | 교육훈련계획수립 | 5d | 2009-06-01 | 2009-06-05 |  | 2009-06-01 | 2009-06-05 | 5d | 11d | 5d | start no earlier than 2009-06-01 | 교육계획서 | 구현계획수립 | 48648F640F9201F8E100800046140A10 | 07060716O410181 | P02-1 1.5.1 | 00000000000001277316 | DEFAULT |
| 96 | 7.2 | **시범운영** | 25d | 2009-06-08 | 2009-07-10 |  | 2009-06-08 | 2009-07-10 | 25d | 1d |  |  |  | 시범운영 | 48648F7A0F9201F8E100800046140A10 | 07060716O410184 | P02-1 1.5.4 | 00000000000001277327 | DEFAULT |
| 97 | 7.2.1 | 시범운영계획 수립 | 5d | 2009-06-08 | 2009-06-12 |  | 2009-06-08 | 2009-06-12 | 5d | 21d |  | start no earlier than 2009-06-08 | 시범운영계획서 | 시범운영 | 48648F7C0F9201F8E100800046140A10 | 07060716O410184 | P02-1 1.5.4 | 00000000000001277328 | DEFAULT |
| 98 | 7.2.2 | 시범운영 실시 | 25d | 2009-06-08 | 2009-07-10 |  | 2009-06-08 | 2009-07-10 | 25d | 1d |  | start no earlier than 2009-06-08 | 시범운영일지 | 시범운영 | 48648F7E0F9201F8E100800046140A10 | 07060716O410184 | P02-1 1.5.4 | 00000000000001277329 | DEFAULT |
| 99 | 7.3 | **시스템사용교육** | 15d | 2009-06-15 | 2009-07-03 |  | 2009-06-15 | 2009-07-03 | 15d | 6d |  |  |  | 시스템사용교육 | 48648F720F9201F8E100800046140A10 | 07060716O410183 | P02-1 1.5.3 | 00000000000001277323 | DEFAULT |
| 100 | 7.3.1 | 운영매뉴얼 작성 | 10d | 2009-06-15 | 2009-06-26 | 95 | 2009-06-15 | 2009-06-26 | 10d | 6d | 0d | start no earlier than 2009-06-15 | 운영매뉴얼 | 시스템사용교육 | 48648F760F9201F8E100800046140A10 | 07060716O410183 | P02-1 1.5.3 | 00000000000001277325 | DEFAULT |
| 101 | 7.3.2 | 운영자교육 실시 | 5d | 2009-06-29 | 2009-07-03 | 100 | 2009-06-29 | 2009-07-03 | 5d | 6d |  |  | 교육교재 | 시스템사용교육 | 48648F780F9201F8E100800046140A10 | 07060716O410183 | P02-1 1.5.3 | 00000000000001277326 | DEFAULT |
| 102 | 7.4 | **시스템 인수인계** | 20d | 2009-06-08 | 2009-07-03 |  | 2009-06-08 | 2009-07-03 | 20d | 6d |  |  |  | 시스템 인수인계 | 48648F7A0F9201F8E100800046140A10 | 07060716O410184 | P02-1 1.7.2 | 00000000000001277327 | DEFAULT |
| 103 | 7.4.1 | 인수인계계획 수립 | 5d | 2009-06-08 | 2009-06-12 |  | 2009-06-08 | 2009-06-12 | 5d | 6d | 0d | start no earlier than 2009-06-08 | 인수인계계획서 | 시스템 인수인계 | 48648F7C0F9201F8E100800046140A10 | 07060716O410184 | P02-1 1.7.2 | 00000000000001277328 | DEFAULT |
| 104 | 7.4.2 | 인수인계 실시 | 15d | 2009-06-15 | 2009-07-03 | 103 | 2009-06-15 | 2009-07-03 | 15d | 6d |  | start no earlier than 2009-06-15 | 인수인계확인서 | 시스템 인수인계 | 48648F7E0F9201F8E100800046140A10 | 07060716O410184 | P02-1 1.7.2 | 00000000000001277329 | DEFAULT |
| 105 | 7.5 | **오픈 준비** | 5d | 2009-07-06 | 2009-07-10 |  | 2009-07-06 | 2009-07-10 | 5d | 1d |  |  |  | 컨버젼 및 릴리이즈 | 48648F660F9201F8E100800046140A10 | 07060716O410182 | P02-1 1.5.2 | 00000000000001277317 | DEFAULT |
| 106 | 7.5.1 | 데이터베이스 구축 | 5d | 2009-07-06 | 2009-07-10 |  | 2009-07-06 | 2009-07-10 | 5d | 1d |  | start no earlier than 2009-07-06 |  | 컨버젼 및 릴리이즈 | 48648F680F9201F8E100800046140A10 | 07060716O410182 | P02-1 1.5.2 | 00000000000001277318 | DEFAULT |
| 107 | 7.5.2 | 소프트웨어 설치 | 5d | 2009-07-06 | 2009-07-10 |  | 2009-07-06 | 2009-07-10 | 5d | 1d |  | start no earlier than 2009-07-06 |  | 컨버젼 및 릴리이즈 | 48648F6A0F9201F8E100800046140A10 | 07060716O410182 | P02-1 1.5.2 | 00000000000001277319 | DEFAULT |
| 108 | 7.5.3 | 데이터컨버전 | 5d | 2009-07-06 | 2009-07-10 |  | 2009-07-06 | 2009-07-10 | 5d | 1d |  | start no earlier than 2009-07-06 |  | 컨버젼 및 릴리이즈 | 48648F6C0F9201F8E100800046140A10 | 07060716O410182 | P02-1 1.5.2 | 00000000000001277320 | DEFAULT |
| 109 | 7.5.4 | 시스템 릴리이즈 | 1d | 2009-07-10 | 2009-07-10 |  | 2009-07-10 | 2009-07-10 | 1d | 1d |  | start no earlier than 2009-07-10 |  | 컨버젼 및 릴리이즈 | 48648F700F9201F8E100800046140A10 | 07060716O410182 | P02-1 1.5.2 | 00000000000001277322 | DEFAULT |

| ID | WBS | Task | Duration | Start | Finish | Baseline start | Baseline finish | Baseline duration | Total slack | Constraint | Text20 | Text26 |
| --- | --- | --- | --- | --- | --- | --- | --- | --- | --- | --- | --- | --- |
| 110 | 8 | **Go Live** | 1d | 2009-07-13 | 2009-07-13 | 2009-07-13 | 2009-07-13 | 1d | 0d |  | 컨버젼 및 릴리이즈 | P02-1 1.5.2 |
| 111 | 8.1 | 시스템 최종 오픈 | 1d | 2009-07-13 | 2009-07-13 | 2009-07-13 | 2009-07-13 | 1d | 0d | start no earlier than 2009-07-13 |  |  |
