# 16.사용자관리

Schedule from MS Project, 2008-10-01 to 2009-07-14, A marks actual dates.
HSIC-0820606

## Calendars

- All Working Day Calendar: Mon-Fri 08:00-12:00, 13:00-17:00; Sat-Sun off. Exceptions (off unless hours are given): 2008-10-03, 2008-12-25, 2009-01-01, 2009-01-26 to 2009-01-27, 2009-05-05.
- 한국: Mon-Fri 08:00-12:00, 13:00-17:00; Sat-Sun off. Exceptions (off unless hours are given): 2008-10-03, 2008-12-25, 2009-01-01, 2009-01-25 to 2009-01-27, 2009-03-01, 2009-05-01 to 2009-05-02, 2009-05-05, 2009-06-06.
- 24 시간: Mon-Sun 00:00-24:00.

## Resources

| Resource |
| --- |
| TA |
| SA |
| IBM |
| QAO |
| RM |
| Tmax |
| TestDirector |
| StarTeam |
| QTP |
| CaliberRM |
| 0 |

## Schedule

| ID | WBS | Task | Duration | Start | Finish | Predecessors | Complete | Remaining | Baseline start | Baseline finish | Baseline duration | Total slack | Free slack | Constraint | Calendar | Text20 | Text26 | Text30 | Text22 | Text25 | Text27 | Text28 | Text1 | Text2 |
| --- | --- | --- | --- | --- | --- | --- | --- | --- | --- | --- | --- | --- | --- | --- | --- | --- | --- | --- | --- | --- | --- | --- | --- | --- |
| 1 | 1 | **Inception** | 2d | 2008-10-01 A | 2008-10-02 A |  | 100% |  | 2008-10-01 | 2008-10-02 | 2d |  |  |  | All Working Day Calendar | 프로젝트 착수 | P02-1 1.1 |  |  |  |  |  |  |  |
| 2 | 1.1 | **착수준비** | 2d | 2008-10-01 A | 2008-10-02 A |  | 100% |  | 2008-10-01 | 2008-10-02 | 2d |  |  |  |  | 착수준비 | P02-1 1.1.1 | WBS |  |  |  |  |  |  |
| 3 | 1.1.1 | 업무범위 정의 | 1d | 2008-10-01 A | 2008-10-01 A |  | 100% |  | 2008-10-01 | 2008-10-01 | 1d |  |  | start no earlier than 2008-10-01 |  | 착수준비 | P02-1 1.1.1 |  |  |  |  |  |  |  |
| 4 | 1.1.2 | WBS 고객 확인 및 확정 | 1d | 2008-10-02 A | 2008-10-02 A | 3 | 100% |  | 2008-10-02 | 2008-10-02 | 1d |  |  |  | All Working Day Calendar | 착수준비 | P02-1 1.1.1 |  | 48648EF80F9201F8E100800046140A10 | 07060716O410050 | 00000000000001277262 | DEFAULT |  |  |
| 5 | 2 | **Analysis** | 27d | 2008-10-06 A | 2008-11-11 | 1 | 99% | 0.06d | 2008-10-06 | 2008-11-11 | 27d | 52.88d | 0d | start no earlier than 2008-07-28 | All Working Day Calendar | 분석 | P02-1 1.2 | 구축 계획서(현업 요구사양서 포함) |  |  |  |  |  |  |
| 6 | 2.1 | **프로젝트 초기화** | 26d | 2008-10-06 A | 2008-11-10 |  | 99% | 0.07d | 2008-10-06 | 2008-11-10 | 26d | 53.88d |  |  | All Working Day Calendar | 패키지선정 | P02-1 1.2.1 |  |  |  |  |  |  |  |
| 7 | 2.1.1 | 요구사항 분석 | 3d | 2008-10-06 A | 2008-10-08 A |  | 100% |  | 2008-10-06 | 2008-10-08 | 3d |  |  | finish no earlier than 2008-10-08 | All Working Day Calendar | 패키지선정 | P02-1 1.2.1 |  |  |  |  |  |  |  |
| 8 | 2.1.2 | **시스템 환경 상세 파악** | 18d | 2008-10-13 A | 2008-11-05 A | 7 | 100% |  | 2008-10-13 | 2008-11-05 | 18d |  |  |  | All Working Day Calendar | 패키지선정 | P02-1 1.2.1 |  |  |  |  |  |  |  |
| 9 | 2.1.2.1 | 고객 환경 분석 | 4d | 2008-10-13 A | 2008-10-16 A |  | 100% |  | 2008-10-13 | 2008-10-16 | 4d |  |  | start no earlier than 2008-10-13 |  |  |  |  |  |  |  |  |  |  |
| 10 | 2.1.2.2 | 관리대상 시스템 계정 체계 분석 | 14d | 2008-10-17 A | 2008-11-05 A | 9 | 100% |  | 2008-10-17 | 2008-11-05 | 14d |  |  |  |  |  |  |  |  |  |  |  |  |  |
| 11 | 2.1.3 | 구축 범위 및 대상 확정 | 3d | 2008-11-06 A | 2008-11-10 | 8, 10 | 98% | 0.06d | 2008-11-06 | 2008-11-10 | 3d | 53.88d |  |  |  |  |  |  |  |  |  |  |  |  |
| 12 | 2.2 | 고객 리뷰(구축 범위 및 대상 시스템) | 1d | 2008-11-11 A | 2008-11-11 A | 11 | 100% |  | 2008-11-11 | 2008-11-11 | 1d |  |  |  |  |  |  |  |  |  |  |  |  |  |
| 13 | 3 | **Design** | 44d | 2008-11-12 A | 2009-01-14 | 5 | 47% | 23.5d | 2008-11-11 | 2009-01-13 | 44d | 32.88d | 0d |  | All Working Day Calendar | 설계 | P02-1 1.3 | 시스템 사양서 |  |  |  |  |  |  |
| 14 | 3.1 | **추가 프로세스 설계** | 20d | 2008-11-12 A | 2008-12-09 A |  | 100% |  | 2008-11-11 | 2008-12-08 | 20d |  |  |  | All Working Day Calendar | 추가개발설계 | P02-1 1.3.1 |  |  |  |  |  | 기술 아키텍처정의서 | [전체공정매핑] 설계단계 전 착수하여 개발단계 착수 전에 종료하도록 함 |
| 15 | 3.1.1 | **사용자 계정 동기화 설계** | 20d | 2008-11-12 A | 2008-12-09 A |  | 100% |  | 2008-11-11 | 2008-12-08 | 20d |  |  |  | All Working Day Calendar | 추가개발설계 | P02-1 1.3.1 |  |  |  |  |  | 보안계획서에 반영 |  |
| 16 | 3.1.1.1 | **대상시스템별 연동 방식 설계** | 4d | 2008-11-12 A | 2008-11-17 A |  | 100% |  | 2008-11-11 | 2008-11-14 | 4d |  |  |  |  |  |  |  |  |  |  |  |  |  |
| 17 | 3.1.1.1.1 | Agent / Connect(Agentless) | 4d | 2008-11-12 A | 2008-11-17 A |  | 100% |  | 2008-11-11 | 2008-11-14 | 4d |  |  |  |  |  |  |  |  |  |  |  |  |  |
| 18 | 3.1.1.2 | 공통 코드 관리 분석/설계 | 4d | 2008-11-18 A | 2008-11-21 A | 16 | 100% |  | 2008-11-17 | 2008-11-20 | 4d |  |  |  |  |  |  |  |  |  |  |  |  |  |
| 19 | 3.1.1.3 | 동일 항목에 대한 Value 분석 | 4d | 2008-11-24 A | 2008-11-27 A | 18 | 100% |  | 2008-11-21 | 2008-11-26 | 4d |  |  |  |  |  |  |  |  |  |  |  |  |  |
| 20 | 3.1.1.4 | 계정연동 실패 처리 분석/설계 | 4d | 2008-11-28 A | 2008-12-03 A | 19 | 100% |  | 2008-11-27 | 2008-12-02 | 4d |  |  |  |  |  |  |  |  |  |  |  |  |  |
| 21 | 3.1.1.5 | 관리대상 항목 속성 정의 | 4d | 2008-12-04 A | 2008-12-09 A | 20 | 100% |  | 2008-12-03 | 2008-12-08 | 4d |  |  |  |  |  |  |  |  |  |  |  |  |  |
| 22 | 3.2 | **Repository 설계** | 15d | 2008-12-10 A | 2008-12-31 | 14 | 3% | 14.5d | 2008-12-09 | 2008-12-30 | 15d | 32.88d | 0d |  | All Working Day Calendar | 추가개발설계 | P02-1 1.3.1 |  |  |  |  |  |  |  |
| 23 | 3.2.1 | **통합 사용자정보 Repository 설계** | 15d | 2008-12-10 A | 2008-12-31 |  | 3% | 14.5d | 2008-12-09 | 2008-12-30 | 15d | 32.88d |  |  | All Working Day Calendar | 추가개발설계 | P02-1 1.3.1 |  |  |  |  |  |  |  |
| 24 | 3.2.1.1 | Meta Data 정보 분석 설계 | 5d | 2008-12-10 A | 2008-12-16 |  | 10% | 4.5d | 2008-12-09 | 2008-12-15 | 5d | 32.88d | 0d |  |  |  |  |  |  |  |  |  |  |  |
| 25 | 3.2.1.2 | Agent 정보 분석 설계 | 5d | 2008-12-17 | 2008-12-23 | 24 |  |  | 2008-12-16 | 2008-12-22 | 5d | 32.88d | 0d |  |  |  |  |  |  |  |  |  |  |  |
| 26 | 3.2.1.3 | Log Data 정보 분석 설계 | 5d | 2008-12-24 | 2008-12-31 | 25 |  |  | 2008-12-23 | 2008-12-30 | 5d | 32.88d |  |  |  |  |  |  |  |  |  |  |  |  |

| ID | WBS | Task | Duration | Start | Finish | Predecessors | Baseline start | Baseline finish | Baseline duration | Total slack | Free slack | Calendar | Text30 | Text20 | Text26 |
| --- | --- | --- | --- | --- | --- | --- | --- | --- | --- | --- | --- | --- | --- | --- | --- |
| 27 | 3.3 | **초기정보 설계** | 8d | 2009-01-02 | 2009-01-13 | 22 | 2008-12-31 | 2009-01-12 | 8d | 32.88d |  |  |  |  |  |
| 28 | 3.3.1 | 초기 정보 저장 설계 | 8d | 2009-01-02 | 2009-01-13 |  | 2008-12-31 | 2009-01-12 | 8d | 32.88d | 0d |  |  |  |  |
| 29 | 3.4 | 고객 리뷰(설계서) | 1d | 2009-01-14 | 2009-01-14 | 28 | 2009-01-13 | 2009-01-13 | 1d | 32.88d |  |  | 시스템 사양서 |  |  |
| 30 | 4 | **Build/Unit Test** | 31.12d | 2009-01-15 | 2009-03-03 | 13 | 2009-01-14 | 2009-03-02 | 31.12d | 32.88d |  | All Working Day Calendar |  | 개발 | P02-1 1.4 |
| 31 | 4.1 | **단계 이행** | 11d | 2009-01-15 | 2009-02-02 |  | 2009-01-14 | 2009-01-30 | 11d | 32.88d | 0d |  |  |  |  |
| 32 | 4.1.1 | **이행계획 수립** | 3d | 2009-01-15 | 2009-01-19 | 14 | 2009-01-14 | 2009-01-16 | 3d | 32.88d | 0d | All Working Day Calendar |  | 추가개발 프로그램코딩 | P02-1 1.4.1 |
| 33 | 4.1.1.1 | Agent/Connect 대상 서버 분류 | 1d | 2009-01-15 | 2009-01-15 |  | 2009-01-14 | 2009-01-14 | 1d | 32.88d | 0d | All Working Day Calendar |  | 추가개발 프로그램코딩 | P02-1 1.4.1 |
| 34 | 4.1.1.2 | Agent/Connect 설치 계획 수립 | 1d | 2009-01-16 | 2009-01-16 | 33 | 2009-01-15 | 2009-01-15 | 1d | 32.88d | 0d |  |  |  |  |
| 35 | 4.1.1.3 | 계정Data 저장소 구축 계획수립 | 1d | 2009-01-19 | 2009-01-19 | 34 | 2009-01-16 | 2009-01-16 | 1d | 32.88d |  |  |  |  |  |
| 36 | 4.1.2 | **아키텍처 검증** | 3d | 2009-01-20 | 2009-01-22 | 32 | 2009-01-19 | 2009-01-21 | 3d | 32.88d | 0d | All Working Day Calendar |  | 테스트실시 | P02-1 1.4.2 |
| 37 | 4.1.2.1 | Agent/Connect 대상 분류 검증 | 1d | 2009-01-20 | 2009-01-20 |  | 2009-01-19 | 2009-01-19 | 1d | 32.88d | 0d |  |  |  |  |
| 38 | 4.1.2.2 | Agent/Connect 설치 계획 검증 | 1d | 2009-01-21 | 2009-01-21 | 37 | 2009-01-20 | 2009-01-20 | 1d | 32.88d | 0d |  |  |  |  |
| 39 | 4.1.2.3 | 저장소 구축 계획 검증 | 1d | 2009-01-22 | 2009-01-22 | 38 | 2009-01-21 | 2009-01-21 | 1d | 32.88d |  |  |  |  |  |
| 40 | 4.1.3 | **S/W 설치** | 5d | 2009-01-23 | 2009-02-02 | 36 | 2009-01-22 | 2009-01-30 | 5d | 32.88d |  | All Working Day Calendar |  | 단계완료 | P02-1 1.6.8 |
| 41 | 4.1.3.1 | 계정통합서버(Rathon Sync설치) | 1d | 2009-01-23 | 2009-01-23 |  | 2009-01-22 | 2009-01-22 | 1d | 32.88d | 0d | All Working Day Calendar |  | 단계완료 | P02-1 1.6.8 |
| 42 | 4.1.3.2 | 계정통합저장소 설치 | 2d | 2009-01-28 | 2009-01-29 | 41 | 2009-01-23 | 2009-01-28 | 2d | 32.88d | 0d |  |  |  |  |
| 43 | 4.1.3.3 | 대상서버 Agent/Connect 설치 | 2d | 2009-01-30 | 2009-02-02 | 42 | 2009-01-29 | 2009-01-30 | 2d | 32.88d |  |  |  |  |  |
| 44 | 4.2 | **시스템 구축** | 20.12d | 2009-02-03 | 2009-03-03 | 31 | 2009-02-02 | 2009-03-02 | 20.12d | 32.88d |  | All Working Day Calendar |  | 개발 | P02-1 1.4 |
| 45 | 4.2.1 | **Configuration** | 4d | 2009-02-03 | 2009-02-06 | 36 | 2009-02-02 | 2009-02-05 | 4d | 32.88d | 0d | All Working Day Calendar |  | 테스트실시 | P02-1 1.4.2 |
| 46 | 4.2.1.1 | 계정통합 저장소 환경 설정 | 2d | 2009-02-03 | 2009-02-04 |  | 2009-02-02 | 2009-02-03 | 2d | 32.88d | 0d | All Working Day Calendar |  | 테스트실시 | P02-1 1.4.2 |
| 47 | 4.2.1.2 | Agent/Connect 환경 설정 | 2d | 2009-02-05 | 2009-02-06 | 46 | 2009-02-04 | 2009-02-05 | 2d | 32.88d |  | All Working Day Calendar |  | 테스트실시 | P02-1 1.4.2 |
| 48 | 4.2.2 | Repository 구축 | 3d | 2009-02-09 | 2009-02-11 | 45 | 2009-02-06 | 2009-02-10 | 3d | 32.88d | 0d |  |  |  |  |
| 49 | 4.2.3 | **대상시스템 연동** | 6d | 2009-02-12 | 2009-02-19 | 48 | 2009-02-11 | 2009-02-18 | 6d | 32.88d | 0d |  |  |  |  |
| 50 | 4.2.3.1 | 대상 시스템 연동TEST 계획수립 | 2d | 2009-02-12 | 2009-02-13 |  | 2009-02-11 | 2009-02-12 | 2d | 32.88d | 0d | All Working Day Calendar |  | 테스트실시 | P02-1 1.4.2 |
| 51 | 4.2.3.2 | 대상 시스템 연동TEST(계정 Import/Export) | 2d | 2009-02-16 | 2009-02-17 | 50 | 2009-02-13 | 2009-02-16 | 2d | 32.88d | 0d |  |  |  |  |
| 52 | 4.2.3.3 | 대상 시스템 연동 진행 | 2d | 2009-02-18 | 2009-02-19 | 51 | 2009-02-17 | 2009-02-18 | 2d | 32.88d |  |  |  |  |  |

Notes:
- 32: Text2: [전체공정매핑] 개발공정과 별도 설정함. 단, 운영환경은 늦어도 개발완료 전 구현단계 착수 전에 완료되어야 함.

| ID | WBS | Task | Duration | Start | Finish | Predecessors | Baseline start | Baseline finish | Baseline duration | Total slack | Free slack | Constraint | Calendar | Resources | Work | Text20 | Text26 | Text22 | Text25 | Text27 | Text28 | Text30 | Text1 |
| --- | --- | --- | --- | --- | --- | --- | --- | --- | --- | --- | --- | --- | --- | --- | --- | --- | --- | --- | --- | --- | --- | --- | --- |
| 53 | 4.2.4 | **Customizing(화면, 연계)** | 5.12d | 2009-02-20 | 2009-02-27 | 49 | 2009-02-19 | 2009-02-26 | 5.12d | 32.88d |  |  | All Working Day Calendar |  |  | 단계완료 | P02-1 1.6.8 |  |  |  |  |  |  |
| 54 | 4.2.4.1 | 화면 Customizing 요구사항 분석 | 2d | 2009-02-20 | 2009-02-23 |  | 2009-02-19 | 2009-02-20 | 2d | 32.88d | 0d |  | All Working Day Calendar |  |  | 단계완료 | P02-1 1.6.8 |  |  |  |  |  |  |
| 55 | 4.2.4.2 | 화면 Customizing 변경/확인 | 2d | 2009-02-24 | 2009-02-25 | 54 | 2009-02-23 | 2009-02-24 | 2d | 32.88d | 0d |  | All Working Day Calendar |  |  | 구현 | P02-1 1.5 |  |  |  |  |  |  |
| 56 | 4.2.4.3 | 보고서 요구사항 분석 | 1d | 2009-02-26 | 2009-02-26 | 55 | 2009-02-25 | 2009-02-25 | 1d | 32.88d | 0d |  | All Working Day Calendar |  |  | 구현계획수립 | P02-1 1.5.1 | 48648F600F9201F8E100800046140A10 | 07060716O410181 | 00000000000001277314 | DEFAULT |  |  |
| 57 | 4.2.4.4 | 보고서 변경/확인 | 2d | 2009-02-26 | 2009-02-27 | 56 | 2009-02-25 | 2009-02-26 | 2d | 140.88d | 0d |  | 24 시간 |  |  | 구현계획수립 | P02-1 1.5.1 | 48648F620F9201F8E100800046140A10 | 07060716O410181 | 00000000000001277315 | DEFAULT |  |  |
| 58 | 4.2.5 | 통합테스트 시나리오 작성 | 2d | 2009-02-27 | 2009-03-03 | 57 | 2009-02-26 | 2009-03-02 | 2d | 32.88d | 0d |  |  |  |  |  |  |  |  |  |  | 통합테스트시나리오 |  |
| 59 | 5 | **E2E and UAT** | 29d | 2009-03-03 | 2009-04-13 |  | 2009-03-02 | 2009-04-10 | 29d | 32.88d |  |  |  |  |  | 단계완료 | P02-1 1.6.8 |  |  |  |  |  |  |
| 60 | 5.1 | **검증 및 운영서버 설치** | 4d | 2009-03-03 | 2009-03-09 |  | 2009-03-02 | 2009-03-06 | 4d | 32.88d |  |  |  |  |  | 단계완료 | P02-1 1.6.8 |  |  |  |  |  |  |
| 61 | 5.1.1 | LDAP/Rathon Sync 검증서버환경 검증 | 2d | 2009-03-03 | 2009-03-05 | 58 | 2009-03-02 | 2009-03-04 | 2d | 32.88d | 0d | finish no earlier than 2008-12-22 |  |  |  | 단계완료 | P02-1 1.6.8 |  |  |  |  |  |  |
| 62 | 5.1.2 | LDAP/Rathon Sync 운영환경 검증 | 2d | 2009-03-05 | 2009-03-09 | 61 | 2009-03-04 | 2009-03-06 | 2d | 32.88d | 0d | finish no earlier than 2008-12-22 |  |  |  | 단계완료 | P02-1 1.6.8 |  |  |  |  |  |  |
| 63 | 5.2 | 연계 대상 시스템 검증 | 3d | 2009-03-09 | 2009-03-12 | 62 | 2009-03-06 | 2009-03-11 | 3d | 32.88d | 0d | finish no earlier than 2009-01-12 |  |  |  | 단계완료 | P02-1 1.6.8 |  |  |  |  |  |  |
| 64 | 5.3 | **연계 동기화 환경구축** | 2d | 2009-03-12 | 2009-03-16 |  | 2009-03-11 | 2009-03-13 | 2d | 32.88d |  |  |  |  |  | 테스트실시 | P02-1 1.4.2 |  |  |  |  |  |  |
| 65 | 5.3.1 | 검증서버로 어플리케이션 이관 | 1d | 2009-03-12 | 2009-03-13 | 63 | 2009-03-11 | 2009-03-12 | 1d | 32.88d | 0d | finish no earlier than 2009-02-25 |  |  |  | 테스트실시 | P02-1 1.4.2 |  |  |  |  |  |  |
| 66 | 5.3.2 | 운영서버로 어플리케이션 이관 | 1d | 2009-03-13 | 2009-03-16 | 65 | 2009-03-12 | 2009-03-13 | 1d | 32.88d | 0d |  |  |  |  |  |  |  |  |  |  |  |  |
| 67 | 5.4 | **ETE Test/UAT Test** | 20d | 2009-03-16 | 2009-04-13 | 66 | 2009-03-13 | 2009-04-10 | 20d | 32.88d |  |  |  |  |  | 테스트실시 | P02-1 1.4.2 |  |  |  |  |  |  |
| 68 | 5.4.1 | 통합테스트 실시 | 20d | 2009-03-16 | 2009-04-13 |  | 2009-03-13 | 2009-04-10 | 20d | 32.88d | 0d |  |  |  |  | 테스트실시 | P02-1 1.4.2 |  |  |  |  | 통합테스트결과 |  |
| 69 | 6 | **ORT(Operation Readiness Test)** | 64.88d | 2009-04-13 | 2009-07-13 |  | 2009-04-10 | 2009-07-13 | 65.88d | 1d |  |  | All Working Day Calendar |  | 296h | 구현 | P02-1 1.5 |  |  |  |  |  |  |
| 70 | 6.1 | **컨버젼 및 릴리이즈** | 5d | 2009-04-13 | 2009-04-20 |  | 2009-04-10 | 2009-04-17 | 5d | 33.88d |  |  | All Working Day Calendar |  | 24h | 컨버젼 및 릴리이즈 | P02-1 1.5.2 |  |  |  |  |  |  |
| 71 | 6.1.1 | 운영데이터베이스 구축/점검 | 1d | 2009-04-13 | 2009-04-14 | 68 | 2009-04-10 | 2009-04-13 | 1d | 33.88d | 0d |  | All Working Day Calendar | TA | 8h | 컨버젼 및 릴리이즈 | P02-1 1.5.2 |  |  |  |  |  |  |
| 72 | 6.1.2 | 소프트웨어 설치/점검 | 1d | 2009-04-14 | 2009-04-15 | 71 | 2009-04-13 | 2009-04-14 | 1d | 33.88d | 0d |  | All Working Day Calendar | TA | 8h | 컨버젼 및 릴리이즈 | P02-1 1.5.2 |  |  |  |  |  |  |
| 73 | 6.1.3 | 운영데이터 추출 및 로드 | 1d | 2009-04-15 | 2009-04-16 | 72 | 2009-04-14 | 2009-04-15 | 1d | 33.88d | 0d |  | All Working Day Calendar | TA | 8h | 컨버젼 및 릴리이즈 | P02-1 1.5.2 |  |  |  |  |  |  |
| 74 | 6.1.4 | 시스템릴리이즈 | 1d | 2009-04-16 | 2009-04-17 | 73 | 2009-04-15 | 2009-04-16 | 1d | 33.88d | 0d |  | All Working Day Calendar |  |  | 컨버젼 및 릴리이즈 | P02-1 1.5.2 | 48648F700F9201F8E100800046140A10 | 07060716O410182 | 00000000000001277322 | DEFAULT |  |  |
| 75 | 6.1.5 | 시스템 오픈 | 1d | 2009-04-17 | 2009-04-20 | 74 | 2009-04-16 | 2009-04-17 | 1d | 32.88d | 0d |  |  |  |  | 컨버젼 및 릴리이즈 | P02-1 1.5.2 |  |  |  |  |  |  |
| 76 | 6.2 | **시스템운영교육** | 12d | 2009-04-20 | 2009-05-07 |  | 2009-04-17 | 2009-05-06 | 12d | 33.88d |  |  | All Working Day Calendar |  | 96h | 시스템사용교육 | P02-1 1.5.3 |  |  |  |  |  |  |
| 77 | 6.2.1 | 운영매뉴얼 작성 | 10d | 2009-04-20 | 2009-05-04 | 75 | 2009-04-17 | 2009-05-01 | 10d | 33.88d | 0d |  | All Working Day Calendar | TA | 80h | 시스템사용교육 | P02-1 1.5.3 |  |  |  |  | 운영매뉴얼 | H/W, S/W 운영 매뉴얼 |
| 78 | 6.2.2 | 교육훈련실시 | 2d | 2009-05-04 | 2009-05-07 | 77 | 2009-05-01 | 2009-05-06 | 2d | 33.88d | 0d |  | All Working Day Calendar | TA | 16h | 시스템사용교육 | P02-1 1.5.3 |  |  |  |  | 교육교재 | H/W, S/W 교육 매뉴얼 |

| ID | WBS | Task | Duration | Start | Finish | Predecessors | Baseline start | Baseline finish | Baseline duration | Total slack | Free slack | Constraint | Calendar | Resources | Work | Text20 | Text26 | Text30 |
| --- | --- | --- | --- | --- | --- | --- | --- | --- | --- | --- | --- | --- | --- | --- | --- | --- | --- | --- |
| 79 | 6.3 | **시범운영** | 15d | 2009-05-07 | 2009-05-28 |  | 2009-05-06 | 2009-05-27 | 15d | 33.88d | 11.88d |  | All Working Day Calendar |  | 120h | 시범운영 | P02-1 1.5.4 |  |
| 80 | 6.3.1 | 시범운영계획수립 | 5d | 2009-05-07 | 2009-05-14 | 78 | 2009-05-06 | 2009-05-13 | 5d | 33.88d | 0d |  | All Working Day Calendar | TA | 40h | 시범운영 | P02-1 1.5.4 |  |
| 81 | 6.3.2 | 시범운영실시(인수테스트병행) | 10d | 2009-05-14 | 2009-05-28 | 80 | 2009-05-13 | 2009-05-27 | 10d | 33.88d |  |  | All Working Day Calendar | TA | 80h | 시범운영 | P02-1 1.5.4 |  |
| 82 | 6.4 | **시스템 인수인계** | 7d | 2009-05-25 | 2009-06-02 | 79SS | 2009-05-25 | 2009-06-02 | 7d | 0d |  |  | All Working Day Calendar |  | 56h | 시스템 인수인계 | P02-1 1.7.2 |  |
| 83 | 6.4.1 | 인수인계계획 수립 | 5d | 2009-05-25 | 2009-05-29 |  | 2009-05-25 | 2009-05-29 | 5d | 0d |  | start no earlier than 2009-05-25 | All Working Day Calendar | TA | 40h | 시스템 인수인계 | P02-1 1.7.2 | 인수인계계획서 |
| 84 | 6.4.2 | 인수인계 실시 | 2d | 2009-06-01 | 2009-06-02 | 83 | 2009-06-01 | 2009-06-02 | 2d | 0d |  |  | All Working Day Calendar | TA | 16h | 시스템 인수인계 | P02-1 1.7.2 | 인수인계확인서 |
| 85 | 6.5 | 시스템 오픈(로그인 테스트) | 1d | 2009-07-13 | 2009-07-13 |  | 2009-07-13 | 2009-07-13 | 1d | 1d |  | start no earlier than 2009-07-13 |  |  |  |  |  |  |
| 86 | 7 | LDAP/Rathon Sync Tech Support | 30d | 2009-06-03 | 2009-07-14 | 84 | 2009-06-03 | 2009-07-14 | 30d | 0d |  |  |  |  |  | 구현 | P02-1 1.5 |  |
