# 17.데이터품질점검

Schedule from MS Project, 2008-09-09 to 2009-07-31, A marks actual dates.
HSIC-0820606

## Calendars

- 한국: Mon-Fri 08:00-12:00, 13:00-17:00; Sat-Sun off. Exceptions (off unless hours are given): 2008-09-13 to 2008-09-15, 2008-10-03, 2008-12-25, 2009-01-01, 2009-01-25 to 2009-01-27, 2009-03-01, 2009-05-01 to 2009-05-02, 2009-05-05, 2009-06-06.

## Resources

| Resource | Rate | Cost per use |
| --- | --- | --- |
| PM | 1 | 1 |
| QAO | 1 | 1 |
| PL | 1 | 1 |
| SA | 1 |  |
| TA | 1 |  |
| F/W | 1 |  |
| UI | 1 |  |
| 개발팀 | 1 |  |
| FW | 1 |  |
| DBIO | 1 |  |
| SA.F/W | 1 |  |
| IBM | 1 |  |
| Tmax | 1 |  |
| PJT | 1 |  |
| NCRM | 1 |  |
| StarTeam | 1 |  |
| CaliberRM | 1 |  |
| TestDirector | 1 |  |
| 생보기술지원파트 | 1 |  |
| RM | 1 |  |
| QTP | 1 |  |
| EAI | 1 |  |
| AnyLink | 1 |  |
| 메타블루 | 1 |  |
| Tivoli | 1 |  |
| Syncsort | 1 |  |
| Rule | 1 |  |
| Printing | 1 |  |
| 이미지 | 1 |  |
| 시스템공통 | 1 |  |
| SA.레포팅 | 1 |  |
| SA.프린팅 | 1 |  |
| DBA | 1 |  |
| 데이터이행 | 1 |  |
| SSO | 1 |  |
| 현업 |  |  |
| IT운영 |  |  |
| MIG팀 |  |  |

## Schedule

| ID | WBS | Task | Duration | Start | Finish | Predecessors | Complete | Remaining | Baseline start | Baseline finish | Baseline duration | Total slack | Free slack | Constraint | Resources | Work | Actual work | Text20 | Text26 | Text30 |
| --- | --- | --- | --- | --- | --- | --- | --- | --- | --- | --- | --- | --- | --- | --- | --- | --- | --- | --- | --- | --- |
| 1 | 1 | **제품설치** | 79d | 2008-09-09 A | 2008-12-31 |  | 47% | 41.82d | 2008-09-09 | 2008-12-31 | 79d | 147d |  |  |  |  |  | 분석 | P02-1 1.2 |  |
| 2 | 1.1 | **1차** | 8d | 2008-09-09 A | 2008-09-19 A |  | 100% |  | 2008-09-09 | 2008-09-19 | 8d |  |  |  |  |  |  | 현황평가 | P02-1 1.2.2 |  |
| 3 | 1.1.1 | IBM P595 POC LPAR | 8d | 2008-09-09 A | 2008-09-19 A |  | 100% |  | 2008-09-09 | 2008-09-19 | 8d |  |  | finish no earlier than 2008-09-19 |  |  |  | 현황평가 | P02-1 1.2.2 |  |
| 4 | 1.2 | **2차** | 5d | 2008-10-27 | 2008-10-31 |  |  |  | 2008-10-27 | 2008-10-31 | 5d | 189d |  |  |  |  |  | 현황평가 | P02-1 1.2.2 |  |
| 5 | 1.2.1 | IBM P595 DW Dev LPAR | 5d | 2008-10-27 | 2008-10-31 |  |  |  | 2008-10-27 | 2008-10-31 | 5d | 189d |  | finish no earlier than 2008-10-31 |  |  |  | 현황평가 | P02-1 1.2.2 |  |
| 6 | 1.3 | **3차** | 4d | 2008-12-26 | 2008-12-31 |  |  |  | 2008-12-26 | 2008-12-31 | 4d | 147d |  |  |  |  |  | 매핑 | P02-1 1.2.4 |  |
| 7 | 1.3.1 | IBM P595 DW Prod LPAR | 4d | 2008-12-26 | 2008-12-31 |  |  |  | 2008-12-26 | 2008-12-31 | 4d | 147d |  | finish no earlier than 2008-12-31 |  |  |  | 매핑 | P02-1 1.2.4 | 설치확인서 |
| 8 | 2 | **POC** | 9d | 2008-09-16 A | 2008-09-26 A |  | 100% |  | 2008-09-16 | 2008-09-26 | 9d |  |  |  |  |  |  | 설계 | P02-1 1.3 |  |
| 9 | 2.1 | 데이터품질점검 시스템 성능 점검 POC | 9d | 2008-09-16 A | 2008-09-26 A |  | 100% |  | 2008-09-16 | 2008-09-26 | 9d |  |  | finish no earlier than 2008-09-26 |  |  |  | 추가개발설계 | P02-1 1.3.1 |  |
| 10 | 3 | **As-Is 데이터품질점검** | 120d | 2008-09-29 A | 2009-03-20 |  | 33% | 80.84d | 2008-09-29 | 2009-03-20 | 120d | 57.67d | 0d |  |  | 1408h | 288h | 개발 | P02-1 1.4 |  |
| 11 | 3.1 | **1차** | 44d | 2008-09-29 A | 2008-11-28 |  | 84% | 7.13d | 2008-09-29 | 2008-11-28 | 44d | 133.67d |  |  |  | 480h | 288h | 추가개발 프로그램코딩 | P02-1 1.4.1 |  |
| 12 | 3.1.1 | 품질점검 대상 선정 (PSR) | 4d | 2008-09-29 A | 2008-10-02 A |  | 100% |  | 2008-09-29 | 2008-10-02 | 4d |  |  | finish no earlier than 2008-10-02 |  |  |  |  |  |  |
| 13 | 3.1.2 | 품질점검 대상 선정 (NFS) | 10d | 2008-10-20 A | 2008-10-31 A |  | 100% |  | 2008-10-20 | 2008-10-31 | 10d |  |  | finish no earlier than 2008-10-31 |  |  |  |  |  |  |
| 14 | 3.1.3 | 프로파일링 | 5d | 2008-10-06 A | 2008-10-10 A | 12 | 100% |  | 2008-10-06 | 2008-10-10 | 5d |  |  |  |  |  |  |  |  |  |
| 15 | 3.1.4 | 프로파일링 진단보고 | 5d | 2008-10-13 A | 2008-10-17 A | 14 | 100% |  | 2008-10-13 | 2008-10-17 | 5d |  |  |  |  |  |  |  |  | 프로파일링진단보고서 |
| 16 | 3.1.5 | 업무규칙도출 | 10d | 2008-10-13 A | 2008-10-24 A | 14 | 100% |  | 2008-10-13 | 2008-10-24 | 10d |  |  |  |  |  |  | 추가개발 프로그램코딩 | P02-1 1.4.1 |  |
| 17 | 3.1.6 | 업무규칙점검 | 5d | 2008-10-27 A | 2008-10-31 A | 16 | 100% |  | 2008-10-27 | 2008-10-31 | 5d |  |  |  |  |  |  | 추가개발 프로그램코딩 | P02-1 1.4.1 |  |
| 18 | 3.1.7 | 업무규칙 진단보고 | 5d | 2008-11-03 A | 2008-11-07 A | 17 | 100% |  | 2008-11-03 | 2008-11-07 | 5d |  |  |  |  |  |  |  |  | 업무규칙진단보고서 |
| 19 | 3.1.8 | 데이터정비(Cleansing) | 30d | 2008-10-20 A | 2008-11-28 | 15 | 60% | 12d | 2008-10-20 | 2008-11-28 | 30d | 133.67d |  |  | 현업; IT운영 | 480h | 288h | 추가개발 프로그램코딩 | P02-1 1.4.1 |  |
| 20 | 3.2 | **2차** | 36d | 2008-12-01 | 2009-01-21 |  |  |  | 2008-12-01 | 2009-01-21 | 36d | 96d |  |  |  | 448h |  | 추가개발 프로그램코딩 | P02-1 1.4.1 |  |
| 21 | 3.2.1 | 프로파일링 | 5d | 2008-12-01 | 2008-12-05 |  |  |  | 2008-12-01 | 2008-12-05 | 5d | 96d | 0d | start no earlier than 2008-12-01 |  |  |  |  |  |  |
| 22 | 3.2.2 | 프로파일링 진단보고 | 5d | 2008-12-08 | 2008-12-12 | 21 |  |  | 2008-12-08 | 2008-12-12 | 5d | 96d | 0d |  |  |  |  |  |  | 프로파일링진단보고서 |
| 23 | 3.2.3 | 업무규칙도출 | 10d | 2008-12-08 | 2008-12-19 | 21 |  |  | 2008-12-08 | 2008-12-19 | 10d | 108.67d | 0d |  |  |  |  | 추가개발 프로그램코딩 | P02-1 1.4.1 |  |
| 24 | 3.2.4 | 업무규칙점검 | 5d | 2008-12-22 | 2008-12-29 | 23 |  |  | 2008-12-22 | 2008-12-29 | 5d | 108.67d | 0d |  |  |  |  | 추가개발 프로그램코딩 | P02-1 1.4.1 |  |
| 25 | 3.2.5 | 업무규칙 진단보고 | 5d | 2008-12-30 | 2009-01-06 | 24 |  |  | 2008-12-30 | 2009-01-06 | 5d | 108.67d |  |  |  |  |  |  |  | 업무규칙진단보고서 |
| 26 | 3.2.6 | 데이터정비(Cleansing) | 28d | 2008-12-15 | 2009-01-21 | 22 |  |  | 2008-12-15 | 2009-01-21 | 28d | 96d |  |  | 현업; IT운영 | 448h |  | 추가개발 프로그램코딩 | P02-1 1.4.1 |  |

| ID | WBS | Task | Duration | Start | Finish | Predecessors | Baseline start | Baseline finish | Baseline duration | Total slack | Free slack | Constraint | Resources | Work | Text20 | Text26 | Text30 | Text22 | Text25 | Text27 | Text28 |
| --- | --- | --- | --- | --- | --- | --- | --- | --- | --- | --- | --- | --- | --- | --- | --- | --- | --- | --- | --- | --- | --- |
| 27 | 3.3 | **3차** | 38d | 2009-01-28 | 2009-03-20 |  | 2009-01-28 | 2009-03-20 | 38d | 57.67d |  |  |  | 480h | 테스트 설계 | P02-1 1.3.3 |  |  |  |  |  |
| 28 | 3.3.1 | 프로파일링 | 3d | 2009-01-28 | 2009-01-30 |  | 2009-01-28 | 2009-01-30 | 3d | 59d | 0d | start no earlier than 2009-01-28 |  |  |  |  |  |  |  |  |  |
| 29 | 3.3.2 | 프로파일링 진단보고 | 5d | 2009-02-02 | 2009-02-06 | 28 | 2009-02-02 | 2009-02-06 | 5d | 59d | 0d |  |  |  |  |  | 프로파일링진단보고서 |  |  |  |  |
| 30 | 3.3.3 | 업무규칙도출 | 10d | 2009-02-02 | 2009-02-13 | 28 | 2009-02-02 | 2009-02-13 | 10d | 72.67d | 0d |  |  |  | 추가개발 프로그램코딩 | P02-1 1.4.1 |  |  |  |  |  |
| 31 | 3.3.4 | 업무규칙점검 | 5d | 2009-02-16 | 2009-02-20 | 30 | 2009-02-16 | 2009-02-20 | 5d | 72.67d | 0d |  |  |  | 추가개발 프로그램코딩 | P02-1 1.4.1 |  |  |  |  |  |
| 32 | 3.3.5 | 업무규칙 진단보고 | 5d | 2009-02-23 | 2009-02-27 | 31 | 2009-02-23 | 2009-02-27 | 5d | 72.67d |  |  |  |  |  |  | 업무규칙진단보고서 |  |  |  |  |
| 33 | 3.3.6 | 데이터정비(Cleansing) | 30d | 2009-02-09 | 2009-03-20 | 29 | 2009-02-09 | 2009-03-20 | 30d | 57.67d |  |  | 현업; IT운영 | 480h | 추가개발 프로그램코딩 | P02-1 1.4.1 |  |  |  |  |  |
| 34 | 4 | **To-Be 데이터품질점검** | 69.67d | 2009-03-23 | 2009-06-30 |  | 2009-03-23 | 2009-06-30 | 69.67d | 23.33d |  |  |  | 768h | 테스트실시 | P02-1 1.4.2 |  | 48648F580F9201F8E100800046140A10 | 07060716O410179 | 00000000000001277310 | DEFAULT |
| 35 | 4.1 | **1차** | 33.33d | 2009-03-23 | 2009-05-11 | 10 | 2009-03-23 | 2009-05-11 | 33.33d | 57.67d |  |  |  | 368h | 테스트실시 | P02-1 1.4.2 |  |  |  |  |  |
| 36 | 4.1.1 | 품질점검 대상 선정 (PSR) | 10d | 2009-03-23 | 2009-04-03 |  | 2009-03-23 | 2009-04-03 | 10d | 57.67d | 0d |  |  |  | 테스트실시 | P02-1 1.4.2 |  |  |  |  |  |
| 37 | 4.1.2 | 품질점검 대상 선정 (NFS) | 10d | 2009-03-23 | 2009-04-03 |  | 2009-03-23 | 2009-04-03 | 10d | 83d |  |  |  |  | 테스트실시 | P02-1 1.4.2 |  |  |  |  |  |
| 38 | 4.1.3 | 프로파일링 | 5d | 2009-04-06 | 2009-04-10 | 36 | 2009-04-06 | 2009-04-10 | 5d | 57.67d | 0d |  |  |  | 테스트실시 | P02-1 1.4.2 |  |  |  |  |  |
| 39 | 4.1.4 | 프로파일링 진단보고 | 5d | 2009-04-13 | 2009-04-17 | 38 | 2009-04-13 | 2009-04-17 | 5d | 57.67d | 0d |  |  |  | 테스트실시 | P02-1 1.4.2 | 프로파일링진단보고서 |  |  |  |  |
| 40 | 4.1.5 | 업무규칙도출 | 5d | 2009-04-20 | 2009-04-24 | 39 | 2009-04-20 | 2009-04-24 | 5d | 60d | 0d |  |  |  | 테스트실시 | P02-1 1.4.2 |  |  |  |  |  |
| 41 | 4.1.6 | 업무규칙점검 | 5d | 2009-04-27 | 2009-05-04 | 40 | 2009-04-27 | 2009-05-04 | 5d | 60d | 0d |  |  |  | 테스트실시 | P02-1 1.4.2 |  |  |  |  |  |
| 42 | 4.1.7 | 업무규칙 진단보고 | 3d | 2009-05-06 | 2009-05-08 | 41 | 2009-05-06 | 2009-05-08 | 3d | 60d |  |  |  |  | 테스트실시 | P02-1 1.4.2 | 업무규칙진단보고서 |  |  |  |  |
| 43 | 4.1.8 | 데이터정비(Cleansing) | 15.33d | 2009-04-20 | 2009-05-11 | 39 | 2009-04-20 | 2009-05-11 | 15.33d | 57.67d |  |  | 현업; IT운영; MIG팀 | 368h | 테스트실시 | P02-1 1.4.2 |  |  |  |  |  |
| 44 | 4.2 | **2차** | 26.67d | 2009-05-25 | 2009-06-30 |  | 2009-05-25 | 2009-06-30 | 26.67d | 23.33d |  |  |  | 400h |  |  |  |  |  |  |  |
| 45 | 4.2.1 | 프로파일링 | 5d | 2009-05-25 | 2009-05-29 |  | 2009-05-25 | 2009-05-29 | 5d | 23.33d | 0d | start no earlier than 2009-05-25 |  |  | 테스트실시 | P02-1 1.4.2 |  |  |  |  |  |
| 46 | 4.2.2 | 프로파일링 진단보고 | 5d | 2009-06-01 | 2009-06-05 | 45 | 2009-06-01 | 2009-06-05 | 5d | 23.33d | 0d |  |  |  | 테스트실시 | P02-1 1.4.2 | 프로파일링진단보고서 |  |  |  |  |
| 47 | 4.2.3 | 업무규칙도출 | 5d | 2009-06-08 | 2009-06-12 | 46 | 2009-06-08 | 2009-06-12 | 5d | 25d | 0d |  |  |  | 테스트실시 | P02-1 1.4.2 |  |  |  |  |  |
| 48 | 4.2.4 | 업무규칙점검 | 5d | 2009-06-15 | 2009-06-19 | 47 | 2009-06-15 | 2009-06-19 | 5d | 25d | 0d |  |  |  | 테스트실시 | P02-1 1.4.2 |  |  |  |  |  |
| 49 | 4.2.5 | 업무규칙 진단보고 | 5d | 2009-06-22 | 2009-06-26 | 48 | 2009-06-22 | 2009-06-26 | 5d | 25d |  |  |  |  | 테스트실시 | P02-1 1.4.2 | 업무규칙진단보고서 |  |  |  |  |
| 50 | 4.2.6 | 데이터정비(Cleansing) | 16.67d | 2009-06-08 | 2009-06-30 | 46 | 2009-06-08 | 2009-06-30 | 16.67d | 23.33d |  |  | 현업; IT운영; MIG팀 | 400h | 테스트실시 | P02-1 1.4.2 |  |  |  |  |  |

| ID | WBS | Task | Duration | Start | Finish | Predecessors | Baseline start | Baseline finish | Baseline duration | Total slack | Constraint | Text20 | Text26 | Text30 |
| --- | --- | --- | --- | --- | --- | --- | --- | --- | --- | --- | --- | --- | --- | --- |
| 51 | 5 | **Go Live** | 1d | 2009-07-13 | 2009-07-13 |  | 2009-07-13 | 2009-07-13 | 1d | 14d |  | 컨버젼 및 릴리이즈 | P02-1 1.5.2 |  |
| 52 | 5.1 | 시스템 최종 오픈 | 1d | 2009-07-13 | 2009-07-13 |  | 2009-07-13 | 2009-07-13 | 1d | 14d | start no earlier than 2009-07-13 |  |  |  |
| 53 | 6 | **최종이행데이터 점검** | 10d | 2009-07-20 | 2009-07-31 |  | 2009-07-20 | 2009-07-31 | 10d | 0d |  |  |  |  |
| 54 | 6.1 | 업무규칙점검 | 5d | 2009-07-20 | 2009-07-24 |  | 2009-07-20 | 2009-07-24 | 5d | 0d | start no earlier than 2009-07-20 |  |  |  |
| 55 | 6.2 | 업무규칙 진단보고 | 5d | 2009-07-27 | 2009-07-31 | 54 | 2009-07-27 | 2009-07-31 | 5d | 0d |  |  |  | 업무규칙진단보고서 |
