# 테스트 자동화 시스템 구축

Schedule from MS Project, 2008-10-16 to 2009-03-13, A marks actual dates.
HSIC-0820606

## Calendars

- 한국: Mon-Fri 08:00-12:00, 13:00-17:00; Sat-Sun off. Exceptions (off unless hours are given): 2008-12-25, 2009-01-01, 2009-01-25 to 2009-01-27, 2009-03-01.

## Resources

| Resource |
| --- |
| TA |
| SA |
| IBM |
| QAO |
| RM |
| Tmax |
| TestDirector |
| StarTeam |
| QTP |
| CaliberRM |
| 0 |

## Schedule

| ID | WBS | Task | Duration | Start | Finish | Predecessors | Complete | Remaining | Baseline start | Baseline finish | Baseline duration | Total slack | Free slack | Constraint | Resources | Work | Actual work | Text30 |
| --- | --- | --- | --- | --- | --- | --- | --- | --- | --- | --- | --- | --- | --- | --- | --- | --- | --- | --- |
| 1 | 1 | **착수준비** | 8d | 2008-10-16 A | 2008-10-27 A |  | 100% |  | 2008-10-16 | 2008-10-27 | 8d |  |  |  |  |  |  |  |
| 2 | 1.1 | 프로젝트 수행 계획 수립 | 8d | 2008-10-16 A | 2008-10-27 A |  | 100% |  | 2008-10-16 | 2008-10-27 | 8d |  |  | finish no earlier than 2008-10-17 |  |  |  | 테스트 수행 계획서 |
| 3 | 2 | **테스트 공정 관리(QC)** | 46d | 2008-10-28 A | 2008-12-31 |  | 76% | 10.87d | 2008-10-28 | 2008-12-31 | 46d | 49d |  |  |  | 320h | 256h |  |
| 4 | 2.1 | **분석** | 19d | 2008-10-28 A | 2008-11-21 A |  | 100% |  | 2008-10-28 | 2008-11-21 | 19d |  |  |  |  | 88h | 88h |  |
| 5 | 2.1.1 | 패키지 설치 | 1d | 2008-10-28 A | 2008-10-28 A | 2 | 100% |  | 2008-10-28 | 2008-10-28 | 1d |  |  | start no earlier than 2008-10-28 | TestDirector | 8h | 8h |  |
| 6 | 2.1.2 | 패키지 환경 설정 | 1d | 2008-10-29 A | 2008-10-29 A | 5 | 100% |  | 2008-10-29 | 2008-10-29 | 1d |  |  |  | TestDirector | 8h | 8h |  |
| 7 | 2.1.3 | 업무분석 | 2d | 2008-10-30 A | 2008-10-31 A |  | 100% |  | 2008-10-30 | 2008-10-31 | 2d |  |  | finish no earlier than 2008-10-31 |  |  |  |  |
| 8 | 2.1.4 | NCRM QTP 적용 가능 여부 검토 | 5d | 2008-11-03 A | 2008-11-07 A | 7 | 100% |  | 2008-11-03 | 2008-11-07 | 5d |  |  | finish no earlier than 2008-11-07 |  |  |  |  |
| 9 | 2.1.5 | AS-IS 분석 | 3d | 2008-11-10 A | 2008-11-12 A | 8 | 100% |  | 2008-11-10 | 2008-11-12 | 3d |  |  | start no earlier than 2008-11-10 | TestDirector | 24h | 24h |  |
| 10 | 2.1.6 | 요구사항 정의 | 4d | 2008-11-13 A | 2008-11-18 A | 9 | 100% |  | 2008-11-13 | 2008-11-18 | 4d |  |  | finish no earlier than 2008-11-18 | TestDirector | 32h | 32h | 요구사항 정의서 |
| 11 | 2.1.7 | I/F 연계 방안 사전 협의 | 2d | 2008-11-20 A | 2008-11-21 A | 10 | 100% |  | 2008-11-20 | 2008-11-21 | 2d |  |  | finish no earlier than 2008-11-21 | TestDirector | 16h | 16h |  |
| 12 | 2.2 | **설계** | 8d | 2008-11-14 A | 2008-11-25 A |  | 100% |  | 2008-11-14 | 2008-11-25 | 8d |  |  |  |  | 64h | 64h |  |
| 13 | 2.2.1 | 프로세스 설계 | 3d | 2008-11-14 A | 2008-11-18 A |  | 100% |  | 2008-11-14 | 2008-11-18 | 3d |  |  | start no earlier than 2008-11-14 | TestDirector | 24h | 24h | 프로세스 정의서 |
| 14 | 2.2.2 | 시스템 설계 | 3d | 2008-11-19 A | 2008-11-21 A | 13 | 100% |  | 2008-11-19 | 2008-11-21 | 3d |  |  | finish no earlier than 2008-11-21 | TestDirector | 24h | 24h | 시스템 설계서 |
| 15 | 2.2.3 | 데이터베이스 설계 | 3d | 2008-11-19 A | 2008-11-21 A |  | 100% |  | 2008-11-19 | 2008-11-21 | 3d |  |  | start no earlier than 2008-11-19 |  |  |  |  |
| 16 | 2.2.4 | 테스트 설계 | 2d | 2008-11-24 A | 2008-11-25 A | 13 | 100% |  | 2008-11-24 | 2008-11-25 | 2d |  |  | start no earlier than 2008-11-24 | TestDirector | 16h | 16h | 테스트 케이스 정의서 |
| 17 | 2.3 | **구축** | 18d | 2008-11-26 A | 2008-12-19 |  | 68% | 5.68d | 2008-11-26 | 2008-12-19 | 18d | 56d |  |  |  | 128h | 104h |  |
| 18 | 2.3.1 | 패키지 커스트마이징 | 13d | 2008-11-26 A | 2008-12-12 A | 16 | 100% |  | 2008-11-26 | 2008-12-12 | 13d |  |  | start no earlier than 2008-11-26 | TestDirector | 104h | 104h |  |
| 19 | 2.3.2 | I/F 연계 | 3d | 2008-12-15 | 2008-12-17 |  |  |  | 2008-12-15 | 2008-12-17 | 3d | 58d |  | start no earlier than 2008-12-15 |  |  |  |  |
| 20 | 2.3.3 | 테스트 수행 | 3d | 2008-12-17 | 2008-12-19 |  |  |  | 2008-12-17 | 2008-12-19 | 3d | 56d |  | start no earlier than 2008-12-17 | TestDirector | 24h |  |  |
| 21 | 2.4 | **이관** | 7d | 2008-12-22 | 2008-12-31 |  |  |  | 2008-12-22 | 2008-12-31 | 7d | 49d |  |  |  | 40h |  |  |
| 22 | 2.4.1 | 교육자료작성 | 3d | 2008-12-22 | 2008-12-24 |  |  |  | 2008-12-22 | 2008-12-24 | 3d | 52d | 3d | start no earlier than 2008-12-22 | TestDirector | 24h |  | 사용자 가이드 |
| 23 | 2.4.2 | 사용자교육 | 2d | 2008-12-26 | 2008-12-29 |  |  |  | 2008-12-26 | 2008-12-29 | 2d | 50d | 0d | start no earlier than 2008-12-26 |  |  |  |  |
| 24 | 2.4.3 | 시스템 이관 | 1d | 2008-12-30 | 2008-12-30 | 23 |  |  | 2008-12-30 | 2008-12-30 | 1d | 50d |  |  | TestDirector | 8h |  | 운영자 가이드 |
| 25 | 2.4.4 | 완료보고 | 1d | 2008-12-31 | 2008-12-31 | 22 |  |  | 2008-12-31 | 2008-12-31 | 1d | 49d |  | start no earlier than 2008-12-31 | TestDirector | 8h |  | 완료 보고서 |

| ID | WBS | Task | Duration | Start | Finish | Predecessors | Baseline start | Baseline finish | Baseline duration | Total slack | Free slack | Constraint | Resources | Work | Text30 |
| --- | --- | --- | --- | --- | --- | --- | --- | --- | --- | --- | --- | --- | --- | --- | --- |
| 26 | 3 | **UI 테스트 자동화(QTP)** | 49d | 2009-01-02 | 2009-03-13 |  | 2009-01-02 | 2009-03-13 | 49d | 0d |  |  |  | 472h |  |
| 27 | 3.1 | **분석** | 6d | 2009-01-02 | 2009-01-09 |  | 2009-01-02 | 2009-01-09 | 6d | 0d |  |  |  | 48h |  |
| 28 | 3.1.1 | 대상 프로그램 분석 | 2d | 2009-01-02 | 2009-01-05 |  | 2009-01-02 | 2009-01-05 | 2d | 0d |  | start no earlier than 2009-01-02 | QTP | 16h |  |
| 29 | 3.1.2 | 업무 선정 | 2d | 2009-01-06 | 2009-01-07 | 28 | 2009-01-06 | 2009-01-07 | 2d | 0d |  | finish no earlier than 2008-12-17 | QTP | 16h |  |
| 30 | 3.1.3 | Add-In 모듈 정의 | 2d | 2009-01-08 | 2009-01-09 | 29 | 2009-01-08 | 2009-01-09 | 2d | 43d |  | finish no earlier than 2008-12-19 | QTP | 16h |  |
| 31 | 3.2 | **설계** | 8d | 2009-01-08 | 2009-01-19 |  | 2009-01-08 | 2009-01-19 | 8d | 0d |  |  |  | 64h |  |
| 32 | 3.2.1 | 프로세스 설계 | 2d | 2009-01-08 | 2009-01-09 | 29 | 2009-01-08 | 2009-01-09 | 2d | 0d |  | start no earlier than 2008-12-22 | QTP | 16h | 테스트 자동화 설계서 |
| 33 | 3.2.2 | 시스템 설계 | 2d | 2009-01-12 | 2009-01-13 | 32 | 2009-01-12 | 2009-01-13 | 2d | 0d |  | finish no earlier than 2008-12-24 | QTP | 16h |  |
| 34 | 3.2.3 | 테스트 설계 | 4d | 2009-01-14 | 2009-01-19 | 33 | 2009-01-14 | 2009-01-19 | 4d | 0d |  | start no earlier than 2008-12-26 | QTP | 32h |  |
| 35 | 3.3 | **구축** | 37d | 2009-01-20 | 2009-03-13 |  | 2009-01-20 | 2009-03-13 | 37d | 0d |  |  |  | 312h |  |
| 36 | 3.3.1 | 패키지 커스트마이징 | 19d | 2009-01-20 | 2009-02-13 | 34 | 2009-01-20 | 2009-02-13 | 19d | 0d |  | finish no earlier than 2009-02-13 | QTP | 152h | QTP 스크립트 명세서 |
| 37 | 3.3.2 | 테스트 수행 | 2d | 2009-02-16 | 2009-02-17 | 36 | 2009-02-16 | 2009-02-17 | 2d | 0d |  | start no earlier than 2009-02-02 | QTP | 16h |  |
| 38 | 3.3.3 | 자동화 스크립트 구현 | 18d | 2009-02-18 | 2009-03-13 | 37 | 2009-02-18 | 2009-03-13 | 18d | 0d |  | finish no earlier than 2009-03-13 | QTP | 144h |  |
| 39 | 3.4 | **이관** | 18d | 2009-02-18 | 2009-03-13 |  | 2009-02-18 | 2009-03-13 | 18d | 0d |  |  |  | 48h |  |
| 40 | 3.4.1 | 교육자료작성 | 3d | 2009-02-18 | 2009-02-20 | 37 | 2009-02-18 | 2009-02-20 | 3d | 12d | 0d | start no earlier than 2009-02-04 | QTP | 24h | 사용자 가이드 |
| 41 | 3.4.2 | 사용자교육 | 2d | 2009-02-23 | 2009-02-24 | 40 | 2009-02-23 | 2009-02-24 | 2d | 12d |  | start no earlier than 2009-02-09 | QTP | 16h | 운영자 가이드 |
| 42 | 3.4.3 | 완료 보고 | 1d | 2009-03-13 | 2009-03-13 | 41 | 2009-03-13 | 2009-03-13 | 1d | 0d |  | start no earlier than 2009-03-13 | QTP | 8h | 완료 보고서 |
