# RM일정관리_new

Schedule from MS Project, 2008-11-18 to 2008-12-30, A marks actual dates.

## Calendars

- 표준: Mon-Fri 08:00-12:00, 13:00-17:00; Sat-Sun off.

## Schedule

| ID | WBS | Task | Duration | Start | Finish | Predecessors | Complete | Remaining | Baseline start | Baseline finish | Baseline duration | Total slack | Constraint |
| --- | --- | --- | --- | --- | --- | --- | --- | --- | --- | --- | --- | --- | --- |
| 1 | 1 | 메트라이프 차세대 프로젝트 | 31d? | 2008-11-18 | 2008-12-30 |  |  |  | 2008-11-18 | 2008-12-30 | 31d? | 0d | finish no earlier than 2008-12-30 |
| 2 | 2 | **분석** | 14d | 2008-11-18 A | 2008-12-05 A |  | 100% |  | 2008-11-18 | 2008-12-05 | 14d? |  |  |
| 3 | 2.1 | Planning 제시 및 공유 | 5d | 2008-11-18 A | 2008-11-24 A |  | 100% |  | 2008-11-18 | 2008-11-24 | 5d? |  | finish no earlier than 2008-11-24 |
| 4 | 2.2 | 업무구조 검토 및 분석 | 5d | 2008-11-24 A | 2008-11-28 A |  | 100% |  | 2008-11-24 | 2008-11-28 | 5d? |  | finish no earlier than 2008-11-28 |
| 5 | 2.3 | 사전 요구정의서 검토 | 4d | 2008-12-01 A | 2008-12-04 A | 4 | 100% |  | 2008-12-01 | 2008-12-04 | 4d |  |  |
| 6 | 2.4 | 요구사항 분해 수위 파악 | 4d | 2008-12-01 A | 2008-12-04 A |  | 100% |  | 2008-12-01 | 2008-12-04 | 4d? |  | start no earlier than 2008-12-01 |
| 7 | 2.5 | 적용 요구사항 수집 | 10d | 2008-11-24 A | 2008-12-05 A |  | 100% |  | 2008-11-24 | 2008-12-05 | 10d? |  | finish no earlier than 2008-12-05 |
| 8 | 3 | **요구프로세스 정립** | 7d | 2008-12-08 A | 2008-12-16 |  | 88% | 0.82d | 2008-12-08 | 2008-12-16 | 7d? | 10d |  |
| 9 | 3.1 | 프로젝트 전략 고려 | 2d | 2008-12-08 A | 2008-12-09 A |  | 100% |  | 2008-12-08 | 2008-12-09 | 2d |  | start no earlier than 2008-12-08 |
| 10 | 3.2 | 상태및 중요도 전략 고려(의미 및 사전 정보 검토) | 1d | 2008-12-08 A | 2008-12-08 A |  | 100% |  | 2008-12-08 | 2008-12-08 | 1d? |  | start no earlier than 2008-12-08 |
| 11 | 3.3 | 추적구조 전략 사전 고려 | 4d | 2008-12-09 A | 2008-12-12 A | 10 | 100% |  | 2008-12-09 | 2008-12-12 | 4d? |  |  |
| 12 | 3.4 | 요구유형 전략 고려 | 4d | 2008-12-08 A | 2008-12-11 A |  | 100% |  | 2008-12-08 | 2008-12-11 | 4d? |  | start no earlier than 2008-12-08 |
| 13 | 3.5 | 사용자 그룹 정의 및 사용자 전략 고려 | 1d | 2008-12-10 A | 2008-12-10 A |  | 100% |  | 2008-12-10 | 2008-12-10 | 1d? |  | start no earlier than 2008-12-10 |
| 14 | 3.6 | 보안프로파일 전략 고려 | 3d | 2008-12-10 A | 2008-12-12 A | 13 | 100% |  | 2008-12-10 | 2008-12-12 | 3d? |  | finish no earlier than 2008-12-12 |
| 15 | 3.7 | 요구사항 Grid에 대한 필터링 고려 | 2d | 2008-12-15 | 2008-12-16 |  |  |  | 2008-12-15 | 2008-12-16 | 2d? | 10d | start no earlier than 2008-12-15 |
| 16 | 4 | **환경설정 커스터마이징** | 19d | 2008-11-25 | 2008-12-19 |  |  |  | 2008-11-25 | 2008-12-19 | 19d? | 7d |  |
| 17 | 4.1 | 환경설정 작업 | 2d | 2008-11-25 | 2008-11-26 |  |  |  | 2008-11-25 | 2008-11-26 | 2d? | 24d | start no earlier than 2008-11-25 |
| 18 | 4.2 | 제품 기능 및 개념 공유 작업 | 2d | 2008-11-25 | 2008-11-26 |  |  |  | 2008-11-25 | 2008-11-26 | 2d? | 24d | start no earlier than 2008-11-25 |
| 19 | 4.3 | 사용자 정의 속성 전략 반영 | 1d | 2008-12-17 | 2008-12-17 |  |  |  | 2008-12-17 | 2008-12-17 | 1d? | 9d | start no earlier than 2008-12-17 |
| 20 | 4.4 | 6가지 고려 전략 반영 | 2d | 2008-12-18 | 2008-12-19 |  |  |  | 2008-12-18 | 2008-12-19 | 2d? | 7d | start no earlier than 2008-12-18 |
| 21 | 5 | **가이드작성** | 9d | 2008-12-18 | 2008-12-30 |  |  |  | 2008-12-18 | 2008-12-30 | 9d? | 0d |  |
| 22 | 5.1 | 사용자 가이드(기능) | 2d | 2008-12-29 | 2008-12-30 |  |  |  | 2008-12-29 | 2008-12-30 | 2d? | 0d | start no earlier than 2008-12-29 |
| 23 | 5.2 | 운영자 가이드(기능) | 1d | 2008-12-18 | 2008-12-18 |  |  |  | 2008-12-18 | 2008-12-18 | 1d? | 8d | start no earlier than 2008-12-18 |
| 24 | 5.3 | 요구 추적가이드 | 4d | 2008-12-23 | 2008-12-26 | 22 |  |  | 2008-12-23 | 2008-12-26 | 4d? | 2d | finish no earlier than 2008-12-26 |

| ID | WBS | Task | Duration | Start | Finish | Baseline start | Baseline finish | Baseline duration | Total slack | Constraint |
| --- | --- | --- | --- | --- | --- | --- | --- | --- | --- | --- |
| 25 | 5.4 | **요구사항 프로세스 가이드** | 2d | 2008-12-23 | 2008-12-24 | 2008-12-23 | 2008-12-24 | 2d? | 4d |  |
| 26 | 5.4.1 | 역할별 가이드 작성 | 2d | 2008-12-23 | 2008-12-24 | 2008-12-23 | 2008-12-24 | 2d? | 4d | finish no earlier than 2008-12-24 |
| 27 | 6 | **교육관련** | 26d | 2008-11-25 | 2008-12-30 | 2008-11-25 | 2008-12-30 | 26d? | 0d |  |
| 28 | 6.1 | 솔루션 개념 및 소개 | 1d | 2008-11-25 | 2008-11-25 | 2008-11-25 | 2008-11-25 | 1d? | 25d | start no earlier than 2008-11-25 |
| 29 | 6.2 | 기능교육1차 | 1d | 2008-11-26 | 2008-11-26 | 2008-11-26 | 2008-11-26 | 1d? | 24d | start no earlier than 2008-11-26 |
| 30 | 6.3 | 솔루션 개념 및 소개 | 1d | 2008-12-05 | 2008-12-05 | 2008-12-05 | 2008-12-05 | 1d? | 17d | start no earlier than 2008-12-05 |
| 31 | 6.4 | 기능교육2차 | 1d | 2008-12-19 | 2008-12-19 | 2008-12-19 | 2008-12-19 | 1d? | 7d | start no earlier than 2008-12-19 |
| 32 | 6.5 | 기능교육3차 | 1d | 2008-12-30 | 2008-12-30 | 2008-12-30 | 2008-12-30 | 1d? | 0d | start no earlier than 2008-12-30 |
