# 20.업무공통_마감

Schedule from MS Project, 2008-09-01 to 2009-07-13, status date 2008-12-12, A marks actual dates.
HSIC-0820606
吏�

## Calendars

- 표준: Mon-Fri 08:00-12:00, 13:00-17:00; Sat-Sun off. Exceptions (off unless hours are given): 2008-10-25 08:00-12:00, 13:00-17:00.

## Schedule

| ID | WBS | Task | Duration | Start | Finish | Complete | Baseline start | Baseline finish | Baseline duration | Constraint |
| --- | --- | --- | --- | --- | --- | --- | --- | --- | --- | --- |
| 1 | 1 | **Inception** | 11d | 2008-09-01 A | 2008-09-15 A | 100% | 2008-09-01 | 2008-09-15 | 11d |  |
| 2 | 1.1 | **착수준비** | 11d | 2008-09-01 A | 2008-09-15 A | 100% | 2008-09-01 | 2008-09-15 | 11d |  |
| 3 | 1.1.1 | 업무범위 정의 | 5d | 2008-09-01 A | 2008-09-05 A | 100% | 2008-09-01 | 2008-09-05 | 5d | finish no earlier than 2008-09-05 |
| 4 | 1.1.2 | 업무파트 WBS작성 | 6d | 2008-09-08 A | 2008-09-15 A | 100% | 2008-09-08 | 2008-09-15 | 6d | finish no earlier than 2008-09-15 |
| 5 | 2 | **Analysis** | 25d | 2008-09-12 A | 2008-10-16 A | 100% | 2008-09-12 | 2008-10-16 | 25d |  |
| 6 | 2.1 | **현황평가** | 13d | 2008-09-12 A | 2008-09-30 A | 100% | 2008-09-12 | 2008-09-30 | 13d |  |
| 7 | 2.1.1 | **현행업무분석** | 2d | 2008-09-12 A | 2008-09-15 A | 100% | 2008-09-12 | 2008-09-15 | 2d |  |
| 8 | 2.1.1.1 | 현행 업무 분석서 수집 | 2d | 2008-09-12 A | 2008-09-15 A | 100% | 2008-09-12 | 2008-09-15 | 2d | finish no earlier than 2008-09-15 |
| 9 | 2.1.2 | **현행 시스템 분석** | 12d | 2008-09-15 A | 2008-09-30 A | 100% | 2008-09-15 | 2008-09-30 | 12d |  |
| 10 | 2.1.2.1 | 현행 시스템 분석서 수집 | 1d | 2008-09-15 A | 2008-09-15 A | 100% | 2008-09-15 | 2008-09-15 | 1d | start no earlier than 2008-09-15 |
| 11 | 2.1.2.2 | **현생 시스템 화면 및 보고서 설명** | 11d | 2008-09-16 A | 2008-09-30 A | 100% | 2008-09-16 | 2008-09-30 | 11d |  |
| 12 | 2.1.2.2.1 | **공통업무** | 6d | 2008-09-16 A | 2008-09-23 A | 100% | 2008-09-16 | 2008-09-23 | 6d |  |
| 13 | 2.1.2.2.1.1 | 공통코드관리 | 1d | 2008-09-16 A | 2008-09-16 A | 100% | 2008-09-16 | 2008-09-16 | 1d | start no earlier than 2008-09-16 |
| 14 | 2.1.2.2.1.2 | 사용자관리 | 1d | 2008-09-17 A | 2008-09-17 A | 100% | 2008-09-17 | 2008-09-17 | 1d | start no earlier than 2008-09-17 |
| 15 | 2.1.2.2.1.3 | 영업일관리 | 1d | 2008-09-18 A | 2008-09-18 A | 100% | 2008-09-18 | 2008-09-18 | 1d | start no earlier than 2008-09-18 |
| 16 | 2.1.2.2.1.4 | 환율관리 | 1d | 2008-09-19 A | 2008-09-19 A | 100% | 2008-09-19 | 2008-09-19 | 1d | start no earlier than 2008-09-19 |
| 17 | 2.1.2.2.1.5 | 우편번호관리 | 1d | 2008-09-22 A | 2008-09-22 A | 100% | 2008-09-22 | 2008-09-22 | 1d | start no earlier than 2008-09-22 |
| 18 | 2.1.2.2.1.6 | 기타 공통 Util | 1d | 2008-09-23 A | 2008-09-23 A | 100% | 2008-09-23 | 2008-09-23 | 1d | start no earlier than 2008-09-23 |
| 19 | 2.1.2.2.2 | **마감업무** | 5d | 2008-09-24 A | 2008-09-30 A | 100% | 2008-09-24 | 2008-09-30 | 5d |  |
| 20 | 2.1.2.2.2.1 | 분개기준정보 | 1d | 2008-09-24 A | 2008-09-24 A | 100% | 2008-09-24 | 2008-09-24 | 1d | start no earlier than 2008-09-24 |
| 21 | 2.1.2.2.2.2 | 분개모리터링 | 1d | 2008-09-25 A | 2008-09-25 A | 100% | 2008-09-25 | 2008-09-25 | 1d | start no earlier than 2008-09-25 |
| 22 | 2.1.2.2.2.3 | 일마감 | 1d | 2008-09-26 A | 2008-09-26 A | 100% | 2008-09-26 | 2008-09-26 | 1d | start no earlier than 2008-09-26 |
| 23 | 2.1.2.2.2.4 | 월마감 | 1d | 2008-09-29 A | 2008-09-29 A | 100% | 2008-09-29 | 2008-09-29 | 1d | start no earlier than 2008-09-27 |
| 24 | 2.1.2.2.2.5 | 정합성 검증 | 1d | 2008-09-30 A | 2008-09-30 A | 100% | 2008-09-30 | 2008-09-30 | 1d | start no earlier than 2008-09-30 |

| ID | WBS | Task | Duration | Start | Finish | Complete | Baseline start | Baseline finish | Baseline duration | Constraint |
| --- | --- | --- | --- | --- | --- | --- | --- | --- | --- | --- |
| 25 | 2.2 | **패키지 요구사항 정의** | 12d | 2008-10-01 A | 2008-10-16 A | 100% | 2008-10-01 | 2008-10-16 | 12d |  |
| 26 | 2.2.1 | **패키지 사용자 교육** | 6d | 2008-10-01 A | 2008-10-08 A | 100% | 2008-10-01 | 2008-10-08 | 6d |  |
| 27 | 2.2.1.1 | **메뉴구조 및 화면 설명** | 6d | 2008-10-01 A | 2008-10-08 A | 100% | 2008-10-01 | 2008-10-08 | 6d |  |
| 28 | 2.2.1.1.1 | **공통업무** | 1d | 2008-10-01 A | 2008-10-01 A | 100% | 2008-10-01 | 2008-10-01 | 1d |  |
| 29 | 2.2.1.1.1.1 | 공통코드관리 | 1d | 2008-10-01 A | 2008-10-01 A | 100% | 2008-10-01 | 2008-10-01 | 1d | finish no earlier than 2008-10-01 |
| 30 | 2.2.1.1.1.2 | 사용자관리 | 1d | 2008-10-01 A | 2008-10-01 A | 100% | 2008-10-01 | 2008-10-01 | 1d | start no earlier than 2008-10-01 |
| 31 | 2.2.1.1.1.3 | 영업일관리 | 1d | 2008-10-01 A | 2008-10-01 A | 100% | 2008-10-01 | 2008-10-01 | 1d | start no earlier than 2008-10-01 |
| 32 | 2.2.1.1.1.4 | 환율관리 | 1d | 2008-10-01 A | 2008-10-01 A | 100% | 2008-10-01 | 2008-10-01 | 1d | start no earlier than 2008-10-01 |
| 33 | 2.2.1.1.1.5 | 우편번호관리 | 1d | 2008-10-01 A | 2008-10-01 A | 100% | 2008-10-01 | 2008-10-01 | 1d | start no earlier than 2008-10-01 |
| 34 | 2.2.1.1.1.6 | 기타 공통 Util | 1d | 2008-10-01 A | 2008-10-01 A | 100% | 2008-10-01 | 2008-10-01 | 1d | start no earlier than 2008-10-01 |
| 35 | 2.2.1.1.2 | **마감업무** | 1d | 2008-10-08 A | 2008-10-08 A | 100% | 2008-10-08 | 2008-10-08 | 1d |  |
| 36 | 2.2.1.1.2.1 | 분개기준정보 | 1d | 2008-10-08 A | 2008-10-08 A | 100% | 2008-10-08 | 2008-10-08 | 1d | finish no earlier than 2008-10-08 |
| 37 | 2.2.1.1.2.2 | 분개 모니터링 | 1d | 2008-10-08 A | 2008-10-08 A | 100% | 2008-10-08 | 2008-10-08 | 1d | start no earlier than 2008-10-08 |
| 38 | 2.2.1.1.2.3 | 일마감 | 1d | 2008-10-08 A | 2008-10-08 A | 100% | 2008-10-08 | 2008-10-08 | 1d | start no earlier than 2008-10-08 |
| 39 | 2.2.1.1.2.4 | 월마감 | 1d | 2008-10-08 A | 2008-10-08 A | 100% | 2008-10-08 | 2008-10-08 | 1d | start no earlier than 2008-10-08 |
| 40 | 2.2.1.1.2.5 | 정합성 검증 | 1d | 2008-10-08 A | 2008-10-08 A | 100% | 2008-10-08 | 2008-10-08 | 1d | start no earlier than 2008-10-08 |
| 41 | 2.2.2 | **데이터 모델 설명** | 7d | 2008-10-06 A | 2008-10-14 A | 100% | 2008-10-06 | 2008-10-14 | 7d |  |
| 42 | 2.2.2.1 | **주요 엔티티 설명** | 7d | 2008-10-06 A | 2008-10-14 A | 100% | 2008-10-06 | 2008-10-14 | 7d |  |
| 43 | 2.2.2.1.1 | 마감 | 2d | 2008-10-06 A | 2008-10-07 A | 100% | 2008-10-06 | 2008-10-07 | 2d | start no earlier than 2008-10-06 |
| 44 | 2.2.2.1.2 | 공통 | 2d | 2008-10-13 A | 2008-10-14 A | 100% | 2008-10-13 | 2008-10-14 | 2d | start no earlier than 2008-10-13 |
| 45 | 2.2.3 | **기능요구사항정의** | 10d | 2008-10-01 A | 2008-10-14 A | 100% | 2008-10-01 | 2008-10-14 | 10d |  |
| 46 | 2.2.3.1 | **현업 요구사항 정의서 작성** | 10d | 2008-10-01 A | 2008-10-14 A | 100% | 2008-10-01 | 2008-10-14 | 10d |  |
| 47 | 2.2.3.1.1 | **공통업무** | 2d | 2008-10-01 A | 2008-10-02 A | 100% | 2008-10-01 | 2008-10-02 | 2d |  |
| 48 | 2.2.3.1.1.1 | 공통코드관리 | 1d | 2008-10-01 A | 2008-10-01 A | 100% | 2008-10-01 | 2008-10-01 | 1d | finish no earlier than 2008-10-01 |
| 49 | 2.2.3.1.1.2 | 사용자관리 | 1d | 2008-10-01 A | 2008-10-01 A | 100% | 2008-10-01 | 2008-10-01 | 1d | start no earlier than 2008-10-01 |
| 50 | 2.2.3.1.1.3 | 영업일관리 | 1d | 2008-10-01 A | 2008-10-01 A | 100% | 2008-10-01 | 2008-10-01 | 1d | start no earlier than 2008-10-01 |
| 51 | 2.2.3.1.1.4 | 환율관리 | 1d | 2008-10-02 A | 2008-10-02 A | 100% | 2008-10-02 | 2008-10-02 | 1d | finish no earlier than 2008-10-02 |
| 52 | 2.2.3.1.1.5 | 우편번호관리 | 1d | 2008-10-02 A | 2008-10-02 A | 100% | 2008-10-02 | 2008-10-02 | 1d | start no earlier than 2008-10-02 |
| 53 | 2.2.3.1.1.6 | 기타 공통 Util | 1d | 2008-10-02 A | 2008-10-02 A | 100% | 2008-10-02 | 2008-10-02 | 1d | start no earlier than 2008-10-02 |

| ID | WBS | Task | Duration | Start | Finish | Complete | Baseline start | Baseline finish | Baseline duration | Constraint |
| --- | --- | --- | --- | --- | --- | --- | --- | --- | --- | --- |
| 54 | 2.2.3.1.2 | **마감업무** | 5d | 2008-10-08 A | 2008-10-14 A | 100% | 2008-10-08 | 2008-10-14 | 5d |  |
| 55 | 2.2.3.1.2.1 | 분개기준정보 | 1d | 2008-10-08 A | 2008-10-08 A | 100% | 2008-10-08 | 2008-10-08 | 1d | finish no earlier than 2008-10-08 |
| 56 | 2.2.3.1.2.2 | 분개 모니터링 | 1d | 2008-10-08 A | 2008-10-08 A | 100% | 2008-10-08 | 2008-10-08 | 1d | start no earlier than 2008-10-08 |
| 57 | 2.2.3.1.2.3 | 일마감 | 1d | 2008-10-14 A | 2008-10-14 A | 100% | 2008-10-14 | 2008-10-14 | 1d | start no earlier than 2008-10-14 |
| 58 | 2.2.3.1.2.4 | 월마감 | 1d | 2008-10-14 A | 2008-10-14 A | 100% | 2008-10-14 | 2008-10-14 | 1d | start no earlier than 2008-10-14 |
| 59 | 2.2.3.1.2.5 | 정합성 검증 | 1d | 2008-10-10 A | 2008-10-10 A | 100% | 2008-10-10 | 2008-10-10 | 1d | finish no earlier than 2008-10-13 |
| 60 | 2.2.4 | **타시스템 인터페이스 요구사항정의** | 2d | 2008-10-15 A | 2008-10-16 A | 100% | 2008-10-15 | 2008-10-16 | 2d |  |
| 61 | 2.2.4.1 | **대내 인터페이스 목록 작성** | 1d | 2008-10-15 A | 2008-10-15 A | 100% | 2008-10-15 | 2008-10-15 | 1d |  |
| 62 | 2.2.4.1.1 | NFS 시스템 | 1d | 2008-10-15 A | 2008-10-15 A | 100% | 2008-10-15 | 2008-10-15 | 1d | start no earlier than 2008-10-15 |
| 63 | 2.2.4.1.2 | 경리 시스템 | 1d | 2008-10-15 A | 2008-10-15 A | 100% | 2008-10-15 | 2008-10-15 | 1d | finish no earlier than 2008-10-15 |
| 64 | 2.2.4.2 | 대외 인터페이스 목록 작성 | 1d | 2008-10-16 A | 2008-10-16 A | 100% | 2008-10-16 | 2008-10-16 | 1d | start no earlier than 2008-10-16 |
| 65 | 2.3 | **매핑** | 11d | 2008-10-01 A | 2008-10-15 A | 100% | 2008-10-01 | 2008-10-15 | 11d |  |
| 66 | 2.3.1 | **패키지 GAP 분석** | 11d | 2008-10-01 A | 2008-10-15 A | 100% | 2008-10-01 | 2008-10-15 | 11d |  |
| 67 | 2.3.1.1 | **공통업무** | 2d | 2008-10-01 A | 2008-10-02 A | 100% | 2008-10-01 | 2008-10-02 | 2d |  |
| 68 | 2.3.1.1.1 | 공통코드관리 | 1d | 2008-10-01 A | 2008-10-01 A | 100% | 2008-10-01 | 2008-10-01 | 1d | finish no earlier than 2008-10-01 |
| 69 | 2.3.1.1.2 | 사용자관리 | 1d | 2008-10-01 A | 2008-10-01 A | 100% | 2008-10-01 | 2008-10-01 | 1d | start no earlier than 2008-10-01 |
| 70 | 2.3.1.1.3 | 영업일관리 | 1d | 2008-10-01 A | 2008-10-01 A | 100% | 2008-10-01 | 2008-10-01 | 1d | start no earlier than 2008-10-01 |
| 71 | 2.3.1.1.4 | 환율관리 | 1d | 2008-10-02 A | 2008-10-02 A | 100% | 2008-10-02 | 2008-10-02 | 1d | start no earlier than 2008-10-02 |
| 72 | 2.3.1.1.5 | 우편번호관리 | 1d | 2008-10-02 A | 2008-10-02 A | 100% | 2008-10-02 | 2008-10-02 | 1d | start no earlier than 2008-10-02 |
| 73 | 2.3.1.1.6 | 기타 공통 Util | 1d | 2008-10-02 A | 2008-10-02 A | 100% | 2008-10-02 | 2008-10-02 | 1d | start no earlier than 2008-10-02 |
| 74 | 2.3.1.2 | **마감업무** | 3d | 2008-10-13 A | 2008-10-15 A | 100% | 2008-10-13 | 2008-10-15 | 3d |  |
| 75 | 2.3.1.2.1 | 분개기준정보 | 1d | 2008-10-13 A | 2008-10-13 A | 100% | 2008-10-13 | 2008-10-13 | 1d | finish no earlier than 2008-10-13 |
| 76 | 2.3.1.2.2 | 분개 모니터링 | 1d | 2008-10-13 A | 2008-10-13 A | 100% | 2008-10-13 | 2008-10-13 | 1d | start no earlier than 2008-10-13 |
| 77 | 2.3.1.2.3 | 일마감 | 1d | 2008-10-14 A | 2008-10-14 A | 100% | 2008-10-14 | 2008-10-14 | 1d | start no earlier than 2008-10-14 |
| 78 | 2.3.1.2.4 | 월마감 | 1d | 2008-10-14 A | 2008-10-14 A | 100% | 2008-10-14 | 2008-10-14 | 1d | start no earlier than 2008-10-14 |
| 79 | 2.3.1.2.5 | 정합성 검증 | 1d | 2008-10-15 A | 2008-10-15 A | 100% | 2008-10-15 | 2008-10-15 | 1d | start no earlier than 2008-10-15 |

| ID | WBS | Task | Duration | Start | Finish | Complete | Baseline start | Baseline finish | Baseline duration | Constraint |
| --- | --- | --- | --- | --- | --- | --- | --- | --- | --- | --- |
| 80 | 2.3.2 | **매핑결과 및 GAP 대응방안 수립** | 7d | 2008-10-06 A | 2008-10-14 A | 100% | 2008-10-06 | 2008-10-14 | 7d |  |
| 81 | 2.3.2.1 | **공통업무** | 2d | 2008-10-06 A | 2008-10-07 A | 100% | 2008-10-06 | 2008-10-07 | 2d |  |
| 82 | 2.3.2.1.1 | 공통코드관리 | 1d | 2008-10-06 A | 2008-10-06 A | 100% | 2008-10-06 | 2008-10-06 | 1d | start no earlier than 2008-10-06 |
| 83 | 2.3.2.1.2 | 사용자관리 | 1d | 2008-10-06 A | 2008-10-06 A | 100% | 2008-10-06 | 2008-10-06 | 1d | finish no earlier than 2008-10-06 |
| 84 | 2.3.2.1.3 | 영업일관리 | 1d | 2008-10-06 A | 2008-10-06 A | 100% | 2008-10-06 | 2008-10-06 | 1d | finish no earlier than 2008-10-06 |
| 85 | 2.3.2.1.4 | 환율관리 | 1d | 2008-10-07 A | 2008-10-07 A | 100% | 2008-10-07 | 2008-10-07 | 1d | start no earlier than 2008-10-07 |
| 86 | 2.3.2.1.5 | 우편번호관리 | 1d | 2008-10-07 A | 2008-10-07 A | 100% | 2008-10-07 | 2008-10-07 | 1d | finish no earlier than 2008-10-07 |
| 87 | 2.3.2.1.6 | 기타 공통 Util | 1d | 2008-10-07 A | 2008-10-07 A | 100% | 2008-10-07 | 2008-10-07 | 1d | finish no earlier than 2008-10-07 |
| 88 | 2.3.2.2 | **마감업무** | 5d | 2008-10-08 A | 2008-10-14 A | 100% | 2008-10-08 | 2008-10-14 | 5d |  |
| 89 | 2.3.2.2.1 | 분개기준정보 | 1d | 2008-10-08 A | 2008-10-08 A | 100% | 2008-10-08 | 2008-10-08 | 1d | start no earlier than 2008-10-08 |
| 90 | 2.3.2.2.2 | 분개 모니터링 | 1d | 2008-10-08 A | 2008-10-08 A | 100% | 2008-10-08 | 2008-10-08 | 1d | finish no earlier than 2008-10-08 |
| 91 | 2.3.2.2.3 | 일마감 | 1d | 2008-10-14 A | 2008-10-14 A | 100% | 2008-10-14 | 2008-10-14 | 1d | start no earlier than 2008-10-14 |
| 92 | 2.3.2.2.4 | 월마감 | 1d | 2008-10-14 A | 2008-10-14 A | 100% | 2008-10-14 | 2008-10-14 | 1d | start no earlier than 2008-10-14 |
| 93 | 2.3.2.2.5 | 정합성 검증 | 1d | 2008-10-13 A | 2008-10-13 A | 100% | 2008-10-13 | 2008-10-13 | 1d | start no earlier than 2008-10-13 |
| 94 | 3 | **Design** | 31d | 2008-10-20 A | 2008-11-28 A | 100% | 2008-10-20 | 2008-11-28 | 31d |  |
| 95 | 3.1 | **추가개발설계** | 31d | 2008-10-20 A | 2008-11-28 A | 100% | 2008-10-20 | 2008-11-28 | 31d |  |
| 96 | 3.1.1 | **데이터코드 설계** | 5d | 2008-10-20 A | 2008-10-24 A | 100% | 2008-10-27 | 2008-10-31 | 5d |  |
| 97 | 3.1.1.1 | 데이터코드 정의서 작성 | 5d | 2008-10-20 A | 2008-10-24 A | 100% | 2008-10-27 | 2008-10-31 | 5d | start no earlier than 2008-10-20 |
| 98 | 3.1.2 | **데이터베이스 설계** | 11d | 2008-10-20 A | 2008-10-31 A | 100% | 2008-10-20 | 2008-10-31 | 11d |  |
| 99 | 3.1.2.1 | ERD작성 | 1d | 2008-10-27 A | 2008-10-27 A | 100% | 2008-10-27 | 2008-10-27 | 1d | start no earlier than 2008-10-20 |
| 100 | 3.1.2.2 | 테이블목록 작성 | 1d | 2008-10-20 A | 2008-10-20 A | 100% | 2008-10-20 | 2008-10-20 | 1d | start no earlier than 2008-10-20 |
| 101 | 3.1.2.3 | 테이블레이아웃 작성 | 5d | 2008-10-27 A | 2008-10-31 A | 100% | 2008-10-27 | 2008-10-31 | 5d | start no earlier than 2008-10-27 |
| 102 | 3.1.3 | **UI설계** | 31d | 2008-10-20 A | 2008-11-28 A | 100% | 2008-10-20 | 2008-11-28 | 31d |  |
| 103 | 3.1.3.1 | **화면레이아웃작성** | 5d | 2008-10-20 A | 2008-10-24 A | 100% | 2008-10-20 | 2008-10-24 | 5d |  |
| 104 | 3.1.3.1.1 | 공통 | 5d | 2008-10-20 A | 2008-10-24 A | 100% | 2008-10-20 | 2008-10-24 | 5d | finish no earlier than 2008-10-24 |
| 105 | 3.1.3.1.2 | 마감 | 5d | 2008-10-20 A | 2008-10-24 A | 100% | 2008-10-20 | 2008-10-24 | 5d | finish no earlier than 2008-10-24 |

| ID | WBS | Task | Duration | Start | Finish | Complete | Baseline start | Baseline finish | Baseline duration | Constraint |
| --- | --- | --- | --- | --- | --- | --- | --- | --- | --- | --- |
| 106 | 3.1.3.2 | **보고서레이아웃작성** | 19d | 2008-11-04 A | 2008-11-28 A | 100% | 2008-11-04 | 2008-11-28 | 19d |  |
| 107 | 3.1.3.2.1 | 마감보고서 작성 | 19d | 2008-11-04 A | 2008-11-28 A | 100% | 2008-11-04 | 2008-11-28 | 19d | finish no earlier than 2008-11-28 |
| 108 | 3.1.4 | **온라인 프로그램 설계** | 31d | 2008-10-20 A | 2008-11-28 A | 100% | 2008-10-20 | 2008-11-28 | 31d |  |
| 109 | 3.1.4.1 | 온라인 프로그램 목록 작성 | 1d | 2008-10-20 A | 2008-10-20 A | 100% | 2008-10-20 | 2008-10-20 | 1d | finish no earlier than 2008-10-20 |
| 110 | 3.1.4.2 | **온라인 프로그램 사양서 작성** | 11d | 2008-10-20 A | 2008-10-31 A | 100% | 2008-10-20 | 2008-10-31 | 11d |  |
| 111 | 3.1.4.2.1 | 공통 | 11d | 2008-10-20 A | 2008-10-31 A | 100% | 2008-10-20 | 2008-10-31 | 11d | finish no earlier than 2008-10-31 |
| 112 | 3.1.4.2.2 | 마감 | 11d | 2008-10-20 A | 2008-10-31 A | 100% | 2008-10-20 | 2008-10-31 | 11d | finish no earlier than 2008-10-31 |
| 113 | 3.1.4.3 | **배치플로우 설계** | 20d | 2008-11-03 A | 2008-11-28 A | 100% | 2008-11-03 | 2008-11-28 | 20d |  |
| 114 | 3.1.4.3.1 | 배치플로우정의서 작성 | 15d | 2008-11-03 A | 2008-11-21 A | 100% | 2008-11-03 | 2008-11-21 | 15d | start no earlier than 2008-11-03 |
| 115 | 3.1.4.3.2 | 배치프로그램목록 작성 | 3d | 2008-11-03 A | 2008-11-05 A | 100% | 2008-11-03 | 2008-11-05 | 3d | start no earlier than 2008-11-03 |
| 116 | 3.1.4.3.3 | 배치프로그램사양서 작성 | 15d | 2008-11-10 A | 2008-11-28 A | 100% | 2008-11-10 | 2008-11-28 | 15d | finish no earlier than 2008-11-28 |
| 117 | 3.1.4.4 | **메뉴구조정의** | 2d | 2008-11-10 A | 2008-11-11 A | 100% | 2008-11-10 | 2008-11-11 | 2d |  |
| 118 | 3.1.4.4.1 | 메뉴구조도작성 | 2d | 2008-11-10 A | 2008-11-11 A | 100% | 2008-11-10 | 2008-11-11 | 2d | start no earlier than 2008-11-10 |
| 119 | 3.2 | **컨버젼 설계** | 11d | 2008-11-14 A | 2008-11-28 A | 100% | 2008-11-14 | 2008-11-28 | 11d |  |
| 120 | 3.2.1 | 테이블 매핑정의서 작성 지원 | 5d | 2008-11-14 A | 2008-11-20 A | 100% | 2008-11-14 | 2008-11-20 | 5d | start no earlier than 2008-11-14 |
| 121 | 3.2.2 | 데이터코드 매핑정의서 작성 지원 | 7d | 2008-11-20 A | 2008-11-28 A | 100% | 2008-11-20 | 2008-11-28 | 7d | start no earlier than 2008-11-20 |
| 122 | 3.3 | **타시스템 인터페이스 설계** | 12d | 2008-10-29 A | 2008-11-13 A | 100% | 2008-10-29 | 2008-11-13 | 12d |  |
| 123 | 3.3.1 | 인터페이스 목록(상세) 작성 | 3d | 2008-10-29 A | 2008-10-31 A | 100% | 2008-10-29 | 2008-10-31 | 3d | start no earlier than 2008-10-29 |
| 124 | 3.3.2 | 대내시스템 인터페이스 레이아웃 작성 | 10d | 2008-10-31 A | 2008-11-13 A | 100% | 2008-10-31 | 2008-11-13 | 10d | start no earlier than 2008-10-31 |
| 125 | 3.3.3 | 대외시스템 인터페이스 레이아웃 작성 | 10d | 2008-10-31 A | 2008-11-13 A | 100% | 2008-10-31 | 2008-11-13 | 10d | start no earlier than 2008-10-31 |
| 126 | 3.4 | **단계완료** | 10d | 2008-11-17 A | 2008-11-28 A | 100% | 2008-11-17 | 2008-11-28 | 10d |  |
| 127 | 3.4.1 | 요구사항추적표 작성 | 2d | 2008-11-17 A | 2008-11-18 A | 100% | 2008-11-17 | 2008-11-18 | 2d | start no earlier than 2008-11-17 |
| 128 | 3.4.2 | 설계단계산출물 정리(Inspection) | 3d | 2008-11-19 A | 2008-11-21 A | 100% | 2008-11-19 | 2008-11-21 | 3d | start no earlier than 2008-11-19 |
| 129 | 3.4.3 | 고객검토 실시 | 3d | 2008-11-24 A | 2008-11-26 A | 100% | 2008-11-24 | 2008-11-26 | 3d | start no earlier than 2008-11-24 |
| 130 | 3.4.4 | 고객승인 획득 | 2d | 2008-11-27 A | 2008-11-28 A | 100% | 2008-11-27 | 2008-11-28 | 2d | start no earlier than 2008-11-27 |

| ID | WBS | Task | Duration | Start | Finish | Predecessors | Complete | Remaining | Baseline start | Baseline finish | Baseline duration | Total slack | Free slack | Constraint | Text20 | Text22 | Text25 | Text26 | Text27 | Text28 | Text30 |
| --- | --- | --- | --- | --- | --- | --- | --- | --- | --- | --- | --- | --- | --- | --- | --- | --- | --- | --- | --- | --- | --- |
| 131 | 4 | **Build/Unit Test** | 105d | 2008-12-01 A | 2009-04-24 |  | 11% | 93.71d | 2008-12-01 | 2009-04-24 | 105d | 56d |  |  |  |  |  |  |  |  |  |
| 132 | 4.1 | **추가개발/패키지 커스터마이징 및 Unit Test** | 65d | 2008-12-01 A | 2009-02-27 |  | 25% | 49.02d | 2008-12-01 | 2009-02-27 | 65d | 0d |  |  | 추가개발 프로그램코딩 | 48648F540F9201F8E100800046140A10 | 07060716O410178 | P02-1 1.4.1 | 00000000000001277308 | DEFAULT | 소스코드 및 단위테스트결과 |
| 133 | 4.1.1 | 개발 1주차 | 5d | 2008-12-01 A | 2008-12-05 A |  | 100% |  | 2008-12-01 | 2008-12-05 | 5d |  |  | start no earlier than 2008-12-01 | 추가개발 프로그램코딩 | 48648F0A0F9201F8E100800046140A10 | 07060716O410168 | P02-1 1.4.1 | 00000000000001277271 | DEFAULT | 소스코드 및 단위테스트결과 |
| 134 | 4.1.2 | 개발 2주차 | 5d | 2008-12-08 A | 2008-12-12 A | 133 | 100% |  | 2008-12-08 | 2008-12-12 | 5d |  |  | start no earlier than 2008-12-01 | 추가개발 프로그램코딩 | 48648F0A0F9201F8E100800046140A10 | 07060716O410168 | P02-1 1.4.1 | 00000000000001277271 | DEFAULT | 소스코드 및 단위테스트결과 |
| 135 | 4.1.3 | 개발 3주차 | 5d | 2008-12-15 A | 2008-12-19 A | 134 | 100% |  | 2008-12-15 | 2008-12-19 | 5d |  |  | start no earlier than 2008-07-21 | 추가개발 프로그램코딩 | 48648F0A0F9201F8E100800046140A10 | 07060716O410168 | P02-1 1.4.1 | 00000000000001277271 | DEFAULT | 소스코드 및 단위테스트결과 |
| 136 | 4.1.4 | 개발 4주차 | 4d | 2008-12-23 | 2008-12-26 | 135 |  |  | 2008-12-23 | 2008-12-26 | 4d | 3d | 1d | finish no earlier than 2008-12-26 | 추가개발 프로그램코딩 | 48648F0A0F9201F8E100800046140A10 | 07060716O410168 | P02-1 1.4.1 | 00000000000001277271 | DEFAULT | 소스코드 및 단위테스트결과 |
| 137 | 4.1.5 | 개발 5주차 | 4d | 2008-12-30 | 2009-01-02 | 136 |  |  | 2008-12-30 | 2009-01-02 | 4d | 2d | 0d | finish no earlier than 2009-01-02 | 추가개발 프로그램코딩 | 48648F0A0F9201F8E100800046140A10 | 07060716O410168 | P02-1 1.4.1 | 00000000000001277271 | DEFAULT | 소스코드 및 단위테스트결과 |
| 138 | 4.1.6 | 개발 6주차 | 5d | 2009-01-05 | 2009-01-09 | 137 |  |  | 2009-01-05 | 2009-01-09 | 5d | 2d | 0d | start no earlier than 2008-12-01 | 추가개발 프로그램코딩 | 48648F0A0F9201F8E100800046140A10 | 07060716O410168 | P02-1 1.4.1 | 00000000000001277271 | DEFAULT | 소스코드 및 단위테스트결과 |
| 139 | 4.1.7 | 개발 7주차 | 5d | 2009-01-12 | 2009-01-16 | 138 |  |  | 2009-01-12 | 2009-01-16 | 5d | 2d | 0d | start no earlier than 2008-12-01 | 추가개발 프로그램코딩 | 48648F0A0F9201F8E100800046140A10 | 07060716O410168 | P02-1 1.4.1 | 00000000000001277271 | DEFAULT | 소스코드 및 단위테스트결과 |
| 140 | 4.1.8 | 개발 8주차 | 5d | 2009-01-19 | 2009-01-23 | 139 |  |  | 2009-01-19 | 2009-01-23 | 5d | 2d |  | start no earlier than 2008-07-21 | 추가개발 프로그램코딩 | 48648F0A0F9201F8E100800046140A10 | 07060716O410168 | P02-1 1.4.1 | 00000000000001277271 | DEFAULT | 소스코드 및 단위테스트결과 |
| 141 | 4.1.9 | 개발 9주차 | 3d | 2009-01-28 | 2009-01-30 | 140 |  |  | 2009-01-28 | 2009-01-30 | 3d | 0d |  | finish no earlier than 2009-01-30 | 추가개발 프로그램코딩 | 48648F0A0F9201F8E100800046140A10 | 07060716O410168 | P02-1 1.4.1 | 00000000000001277271 | DEFAULT | 소스코드 및 단위테스트결과 |
| 142 | 4.1.10 | 개발 10주차 | 5d | 2009-02-02 | 2009-02-06 | 141 |  |  | 2009-02-02 | 2009-02-06 | 5d | 0d |  | start no earlier than 2008-12-01 | 추가개발 프로그램코딩 | 48648F0A0F9201F8E100800046140A10 | 07060716O410168 | P02-1 1.4.1 | 00000000000001277271 | DEFAULT | 소스코드 및 단위테스트결과 |
| 143 | 4.1.11 | 개발 11주차 | 5d | 2009-02-09 | 2009-02-13 | 142 |  |  | 2009-02-09 | 2009-02-13 | 5d | 0d |  | start no earlier than 2008-12-01 | 추가개발 프로그램코딩 | 48648F0A0F9201F8E100800046140A10 | 07060716O410168 | P02-1 1.4.1 | 00000000000001277271 | DEFAULT | 소스코드 및 단위테스트결과 |
| 144 | 4.1.12 | 개발 12주차 | 5d | 2009-02-16 | 2009-02-20 | 143 |  |  | 2009-02-16 | 2009-02-20 | 5d | 0d |  | start no earlier than 2008-12-01 | 추가개발 프로그램코딩 | 48648F0A0F9201F8E100800046140A10 | 07060716O410168 | P02-1 1.4.1 | 00000000000001277271 | DEFAULT | 소스코드 및 단위테스트결과 |
| 145 | 4.1.13 | 개발 13주차 | 5d | 2009-02-23 | 2009-02-27 | 144 |  |  | 2009-02-23 | 2009-02-27 | 5d | 0d |  | start no earlier than 2008-12-01 | 추가개발 프로그램코딩 | 48648F0A0F9201F8E100800046140A10 | 07060716O410168 | P02-1 1.4.1 | 00000000000001277271 | DEFAULT | 소스코드 및 단위테스트결과 |
| 146 | 4.2 | **테스트시나리오 작성** | 65d | 2008-12-01 A | 2009-02-27 |  | 8% | 59.84d | 2008-12-01 | 2009-02-27 | 65d | 96d |  |  | 추가개발 프로그램코딩 | 48648F540F9201F8E100800046140A10 | 07060716O410178 | P02-1 1.4.1 | 00000000000001277308 | DEFAULT | 테스트시나리오 |
| 147 | 4.2.1 | 테스트착수준비 | 5d | 2008-12-01 A | 2008-12-05 A |  | 100% |  | 2008-12-01 | 2008-12-05 | 5d |  |  | start no earlier than 2008-12-01 |  |  |  |  |  |  |  |
| 148 | 4.2.2 | 테스트목록 및 일정 확정 | 30d | 2008-12-08 | 2009-01-16 | 147 |  |  | 2008-12-08 | 2009-01-16 | 30d | 98d | 0d | finish no earlier than 2009-01-16 | 추가개발 프로그램코딩 | 48648F0A0F9201F8E100800046140A10 | 07060716O410168 | P02-1 1.4.1 | 00000000000001277271 | DEFAULT | 테스트목록 |
| 149 | 4.2.3 | UAT시나리오 작성 - 비즈니스모듈1 | 5d | 2009-01-19 | 2009-01-23 | 148 |  |  | 2009-01-19 | 2009-01-23 | 5d | 98d | 0d | start no earlier than 2009-01-19 | 추가개발 프로그램코딩 | 48648F0A0F9201F8E100800046140A10 | 07060716O410168 | P02-1 1.4.1 | 00000000000001277271 | DEFAULT | UAT시나리오(E2E테스트시나리오) |
| 150 | 4.2.4 | UAT시나리오 작성 - 비즈니스모듈2 | 3d | 2009-01-28 | 2009-01-30 | 149 |  |  | 2009-01-28 | 2009-01-30 | 3d | 96d | 0d | start no earlier than 2009-01-28 | 추가개발 프로그램코딩 | 48648F0A0F9201F8E100800046140A10 | 07060716O410168 | P02-1 1.4.1 | 00000000000001277271 | DEFAULT | UAT시나리오(E2E테스트시나리오) |
| 151 | 4.2.5 | UAT시나리오 작성 - 비즈니스모듈3 | 5d | 2009-02-02 | 2009-02-06 | 150 |  |  | 2009-02-02 | 2009-02-06 | 5d | 96d | 0d | start no earlier than 2008-11-17 | 추가개발 프로그램코딩 | 48648F0A0F9201F8E100800046140A10 | 07060716O410168 | P02-1 1.4.1 | 00000000000001277271 | DEFAULT | UAT시나리오(E2E테스트시나리오) |
| 152 | 4.2.6 | UAT시나리오 작성 - 비즈니스모듈4 | 5d | 2009-02-09 | 2009-02-13 | 151 |  |  | 2009-02-09 | 2009-02-13 | 5d | 96d | 0d | start no earlier than 2008-12-01 | 추가개발 프로그램코딩 | 48648F0A0F9201F8E100800046140A10 | 07060716O410168 | P02-1 1.4.1 | 00000000000001277271 | DEFAULT | UAT시나리오(E2E테스트시나리오) |
| 153 | 4.2.7 | UAT시나리오 작성 - 비즈니스모듈5 | 5d | 2009-02-16 | 2009-02-20 | 152 |  |  | 2009-02-16 | 2009-02-20 | 5d | 96d | 0d | start no earlier than 2008-12-01 | 추가개발 프로그램코딩 | 48648F0A0F9201F8E100800046140A10 | 07060716O410168 | P02-1 1.4.1 | 00000000000001277271 | DEFAULT | UAT시나리오(E2E테스트시나리오) |
| 154 | 4.2.8 | UAT시나리오 작성 - 비즈니스모듈6 | 5d | 2009-02-23 | 2009-02-27 | 153 |  |  | 2009-02-23 | 2009-02-27 | 5d | 96d |  | start no earlier than 2008-12-01 | 추가개발 프로그램코딩 | 48648F0A0F9201F8E100800046140A10 | 07060716O410168 | P02-1 1.4.1 | 00000000000001277271 | DEFAULT | UAT시나리오(E2E테스트시나리오) |

| ID | WBS | Task | Duration | Start | Finish | Predecessors | Baseline start | Baseline finish | Baseline duration | Total slack | Free slack | Constraint | Text20 | Text22 | Text25 | Text26 | Text27 | Text28 | Text30 |
| --- | --- | --- | --- | --- | --- | --- | --- | --- | --- | --- | --- | --- | --- | --- | --- | --- | --- | --- | --- |
| 155 | 4.3 | **사전 E2E Test 실시** | 10d | 2009-03-02 | 2009-03-13 | 132 | 2009-03-02 | 2009-03-13 | 10d | 0d |  |  | 테스트실시 | 48648F560F9201F8E100800046140A10 | 07060716O410178 | P02-1 1.4.2 | 00000000000001277309 | DEFAULT | 테스트결과 |
| 156 | 4.3.1 | 사전 E2E Test - 주요프로세스1 | 5d | 2009-03-02 | 2009-03-06 |  | 2009-03-02 | 2009-03-06 | 5d | 0d |  | start no earlier than 2008-12-01 | 테스트실시 | 48648F0A0F9201F8E100800046140A10 | 07060716O410168 | P02-1 1.4.2 | 00000000000001277271 | DEFAULT |  |
| 157 | 4.3.2 | 사전 E2E Test - 주요프로세스2 | 5d | 2009-03-09 | 2009-03-13 | 156 | 2009-03-09 | 2009-03-13 | 5d | 0d |  | start no earlier than 2008-12-01 | 테스트실시 | 48648F0A0F9201F8E100800046140A10 | 07060716O410168 | P02-1 1.4.2 | 00000000000001277271 | DEFAULT |  |
| 158 | 4.4 | **개발단계 품질검증 및 단계완료** | 61d | 2008-12-19 | 2009-03-13 |  | 2008-12-19 | 2009-03-13 | 61d | 86d |  |  | 단계완료 | 48648FB40F9201F8E100800046140A10 | 07060716O410080 | P02-1 1.6.8 | 00000000000001277356 | DEFAULT |  |
| 159 | 4.4.1 | **Code Inspection 실시 및 보완** | 56d | 2008-12-19 | 2009-03-06 |  | 2008-12-19 | 2009-03-06 | 56d | 86d | 0d |  |  |  |  |  |  |  | Code Inspection 결과서 |
| 160 | 4.4.1.1 | Code Inspection 1차 | 1d | 2008-12-19 | 2008-12-19 |  | 2008-12-19 | 2008-12-19 | 1d | 141d |  | start no earlier than 2008-12-19 | 단계완료 | 48648FB60F9201F8E100800046140A10 | 07060716O410080 | P02-1 1.6.8 | 00000000000001277357 | DEFAULT |  |
| 161 | 4.4.1.2 | Code Inspection 2차 | 1d | 2009-01-02 | 2009-01-02 |  | 2009-01-02 | 2009-01-02 | 1d | 131d |  | start no earlier than 2009-01-02 | 단계완료 | 48648FB60F9201F8E100800046140A10 | 07060716O410080 | P02-1 1.6.8 | 00000000000001277357 | DEFAULT |  |
| 162 | 4.4.1.3 | Code Inspection 3차 | 1d | 2009-01-16 | 2009-01-16 |  | 2009-01-16 | 2009-01-16 | 1d | 121d |  | start no earlier than 2009-01-16 | 단계완료 | 48648FB60F9201F8E100800046140A10 | 07060716O410080 | P02-1 1.6.8 | 00000000000001277357 | DEFAULT |  |
| 163 | 4.4.1.4 | Code Inspection 4차 | 1d | 2009-01-30 | 2009-01-30 |  | 2009-01-30 | 2009-01-30 | 1d | 111d |  | start no earlier than 2009-01-30 | 단계완료 | 48648FB60F9201F8E100800046140A10 | 07060716O410080 | P02-1 1.6.8 | 00000000000001277357 | DEFAULT |  |
| 164 | 4.4.1.5 | Code Inspection 5차 | 1d | 2009-02-13 | 2009-02-13 |  | 2009-02-13 | 2009-02-13 | 1d | 101d |  | start no earlier than 2009-02-13 | 단계완료 | 48648FB60F9201F8E100800046140A10 | 07060716O410080 | P02-1 1.6.8 | 00000000000001277357 | DEFAULT |  |
| 165 | 4.4.1.6 | Code Inspection 6차 | 1d | 2009-02-20 | 2009-02-20 |  | 2009-02-20 | 2009-02-20 | 1d | 96d |  | start no earlier than 2009-02-20 | 단계완료 | 48648FB60F9201F8E100800046140A10 | 07060716O410080 | P02-1 1.6.8 | 00000000000001277357 | DEFAULT |  |
| 166 | 4.4.1.7 | Code Inspection 7차 | 1d | 2009-03-06 | 2009-03-06 |  | 2009-03-06 | 2009-03-06 | 1d | 86d |  | start no earlier than 2009-03-06 |  |  |  |  |  |  |  |
| 167 | 4.4.2 | 요구사항추적표 작성 | 5d | 2009-03-09 | 2009-03-13 | 159 | 2009-03-09 | 2009-03-13 | 5d | 86d |  |  |  |  |  |  |  |  | 요구사항추적표 |
| 168 | 4.5 | **E2E Test(End to End Test)** | 20d | 2009-03-16 | 2009-04-10 | 157 | 2009-03-16 | 2009-04-10 | 20d | 0d |  |  | 테스트실시 | 48648F580F9201F8E100800046140A10 | 07060716O410179 | P02-1 1.4.2 | 00000000000001277310 | DEFAULT |  |
| 169 | 4.5.1 | E2E 테스트 실시1 | 10d | 2009-03-16 | 2009-03-27 |  | 2009-03-16 | 2009-03-27 | 10d | 0d |  | start no earlier than 2009-03-16 | 테스트실시 | 48648F5A0F9201F8E100800046140A10 | 07060716O410179 | P02-1 1.4.2 | 00000000000001277311 | DEFAULT | 테스트시나리오(결과) |
| 170 | 4.5.2 | 테스트 결과확인 및 보완1 | 5d | 2009-03-23 | 2009-03-27 |  | 2009-03-23 | 2009-03-27 | 5d | 10d |  | start no earlier than 2009-03-23 |  |  |  |  |  |  | 테스트시나리오(결과) |
| 171 | 4.5.3 | E2E 테스트 실시2 | 10d | 2009-03-30 | 2009-04-10 | 169 | 2009-03-30 | 2009-04-10 | 10d | 0d |  |  |  |  |  |  |  |  | 테스트시나리오(결과) |
| 172 | 4.5.4 | 테스트 결과확인 및 보완2 | 5d | 2009-04-06 | 2009-04-10 |  | 2009-04-06 | 2009-04-10 | 5d | 0d |  | start no earlier than 2009-04-06 |  |  |  |  |  |  | 테스트시나리오(결과) |
| 173 | 4.6 | **개발 및 Test 검수** | 10d | 2009-04-13 | 2009-04-24 | 168 | 2009-04-13 | 2009-04-24 | 10d | 56d |  |  |  |  |  |  |  |  |  |
| 174 | 4.6.1 | 테스트결과제출 | 5d | 2009-04-13 | 2009-04-17 |  | 2009-04-13 | 2009-04-17 | 5d | 56d | 0d |  |  |  |  |  |  |  | E2E테스트결과, 시스템테스트결과서 |
| 175 | 4.6.2 | 고객 테스트결과 확인 | 3d | 2009-04-20 | 2009-04-22 | 174 | 2009-04-20 | 2009-04-22 | 3d | 56d | 0d |  |  |  |  |  |  |  | 고객검토결과서 |
| 176 | 4.6.3 | 고객승인 획득 | 2d | 2009-04-23 | 2009-04-24 | 175 | 2009-04-23 | 2009-04-24 | 2d | 56d |  |  |  |  |  |  |  |  | 고객인수확인서(PAD) |
| 177 | 5 | **UAT(User Acceptance Test)** | 40d | 2009-04-13 | 2009-06-05 | 168 | 2009-04-13 | 2009-06-05 | 40d? | 0d |  |  |  |  |  |  |  |  |  |
| 178 | 5.1 | 사용자테스트 실시 | 40d | 2009-04-13 | 2009-06-05 |  | 2009-04-13 | 2009-06-05 | 40d? | 0d |  | finish no earlier than 2009-06-05 |  |  |  |  |  |  |  |
| 179 | 5.2 | 사용자매뉴얼 작성 | 40d | 2009-04-13 | 2009-06-05 |  | 2009-04-13 | 2009-06-05 | 40d? | 0d |  | finish no earlier than 2009-06-05 |  |  |  |  |  |  |  |
| 180 | 5.3 | 사용자교육 실시 | 40d | 2009-04-13 | 2009-06-05 |  | 2009-04-13 | 2009-06-05 | 40d? | 0d |  | finish no earlier than 2009-06-05 |  |  |  |  |  |  |  |

| ID | WBS | Task | Duration | Start | Finish | Predecessors | Baseline start | Baseline finish | Baseline duration | Total slack | Constraint |
| --- | --- | --- | --- | --- | --- | --- | --- | --- | --- | --- | --- |
| 181 | 6 | **ORT(Operation Readiness Test)** | 25d | 2009-06-08 | 2009-07-10 | 177 | 2009-06-08 | 2009-07-10 | 25d? | 0d |  |
| 182 | 6.1 | **구현계획수립** | 25d | 2009-06-08 | 2009-07-10 | 177 | 2009-06-08 | 2009-07-10 | 25d? | 1d |  |
| 183 | 6.1.1 | 릴리이즈및비상계획수립 | 25d | 2009-06-08 | 2009-07-10 |  | 2009-06-08 | 2009-07-10 | 25d? | 1d | finish no earlier than 2009-07-10 |
| 184 | 6.1.2 | 교육훈련계획수립 | 25d | 2009-06-08 | 2009-07-10 |  | 2009-06-08 | 2009-07-10 | 25d? | 1d | start no earlier than 2009-06-08 |
| 185 | 6.2 | **시범운영** | 25d | 2009-06-08 | 2009-07-10 | 177 | 2009-06-08 | 2009-07-10 | 25d? | 1d |  |
| 186 | 6.2.1 | 시범운영계획 수립 | 25d | 2009-06-08 | 2009-07-10 |  | 2009-06-08 | 2009-07-10 | 25d? | 1d | start no earlier than 2009-06-08 |
| 187 | 6.2.2 | 시범운영 실시 | 25d | 2009-06-08 | 2009-07-10 |  | 2009-06-08 | 2009-07-10 | 25d? | 1d | start no earlier than 2009-06-08 |
| 188 | 6.3 | **시스템사용교육** | 25d | 2009-06-08 | 2009-07-10 | 177 | 2009-06-08 | 2009-07-10 | 25d? | 1d |  |
| 189 | 6.3.1 | 운영매뉴얼 작성 | 25d | 2009-06-08 | 2009-07-10 |  | 2009-06-08 | 2009-07-10 | 25d? | 1d | start no earlier than 2009-06-08 |
| 190 | 6.3.2 | 운영자교육 실시 | 25d | 2009-06-08 | 2009-07-10 |  | 2009-06-08 | 2009-07-10 | 25d? | 1d | start no earlier than 2009-06-08 |
| 191 | 6.4 | **시스템 인수인계** | 25d | 2009-06-08 | 2009-07-10 |  | 2009-06-08 | 2009-07-10 | 25d? | 1d |  |
| 192 | 6.4.1 | 인수인계계획 수립 | 25d | 2009-06-08 | 2009-07-10 |  | 2009-06-08 | 2009-07-10 | 25d? | 1d | start no earlier than 2009-06-08 |
| 193 | 6.4.2 | 인수인계 실시 | 25d | 2009-06-08 | 2009-07-10 |  | 2009-06-08 | 2009-07-10 | 25d? | 1d | start no earlier than 2009-06-08 |
| 194 | 6.5 | **오픈 준비** | 25d | 2009-06-08 | 2009-07-10 | 177 | 2009-06-08 | 2009-07-10 | 25d? | 0d |  |
| 195 | 6.5.1 | 데이터베이스 구축 | 25d | 2009-06-08 | 2009-07-10 |  | 2009-06-08 | 2009-07-10 | 25d? | 0d | start no earlier than 2009-06-08 |
| 196 | 6.5.2 | 소프트웨어 설치 | 25d | 2009-06-08 | 2009-07-10 |  | 2009-06-08 | 2009-07-10 | 25d? | 0d | start no earlier than 2009-06-08 |
| 197 | 6.5.3 | 데이터컨버전 | 25d | 2009-06-08 | 2009-07-10 |  | 2009-06-08 | 2009-07-10 | 25d? | 0d | start no earlier than 2009-06-08 |
| 198 | 6.5.4 | 시스템 릴리이즈 | 25d | 2009-06-08 | 2009-07-10 |  | 2009-06-08 | 2009-07-10 | 25d? | 0d | start no earlier than 2009-06-08 |
| 199 | 7 | **Go Live** | 1d | 2009-07-13 | 2009-07-13 | 194 | 2009-07-13 | 2009-07-13 | 1d? | 0d |  |
| 200 | 7.1 | 시스템 최종 오픈 | 1d | 2009-07-13 | 2009-07-13 |  | 2009-07-13 | 2009-07-13 | 1d? | 0d | start no earlier than 2009-07-13 |
