# 원자력의학 종합정보시스템 구축

Schedule from MS Project, 2008-12-29 to 2010-09-30, A marks actual dates.
한국원자력의학원 종합정보시스템을 표준Eng방법 Web(JAVA)으로 개발하는 프로젝트
Samsung Electronics
한국원자력의학원(서울, 동남권 기장) 종합정보시스템 구축사업

## Calendars

- 원자력의학PJT팀달력: Mon-Fri 08:00-12:00, 13:00-17:00; Sat-Sun off. Exceptions (off unless hours are given): 2009-01-01, 2009-01-26 to 2009-01-27, 2009-02-10 08:00-12:00, 13:00-17:00, 2009-05-05, 2009-10-02, 2009-12-25, 2010-01-02 08:00-12:00, 13:00-17:00, 2010-02-15, 2010-05-05, 2010-05-21, 2010-06-09 08:00-12:00, 13:00-17:00, 2010-09-21 to 2010-09-23.

## Resources

| Resource | Group | Rate |
| --- | --- | --- |
| 성광열 | 프로젝트관리 | 0.12 |
| 박수현 | 사업관리 | 0.12 |
| 이지영 | 사업관리 | 0.12 |
| 임용환 | 아키텍처 | 0.12 |
| 방용균 | 아키텍처 | 0.12 |
| 김성룡 | 아키텍처 | 0.12 |
| 박성원 | 아키텍처 | 0.12 |
| 조일영 | 진료 | 0.12 |
| 하승수 | 진료 | 0.12 |
| 홍창한 | 진료 | 0.12 |
| 이현정 | 진료 | 0.12 |
| 박상영 | 진료 | 0.12 |
| 진료5 | 진료 | 0.12 |
| 진료6 | 진료 | 0.12 |
| 진료7 | 진료 | 0.12 |
| 이호진 | 원무 | 0.12 |
| 박민규 | 원무 | 0.12 |
| 남일웅 | 원무 | 0.12 |
| 임성우 | 원무 | 0.12 |
| 원무4 | 원무 | 0.12 |
| 원무5 | 원무 | 0.12 |
| 원무6 | 원무 | 0.12 |
| 원무7 | 원무 | 0.12 |
| 이윤환 | 진료지원 | 0.12 |
| 서정일 | 진료지원 | 0.12 |
| 주정훈 | 진료지원 | 0.12 |
| 석희윤 | 진료지원 | 0.12 |
| 윤정식 | 진료지원 | 0.12 |
| 김만규 | 진료지원 | 0.12 |
| 진지6 | 진료지원 | 0.12 |
| 진지7 | 진료지원 | 0.12 |
| 진지8 | 진료지원 | 0.12 |
| 성상희 | 진료지원 | 0.12 |
| LIS2 | 진료지원 | 0.12 |
| LIS3 | 진료지원 | 0.12 |
| LIS4 | 진료지원 | 0.12 |
| 일반관리PL | 일반관리 | 0.12 |
| 이남주 | 일반관리 | 0.12 |
| 금경훈 | 일반관리 | 0.12 |
| 정우철 | 일반관리 | 0.12 |
| 일반관리4 | 일반관리 | 0.12 |
| 일반관리5 | 일반관리 | 0.12 |
| 일반관리6 | 일반관리 | 0.12 |
| 이준모 | 연구관리 | 0.12 |
| 김회필 | 연구관리 | 0.12 |
| 연구관리2 | 연구관리 | 0.12 |
| 연구관리3 | 연구관리 | 0.12 |
| 연구관리4 | 연구관리 | 0.12 |
| 김승일 | 그룹웨어 | 0.12 |
| 그룹웨어1 | 그룹웨어 | 0.12 |
| 그룹웨어2 | 그룹웨어 | 0.12 |
| 그룹웨어3 | 그룹웨어 | 0.12 |
| 그룹웨어4 | 그룹웨어 | 0.12 |
| 그룹웨어5 | 그룹웨어 | 0.12 |
| 그룹웨어6 | 그룹웨어 | 0.12 |
| 그룹웨어7 | 그룹웨어 | 0.12 |
| 그룹웨어8 | 그룹웨어 | 0.12 |
| 그룹웨어9 | 그룹웨어 | 0.12 |
| 김일환 | ITA | 0.12 |
| 김계철 | ITA | 0.12 |
| 김성환 | ITA | 0.12 |
| 황욱태 | ITA | 0.12 |
| 한은우 | ITA | 0.12 |
| 최윤근 | ITA | 0.12 |
| 이은상 | ITA | 0.12 |
| 이재달 | 아키텍처 | 0.12 |
| 정병옥 | 아키텍처 | 0.12 |

## Schedule

| ID | WBS | Task | Duration | Start | Finish | Predecessors | Complete | Remaining | Baseline start | Baseline finish | Baseline duration | Total slack | Constraint | 산출물 | Text20 | Text25 | Text26 |
| --- | --- | --- | --- | --- | --- | --- | --- | --- | --- | --- | --- | --- | --- | --- | --- | --- | --- |
| 1 | KIRAMS1 | **프로젝트 관리(Project Management)** | 448d? | 2008-12-29 A | 2010-09-30 |  | 22% | 349.03d? | 2008-12-29 | 2010-09-30 | 448d? | 0d |  |  |  |  |  |
| 2 | KIRAMS1.1 | **프로젝트 착수** | 38d? | 2008-12-29 A | 2009-02-23 A |  | 100% |  | 2008-12-29 | 2009-02-23 | 38d? |  |  | 과업수행계획서 |  |  |  |
| 3 | KIRAMS1.1.1 | **착수준비** | 37d? | 2008-12-29 A | 2009-02-20 A |  | 100% |  | 2008-12-29 | 2009-02-20 | 37d? |  |  |  | 착수준비 | 07061114O410024 | C07-1 1.1.1 |
| 4 | KIRAMS1.1.1.1 | 착수계 제출 | 1d? | 2008-12-29 A | 2008-12-29 A |  | 100% |  | 2008-12-29 | 2008-12-29 | 1d? |  | start no earlier than 2008-12-29 | 착수계 |  |  |  |
| 5 | KIRAMS1.1.1.2 | 하도급 승인 | 4d? | 2009-01-05 A | 2009-01-08 A | 4 | 100% |  | 2009-01-05 | 2009-01-08 | 4d? |  | start no earlier than 2008-12-30 | 하도급 승인 |  |  |  |
| 6 | KIRAMS1.1.1.3 | 업무범위 정의 | 3d | 2009-01-05 A | 2009-01-07 A |  | 100% |  | 2009-01-05 | 2009-01-07 | 3d |  | finish no earlier than 2009-01-07 | 업무범위 | 업무범위 정의 | 07061114O410024 | C07-1 1.1.1.1 |
| 7 | KIRAMS1.1.1.4 | 개발전략 수립 | 6d | 2009-01-02 A | 2009-01-09 A |  | 100% |  | 2009-01-02 | 2009-01-09 | 6d |  | finish no earlier than 2009-01-09 | 개발전략 | 개발전략 수립 | 07061114O410024 | C07-1 1.1.1.2 |
| 8 | KIRAMS1.1.1.5 | 수행환경 구축 | 5d | 2009-01-07 A | 2009-01-13 A |  | 100% |  | 2009-01-07 | 2009-01-13 | 5d |  | finish no earlier than 2009-01-13 | 수행환경 | 수행환경 구축 | 07061114O410024 | C07-1 1.1.1.4 |
| 9 | KIRAMS1.1.1.6 | **SPM 정의** | 18d | 2009-01-12 A | 2009-02-06 A |  | 100% |  | 2009-01-12 | 2009-02-06 | 18d |  |  |  | SPM 정의 | 07061114O410024 | C07-1 1.1.1.3 |
| 10 | KIRAMS1.1.1.6.1 | 표준및절차 정의 | 15d | 2009-01-12 A | 2009-02-03 A |  | 100% |  | 2009-01-12 | 2009-02-03 | 15d |  | finish no earlier than 2009-02-03 | 표준 및 절차매뉴얼 | SPM 정의 | 07061114O410024 | C07-1 1.1.1.3 |
| 11 | KIRAMS1.1.1.6.2 | 표준및절차 검토 | 3d | 2009-02-04 A | 2009-02-06 A | 10 | 100% |  | 2009-02-04 | 2009-02-06 | 3d |  | finish no earlier than 2009-02-06 | 표준 및 절차매뉴얼 | SPM 정의 | 07061114O410024 | C07-1 1.1.1.3 |
| 12 | KIRAMS1.1.1.7 | **원자력의학원 사전준비 요청** | 28d? | 2009-01-12 A | 2009-02-20 A |  | 100% |  | 2009-01-12 | 2009-02-20 | 28d? |  |  |  | 수행환경 구축 | 07061114O410024 | C07-1 1.1.1.4 |
| 13 | KIRAMS1.1.1.7.1 | 전산정보팀 조직도 | 2d? | 2009-01-12 A | 2009-01-13 A |  | 100% |  | 2009-01-12 | 2009-01-13 | 2d? |  | finish no earlier than 2009-01-13 | 전산정보팀 조직도 |  |  |  |
| 14 | KIRAMS1.1.1.7.2 | 현행 시스템 화면 분석자료 | 10d? | 2009-01-12 A | 2009-01-23 A |  | 100% |  | 2009-01-12 | 2009-01-23 | 10d? |  | finish no earlier than 2009-01-23 | 현프로그램 사용현황 파악 |  |  |  |
| 15 | KIRAMS1.1.1.7.3 | 실무추진T/F 구성 | 15d? | 2009-02-02 A | 2009-02-20 A | 14 | 100% |  | 2009-02-02 | 2009-02-20 | 15d? |  | finish no earlier than 2009-02-13 | 실무추진T/F |  |  |  |
| 16 | KIRAMS1.1.1.7.4 | ITA 분석자료 | 5d? | 2009-02-02 A | 2009-02-06 A |  | 100% |  | 2009-02-02 | 2009-02-06 | 5d? |  | finish no earlier than 2009-02-06 | ITA |  |  |  |
| 17 | KIRAMS1.1.2 | **프로젝트 계획수립** | 38d | 2008-12-29 A | 2009-02-23 A |  | 100% |  | 2008-12-29 | 2009-02-23 | 38d |  |  |  | 프로젝트 계획수립 | 07060716O410034 | C07-1 1.1.2 |
| 18 | KIRAMS1.1.2.1 | 프로젝트계획수립 준비 | 4d | 2008-12-29 A | 2009-01-02 A |  | 100% |  | 2008-12-29 | 2009-01-02 | 4d |  | start no earlier than 2009-01-12 |  | 프로젝트계획수립 준비 | 07060716O410034 | C07-1 1.1.2.1 |
| 19 | KIRAMS1.1.2.2 | 일정계획 수립 | 10d | 2009-01-05 A | 2009-01-16 A |  | 100% |  | 2009-01-05 | 2009-01-16 | 10d |  | finish no earlier than 2009-01-16 | WBS, 일정관리계획서 | 일정계획 수립 | 07060716O410034 | C07-1 1.1.2.2 |
| 20 | KIRAMS1.1.2.3 | 인력계획 수립 | 10d | 2009-01-05 A | 2009-01-16 A |  | 100% |  | 2009-01-05 | 2009-01-16 | 10d |  | finish no earlier than 2009-01-07 | 인력계획 | 인력계획 수립 | 07060716O410034 | C07-1 1.1.2.3 |
| 21 | KIRAMS1.1.2.4 | 프로젝트교육계획 수립 | 31d | 2009-01-08 A | 2009-02-23 A |  | 100% |  | 2009-01-08 | 2009-02-23 | 31d |  | finish no earlier than 2009-01-09 | 교육관리계획서 | 프로젝트교육계획 수립 | 07060716O410034 | C07-1 1.1.2.4 |
| 22 | KIRAMS1.1.2.5 | 의사소통관리계획 수립 | 1d | 2009-01-16 A | 2009-01-16 A |  | 100% |  | 2009-01-16 | 2009-01-16 | 1d |  |  | 보고및의사소통관리계획서 | 의사소통관리계획 수립 | 07060716O410034 | C07-1 1.1.2.5 |
| 23 | KIRAMS1.1.2.6 | 품질활동계획 수립 | 5d | 2009-01-12 A | 2009-01-16 A | 22 | 100% |  | 2009-01-12 | 2009-01-16 | 5d |  | start no earlier than 2009-01-13 | 품질활동계획서 | 품질활동계획 수립 | 07060716O410034 | C07-1 1.1.2.7 |
| 24 | KIRAMS1.1.2.7 | 형상관리 계획수립 | 2d | 2009-01-15 A | 2009-01-16 A |  | 100% |  | 2009-01-15 | 2009-01-16 | 2d |  | start no earlier than 2009-01-12 | 형상관리계획서 | 형상관리 계획수립 | 07060716O410034 | C07-1 1.1.2.8 |
| 25 | KIRAMS1.1.2.8 | 구매계획 수립 | 5d | 2009-01-12 A | 2009-01-16 A |  | 100% |  | 2009-01-12 | 2009-01-16 | 5d |  | start no earlier than 2009-01-12 | 구매계획 | 구매계획 수립 | 07060716O410034 | C07-1 1.1.2.9 |
| 26 | KIRAMS1.1.2.9 | 협력업체협업계획 수립 | 7d | 2009-01-12 A | 2009-01-20 A |  | 100% |  | 2009-01-12 | 2009-01-20 | 7d |  | start no earlier than 2009-01-12 | 위탁업무내역서 | 협력업체협업계획 수립 | 07060716O410034 | C07-1 1.1.2.10 |
| 27 | KIRAMS1.1.2.10 | 원가관리계획수립 | 14d | 2009-01-05 A | 2009-01-22 A |  | 100% |  | 2009-01-05 | 2009-01-22 | 14d |  | start no earlier than 2009-01-05 | 원가계획산정서 | 원가관리계획수립 | 07060716O410034 | C07-1 1.1.2.11 |
| 28 | KIRAMS1.1.2.11 | 변경관리 계획수립 | 2d | 2009-01-15 A | 2009-01-16 A |  | 100% |  | 2009-01-15 | 2009-01-16 | 2d |  | finish no earlier than 2009-01-16 | 변경관리계획서 | 변경관리 계획수립 | 07060716O410034 | C07-1 1.1.2.12 |
| 29 | KIRAMS1.1.2.12 | 이슈 및 위험관리계획 수립 | 2d | 2009-01-15 A | 2009-01-16 A |  | 100% |  | 2009-01-15 | 2009-01-16 | 2d |  | start no earlier than 2009-01-15 | 이슈및위험관리계획서 | 이슈 및 위험관리계획 수립 | 07060716O410034 | C07-1 1.1.2.13 |
| 30 | KIRAMS1.1.2.13 | 프로젝트계획 통합 및 검토 | 5d | 2009-01-19 A | 2009-01-23 A |  | 100% |  | 2009-01-19 | 2009-01-23 | 5d |  |  | 실행품의,과업수행계획서 | 프로젝트계획 통합 및 검토 | 07060716O410034 | C07-1 1.1.2.15 |

| ID | WBS | Task | Type | Duration | Start | Finish | Predecessors | Complete | Remaining | Baseline start | Baseline finish | Baseline duration | Total slack | Free slack | Constraint | Text20 | Text25 | Text26 | 산출물 |
| --- | --- | --- | --- | --- | --- | --- | --- | --- | --- | --- | --- | --- | --- | --- | --- | --- | --- | --- | --- |
| 31 | KIRAMS1.1.3 | **프로젝트 계획확정** |  | 8d | 2009-01-13 A | 2009-01-22 A |  | 100% |  | 2009-01-13 | 2009-01-22 | 8d |  |  |  | 프로젝트 계획확정 | 07060716O410050 | C07-1 1.1.3 |  |
| 32 | KIRAMS1.1.3.1 | 프로젝트계획 승인획득 |  | 8d | 2009-01-13 A | 2009-01-22 A |  | 100% |  | 2009-01-13 | 2009-01-22 | 8d |  |  | start no earlier than 2009-01-13 | 프로젝트계획 승인획득 | 07060716O410050 | C07-1 1.1.3.1 | 과업수행계획서 |
| 33 | KIRAMS1.1.4 | **착수 WorkShop** |  | 5d | 2009-01-22 A | 2009-01-30 A |  | 100% |  | 2009-01-22 | 2009-01-30 | 5d |  |  |  | 프로젝트 계획확정 | 07060716O410050 | C07-1 1.1.3 |  |
| 34 | KIRAMS1.1.4.1 | Workshop 계획수립 |  | 2d | 2009-01-22 A | 2009-01-23 A |  | 100% |  | 2009-01-22 | 2009-01-23 | 2d |  |  | finish no earlier than 2009-01-23 | 프로젝트계획 승인획득 | 07060716O410050 | C07-1 1.1.3.1 | Workshop 계획서 |
| 35 | KIRAMS1.1.4.2 | WorkShop 준비 |  | 1d | 2009-01-29 A | 2009-01-29 A | 34 | 100% |  | 2009-01-29 | 2009-01-29 | 1d |  |  | finish no earlier than 2009-01-29 | 착수점검 실시 | 07060716O410050 | C07-1 1.1.3.2 | Workshop 계획서 |
| 36 | KIRAMS1.1.4.3 | WorkShop 실시 | milestone | 1d | 2009-01-30 A | 2009-01-30 A | 35 | 100% |  | 2009-01-30 | 2009-01-30 | 1d |  |  | finish no earlier than 2009-01-31 | 프로젝트 착수보고 | 07060716O410050 | C07-1 1.1.3.3 | Workshop 결과서 |
| 37 | KIRAMS1.2 | **프로젝트 수행/통제** |  | 439d? | 2009-01-12 A | 2010-09-30 |  | 15% | 374.41d? | 2009-01-12 | 2010-09-30 | 439d? | 0d |  |  | 프로젝트수행/통제 | 07060716O410054 | C07-1 1.8 | 주월간보고, 요구사항추적표 |
| 38 | KIRAMS1.2.1 | **단계착수** |  | 192d | 2009-01-28 A | 2009-10-26 |  | 44% | 108.17d | 2009-01-28 | 2009-10-26 | 192d | 237d |  |  |  |  |  |  |
| 39 | KIRAMS1.2.1.1 | **분석단계착수** |  | 13d | 2009-01-28 A | 2009-02-13 A |  | 100% |  | 2009-01-28 | 2009-02-13 | 13d |  |  |  | 프로젝트 착수 | 07061114O410023 | C07-1 1.1 |  |
| 40 | KIRAMS1.2.1.1.1 | 분석계획 단계검토 |  | 3d | 2009-01-28 A | 2009-01-30 A |  | 100% |  | 2009-01-28 | 2009-01-30 | 3d |  |  | start no earlier than 2009-01-28 | 착수준비 | 07061114O410024 | C07-1 1.1.1 | WBS |
| 41 | KIRAMS1.2.1.1.2 | 단계교육 실시 |  | 5d | 2009-02-09 A | 2009-02-13 A | 40 | 100% |  | 2009-02-09 | 2009-02-13 | 5d |  |  |  | 착수준비 | 07061114O410024 | C07-1 1.1.1 | 교육대상자명단 |
| 42 | KIRAMS1.2.1.1.3 | 과업대비표작성 |  | 3d | 2009-02-11 A | 2009-02-13 A | 41 | 100% |  | 2009-02-11 | 2009-02-13 | 3d |  |  |  | 착수준비 | 07061114O410024 | C07-1 1.1.1 | 과업대비표 |
| 43 | KIRAMS1.2.1.2 | **설계단계착수** |  | 15d | 2009-03-09 A | 2009-03-27 A |  | 100% |  | 2009-03-23 | 2009-04-10 | 15d |  |  |  | 프로젝트 착수 | 07061114O410023 | C07-1 1.1 |  |
| 44 | KIRAMS1.2.1.2.1 | 설계계획 단계검토 |  | 5d | 2009-03-23 A | 2009-03-27 A |  | 100% |  | 2009-03-23 | 2009-03-27 | 5d |  |  | start no earlier than 2009-03-23 | 착수준비 | 07061114O410024 | C07-1 1.1.1 | WBS |
| 45 | KIRAMS1.2.1.2.2 | SPM 작성 |  | 5d | 2009-03-09 A | 2009-03-13 A |  | 100% |  | 2009-03-09 | 2009-03-13 | 5d |  |  | start no earlier than 2009-03-09 | 착수준비 | 07061114O410024 | C07-1 1.1.1 | 표준 및 절차매뉴얼 |
| 46 | KIRAMS1.2.1.2.3 | SPM 검토 |  | 5d | 2009-03-16 A | 2009-03-20 A | 45 | 100% |  | 2009-03-16 | 2009-03-20 | 5d |  |  |  | 착수준비 | 07061114O410024 | C07-1 1.1.1 |  |
| 47 | KIRAMS1.2.1.2.4 | 단계교육 실시 |  | 5d | 2009-03-23 A | 2009-03-27 A |  | 100% |  | 2009-03-23 | 2009-03-27 | 5d |  |  | start no earlier than 2009-03-23 | 착수준비 | 07061114O410024 | C07-1 1.1.1 | 교육대상자명단 |
| 48 | KIRAMS1.2.1.3 | **개발단계착수** |  | 15d | 2009-05-11 | 2009-05-29 |  |  |  | 2009-05-11 | 2009-05-29 | 15d | 342d |  |  | 프로젝트 착수 | 07061114O410023 | C07-1 1.1 |  |
| 49 | KIRAMS1.2.1.3.1 | 개발계획 단계검토 |  | 5d | 2009-05-11 | 2009-05-15 |  |  |  | 2009-05-11 | 2009-05-15 | 5d | 342d | 0d | start no earlier than 2009-05-11 | 착수준비 | 07061114O410024 | C07-1 1.1.1 | WBS |
| 50 | KIRAMS1.2.1.3.2 | SPM 작성 |  | 5d | 2009-05-18 | 2009-05-22 | 49 |  |  | 2009-05-18 | 2009-05-22 | 5d | 342d | 0d | start no earlier than 2009-04-13 | 착수준비 | 07061114O410024 | C07-1 1.1.1 | 표준 및 절차매뉴얼 |
| 51 | KIRAMS1.2.1.3.3 | SPM 검토 |  | 5d | 2009-05-25 | 2009-05-29 | 50 |  |  | 2009-05-25 | 2009-05-29 | 5d | 342d |  | finish no earlier than 2009-05-08 | 착수준비 | 07061114O410024 | C07-1 1.1.1 |  |
| 52 | KIRAMS1.2.1.3.4 | 단계교육 실시 |  | 5d | 2009-05-11 | 2009-05-15 |  |  |  | 2009-05-11 | 2009-05-15 | 5d | 352d |  | start no earlier than 2009-05-11 | 착수준비 | 07061114O410024 | C07-1 1.1.1 | 교육대상자명단 |
| 53 | KIRAMS1.2.1.4 | **이행단계착수** |  | 20d | 2009-09-28 | 2009-10-26 |  |  |  | 2009-09-28 | 2009-10-26 | 20d | 237d |  |  | 프로젝트 착수 | 07061114O410023 | C07-1 1.1 |  |
| 54 | KIRAMS1.2.1.4.1 | 이행계획 단계검토 |  | 5d | 2009-09-28 | 2009-10-05 |  |  |  | 2009-09-28 | 2009-10-05 | 5d | 237d | 0d | start no earlier than 2009-09-28 | 착수준비 | 07061114O410024 | C07-1 1.1.1 | WBS |
| 55 | KIRAMS1.2.1.4.2 | SPM 작성 |  | 5d | 2009-10-06 | 2009-10-12 | 54 |  |  | 2009-10-06 | 2009-10-12 | 5d | 237d | 0d | start no earlier than 2009-09-07 | 착수준비 | 07061114O410024 | C07-1 1.1.1 | 표준 및 절차매뉴얼 |
| 56 | KIRAMS1.2.1.4.3 | SPM 검토 |  | 5d | 2009-10-13 | 2009-10-19 | 55 |  |  | 2009-10-13 | 2009-10-19 | 5d | 237d | 0d | start no earlier than 2009-09-21 | 착수준비 | 07061114O410024 | C07-1 1.1.1 | 표준 및 절차매뉴얼 |
| 57 | KIRAMS1.2.1.4.4 | 단계교육 실시 |  | 5d | 2009-10-20 | 2009-10-26 | 56 |  |  | 2009-10-20 | 2009-10-26 | 5d | 237d |  | start no earlier than 2009-09-28 | 착수준비 | 07061114O410024 | C07-1 1.1.1 | 교육대상자명단 |

| ID | WBS | Task | Duration | Start | Finish | Complete | Remaining | Baseline start | Baseline finish | Baseline duration | Total slack | Constraint | Text20 | Text25 | Text26 | 산출물 |
| --- | --- | --- | --- | --- | --- | --- | --- | --- | --- | --- | --- | --- | --- | --- | --- | --- |
| 58 | KIRAMS1.2.2 | **품질활동** | 191d | 2009-03-16 A | 2009-12-09 | 13% | 165.72d | 2009-03-16 | 2009-12-09 | 191d | 205d |  | 품질활동수행 | 07060716O410059 | C07-1 1.8.2 |  |
| 59 | KIRAMS1.2.2.1 | **프로세스심사** | 137d | 2009-05-20 | 2009-11-27 |  |  | 2009-05-20 | 2009-11-27 | 137d | 213d |  | 프로세스심사 실시 | 07060716O410059 | C07-1 1.8.2.2 |  |
| 60 | KIRAMS1.2.2.1.1 | 설계단계 프로세스심사 | 3d | 2009-05-20 | 2009-05-22 |  |  | 2009-05-20 | 2009-05-22 | 3d | 347d | start no earlier than 2009-05-20 | 프로세스심사 실시 | 07060716O410059 | C07-1 1.8.2.2 | 프로세스심사결과,시정조치서 |
| 61 | KIRAMS1.2.2.1.2 | 개발단계 프로세스심사 | 3d | 2009-09-23 | 2009-09-25 |  |  | 2009-09-23 | 2009-09-25 | 3d | 257d | start no earlier than 2009-09-23 | 프로세스심사 실시 | 07060716O410059 | C07-1 1.8.2.2 | 프로세스심사결과,시정조치서 |
| 62 | KIRAMS1.2.2.1.3 | 이행단계 프로세스심사 | 3d | 2009-11-25 | 2009-11-27 |  |  | 2009-11-25 | 2009-11-27 | 3d | 213d | start no earlier than 2009-11-25 | 프로세스심사 실시 | 07060716O410059 | C07-1 1.8.2.2 | 프로세스심사결과,시정조치서 |
| 63 | KIRAMS1.2.2.2 | **Inspection 실시** | 191d | 2009-03-16 A | 2009-12-09 | 15% | 161.86d | 2009-03-16 | 2009-12-09 | 191d | 205d |  | 프로젝트 착수 | 07061114O410023 | C07-1 1.1 |  |
| 64 | KIRAMS1.2.2.2.1 | **요구정의 및 분석 Inspection 실시** | 5d | 2009-03-16 A | 2009-03-20 A | 100% |  | 2009-03-16 | 2009-03-20 | 5d |  |  | 착수준비 | 07061114O410024 | C07-1 1.1.1 |  |
| 65 | KIRAMS1.2.2.2.1.1 | 분석Inspection 계획 및 준비 | 3d | 2009-03-16 A | 2009-03-18 A | 100% |  | 2009-03-16 | 2009-03-18 | 3d |  | start no earlier than 2009-03-11 |  |  |  | Inspection 계획서 |
| 66 | KIRAMS1.2.2.2.1.2 | 분석Inspection 실시 | 3d | 2009-03-18 A | 2009-03-20 A | 100% |  | 2009-03-18 | 2009-03-20 | 3d |  | start no earlier than 2009-03-18 |  |  |  | Inspection 결과서 |
| 67 | KIRAMS1.2.2.2.1.3 | 분석Inspection 결과 및 시정조치 확인 | 3d | 2009-03-18 A | 2009-03-20 A | 100% |  | 2009-03-18 | 2009-03-20 | 3d |  | start no earlier than 2009-03-18 |  |  |  | Inspection 결과 및 시정조치서 |
| 68 | KIRAMS1.2.2.2.2 | **설계 Inspection 실시** | 10d | 2009-04-27 | 2009-05-11 |  |  | 2009-04-27 | 2009-05-11 | 10d | 356d |  | 착수준비 | 07061114O410024 | C07-1 1.1.1 |  |
| 69 | KIRAMS1.2.2.2.2.1 | 설계Inspection 계획 및 준비 | 4d | 2009-04-27 | 2009-04-30 |  |  | 2009-04-27 | 2009-04-30 | 4d | 362d | start no earlier than 2009-04-27 |  |  |  | Inspection 계획서 |
| 70 | KIRAMS1.2.2.2.2.2 | 설계Inspection 실시 | 5d | 2009-05-04 | 2009-05-11 |  |  | 2009-05-04 | 2009-05-11 | 5d | 356d | start no earlier than 2009-05-04 |  |  |  | Inspection 결과서 |
| 71 | KIRAMS1.2.2.2.2.3 | 설계Inspection 결과 및 시정조치 확인 | 5d | 2009-05-04 | 2009-05-11 |  |  | 2009-05-04 | 2009-05-11 | 5d | 356d | start no earlier than 2009-05-04 |  |  |  | Inspection 결과 및 시정조치서 |
| 72 | KIRAMS1.2.2.2.3 | **개발 Inspection(Code) 실시** | 78d | 2009-06-03 | 2009-09-18 |  |  | 2009-06-03 | 2009-09-18 | 78d | 262d |  |  |  |  |  |
| 73 | KIRAMS1.2.2.2.3.1 | Code Inspection실시 1 | 3d | 2009-06-03 | 2009-06-05 |  |  | 2009-06-03 | 2009-06-05 | 3d | 337d | start no earlier than 2009-06-03 |  |  |  | Inspection 결과 및 시정조치서 |
| 74 | KIRAMS1.2.2.2.3.2 | Code Inspection실시 2 | 3d | 2009-06-17 | 2009-06-19 |  |  | 2009-06-17 | 2009-06-19 | 3d | 327d | start no earlier than 2009-06-17 |  |  |  | Inspection 결과 및 시정조치서 |
| 75 | KIRAMS1.2.2.2.3.3 | Code Inspection실시 3 | 3d | 2009-07-01 | 2009-07-03 |  |  | 2009-07-01 | 2009-07-03 | 3d | 317d | start no earlier than 2009-07-01 |  |  |  | Inspection 결과 및 시정조치서 |
| 76 | KIRAMS1.2.2.2.3.4 | Code Inspection실시 4 | 3d | 2009-07-15 | 2009-07-17 |  |  | 2009-07-15 | 2009-07-17 | 3d | 307d | start no earlier than 2009-07-15 |  |  |  | Inspection 결과 및 시정조치서 |
| 77 | KIRAMS1.2.2.2.3.5 | Code Inspection실시 5 | 3d | 2009-08-12 | 2009-08-14 |  |  | 2009-08-12 | 2009-08-14 | 3d | 287d | start no earlier than 2009-08-12 |  |  |  | Inspection 결과 및 시정조치서 |
| 78 | KIRAMS1.2.2.2.3.6 | Code Inspection실시 6 | 3d | 2009-09-16 | 2009-09-18 |  |  | 2009-09-16 | 2009-09-18 | 3d | 262d | start no earlier than 2009-09-16 |  |  |  | Inspection 결과 및 시정조치서 |
| 79 | KIRAMS1.2.2.2.4 | **이행 Inspection 실시** | 47d | 2009-09-23 | 2009-11-27 |  |  | 2009-09-23 | 2009-11-27 | 47d | 213d |  | 착수준비 | 07061114O410024 | C07-1 1.1.1 |  |
| 80 | KIRAMS1.2.2.2.4.1 | 이행Inspection 계획 및 준비 | 3d | 2009-09-23 | 2009-09-25 |  |  | 2009-09-23 | 2009-09-25 | 3d | 257d | start no earlier than 2009-09-23 |  |  |  | Inspection 계획서 |
| 81 | KIRAMS1.2.2.2.4.2 | 이행Inspection 1차 실시 | 5d | 2009-09-28 | 2009-10-05 |  |  | 2009-09-28 | 2009-10-05 | 5d | 252d | start no earlier than 2009-09-28 |  |  |  | Inspection 결과서 |
| 82 | KIRAMS1.2.2.2.4.3 | 이행Inspection 결과 및 시정조치 확인 | 2d | 2009-10-01 | 2009-10-05 |  |  | 2009-10-01 | 2009-10-05 | 2d | 252d | start no earlier than 2009-10-01 |  |  |  | Inspection 결과서 및 시정조치서 |
| 83 | KIRAMS1.2.2.2.4.4 | 이행Inspection 2차 실시 | 5d | 2009-11-23 | 2009-11-27 |  |  | 2009-11-23 | 2009-11-27 | 5d | 213d | start no earlier than 2009-11-23 |  |  |  | Inspection 결과서 |
| 84 | KIRAMS1.2.2.2.4.5 | 이행Inspection 결과 및 시정조치 확인 | 2d | 2009-11-26 | 2009-11-27 |  |  | 2009-11-26 | 2009-11-27 | 2d | 213d | start no earlier than 2009-11-26 |  |  |  | Inspection 결과서 및 시정조치서 |
| 85 | KIRAMS1.2.2.2.5 | Code Inspection 측정(심사) | 1d | 2009-12-09 | 2009-12-09 |  |  | 2009-12-09 | 2009-12-09 | 1d | 205d | start no earlier than 2009-12-09 | 착수준비 | 07061114O410024 | C07-1 1.1.1 | Inspection 결과 및 시정조치서 |

| ID | WBS | Task | Duration | Start | Finish | Baseline start | Baseline finish | Baseline duration | Total slack | Constraint | Text20 | Text25 | Text26 | 산출물 |
| --- | --- | --- | --- | --- | --- | --- | --- | --- | --- | --- | --- | --- | --- | --- |
| 86 | KIRAMS1.2.3 | **검수기준관리활동** | 163d | 2009-04-13 | 2009-11-27 | 2009-04-13 | 2009-11-27 | 163d | 213d |  | 검수기준관리활동 수행 | 07060716O410070 | C07-1 1.8.5 |  |
| 87 | KIRAMS1.2.3.1 | **설계검수기준 수립** | 8d | 2009-04-13 | 2009-04-22 | 2009-04-13 | 2009-04-22 | 8d | 368d |  |  |  |  |  |
| 88 | KIRAMS1.2.3.1.1 | 설계검수기준 수립 | 5d | 2009-04-13 | 2009-04-17 | 2009-04-13 | 2009-04-17 | 5d | 371d | start no earlier than 2009-04-13 | 검수기준 수립 | 07060716O410070 | C07-1 1.8.5.1 | 검수기준서 |
| 89 | KIRAMS1.2.3.1.2 | 설계검수기준 검토 및 합의 | 3d | 2009-04-20 | 2009-04-22 | 2009-04-20 | 2009-04-22 | 3d | 368d | start no earlier than 2009-04-20 | 검수기준 검토 및 합의 | 07060716O410070 | C07-1 1.8.5.2 | 검수기준서 |
| 90 | KIRAMS1.2.3.2 | **종료검수기준 수립** | 10d | 2009-11-16 | 2009-11-27 | 2009-11-16 | 2009-11-27 | 10d | 213d |  |  |  |  |  |
| 91 | KIRAMS1.2.3.2.1 | 종료검수기준 수립 | 5d | 2009-11-16 | 2009-11-20 | 2009-11-16 | 2009-11-20 | 5d | 218d | start no earlier than 2009-11-16 |  |  |  | 검수기준서 |
| 92 | KIRAMS1.2.3.2.2 | 종료검수기준 검토 및 합의 | 5d | 2009-11-23 | 2009-11-27 | 2009-11-23 | 2009-11-27 | 5d | 213d | start no earlier than 2009-11-23 |  |  |  | 검수기준서 |
| 93 | KIRAMS1.2.4 | **형상관리활동** | 195d | 2009-03-30 | 2009-12-30 | 2009-03-18 | 2009-12-30 | 203d | 191d |  | 형상관리활동수행 | 07060716O410064 | C07-1 1.8.3 |  |
| 94 | KIRAMS1.2.4.1 | **형상통제 및 기록** | 148d | 2009-03-30 | 2009-10-23 | 2009-03-18 | 2009-10-23 | 156d | 238d |  |  |  |  |  |
| 95 | KIRAMS1.2.4.1.1 | 분석단계 형상통제 및 기록 | 3d | 2009-03-30 | 2009-04-01 | 2009-03-30 | 2009-04-01 | 3d | 383d | start no earlier than 2009-03-30 |  |  |  |  |
| 96 | KIRAMS1.2.4.1.2 | 설계단계 형상통제 및 기록 | 3d | 2009-05-06 | 2009-05-08 | 2009-05-06 | 2009-05-08 | 3d | 357d | start no earlier than 2009-05-06 |  |  |  |  |
| 97 | KIRAMS1.2.4.1.3 | 개발단계 형상통제 및 기록 | 3d | 2009-09-23 | 2009-09-25 | 2009-09-23 | 2009-09-25 | 3d | 257d | start no earlier than 2009-09-23 |  |  |  |  |
| 98 | KIRAMS1.2.4.1.4 | 이행단계 형상통제 및 기록 | 3d | 2009-10-21 | 2009-10-23 | 2009-10-21 | 2009-10-23 | 3d | 238d | start no earlier than 2009-10-21 |  |  |  |  |
| 99 | KIRAMS1.2.4.2 | **형상 감사** | 190d | 2009-04-06 | 2009-12-30 | 2009-04-06 | 2009-12-30 | 190d | 191d |  | 형상 감사 | 07060716O410064 | C07-1 1.8.3.2 |  |
| 100 | KIRAMS1.2.4.2.1 | 분석단계 형상감사 | 5d | 2009-04-06 | 2009-04-10 | 2009-04-06 | 2009-04-10 | 5d | 376d | start no earlier than 2009-04-06 |  |  |  | 형상감사결과서 |
| 101 | KIRAMS1.2.4.2.2 | 설계단계 형상감사 | 5d | 2009-05-11 | 2009-05-15 | 2009-05-11 | 2009-05-15 | 5d | 352d | start no earlier than 2009-05-11 |  |  |  | 형상감사결과서 |
| 102 | KIRAMS1.2.4.2.3 | **개발단계 형상감사** | 91d | 2009-05-27 | 2009-09-30 | 2009-05-27 | 2009-09-30 | 91d | 254d |  |  |  |  |  |
| 103 | KIRAMS1.2.4.2.3.1 | 개발단계 형상감사1 | 3d | 2009-05-27 | 2009-05-29 | 2009-05-27 | 2009-05-29 | 3d | 342d | start no earlier than 2009-05-27 |  |  |  | 형상감사결과서 |
| 104 | KIRAMS1.2.4.2.3.2 | 개발단계 형상감사2 | 2d | 2009-06-29 | 2009-06-30 | 2009-06-29 | 2009-06-30 | 2d | 320d | start no earlier than 2009-06-29 |  |  |  | 형상감사결과서 |
| 105 | KIRAMS1.2.4.2.3.3 | 개발단계 형상감사3 | 3d | 2009-07-29 | 2009-07-31 | 2009-07-29 | 2009-07-31 | 3d | 297d | start no earlier than 2009-07-29 |  |  |  | 형상감사결과서 |
| 106 | KIRAMS1.2.4.2.3.4 | 개발단계 형상감사4 | 3d | 2009-08-26 | 2009-08-28 | 2009-08-26 | 2009-08-28 | 3d | 277d | start no earlier than 2009-08-26 |  |  |  | 형상감사결과서 |
| 107 | KIRAMS1.2.4.2.3.5 | 개발단계 형상감사5 | 3d | 2009-09-28 | 2009-09-30 | 2009-09-28 | 2009-09-30 | 3d | 254d | start no earlier than 2009-09-28 |  |  |  | 형상감사결과서 |
| 108 | KIRAMS1.2.4.2.4 | **이행단계 형상감사** | 45d | 2009-10-28 | 2009-12-30 | 2009-10-28 | 2009-12-30 | 45d | 191d |  |  |  |  |  |
| 109 | KIRAMS1.2.4.2.4.1 | 이행단계 형상감사1 | 3d | 2009-10-28 | 2009-10-30 | 2009-10-28 | 2009-10-30 | 3d | 233d | start no earlier than 2009-10-28 |  |  |  | 형상감사결과서 |
| 110 | KIRAMS1.2.4.2.4.2 | 이행단계 형상감사2 | 3d | 2009-11-25 | 2009-11-27 | 2009-11-25 | 2009-11-27 | 3d | 213d | start no earlier than 2009-11-25 |  |  |  | 형상감사결과서 |
| 111 | KIRAMS1.2.4.2.4.3 | 이행단계 형상감사3 | 3d | 2009-12-28 | 2009-12-30 | 2009-12-28 | 2009-12-30 | 3d | 191d | start no earlier than 2009-12-28 |  |  |  | 형상감사결과서 |

| ID | WBS | Task | Duration | Start | Finish | Complete | Remaining | Baseline start | Baseline finish | Baseline duration | Total slack | Constraint | Text20 | Text25 | Text26 |
| --- | --- | --- | --- | --- | --- | --- | --- | --- | --- | --- | --- | --- | --- | --- | --- |
| 112 | KIRAMS1.2.5 | **주월간보고** | 431d? | 2009-01-22 A | 2010-09-30 | 13% | 375.91d? | 2009-01-22 | 2010-09-30 | 431d? | 0d |  | 프로젝트 착수 | 07061114O410023 | C07-1 1.1 |
| 113 | KIRAMS1.2.5.1 | **주간보고** | 429d? | 2009-01-28 A | 2010-09-30 | 8% | 395.26d? | 2009-01-28 | 2010-09-30 | 429d? | 0d |  |  |  |  |
| 114 | KIRAMS1.2.5.1.1 | '09년주간보고(1월4주) | 1d? | 2009-01-28 A | 2009-01-28 A | 100% |  | 2009-01-28 | 2009-01-28 | 1d? |  | start no earlier than 2009-01-28 |  |  |  |
| 115 | KIRAMS1.2.5.1.2 | '09년주간보고(1월5주) | 1d? | 2009-02-02 A | 2009-02-02 A | 100% |  | 2009-02-02 | 2009-02-02 | 1d? |  | start no earlier than 2009-02-02 |  |  |  |
| 116 | KIRAMS1.2.5.1.3 | '09년주간보고(2월1주) | 1d? | 2009-02-09 A | 2009-02-09 A | 100% |  | 2009-02-09 | 2009-02-09 | 1d? |  | start no earlier than 2009-02-09 |  |  |  |
| 117 | KIRAMS1.2.5.1.4 | '09년주간보고(2월2주) | 1d? | 2009-02-16 A | 2009-02-16 A | 100% |  | 2009-02-16 | 2009-02-16 | 1d? |  | start no earlier than 2009-02-16 |  |  |  |
| 118 | KIRAMS1.2.5.1.5 | '09년주간보고(2월3주) | 1d? | 2009-02-23 A | 2009-02-23 A | 100% |  | 2009-02-23 | 2009-02-23 | 1d? |  | start no earlier than 2009-02-23 |  |  |  |
| 119 | KIRAMS1.2.5.1.6 | '09년주간보고(2월4주) | 1d? | 2009-03-02 A | 2009-03-02 A | 100% |  | 2009-03-02 | 2009-03-02 | 1d? |  | start no earlier than 2009-03-02 |  |  |  |
| 120 | KIRAMS1.2.5.1.7 | '09년주간보고(3월1주) | 1d? | 2009-03-09 A | 2009-03-09 A | 100% |  | 2009-03-09 | 2009-03-09 | 1d? |  | start no earlier than 2009-03-09 |  |  |  |
| 121 | KIRAMS1.2.5.1.8 | '09년주간보고(3월2주) | 1d? | 2009-03-16 | 2009-03-16 |  |  | 2009-03-16 | 2009-03-16 | 1d? | 395d | start no earlier than 2009-03-16 |  |  |  |
| 122 | KIRAMS1.2.5.1.9 | '09년주간보고(3월3주) | 1d? | 2009-03-23 | 2009-03-23 |  |  | 2009-03-23 | 2009-03-23 | 1d? | 390d | start no earlier than 2009-03-23 |  |  |  |
| 123 | KIRAMS1.2.5.1.10 | '09년주간보고(3월4주) | 1d? | 2009-03-30 | 2009-03-30 |  |  | 2009-03-30 | 2009-03-30 | 1d? | 385d | start no earlier than 2009-03-30 |  |  |  |
| 124 | KIRAMS1.2.5.1.11 | '09년주간보고(4월1주) | 1d? | 2009-04-06 | 2009-04-06 |  |  | 2009-04-06 | 2009-04-06 | 1d? | 380d | start no earlier than 2009-04-06 |  |  |  |
| 125 | KIRAMS1.2.5.1.12 | '09년주간보고(4월2주) | 1d? | 2009-04-13 | 2009-04-13 |  |  | 2009-04-13 | 2009-04-13 | 1d? | 375d | start no earlier than 2009-04-13 |  |  |  |
| 126 | KIRAMS1.2.5.1.13 | '09년주간보고(4월3주) | 1d? | 2009-04-20 | 2009-04-20 |  |  | 2009-04-20 | 2009-04-20 | 1d? | 370d | start no earlier than 2009-04-20 |  |  |  |
| 127 | KIRAMS1.2.5.1.14 | '09년주간보고(4월4주) | 1d? | 2009-04-27 | 2009-04-27 |  |  | 2009-04-27 | 2009-04-27 | 1d? | 365d | start no earlier than 2009-04-27 |  |  |  |
| 128 | KIRAMS1.2.5.1.15 | '09년주간보고(4월5주) | 1d? | 2009-05-04 | 2009-05-04 |  |  | 2009-05-04 | 2009-05-04 | 1d? | 360d | start no earlier than 2009-05-04 |  |  |  |
| 129 | KIRAMS1.2.5.1.16 | '09년주간보고(5월1주) | 1d? | 2009-05-11 | 2009-05-11 |  |  | 2009-05-11 | 2009-05-11 | 1d? | 356d | start no earlier than 2009-05-11 |  |  |  |
| 130 | KIRAMS1.2.5.1.17 | '09년주간보고(5월2주) | 1d? | 2009-05-18 | 2009-05-18 |  |  | 2009-05-18 | 2009-05-18 | 1d? | 351d | start no earlier than 2009-05-18 |  |  |  |
| 131 | KIRAMS1.2.5.1.18 | '09년주간보고(5월3주) | 1d? | 2009-05-25 | 2009-05-25 |  |  | 2009-05-25 | 2009-05-25 | 1d? | 346d | start no earlier than 2009-05-25 |  |  |  |
| 132 | KIRAMS1.2.5.1.19 | '09년주간보고(5월4주) | 1d? | 2009-06-01 | 2009-06-01 |  |  | 2009-06-01 | 2009-06-01 | 1d? | 341d | start no earlier than 2009-06-01 |  |  |  |
| 133 | KIRAMS1.2.5.1.20 | '09년주간보고(6월1주) | 1d? | 2009-06-08 | 2009-06-08 |  |  | 2009-06-08 | 2009-06-08 | 1d? | 336d | start no earlier than 2009-06-08 |  |  |  |
| 134 | KIRAMS1.2.5.1.21 | '09년주간보고(6월2주) | 1d? | 2009-06-15 | 2009-06-15 |  |  | 2009-06-15 | 2009-06-15 | 1d? | 331d | start no earlier than 2009-06-15 |  |  |  |
| 135 | KIRAMS1.2.5.1.22 | '09년주간보고(6월3주) | 1d? | 2009-06-22 | 2009-06-22 |  |  | 2009-06-22 | 2009-06-22 | 1d? | 326d | start no earlier than 2009-06-22 |  |  |  |
| 136 | KIRAMS1.2.5.1.23 | '09년주간보고(6월4주) | 1d? | 2009-06-29 | 2009-06-29 |  |  | 2009-06-29 | 2009-06-29 | 1d? | 321d | start no earlier than 2009-06-29 |  |  |  |
| 137 | KIRAMS1.2.5.1.24 | '09년주간보고(7월1주) | 1d? | 2009-07-06 | 2009-07-06 |  |  | 2009-07-06 | 2009-07-06 | 1d? | 316d | start no earlier than 2009-07-06 |  |  |  |
| 138 | KIRAMS1.2.5.1.25 | '09년주간보고(7월2주) | 1d? | 2009-07-13 | 2009-07-13 |  |  | 2009-07-13 | 2009-07-13 | 1d? | 311d | start no earlier than 2009-07-13 |  |  |  |
| 139 | KIRAMS1.2.5.1.26 | '09년주간보고(7월3주) | 1d? | 2009-07-20 | 2009-07-20 |  |  | 2009-07-20 | 2009-07-20 | 1d? | 306d | start no earlier than 2009-07-20 |  |  |  |
| 140 | KIRAMS1.2.5.1.27 | '09년주간보고(7월4주) | 1d? | 2009-07-27 | 2009-07-27 |  |  | 2009-07-27 | 2009-07-27 | 1d? | 301d | start no earlier than 2009-07-27 |  |  |  |
| 141 | KIRAMS1.2.5.1.28 | '09년주간보고(7월5주) | 1d? | 2009-08-03 | 2009-08-03 |  |  | 2009-08-03 | 2009-08-03 | 1d? | 296d | start no earlier than 2009-08-03 |  |  |  |
| 142 | KIRAMS1.2.5.1.29 | '09년주간보고(8월1주) | 1d? | 2009-08-10 | 2009-08-10 |  |  | 2009-08-10 | 2009-08-10 | 1d? | 291d | start no earlier than 2009-08-10 |  |  |  |
| 143 | KIRAMS1.2.5.1.30 | '09년주간보고(8월2주) | 1d? | 2009-08-17 | 2009-08-17 |  |  | 2009-08-17 | 2009-08-17 | 1d? | 286d | start no earlier than 2009-08-17 |  |  |  |
| 144 | KIRAMS1.2.5.1.31 | '09년주간보고(8월3주) | 1d? | 2009-08-24 | 2009-08-24 |  |  | 2009-08-24 | 2009-08-24 | 1d? | 281d | start no earlier than 2009-08-24 |  |  |  |
| 145 | KIRAMS1.2.5.1.32 | '09년주간보고(8월4주) | 1d? | 2009-08-31 | 2009-08-31 |  |  | 2009-08-31 | 2009-08-31 | 1d? | 276d | start no earlier than 2009-08-31 |  |  |  |
| 146 | KIRAMS1.2.5.1.33 | '09년주간보고(9월1주) | 1d? | 2009-09-07 | 2009-09-07 |  |  | 2009-09-07 | 2009-09-07 | 1d? | 271d | start no earlier than 2009-09-07 |  |  |  |
| 147 | KIRAMS1.2.5.1.34 | '09년주간보고(9월2주) | 1d? | 2009-09-14 | 2009-09-14 |  |  | 2009-09-14 | 2009-09-14 | 1d? | 266d | start no earlier than 2009-09-14 |  |  |  |
| 148 | KIRAMS1.2.5.1.35 | '09년주간보고(9월3주) | 1d? | 2009-09-21 | 2009-09-21 |  |  | 2009-09-21 | 2009-09-21 | 1d? | 261d | start no earlier than 2009-09-21 |  |  |  |
| 149 | KIRAMS1.2.5.1.36 | '09년주간보고(9월4주) | 1d? | 2009-09-28 | 2009-09-28 |  |  | 2009-09-28 | 2009-09-28 | 1d? | 256d | start no earlier than 2009-09-28 |  |  |  |
| 150 | KIRAMS1.2.5.1.37 | '09년주간보고(10월1주) | 1d? | 2009-10-05 | 2009-10-05 |  |  | 2009-10-05 | 2009-10-05 | 1d? | 252d | start no earlier than 2009-10-05 |  |  |  |
| 151 | KIRAMS1.2.5.1.38 | '09년주간보고(10월2주) | 1d? | 2009-10-12 | 2009-10-12 |  |  | 2009-10-12 | 2009-10-12 | 1d? | 247d | start no earlier than 2009-10-12 |  |  |  |
| 152 | KIRAMS1.2.5.1.39 | '09년주간보고(10월3주) | 1d? | 2009-10-19 | 2009-10-19 |  |  | 2009-10-19 | 2009-10-19 | 1d? | 242d | start no earlier than 2009-10-19 |  |  |  |
| 153 | KIRAMS1.2.5.1.40 | '09년주간보고(10월4주) | 1d? | 2009-10-26 | 2009-10-26 |  |  | 2009-10-26 | 2009-10-26 | 1d? | 237d | start no earlier than 2009-10-26 |  |  |  |
| 154 | KIRAMS1.2.5.1.41 | '09년주간보고(10월5주) | 1d? | 2009-11-02 | 2009-11-02 |  |  | 2009-11-02 | 2009-11-02 | 1d? | 232d | start no earlier than 2009-11-02 |  |  |  |
| 155 | KIRAMS1.2.5.1.42 | '09년주간보고(11월1주) | 1d? | 2009-11-09 | 2009-11-09 |  |  | 2009-11-09 | 2009-11-09 | 1d? | 227d | start no earlier than 2009-11-09 |  |  |  |
| 156 | KIRAMS1.2.5.1.43 | '09년주간보고(11월2주) | 1d? | 2009-11-16 | 2009-11-16 |  |  | 2009-11-16 | 2009-11-16 | 1d? | 222d | start no earlier than 2009-11-16 |  |  |  |
| 157 | KIRAMS1.2.5.1.44 | '09년주간보고(11월3주) | 1d? | 2009-11-23 | 2009-11-23 |  |  | 2009-11-23 | 2009-11-23 | 1d? | 217d | start no earlier than 2009-11-23 |  |  |  |
| 158 | KIRAMS1.2.5.1.45 | '09년주간보고(11월4주) | 1d? | 2009-11-30 | 2009-11-30 |  |  | 2009-11-30 | 2009-11-30 | 1d? | 212d | start no earlier than 2009-11-30 |  |  |  |
| 159 | KIRAMS1.2.5.1.46 | '09년주간보고(12월1주) | 1d? | 2009-12-07 | 2009-12-07 |  |  | 2009-12-07 | 2009-12-07 | 1d? | 207d | start no earlier than 2009-12-07 |  |  |  |
| 160 | KIRAMS1.2.5.1.47 | '09년주간보고(12월2주) | 1d? | 2009-12-14 | 2009-12-14 |  |  | 2009-12-14 | 2009-12-14 | 1d? | 202d | start no earlier than 2009-12-14 |  |  |  |
| 161 | KIRAMS1.2.5.1.48 | '09년주간보고(12월3주) | 1d? | 2009-12-21 | 2009-12-21 |  |  | 2009-12-21 | 2009-12-21 | 1d? | 197d | start no earlier than 2009-12-21 |  |  |  |
| 162 | KIRAMS1.2.5.1.49 | '09년주간보고(12월4주) | 1d? | 2009-12-28 | 2009-12-28 |  |  | 2009-12-28 | 2009-12-28 | 1d? | 193d | start no earlier than 2009-12-28 |  |  |  |
| 163 | KIRAMS1.2.5.1.50 | '09년주간보고(12월5주) | 1d? | 2010-01-04 | 2010-01-04 |  |  | 2010-01-04 | 2010-01-04 | 1d? | 187d | start no earlier than 2010-01-04 |  |  |  |
| 164 | KIRAMS1.2.5.1.51 | '10년주간보고(1월1주) | 1d? | 2010-01-11 | 2010-01-11 |  |  | 2010-01-11 | 2010-01-11 | 1d? | 182d | start no earlier than 2010-01-11 |  |  |  |
| 165 | KIRAMS1.2.5.1.52 | '10년주간보고(1월2주) | 1d? | 2010-01-18 | 2010-01-18 |  |  | 2010-01-18 | 2010-01-18 | 1d? | 177d | start no earlier than 2010-01-18 |  |  |  |
| 166 | KIRAMS1.2.5.1.53 | '10년주간보고(1월3주) | 1d? | 2010-01-25 | 2010-01-25 |  |  | 2010-01-25 | 2010-01-25 | 1d? | 172d | start no earlier than 2010-01-25 |  |  |  |
| 167 | KIRAMS1.2.5.1.54 | '10년주간보고(1월4주) | 1d? | 2010-02-01 | 2010-02-01 |  |  | 2010-02-01 | 2010-02-01 | 1d? | 167d | start no earlier than 2010-02-01 |  |  |  |
| 168 | KIRAMS1.2.5.1.55 | '10년주간보고(2월1주) | 1d? | 2010-02-08 | 2010-02-08 |  |  | 2010-02-08 | 2010-02-08 | 1d? | 162d | start no earlier than 2010-02-08 |  |  |  |
| 169 | KIRAMS1.2.5.1.56 | '10년주간보고(2월2주) | 1d? | 2010-02-16 | 2010-02-16 |  |  | 2010-02-16 | 2010-02-16 | 1d? | 157d | start no earlier than 2010-02-16 |  |  |  |
| 170 | KIRAMS1.2.5.1.57 | '10년주간보고(2월3주) | 1d? | 2010-02-22 | 2010-02-22 |  |  | 2010-02-22 | 2010-02-22 | 1d? | 153d | start no earlier than 2010-02-22 |  |  |  |
| 171 | KIRAMS1.2.5.1.58 | '10년주간보고(2월4주) | 1d? | 2010-03-01 | 2010-03-01 |  |  | 2010-03-01 | 2010-03-01 | 1d? | 148d | start no earlier than 2010-03-01 |  |  |  |
| 172 | KIRAMS1.2.5.1.59 | '10년주간보고(3월1주) | 1d? | 2010-03-08 | 2010-03-08 |  |  | 2010-03-08 | 2010-03-08 | 1d? | 143d | start no earlier than 2010-03-08 |  |  |  |
| 173 | KIRAMS1.2.5.1.60 | '10년주간보고(3월2주) | 1d? | 2010-03-15 | 2010-03-15 |  |  | 2010-03-15 | 2010-03-15 | 1d? | 138d | start no earlier than 2010-03-15 |  |  |  |
| 174 | KIRAMS1.2.5.1.61 | '10년주간보고(3월3주) | 1d? | 2010-03-22 | 2010-03-22 |  |  | 2010-03-22 | 2010-03-22 | 1d? | 133d | start no earlier than 2010-03-22 |  |  |  |
| 175 | KIRAMS1.2.5.1.62 | '10년주간보고(3월4주) | 1d? | 2010-03-29 | 2010-03-29 |  |  | 2010-03-29 | 2010-03-29 | 1d? | 128d | start no earlier than 2010-03-29 |  |  |  |
| 176 | KIRAMS1.2.5.1.63 | '10년주간보고(4월1주) | 1d? | 2010-04-05 | 2010-04-05 |  |  | 2010-04-05 | 2010-04-05 | 1d? | 123d | start no earlier than 2010-04-05 |  |  |  |
| 177 | KIRAMS1.2.5.1.64 | '10년주간보고(4월2주) | 1d? | 2010-04-12 | 2010-04-12 |  |  | 2010-04-12 | 2010-04-12 | 1d? | 118d | start no earlier than 2010-04-12 |  |  |  |
| 178 | KIRAMS1.2.5.1.65 | '10년주간보고(4월3주) | 1d? | 2010-04-19 | 2010-04-19 |  |  | 2010-04-19 | 2010-04-19 | 1d? | 113d | start no earlier than 2010-04-19 |  |  |  |
| 179 | KIRAMS1.2.5.1.66 | '10년주간보고(4월4주) | 1d? | 2010-04-26 | 2010-04-26 |  |  | 2010-04-26 | 2010-04-26 | 1d? | 108d | start no earlier than 2010-04-26 |  |  |  |
| 180 | KIRAMS1.2.5.1.67 | '10년주간보고(4월5주) | 1d? | 2010-05-03 | 2010-05-03 |  |  | 2010-05-03 | 2010-05-03 | 1d? | 103d | start no earlier than 2010-05-03 |  |  |  |
| 181 | KIRAMS1.2.5.1.68 | '10년주간보고(5월1주) | 1d? | 2010-05-10 | 2010-05-10 |  |  | 2010-05-10 | 2010-05-10 | 1d? | 99d | start no earlier than 2010-05-10 |  |  |  |

| ID | WBS | Task | Duration | Start | Finish | Complete | Remaining | Baseline start | Baseline finish | Baseline duration | Total slack | Constraint |
| --- | --- | --- | --- | --- | --- | --- | --- | --- | --- | --- | --- | --- |
| 182 | KIRAMS1.2.5.1.69 | '10년주간보고(5월2주) | 1d? | 2010-05-17 | 2010-05-17 |  |  | 2010-05-17 | 2010-05-17 | 1d? | 94d | start no earlier than 2010-05-17 |
| 183 | KIRAMS1.2.5.1.70 | '10년주간보고(5월3주) | 1d? | 2010-05-24 | 2010-05-24 |  |  | 2010-05-24 | 2010-05-24 | 1d? | 90d | start no earlier than 2010-05-24 |
| 184 | KIRAMS1.2.5.1.71 | '10년주간보고(5월4주) | 1d? | 2010-05-31 | 2010-05-31 |  |  | 2010-05-31 | 2010-05-31 | 1d? | 85d | start no earlier than 2010-05-31 |
| 185 | KIRAMS1.2.5.1.72 | '10년주간보고(6월1주) | 1d? | 2010-06-07 | 2010-06-07 |  |  | 2010-06-07 | 2010-06-07 | 1d? | 80d | start no earlier than 2010-06-07 |
| 186 | KIRAMS1.2.5.1.73 | '10년주간보고(6월2주) | 1d? | 2010-06-14 | 2010-06-14 |  |  | 2010-06-14 | 2010-06-14 | 1d? | 75d | start no earlier than 2010-06-14 |
| 187 | KIRAMS1.2.5.1.74 | '10년주간보고(6월3주) | 1d? | 2010-06-21 | 2010-06-21 |  |  | 2010-06-21 | 2010-06-21 | 1d? | 70d | start no earlier than 2010-06-21 |
| 188 | KIRAMS1.2.5.1.75 | '10년주간보고(6월4주) | 1d? | 2010-06-28 | 2010-06-28 |  |  | 2010-06-28 | 2010-06-28 | 1d? | 65d | start no earlier than 2010-06-28 |
| 189 | KIRAMS1.2.5.1.76 | '10년주간보고(7월1주) | 1d? | 2010-07-05 | 2010-07-05 |  |  | 2010-07-05 | 2010-07-05 | 1d? | 60d | start no earlier than 2010-07-05 |
| 190 | KIRAMS1.2.5.1.77 | '10년주간보고(7월2주) | 1d? | 2010-07-12 | 2010-07-12 |  |  | 2010-07-12 | 2010-07-12 | 1d? | 55d | start no earlier than 2010-07-12 |
| 191 | KIRAMS1.2.5.1.78 | '10년주간보고(7월3주) | 1d? | 2010-07-19 | 2010-07-19 |  |  | 2010-07-19 | 2010-07-19 | 1d? | 50d | start no earlier than 2010-07-19 |
| 192 | KIRAMS1.2.5.1.79 | '10년주간보고(7월4주) | 1d? | 2010-07-26 | 2010-07-26 |  |  | 2010-07-26 | 2010-07-26 | 1d? | 45d | start no earlier than 2010-07-26 |
| 193 | KIRAMS1.2.5.1.80 | '10년주간보고(7월5주) | 1d? | 2010-08-02 | 2010-08-02 |  |  | 2010-08-02 | 2010-08-02 | 1d? | 40d | start no earlier than 2010-08-02 |
| 194 | KIRAMS1.2.5.1.81 | '10년주간보고(8월1주) | 1d? | 2010-08-09 | 2010-08-09 |  |  | 2010-08-09 | 2010-08-09 | 1d? | 35d | start no earlier than 2010-08-09 |
| 195 | KIRAMS1.2.5.1.82 | '10년주간보고(8월2주) | 1d? | 2010-08-16 | 2010-08-16 |  |  | 2010-08-16 | 2010-08-16 | 1d? | 30d | start no earlier than 2010-08-16 |
| 196 | KIRAMS1.2.5.1.83 | '10년주간보고(8월3주) | 1d? | 2010-08-23 | 2010-08-23 |  |  | 2010-08-23 | 2010-08-23 | 1d? | 25d | start no earlier than 2010-08-23 |
| 197 | KIRAMS1.2.5.1.84 | '10년주간보고(8월4주) | 1d? | 2010-08-30 | 2010-08-30 |  |  | 2010-08-30 | 2010-08-30 | 1d? | 20d | start no earlier than 2010-08-30 |
| 198 | KIRAMS1.2.5.1.85 | '10년주간보고(9월1주) | 1d? | 2010-09-06 | 2010-09-06 |  |  | 2010-09-06 | 2010-09-06 | 1d? | 15d | start no earlier than 2010-09-06 |
| 199 | KIRAMS1.2.5.1.86 | '10년주간보고(9월2주) | 1d? | 2010-09-13 | 2010-09-13 |  |  | 2010-09-13 | 2010-09-13 | 1d? | 10d | start no earlier than 2010-09-13 |
| 200 | KIRAMS1.2.5.1.87 | '10년주간보고(9월3주) | 1d? | 2010-09-20 | 2010-09-20 |  |  | 2010-09-20 | 2010-09-20 | 1d? | 5d | start no earlier than 2010-09-20 |
| 201 | KIRAMS1.2.5.1.88 | '10년주간보고(9월4주) | 1d? | 2010-09-27 | 2010-09-27 |  |  | 2010-09-27 | 2010-09-27 | 1d? | 3d | start no earlier than 2010-09-27 |
| 202 | KIRAMS1.2.5.1.89 | '10년주간보고(9월5주) | 1d? | 2010-09-30 | 2010-09-30 |  |  | 2010-09-30 | 2010-09-30 | 1d? | 0d | start no earlier than 2010-09-30 |
| 203 | KIRAMS1.2.5.2 | **월간보고** | 423d | 2009-02-02 A | 2010-09-27 | 10% | 382.71d | 2009-02-02 | 2010-09-27 | 423d | 3d |  |
| 204 | KIRAMS1.2.5.2.1 | 월간보고 1('09.01) | 1d | 2009-02-02 A | 2009-02-02 A | 100% |  | 2009-02-02 | 2009-02-02 | 1d |  | start no earlier than 2009-02-02 |
| 205 | KIRAMS1.2.5.2.2 | 월간보고 2('09.02) | 1d | 2009-03-02 A | 2009-03-02 A | 100% |  | 2009-03-02 | 2009-03-02 | 1d |  | start no earlier than 2009-03-02 |
| 206 | KIRAMS1.2.5.2.3 | 월간보고 3('09.03) | 1d | 2009-03-30 | 2009-03-30 |  |  | 2009-03-30 | 2009-03-30 | 1d | 385d | start no earlier than 2009-03-30 |
| 207 | KIRAMS1.2.5.2.4 | 월간보고 4('09.04) | 1d | 2009-05-01 | 2009-05-01 |  |  | 2009-05-01 | 2009-05-01 | 1d | 361d | start no earlier than 2009-05-01 |
| 208 | KIRAMS1.2.5.2.5 | 월간보고 5('09.05) | 1d | 2009-06-01 | 2009-06-01 |  |  | 2009-06-01 | 2009-06-01 | 1d | 341d | start no earlier than 2009-06-01 |
| 209 | KIRAMS1.2.5.2.6 | 월간보고 6('09.06) | 1d | 2009-06-29 | 2009-06-29 |  |  | 2009-06-29 | 2009-06-29 | 1d | 321d | start no earlier than 2009-06-29 |
| 210 | KIRAMS1.2.5.2.7 | 월간보고 7('09.07) | 1d | 2009-08-03 | 2009-08-03 |  |  | 2009-08-03 | 2009-08-03 | 1d | 296d | start no earlier than 2009-08-03 |
| 211 | KIRAMS1.2.5.2.8 | 월간보고 8('09.08) | 1d | 2009-08-31 | 2009-08-31 |  |  | 2009-08-31 | 2009-08-31 | 1d | 276d | start no earlier than 2009-08-31 |
| 212 | KIRAMS1.2.5.2.9 | 월간보고 9('09.09) | 1d | 2009-09-28 | 2009-09-28 |  |  | 2009-09-28 | 2009-09-28 | 1d | 256d | start no earlier than 2009-09-28 |
| 213 | KIRAMS1.2.5.2.10 | 월간보고 10('09.10) | 1d | 2009-11-02 | 2009-11-02 |  |  | 2009-11-02 | 2009-11-02 | 1d | 232d | start no earlier than 2009-11-02 |
| 214 | KIRAMS1.2.5.2.11 | 월간보고 11('09.11) | 1d | 2009-11-30 | 2009-11-30 |  |  | 2009-11-30 | 2009-11-30 | 1d | 212d | start no earlier than 2009-11-30 |
| 215 | KIRAMS1.2.5.2.12 | 월간보고 12('09.12) | 1d | 2009-12-28 | 2009-12-28 |  |  | 2009-12-28 | 2009-12-28 | 1d | 193d | start no earlier than 2009-12-25 |
| 216 | KIRAMS1.2.5.2.13 | 월간보고 13('10.01) | 1d | 2010-02-01 | 2010-02-01 |  |  | 2010-02-01 | 2010-02-01 | 1d | 167d | start no earlier than 2010-02-01 |
| 217 | KIRAMS1.2.5.2.14 | 월간보고 14('10.02) | 1d | 2010-03-01 | 2010-03-01 |  |  | 2010-03-01 | 2010-03-01 | 1d | 148d | start no earlier than 2010-03-01 |
| 218 | KIRAMS1.2.5.2.15 | 월간보고 15('10.03) | 1d | 2010-03-29 | 2010-03-29 |  |  | 2010-03-29 | 2010-03-29 | 1d | 128d | start no earlier than 2010-03-29 |
| 219 | KIRAMS1.2.5.2.16 | 월간보고 16('10.04) | 1d | 2010-05-03 | 2010-05-03 |  |  | 2010-05-03 | 2010-05-03 | 1d | 103d | start no earlier than 2010-05-03 |
| 220 | KIRAMS1.2.5.2.17 | 월간보고 17('10.05) | 1d | 2010-05-31 | 2010-05-31 |  |  | 2010-05-31 | 2010-05-31 | 1d | 85d | start no earlier than 2010-05-31 |
| 221 | KIRAMS1.2.5.2.18 | 월간보고 18('10.06) | 1d | 2010-06-28 | 2010-06-28 |  |  | 2010-06-28 | 2010-06-28 | 1d | 65d | start no earlier than 2010-06-28 |
| 222 | KIRAMS1.2.5.2.19 | 월간보고 19('10.07) | 1d | 2010-08-02 | 2010-08-02 |  |  | 2010-08-02 | 2010-08-02 | 1d | 40d | start no earlier than 2010-08-02 |
| 223 | KIRAMS1.2.5.2.20 | 월간보고 20('10.08) | 1d | 2010-08-30 | 2010-08-30 |  |  | 2010-08-30 | 2010-08-30 | 1d | 20d | start no earlier than 2010-08-30 |
| 224 | KIRAMS1.2.5.2.21 | 월간보고 21('10.09) | 1d | 2010-09-27 | 2010-09-27 |  |  | 2010-09-27 | 2010-09-27 | 1d | 3d | start no earlier than 2010-09-27 |

| ID | WBS | Task | Duration | Start | Finish | Predecessors | Complete | Remaining | Baseline start | Baseline finish | Baseline duration | Total slack | Free slack | Constraint | Text20 | Text25 | Text26 | 산출물 |
| --- | --- | --- | --- | --- | --- | --- | --- | --- | --- | --- | --- | --- | --- | --- | --- | --- | --- | --- |
| 225 | KIRAMS1.2.5.3 | **착수보고** | 30d | 2009-01-22 A | 2009-03-06 A |  | 100% |  | 2009-01-22 | 2009-03-06 | 30d |  |  |  | 착수점검 실시 | 07060716O410050 | C07-1 1.1.3.2 |  |
| 226 | KIRAMS1.2.5.3.1 | 프로젝트 착수보고준비 | 4d | 2009-01-22 A | 2009-01-29 A |  | 100% |  | 2009-01-22 | 2009-01-29 | 4d |  |  | finish no earlier than 2009-01-29 | 프로젝트 착수보고 | 07060716O410050 | C07-1 1.1.3.3 |  |
| 227 | KIRAMS1.2.5.3.2 | 프로젝트 착수보고 | 1d | 2009-01-30 A | 2009-01-30 A | 226 | 100% |  | 2009-01-30 | 2009-01-30 | 1d |  |  |  | 프로젝트 착수보고 | 07060716O410050 | C07-1 1.1.3.3 | 착수보고서 |
| 228 | KIRAMS1.2.5.3.3 | 실무지원T/F 착수 및 설명회 | 3d | 2009-03-04 A | 2009-03-06 A |  | 100% |  | 2009-03-04 | 2009-03-06 | 3d |  |  |  | 프로젝트 착수보고 | 07060716O410050 | C07-1 1.1.3.3 | 실무지원 T/F팀 착수설명회 |
| 229 | KIRAMS1.2.5.4 | 분석/설계완료보고 | 5d | 2009-06-08 | 2009-06-12 |  |  |  | 2009-06-08 | 2009-06-12 | 5d | 332d |  | start no earlier than 2009-06-08 | 착수준비 | 07061114O410024 | C07-1 1.1.1 |  |
| 230 | KIRAMS1.2.5.5 | 개발완료보고(이행준비보고 포함) | 5d | 2009-11-16 | 2009-11-20 |  |  |  | 2009-11-16 | 2009-11-20 | 5d | 218d |  | start no earlier than 2009-11-16 | 착수준비 | 07061114O410024 | C07-1 1.1.1 | 이행계획서 |
| 231 | KIRAMS1.2.5.6 | 종료보고 | 5d | 2010-09-24 | 2010-09-30 |  |  |  | 2010-09-24 | 2010-09-30 | 5d | 0d |  | start no earlier than 2010-09-24 | 착수준비 | 07061114O410024 | C07-1 1.1.1 |  |
| 232 | KIRAMS1.2.6 | **제품관리활동** | 360d | 2009-01-12 A | 2010-06-08 |  | 16% | 302.05d | 2009-01-12 | 2010-04-16 | 325d | 79d |  |  | 프로젝트 착수 | 07061114O410023 | C07-1 1.1 |  |
| 233 | KIRAMS1.2.6.1 | **본원(서울) 제품발주관리** | 289d | 2009-01-12 A | 2010-02-25 |  | 19% | 234.03d | 2009-01-12 | 2010-01-15 | 261d | 150d |  |  | 착수준비 | 07061114O410024 | C07-1 1.1.1 | 과업수행계획서 |
| 234 | KIRAMS1.2.6.1.1 | 제품견적확인 및 발주준비 | 58d | 2009-01-12 A | 2009-04-03 |  | 85% | 8.7d | 2009-01-12 | 2009-02-13 | 23d | 150d | 0d | finish no earlier than 2009-04-03 | 착수준비 | 07061114O410024 | C07-1 1.1.1 | 과업수행계획서 |
| 235 | KIRAMS1.2.6.1.2 | 제품발주 | 140d | 2009-03-09 A | 2009-10-09 | 234 | 5% | 133d | 2009-02-16 | 2009-08-31 | 140d | 150d | 0d | start no earlier than 2009-02-16 | 착수준비 | 07061114O410024 | C07-1 1.1.1 |  |
| 236 | KIRAMS1.2.6.1.3 | 제품납품 확인 및 검사 | 68d | 2009-10-12 | 2010-01-13 | 235 |  |  | 2009-09-01 | 2009-12-04 | 68d | 150d | 0d | finish no earlier than 2009-12-04 | 착수준비 | 07061114O410024 | C07-1 1.1.1 | 납품확인서 |
| 237 | KIRAMS1.2.6.1.3 | 제품검수 | 30d | 2010-01-14 | 2010-02-25 | 236 |  |  | 2009-12-07 | 2010-01-15 | 30d | 150d |  | start no earlier than 2009-12-07 | 착수준비 | 07061114O410024 | C07-1 1.1.1 | 검수확인서 |
| 238 | KIRAMS1.2.6.2 | **분원(동남권) 제품발주관리** | 360d | 2009-01-12 A | 2010-06-08 |  | 14% | 310.7d | 2009-01-12 | 2010-04-16 | 325d | 79d |  |  | 착수준비 | 07061114O410024 | C07-1 1.1.1 | 과업수행계획서 |
| 239 | KIRAMS1.2.6.2.1 | 제품견적확인 및 발주준비 | 58d | 2009-01-12 A | 2009-04-03 |  | 85% | 8.7d | 2009-01-12 | 2009-02-13 | 23d | 79d | 0d | finish no earlier than 2009-04-03 | 착수준비 | 07061114O410024 | C07-1 1.1.1 |  |
| 240 | KIRAMS1.2.6.2.2 | 제품발주 | 183d | 2009-04-06 | 2009-12-18 | 239 |  |  | 2009-02-16 | 2009-10-30 | 183d | 79d | 0d | finish no earlier than 2009-10-30 | 착수준비 | 07061114O410024 | C07-1 1.1.1 | 제품검사결과서 |
| 241 | KIRAMS1.2.6.2.3 | 제품납품 확인 및 검사 | 94d | 2009-12-21 | 2010-04-30 | 240 |  |  | 2009-11-02 | 2010-03-12 | 94d | 79d | 0d | finish no earlier than 2010-03-12 | 착수준비 | 07061114O410024 | C07-1 1.1.1 | 제품검사시정조치서 |
| 242 | KIRAMS1.2.6.2.3 | 제품검수 | 25d | 2010-05-03 | 2010-06-08 | 241 |  |  | 2010-03-15 | 2010-04-16 | 25d | 79d |  | start no earlier than 2010-03-15 | 착수준비 | 07061114O410024 | C07-1 1.1.1 | 제품검사시정조치서 |
| 243 | KIRAMS1.2.8 | **협력업체협업** | 15d | 2010-08-02 | 2010-08-20 |  |  |  | 2010-08-02 | 2010-08-20 | 15d | 26d |  |  | 협력업체협업활동 수행 | 07060716O410073 | C07-1 1.8.6 |  |
| 244 | KIRAMS1.2.8.1 | 협력업체 성과검토 | 10d | 2010-08-02 | 2010-08-13 |  |  |  | 2010-08-02 | 2010-08-13 | 10d | 26d | 0d | start no earlier than 2010-08-02 | 협력업체 성과검토 | 07060716O410073 | C07-1 1.8.6.1 | 업체업무성과(월간),업체업무성과(주간) |
| 245 | KIRAMS1.2.8.2 | 협력업체 최종검수 | 5d | 2010-08-16 | 2010-08-20 | 244 |  |  | 2010-08-16 | 2010-08-20 | 5d | 26d |  |  | 협력업체 단계검수 | 07060716O410073 | C07-1 1.8.6.2 | 단계검수체크리스트(결과),시정조치서,업체산출물검수확인서 |
| 246 | KIRAMS1.2.9 | **성과통제** | 312d | 2009-02-02 A | 2010-04-16 |  | 12% | 274.4d | 2009-02-02 | 2010-04-16 | 312d | 114d |  |  | 성과통제 | 07060716O410076 | C07-1 1.8.7 |  |
| 247 | KIRAMS1.2.9.1 | **요구사항정의 및 분석 단계** | 42d | 2009-02-02 A | 2009-03-31 |  | 95% | 1.91d | 2009-02-02 | 2009-03-31 | 42d | 384d |  |  |  |  |  |  |
| 248 | KIRAMS1.2.9.1.1 | 변경관리 | 35d | 2009-02-02 A | 2009-03-20 A |  | 100% |  | 2009-02-02 | 2009-03-20 | 35d |  |  | finish no earlier than 2009-03-20 | 변경관리 | 07060716O410076 | C07-1 1.8.7.1 | 변경요청목록,변경요청서,요구사항추적표 |
| 249 | KIRAMS1.2.9.1.2 | 이슈 및 위험관리 | 35d | 2009-02-02 A | 2009-03-20 A |  | 100% |  | 2009-02-02 | 2009-03-20 | 35d |  |  | finish no earlier than 2009-03-20 | 이슈 및 위험관리 | 07060716O410076 | C07-1 1.8.7.2 | 이슈 및 위험목록 |
| 250 | KIRAMS1.2.9.1.3 | 성과측정 및 보고 | 7d | 2009-03-23 A | 2009-03-31 |  | 50% | 3.5d | 2009-03-23 | 2009-03-31 | 7d | 384d |  | finish no earlier than 2009-03-31 | 성과측정 및 보고 | 07060716O410076 | C07-1 1.8.7.3 | 성과보고서(주/월간),실행항목 |

| ID | WBS | Task | Duration | Start | Finish | Predecessors | Complete | Remaining | Baseline start | Baseline finish | Baseline duration | Total slack | Free slack | Constraint | Text20 | Text25 | Text26 | 산출물 |
| --- | --- | --- | --- | --- | --- | --- | --- | --- | --- | --- | --- | --- | --- | --- | --- | --- | --- | --- |
| 251 | KIRAMS1.2.9.2 | **설계 단계** | 53d | 2009-03-23 A | 2009-06-04 |  | 2% | 51.78d | 2009-03-23 | 2009-06-04 | 53d | 338d |  |  |  |  |  |  |
| 252 | KIRAMS1.2.9.2.1 | 변경관리 | 39d | 2009-03-23 A | 2009-05-15 |  | 5% | 37.05d | 2009-03-23 | 2009-05-15 | 39d | 352d |  | finish no earlier than 2009-05-15 | 변경관리 | 07060716O410076 | C07-1 1.8.7.1 | 변경요청목록,변경요청서,요구사항추적표 |
| 253 | KIRAMS1.2.9.2.2 | 이슈 및 위험관리 | 37d | 2009-04-01 | 2009-05-22 |  |  |  | 2009-04-01 | 2009-05-22 | 37d | 338d | 0d | finish no earlier than 2009-05-22 | 이슈 및 위험관리 | 07060716O410076 | C07-1 1.8.7.2 | 이슈 및 위험목록 |
| 254 | KIRAMS1.2.9.2.3 | 성과측정 및 보고 | 9d | 2009-05-25 | 2009-06-04 | 253 |  |  | 2009-05-25 | 2009-06-04 | 9d | 338d |  | finish no earlier than 2009-05-29 | 성과측정 및 보고 | 07060716O410076 | C07-1 1.8.7.3 | 성과보고서(주/월간),실행항목 |
| 255 | KIRAMS1.2.9.3 | **개발 단계** | 107d | 2009-05-18 | 2009-10-14 |  |  |  | 2009-05-18 | 2009-10-14 | 107d | 245d |  |  |  |  |  |  |
| 256 | KIRAMS1.2.9.3.1 | 변경관리 | 98d | 2009-05-18 | 2009-09-30 |  |  |  | 2009-05-18 | 2009-09-30 | 98d | 254d |  | start no earlier than 2009-05-18 | 변경관리 | 07060716O410076 | C07-1 1.8.7.1 | 변경요청목록,변경요청서,요구사항추적표 |
| 257 | KIRAMS1.2.9.3.2 | 이슈 및 위험관리 | 97d | 2009-05-25 | 2009-10-07 |  |  |  | 2009-05-25 | 2009-10-07 | 97d | 245d | 0d | finish no earlier than 2009-10-07 | 이슈 및 위험관리 | 07060716O410076 | C07-1 1.8.7.2 | 이슈 및 위험목록 |
| 258 | KIRAMS1.2.9.3.3 | 성과측정 및 보고 | 5d | 2009-10-08 | 2009-10-14 | 257 |  |  | 2009-10-08 | 2009-10-14 | 5d | 245d |  |  | 성과측정 및 보고 | 07060716O410076 | C07-1 1.8.7.3 | 성과보고서(주/월간),실행항목 |
| 259 | KIRAMS1.2.9.4 | **이행 단계** | 140d | 2009-10-01 | 2010-04-16 |  |  |  | 2009-10-01 | 2010-04-16 | 140d | 114d |  |  |  |  |  |  |
| 260 | KIRAMS1.2.9.4.1 | 변경관리 | 128d | 2009-10-01 | 2010-03-31 |  |  |  | 2009-10-01 | 2010-03-31 | 128d | 126d |  | start no earlier than 2009-10-01 | 변경관리 | 07060716O410076 | C07-1 1.8.7.1 | 변경요청목록,변경요청서,요구사항추적표 |
| 261 | KIRAMS1.2.9.4.2 | 이슈 및 위험관리 | 131d | 2009-10-08 | 2010-04-09 |  |  |  | 2009-10-08 | 2010-04-09 | 131d | 114d | 0d | finish no earlier than 2010-04-09 | 이슈 및 위험관리 | 07060716O410076 | C07-1 1.8.7.2 | 이슈 및 위험목록 |
| 262 | KIRAMS1.2.9.4.3 | 성과측정 및 보고 | 5d | 2010-04-12 | 2010-04-16 | 261 |  |  | 2010-04-12 | 2010-04-16 | 5d | 114d |  |  | 성과측정 및 보고 | 07060716O410076 | C07-1 1.8.7.3 | 성과보고서(주/월간),실행항목 |
| 263 | KIRAMS1.2.10 | **단계검토완료(분석/설계)** | 39d | 2009-03-23 A | 2009-05-15 |  | 25% | 29.25d | 2009-03-23 | 2009-05-15 | 39d | 352d |  |  |  |  |  |  |
| 264 | KIRAMS1.2.10.1 | **요구사항정의 및 분석단계완료** | 10d | 2009-03-23 A | 2009-04-03 |  | 33% | 6.67d | 2009-03-23 | 2009-04-03 | 10d | 381d |  |  | 단계완료 | 07060716O410080 | C07-1 1.8.8 |  |
| 265 | KIRAMS1.2.10.1.1 | 고객검토 실시 | 10d | 2009-03-23 A | 2009-04-03 |  | 50% | 5d | 2009-03-23 | 2009-04-03 | 10d | 381d |  | start no earlier than 2009-03-23 | 고객검토 실시 | 07060716O410080 | C07-1 1.8.8.2 | 고객검토결과 |
| 266 | KIRAMS1.2.10.1.2 | 고객승인 획득 | 5d | 2009-03-30 | 2009-04-03 |  |  |  | 2009-03-30 | 2009-04-03 | 5d | 381d |  | start no earlier than 2009-03-30 | 고객승인 획득 | 07060716O410080 | C07-1 1.8.8.3 | 고객인수확인서,시정조치서 |
| 267 | KIRAMS1.2.10.2 | **설계단계완료** | 5d | 2009-05-11 | 2009-05-15 |  |  |  | 2009-05-11 | 2009-05-15 | 5d | 352d |  |  | 단계완료 | 07060716O410080 | C07-1 1.8.8 |  |
| 268 | KIRAMS1.2.10.2.1 | 고객검토 실시 | 2d | 2009-05-11 | 2009-05-12 |  |  |  | 2009-05-11 | 2009-05-12 | 2d | 355d |  | finish no earlier than 2009-05-12 | 고객검토 실시 | 07060716O410080 | C07-1 1.8.8.2 | 고객검토결과 |
| 269 | KIRAMS1.2.10.2.2 | 고객승인 획득 | 3d | 2009-05-13 | 2009-05-15 |  |  |  | 2009-05-13 | 2009-05-15 | 3d | 352d |  | start no earlier than 2009-05-13 | 고객승인 획득 | 07060716O410080 | C07-1 1.8.8.3 | 고객인수확인서,시정조치서 |
| 270 | KIRAMS1.3 | **감리수행** | 330d? | 2009-02-16 A | 2010-05-28 |  | 32% | 222.79d? | 2009-02-16 | 2010-05-28 | 330d? | 86d |  |  | 프로젝트 착수 | 07061114O410023 | C07-1 1.1 | 감리계획서, 조치계획서, 조치결과서 |
| 271 | KIRAMS1.3.1 | **착수 감리 실시** | 25.5d | 2009-02-16 A | 2009-03-23 |  | 92% | 2.16d | 2009-02-16 | 2009-03-23 | 25.5d | 390.5d |  |  | 착수준비 | 07061114O410024 | C07-1 1.1.1 | 감리시정조치결과서 |
| 272 | KIRAMS1.3.1.1 | 착수감리실시 | 4d | 2009-02-16 A | 2009-02-19 A |  | 100% |  | 2009-02-16 | 2009-02-19 | 4d |  |  | start no earlier than 2009-02-16 | 착수준비 | 07061114O410024 | C07-1 1.1.1 | 감리계획서 |
| 273 | KIRAMS1.3.1.2 | 감리조치계획 | 11d | 2009-02-20 A | 2009-03-06 A | 272 | 100% |  | 2009-02-20 | 2009-03-06 | 11d |  |  |  | 착수준비 | 07061114O410024 | C07-1 1.1.1 | 조치계획서 |
| 274 | KIRAMS1.3.1.3 | 감리조치활동 | 19.5d | 2009-02-24 A | 2009-03-23 | 273 | 85% | 2.92d | 2009-02-24 | 2009-03-23 | 19.5d | 390.5d |  |  | 착수준비 | 07061114O410024 | C07-1 1.1.1 | 감리시정조치결과서 |
| 275 | KIRAMS1.3.2 | 착수 사내감리 실시 | 4d | 2009-03-16 A | 2009-03-19 A |  | 100% |  | 2009-03-16 | 2009-03-20 | 5d |  |  | start no earlier than 2009-03-16 |  |  |  | 감리시정조치결과서 |

| ID | WBS | Task | Type | Duration | Start | Finish | Predecessors | Complete | Remaining | Baseline start | Baseline finish | Baseline duration | Total slack | Free slack | Constraint | Text20 | Text25 | Text26 | 산출물 |
| --- | --- | --- | --- | --- | --- | --- | --- | --- | --- | --- | --- | --- | --- | --- | --- | --- | --- | --- | --- |
| 276 | KIRAMS1.3.3 | **설계 감리 실시** |  | 22d | 2009-05-18 | 2009-06-16 |  |  |  | 2009-05-18 | 2009-06-16 | 22d | 330d |  |  | 착수준비 | 07061114O410024 | C07-1 1.1.1 | 감리시정조치결과서 |
| 277 | KIRAMS1.3.3.1 | 설계감리실시 |  | 6d | 2009-05-18 | 2009-05-25 |  |  |  | 2009-05-18 | 2009-05-25 | 6d | 330d | 0d | start no earlier than 2009-05-18 | 착수준비 | 07061114O410024 | C07-1 1.1.1 | 감리계획서 |
| 278 | KIRAMS1.3.3.2 | 감리조치계획 |  | 2d | 2009-05-26 | 2009-05-27 | 277 |  |  | 2009-05-26 | 2009-05-27 | 2d | 330d | 0d |  | 착수준비 | 07061114O410024 | C07-1 1.1.1 | 조치계획서 |
| 279 | KIRAMS1.3.3.3 | 감리시정조치 |  | 14d | 2009-05-28 | 2009-06-16 | 278 |  |  | 2009-05-28 | 2009-06-16 | 14d | 330d |  |  | 착수준비 | 07061114O410024 | C07-1 1.1.1 | 감리시정조치결과서 |
| 280 | KIRAMS1.3.4 | 설계 사내감리 실시 |  | 4d? | 2009-05-04 | 2009-05-08 |  |  |  | 2009-05-04 | 2009-05-08 | 4d? | 357d |  | finish no earlier than 2009-05-08 |  |  |  | 감리시정조치결과서 |
| 281 | KIRAMS1.3.5 | **본원 감리 실시** |  | 22d | 2010-01-25 | 2010-02-24 |  |  |  | 2010-01-25 | 2010-02-24 | 22d | 151d |  |  | 착수준비 | 07061114O410024 | C07-1 1.1.1 | 감리시정조치결과서 |
| 282 | KIRAMS1.3.5.1 | 본원감리실시 |  | 6d | 2010-01-25 | 2010-02-01 |  |  |  | 2010-01-25 | 2010-02-01 | 6d | 151d | 0d | start no earlier than 2010-01-25 | 착수준비 | 07061114O410024 | C07-1 1.1.1 | 감리계획서 |
| 283 | KIRAMS1.3.5.2 | 감리조치계획 |  | 2d | 2010-02-02 | 2010-02-03 | 282 |  |  | 2010-02-02 | 2010-02-03 | 2d | 151d | 0d |  | 착수준비 | 07061114O410024 | C07-1 1.1.1 | 조치계획서 |
| 284 | KIRAMS1.3.5.3 | 감리시정조치 |  | 14d | 2010-02-04 | 2010-02-24 | 283 |  |  | 2010-02-04 | 2010-02-24 | 14d | 151d |  |  | 착수준비 | 07061114O410024 | C07-1 1.1.1 | 감리시정조치결과서 |
| 285 | KIRAMS1.3.6 | **분원 감리 실시** |  | 23d | 2010-04-26 | 2010-05-28 |  |  |  | 2010-04-26 | 2010-05-28 | 23d | 86d |  |  | 착수준비 | 07061114O410024 | C07-1 1.1.1 | 감리시정조치결과서 |
| 286 | KIRAMS1.3.6.1 | 본원감리실시 |  | 7d | 2010-04-26 | 2010-05-04 |  |  |  | 2010-04-26 | 2010-05-04 | 7d | 86d | 0d | start no earlier than 2010-04-26 | 착수준비 | 07061114O410024 | C07-1 1.1.1 | 감리계획서 |
| 287 | KIRAMS1.3.6.2 | 감리조치계획 |  | 2d | 2010-05-06 | 2010-05-07 | 286 |  |  | 2010-05-06 | 2010-05-07 | 2d | 86d | 0d |  | 착수준비 | 07061114O410024 | C07-1 1.1.1 | 조치계획서 |
| 288 | KIRAMS1.3.6.3 | 감리시정조치 |  | 14d | 2010-05-10 | 2010-05-28 | 287 |  |  | 2010-05-10 | 2010-05-28 | 14d | 86d |  |  | 착수준비 | 07061114O410024 | C07-1 1.1.1 | 감리시정조치결과서 |
| 289 | KIRAMS1.4 | **마일스톤(Milestone)** |  | 448d | 2008-12-29 A | 2010-09-30 |  | 29% | 320d | 2008-12-29 | 2010-09-30 | 448d | 0d |  |  |  |  |  |  |
| 290 | KIRAMS1.4.1 | 착수 | milestone | 1d | 2008-12-29 A | 2008-12-29 A |  | 100% |  | 2008-12-29 | 2008-12-29 | 1d |  |  |  |  |  |  |  |
| 291 | KIRAMS1.4.2 | 분석마감 | milestone | 1d | 2009-03-20 A | 2009-03-20 A |  | 100% |  | 2009-03-20 | 2009-03-20 | 1d |  |  | start no earlier than 2009-03-20 |  |  |  |  |
| 292 | KIRAMS1.4.3 | 설계마감 | milestone | 1d | 2009-05-15 | 2009-05-15 |  |  |  | 2009-05-15 | 2009-05-15 | 1d | 352d |  | start no earlier than 2009-05-15 |  |  |  |  |
| 293 | KIRAMS1.4.4 | 개발마감 | milestone | 1d | 2009-09-30 | 2009-09-30 |  |  |  | 2009-09-30 | 2009-09-30 | 1d | 254d |  | start no earlier than 2009-09-30 |  |  |  |  |
| 294 | KIRAMS1.4.5 | 본원오픈 | milestone | 1d | 2010-01-01 | 2010-01-01 |  |  |  | 2010-01-01 | 2010-01-01 | 1d | 189d |  | start no earlier than 2010-01-01 |  |  |  |  |
| 295 | KIRAMS1.4.6 | 분원(동남권)오픈 | milestone | 1d | 2010-04-01 | 2010-04-01 |  |  |  | 2010-04-01 | 2010-04-01 | 1d | 125d |  | start no earlier than 2010-04-01 |  |  |  |  |
| 296 | KIRAMS1.4.7 | 사업종료 | milestone | 1d | 2010-09-30 | 2010-09-30 |  |  |  | 2010-09-30 | 2010-09-30 | 1d | 0d |  | start no earlier than 2010-09-30 |  |  |  |  |
| 297 | KIRAMS1.5 | **프로젝트 종료** |  | 183d | 2010-01-11 | 2010-09-30 |  |  |  | 2010-01-11 | 2010-09-30 | 183d | 0d |  |  | 프로젝트 종료 | 07060716O410086 | C07-1 1.9 |  |
| 298 | KIRAMS1.5.1 | **종료계획 수립** |  | 10d | 2010-08-23 | 2010-09-03 |  |  |  | 2010-08-23 | 2010-09-03 | 10d | 16d |  |  | 종료계획 수립 | 07060716O410087 | C07-1 1.9.1 |  |
| 299 | KIRAMS1.5.1.1 | 종료계획 수립 |  | 10d | 2010-08-23 | 2010-09-03 |  |  |  | 2010-08-23 | 2010-09-03 | 10d | 16d |  | start no earlier than 2010-08-23 | 종료계획 수립 | 07060716O410087 | C07-1 1.9.1.1 | 종료계획서 |

| ID | WBS | Task | Duration | Start | Finish | Predecessors | Baseline start | Baseline finish | Baseline duration | Total slack | Free slack | Constraint | Text20 | Text25 | Text26 | 산출물 |
| --- | --- | --- | --- | --- | --- | --- | --- | --- | --- | --- | --- | --- | --- | --- | --- | --- |
| 300 | KIRAMS1.5.2 | **시스템 인수인계** | 79d | 2010-01-18 | 2010-05-10 |  | 2010-01-18 | 2010-05-10 | 79d | 99d |  |  | 시스템 인수인계 | 07060716O410089 | C07-1 1.9.2 |  |
| 301 | KIRAMS1.5.2.1 | **본원(서울) 시스템 인수인계** | 20d | 2010-01-18 | 2010-02-12 |  | 2010-01-18 | 2010-02-12 | 20d | 158d |  |  | 시스템인수인계계획 수립 | 07060716O410089 | C07-1 1.9.2.1 | 시스템인수인계계획서 |
| 302 | KIRAMS1.5.2.1.1 | 시스템인수인계계획 수립 | 5d | 2010-01-18 | 2010-01-22 |  | 2010-01-18 | 2010-01-22 | 5d | 158d | 0d | start no earlier than 2010-01-18 | 시스템인수인계계획 수립 | 07060716O410089 | C07-1 1.9.2.1 | 시스템인수인계계획서 |
| 303 | KIRAMS1.5.2.1.2 | 시스템인수인계 실시 | 15d | 2010-01-25 | 2010-02-12 | 302 | 2010-01-25 | 2010-02-12 | 15d | 158d |  |  | 시스템인수인계 실시 | 07060716O410089 | C07-1 1.9.2.2 | 시스템인수인계서 |
| 304 | KIRAMS1.5.2.2 | **분원(동남권) 시스템 인수인계** | 20d | 2010-04-12 | 2010-05-10 |  | 2010-04-12 | 2010-05-10 | 20d | 99d |  |  | 시스템인수인계계획 수립 | 07060716O410089 | C07-1 1.9.2.1 | 시스템인수인계계획서 |
| 305 | KIRAMS1.5.2.2.1 | 시스템인수인계계획 수립 | 5d | 2010-04-12 | 2010-04-16 |  | 2010-04-12 | 2010-04-16 | 5d | 99d | 0d | start no earlier than 2010-04-12 | 시스템인수인계계획 수립 | 07060716O410089 | C07-1 1.9.2.1 | 시스템인수인계계획서 |
| 306 | KIRAMS1.5.2.2.2 | 시스템인수인계 실시 | 15d | 2010-04-19 | 2010-05-10 | 305 | 2010-04-19 | 2010-05-10 | 15d | 99d |  |  | 시스템인수인계 실시 | 07060716O410089 | C07-1 1.9.2.2 | 시스템인수인계서 |
| 307 | KIRAMS1.5.3 | **최종고객 검수** | 183d | 2010-01-11 | 2010-09-30 |  | 2010-01-11 | 2010-09-30 | 183d | 0d |  |  | 최종고객 검수 | 07060716O410092 | C07-1 1.9.3 |  |
| 308 | KIRAMS1.5.3.1 | **본원 검수(1차 중간검수)** | 15d | 2010-01-11 | 2010-01-29 |  | 2010-01-11 | 2010-01-29 | 15d | 168d |  |  | 협력업체 최종검수 및 평가 | 07060716O410092 | C07-1 1.9.3.2 |  |
| 309 | KIRAMS1.5.3.1.1 | 본원 검수 요청 | 5d | 2010-01-11 | 2010-01-15 |  | 2010-01-11 | 2010-01-15 | 5d | 168d | 0d | start no earlier than 2010-01-11 | 협력업체 최종검수 및 평가 | 07060716O410092 | C07-1 1.9.3.2 | 검수요청서 |
| 310 | KIRAMS1.5.3.1.2 | 본원 검수 실시 | 5d | 2010-01-18 | 2010-01-22 | 309 | 2010-01-18 | 2010-01-22 | 5d | 168d | 0d |  | 협력업체 최종검수 및 평가 | 07060716O410092 | C07-1 1.9.3.2 |  |
| 311 | KIRAMS1.5.3.1.3 | 본원 검수 승인 | 5d | 2010-01-25 | 2010-01-29 | 310 | 2010-01-25 | 2010-01-29 | 5d | 168d |  |  | 협력업체 최종검수 및 평가 | 07060716O410092 | C07-1 1.9.3.2 | 검수확인서 |
| 312 | KIRAMS1.5.3.2 | **분원 검수(2차 중간검수)** | 14d | 2010-04-13 | 2010-04-30 |  | 2010-04-13 | 2010-04-30 | 14d | 104d |  |  | 협력업체 최종검수 및 평가 | 07060716O410092 | C07-1 1.9.3.2 |  |
| 313 | KIRAMS1.5.3.2.1 | 분원 검수 요청 | 4d | 2010-04-13 | 2010-04-16 |  | 2010-04-13 | 2010-04-16 | 4d | 104d | 0d | start no earlier than 2010-04-13 | 협력업체 최종검수 및 평가 | 07060716O410092 | C07-1 1.9.3.2 | 검수요청서 |
| 314 | KIRAMS1.5.3.2.2 | 분원 검수 실시 | 5d | 2010-04-19 | 2010-04-23 | 313 | 2010-04-19 | 2010-04-23 | 5d | 104d | 0d |  | 협력업체 최종검수 및 평가 | 07060716O410092 | C07-1 1.9.3.2 |  |
| 315 | KIRAMS1.5.3.2.3 | 분원 검수 승인 | 5d | 2010-04-26 | 2010-04-30 | 314 | 2010-04-26 | 2010-04-30 | 5d | 104d |  |  | 협력업체 최종검수 및 평가 | 07060716O410092 | C07-1 1.9.3.2 | 검수확인서 |
| 316 | KIRAMS1.5.3.3 | **최종 검수** | 41d | 2010-08-02 | 2010-09-30 |  | 2010-08-02 | 2010-09-30 | 41d | 0d |  |  |  |  |  |  |
| 317 | KIRAMS1.5.3.3.1 | 최종검수 준비 | 5d | 2010-08-02 | 2010-08-06 |  | 2010-08-02 | 2010-08-06 | 5d | 21d | 0d | start no earlier than 2010-08-02 | 최종검수 준비 | 07060716O410092 | C07-1 1.9.3.1 | 검수요청서,최종납품결과 |
| 318 | KIRAMS1.5.3.3.2 | 최종산출물 정리 | 15d | 2010-08-09 | 2010-08-27 | 317 | 2010-08-09 | 2010-08-27 | 15d | 21d |  |  | 협력업체 최종검수 및 평가 | 07060716O410092 | C07-1 1.9.3.2 | 시정조치서,업체산출물검수확인서,업체평가 |
| 319 | KIRAMS1.5.3.3.3 | 최종검수 요청 | 5d | 2010-09-06 | 2010-09-10 |  | 2010-09-06 | 2010-09-10 | 5d | 1d | 0d | start no earlier than 2010-09-06 | 최종검수 확인 | 07060716O410092 | C07-1 1.9.3.3 | 최종검수확인서 |
| 320 | KIRAMS1.5.3.3.4 | 최종검수 실시 | 5d | 2010-09-13 | 2010-09-17 | 319 | 2010-09-13 | 2010-09-17 | 5d | 1d | 0d |  | 최종검수 확인 | 07060716O410092 | C07-1 1.9.3.3 | 최종검수확인서 |
| 321 | KIRAMS1.5.3.3.5 | 최종검수 승인 | 5d | 2010-09-20 | 2010-09-29 | 320 | 2010-09-20 | 2010-09-29 | 5d | 1d |  |  | 최종검수 확인 | 07060716O410092 | C07-1 1.9.3.3 | 최종검수확인서 |
| 322 | KIRAMS1.5.3.3.6 | 사업종료보고서 제출 | 2d | 2010-09-29 | 2010-09-30 |  | 2010-09-29 | 2010-09-30 | 2d | 0d |  | start no earlier than 2010-09-29 | 최종검수 확인 | 07060716O410092 | C07-1 1.9.3.3 |  |
| 323 | KIRAMS1.5.3.3.7 | 협력업체 최종검수 및 평가 | 4d | 2010-09-27 | 2010-09-30 |  | 2010-09-27 | 2010-09-30 | 4d | 0d |  | start no earlier than 2010-09-27 | 협력업체 최종검수 및 평가 | 07060716O410092 | C07-1 1.9.3.2 | 시정조치서,업체산출물검수확인서,업체평가 |

| ID | WBS | Task | Duration | Start | Finish | Predecessors | Complete | Remaining | Baseline start | Baseline finish | Baseline duration | Total slack | Constraint | Text20 | Text25 | Text26 | 산출물 |
| --- | --- | --- | --- | --- | --- | --- | --- | --- | --- | --- | --- | --- | --- | --- | --- | --- | --- |
| 324 | KIRAMS1.5.4 | **프로젝트 정보보고** | 11d | 2010-09-13 | 2010-09-30 |  |  |  | 2010-09-13 | 2010-09-30 | 11d | 0d |  | 프로젝트 정보보고 | 07060716O410096 | C07-1 1.9.4 |  |
| 325 | KIRAMS1.5.4.1 | 지식 재사용 및 창출 결과보고 | 5d | 2010-09-13 | 2010-09-17 |  |  |  | 2010-09-13 | 2010-09-17 | 5d | 0d | start no earlier than 2010-09-13 | 지식 재사용 및 창출 결과보고 | 07060716O410096 | C07-1 1.9.4.1 | 지식재사용및창출결과서, 프로젝트 Lessons Learned |
| 326 | KIRAMS1.5.4.2 | 프로젝트 정보등록 | 6d | 2010-09-20 | 2010-09-30 | 325 |  |  | 2010-09-20 | 2010-09-30 | 6d | 0d | finish no earlier than 2010-09-30 | 프로젝트 정보등록 | 07060716O410096 | C07-1 1.9.4.2 | 산출물CD, 프로젝트정보보고 |
| 327 | KIRAMS1.5.4.3 | 프로젝트 완료보고 | 2d | 2010-09-29 | 2010-09-30 |  |  |  | 2010-09-29 | 2010-09-30 | 2d | 0d | finish no earlier than 2010-09-30 | 프로젝트 완료보고 | 07060716O410096 | C07-1 1.9.4.3 | 프로젝트완료보고 |
| 328 | KIRAMS2 | **OCS&EMR(진료)** | 439d? | 2009-01-12 A | 2010-09-30 |  | 17% | 364.97d? | 2009-01-12 | 2010-09-30 | 439d? | 0d |  |  |  |  |  |
| 329 | KIRAMS2.1 | **요구정의 및 분석** | 53d? | 2009-01-12 A | 2009-03-27 |  | 99% | 0.12d? | 2009-01-12 | 2009-03-27 | 53d? | 386d |  | 요구정의 | 07060716O410138 | C07-1 1.2 | 요구정의, 분석산출물 |
| 330 | KIRAMS2.1.1 | ITA 산출물 분석 | 18d | 2009-01-19 A | 2009-02-13 A |  | 100% |  | 2009-01-19 | 2009-02-13 | 18d |  | start no earlier than 2009-01-19 | 비즈니스 모델링(AS-IS) | 07060716O410139 | C07-1 1.2.1 | ITA결과산출물 |
| 331 | KIRAMS2.1.2 | **단계착수** | 8d? | 2009-02-02 A | 2009-02-11 A |  | 100% |  | 2009-02-02 | 2009-02-11 | 8d? |  |  |  |  |  |  |
| 332 | KIRAMS2.1.2.1 | 표준및절차정의 및 검토 | 6d | 2009-02-02 A | 2009-02-09 A |  | 100% |  | 2009-02-02 | 2009-02-09 | 6d |  | start no earlier than 2009-02-02 |  |  |  | 표준및절차매뉴얼 |
| 333 | KIRAMS2.1.2.2 | 오리엔테이션 | 2d? | 2009-02-10 A | 2009-02-11 A |  | 100% |  | 2009-02-10 | 2009-02-11 | 2d? |  |  |  |  |  | 표준및절차매뉴얼 |
| 334 | KIRAMS2.1.3 | **요구사항정의** | 48d | 2009-01-12 A | 2009-03-20 A |  | 100% |  | 2009-01-12 | 2009-03-06 | 38d |  |  | 요구사항 정의 | 07060716O410141 | C07-1 1.2.3 |  |
| 335 | KIRAMS2.1.3.1 | **인터뷰 실시** | 48d | 2009-01-12 A | 2009-03-20 A |  | 100% |  | 2009-01-12 | 2009-03-06 | 38d |  |  | 인터뷰 실시 | 07060716O410139 | C07-1 1.2.1.2 |  |
| 336 | KIRAMS2.1.3.1.1 | 현행시스템 분석(전산정보팀 인터뷰) | 13d | 2009-01-12 A | 2009-01-30 A |  | 100% |  | 2009-01-12 | 2009-01-30 | 13d |  | start no earlier than 2009-01-12 | 인터뷰 실시 | 07060716O410139 | C07-1 1.2.1.2 |  |
| 337 | KIRAMS2.1.3.1.2 | 실무추진T/F 인터뷰 상세일정 수립 | 5d | 2009-01-22 A | 2009-01-30 A |  | 100% |  | 2009-01-22 | 2009-01-30 | 5d |  | finish no earlier than 2009-01-30 | 인터뷰 실시 | 07060716O410139 | C07-1 1.2.1.2 | 인터뷰리스트 |
| 338 | KIRAMS2.1.3.1.3 | 현업 인터뷰 실시 | 19d | 2009-02-10 A | 2009-03-06 A | 337 | 100% |  | 2009-02-10 | 2009-03-06 | 19d |  | start no earlier than 2009-02-02 | 인터뷰 실시 | 07060716O410139 | C07-1 1.2.1.2 | 회의록 |
| 339 | KIRAMS2.1.3.1.4 | 인터뷰 결과 정리 | 29d | 2009-02-10 A | 2009-03-20 A |  | 100% |  | 2009-02-10 | 2009-02-16 | 5d |  | start no earlier than 2009-02-09 | 인터뷰 실시 | 07060716O410139 | C07-1 1.2.1.2 | 인터뷰결과서 |
| 340 | KIRAMS2.1.3.2 | 요구사항 도출/정제/확정 | 25d | 2009-02-16 A | 2009-03-20 A |  | 100% |  | 2009-02-16 | 2009-02-20 | 5d |  | finish no earlier than 2009-02-20 | 요구사항 정제 | 07060716O410141 | C07-1 1.2.3.2 | 요구사항정의서 |
| 341 | KIRAMS2.1.3.3 | 현행 의무기록 서식 취합 | 24d | 2009-02-02 A | 2009-03-05 A |  | 100% |  | 2009-02-02 | 2009-03-05 | 24d |  | finish no earlier than 2009-03-05 | 화면 프로토타이핑 | 07060716O410141 | C07-1 1.2.3.3 | 의무기록서식 |
| 342 | KIRAMS2.1.4 | **업무분석** | 20d | 2009-02-23 A | 2009-03-20 A |  | 100% |  | 2009-02-23 | 2009-03-16 | 16d |  |  | 업무 분석 | 07060716O410143 | C07-1 1.3.1 |  |
| 343 | KIRAMS2.1.4.1 | 유스케이스 분석 | 14d | 2009-03-03 A | 2009-03-20 A |  | 100% |  | 2009-03-03 | 2009-03-16 | 10d |  | finish no earlier than 2009-03-06 | 유스케이스 분석 | 07060716O410143 | C07-1 1.3.1.3 | 유스케이스 정의서/다이어그램 |
| 344 | KIRAMS2.1.4.2 | 시스템인터페이스 분석 | 20d | 2009-02-23 A | 2009-03-20 A |  | 100% |  | 2009-02-23 | 2009-02-27 | 5d |  | finish no earlier than 2009-02-27 | 시스템인터페이스 분석 | 07060716O410143 | C07-1 1.3.1.4 | 시스템인터페이스정의서 |
| 345 | KIRAMS2.1.5 | **화면분석** | 10d | 2009-03-09 A | 2009-03-20 A |  | 100% |  | 2009-03-09 | 2009-03-27 | 15d |  |  | 화면 분석 | 07060716O410144 | C07-1 1.3.2 |  |
| 346 | KIRAMS2.1.5.1 | **화면표준 정의** | 10d | 2009-03-09 A | 2009-03-20 A |  | 100% |  | 2009-03-09 | 2009-03-18 | 8d |  |  | 화면표준 정의 | 07060716O410144 | C07-1 1.3.2.1 |  |
| 347 | KIRAMS2.1.5.1.1 | 표준 디자인 자체 검토 | 3d | 2009-03-09 A | 2009-03-11 A |  | 100% |  | 2009-03-09 | 2009-03-10 | 2d |  | finish no earlier than 2009-03-10 | 화면레이아웃 정의 | 07060716O410144 | C07-1 1.3.2.2 | 디자인 시안 |
| 348 | KIRAMS2.1.5.1.2 | 표준 디자인 확정 의뢰 | 2d | 2009-03-12 A | 2009-03-13 A | 347 | 100% |  | 2009-03-11 | 2009-03-13 | 3d |  |  | 화면레이아웃 정의 | 07060716O410144 | C07-1 1.3.2.2 | 디자인 시안 |
| 349 | KIRAMS2.1.5.1.3 | 화면표준정의서 작성 | 5d | 2009-03-16 A | 2009-03-20 A | 348 | 100% |  | 2009-03-16 | 2009-03-18 | 3d |  |  | 화면레이아웃 정의 | 07060716O410144 | C07-1 1.3.2.2 | 화면표준정의서 |
| 350 | KIRAMS2.1.5.2 | 메뉴구조 정의 | 10d | 2009-03-09 A | 2009-03-20 A |  | 100% |  | 2009-03-09 | 2009-03-27 | 15d |  | finish no earlier than 2009-03-13 | 메뉴구조 정의 | 07060716O410144 | C07-1 1.3.2.3 | 메뉴구조도 |

| ID | WBS | Task | Duration | Start | Finish | Predecessors | Complete | Remaining | Baseline start | Baseline finish | Baseline duration | Total slack | Constraint | Text20 | Text25 | Text26 | 산출물 |
| --- | --- | --- | --- | --- | --- | --- | --- | --- | --- | --- | --- | --- | --- | --- | --- | --- | --- |
| 351 | KIRAMS2.1.6 | **데이터분석** | 10d | 2009-03-09 A | 2009-03-20 A |  | 100% |  | 2009-03-09 | 2009-03-24 | 12d |  |  | 데이터 분석 | 07060716O410145 | C07-1 1.3.3 |  |
| 352 | KIRAMS2.1.6.1 | 논리데이터 모델링 | 8d | 2009-03-11 A | 2009-03-20 A |  | 100% |  | 2009-03-11 | 2009-03-24 | 10d |  | finish no earlier than 2009-03-20 | 논리데이터 모델링 | 07060716O410145 | C07-1 1.3.3.1 | ERD(논리) |
| 353 | KIRAMS2.1.6.2 | 자료사전 정의 | 10d | 2009-03-09 A | 2009-03-20 A |  | 100% |  | 2009-03-09 | 2009-03-20 | 10d |  | start no earlier than 2009-03-09 | 자료사전 정의 | 07060716O410145 | C07-1 1.3.3.2 | 자료사전 |
| 354 | KIRAMS2.1.7 | **데이터전환분석** | 12d | 2009-03-12 A | 2009-03-27 A |  | 100% |  | 2009-03-12 | 2009-03-23 | 8d |  |  | 컨버전 분석 | 07060716O410146 | C07-1 1.3.4 |  |
| 355 | KIRAMS2.1.7.1 | 데이터전환대상 정의 지원 | 12d | 2009-03-12 A | 2009-03-27 A |  | 100% |  | 2009-03-12 | 2009-03-23 | 8d |  | finish no earlier than 2009-03-27 | 컨버전대상 정의 | 07060716O410141 | C07-1 1.2.3.4 | 데이터전환대상목록 |
| 356 | KIRAMS2.1.8 | **단계완료** | 8d? | 2009-03-18 A | 2009-03-27 |  | 88% | 1d? | 2009-03-18 | 2009-03-27 | 8d? | 386d |  |  |  |  |  |
| 357 | KIRAMS2.1.8.1 | Inspection 실시 및 시정조치 | 3d? | 2009-03-18 A | 2009-03-20 A |  | 100% |  | 2009-03-18 | 2009-03-24 | 5d? |  | finish no earlier than 2009-03-24 |  |  |  | Inspection결과,시정조치서 |
| 358 | KIRAMS2.1.8.2 | 단계완료승인획득 | 1d? | 2009-03-24 A | 2009-03-27 | 357 | 50% | 0.5d? | 2009-03-27 | 2009-03-27 | 1d? | 386d | finish no earlier than 2009-03-27 |  |  |  | 고객인수확인서 |
| 359 | KIRAMS2.2 | **설계** | 49d? | 2009-03-09 A | 2009-05-15 |  | 10% | 44.04d? | 2009-02-24 | 2009-05-15 | 58d? | 352d |  | 설계 | 07060716O410151 | C07-1 1.5 |  |
| 360 | KIRAMS2.2.1 | **단계착수** | 15d? | 2009-03-09 A | 2009-03-27 A |  | 100% |  | 2009-02-24 | 2009-03-20 | 19d? |  |  |  |  |  | 표준및절차매뉴얼 |
| 361 | KIRAMS2.2.1.1 | 표준및절차정의 및 검토 | 10d? | 2009-03-09 A | 2009-03-20 A |  | 100% |  | 2009-03-09 | 2009-03-20 | 10d? |  | finish no earlier than 2009-03-20 |  |  |  | 표준및절차매뉴얼 |
| 362 | KIRAMS2.2.1.2 | 오리엔테이션 | 4d? | 2009-03-24 A | 2009-03-27 A |  | 100% |  | 2009-02-24 | 2009-02-27 | 4d? |  | start no earlier than 2009-03-24 |  |  |  | 표준및절차매뉴얼 |
| 363 | KIRAMS2.2.2 | **업무설계** | 34d | 2009-03-24 A | 2009-05-11 |  | 1% | 33.66d | 2009-03-23 | 2009-05-11 | 35d | 356d |  | 업무 설계 | 07060716O410152 | C07-1 1.5.1 | 설계 산출물 |
| 364 | KIRAMS2.2.2.1 | 설계패키지 정의 | 10d | 2009-03-24 A | 2009-04-06 |  | 5% | 9.5d | 2009-03-23 | 2009-04-03 | 10d | 380d | finish no earlier than 2009-04-03 | 설계패키지 정의 | 07060716O410152 | C07-1 1.5.1.1 | 설계패키지정의서 |
| 365 | KIRAMS2.2.2.2 | 클래스 설계 | 10d | 2009-04-13 | 2009-04-24 |  |  |  | 2009-04-13 | 2009-04-24 | 10d | 366d | finish no earlier than 2009-04-24 | 클래스 설계 | 07060716O410152 | C07-1 1.5.1.2 | 클래스다이어그램, 클래스명세서 |
| 366 | KIRAMS2.2.2.3 | 배치프로그램 설계 | 10d | 2009-04-13 | 2009-04-24 |  |  |  | 2009-04-13 | 2009-04-24 | 10d | 366d | finish no earlier than 2009-04-24 | 시스템인터페이스 설계 | 07060716O410152 | C07-1 1.5.1.3 | 배치프로그램사양서 |
| 367 | KIRAMS2.2.2.4 | 시스템인터페이스 설계 | 10d | 2009-04-13 | 2009-04-24 |  |  |  | 2009-04-13 | 2009-04-24 | 10d | 366d | finish no earlier than 2009-04-24 | 배포구조 정의 | 07060716O410152 | C07-1 1.5.1.4 | 시스템인터페이스정의서 |
| 368 | KIRAMS2.2.2.5 | 배포구조 정의 | 10d | 2009-04-27 | 2009-05-11 |  |  |  | 2009-04-27 | 2009-05-11 | 10d | 356d | start no earlier than 2009-04-27 | 배포구조 정의 | 07060716O410152 | C07-1 1.5.1.4 | 배포정의서 |
| 369 | KIRAMS2.2.3 | **화면설계** | 20d | 2009-03-23 A | 2009-04-17 |  | 5% | 19d | 2009-03-23 | 2009-04-17 | 20d | 371d |  | 화면 설계 | 07060716O410153 | C07-1 1.5.2 | 보고서목록,보고서정의서,화면목록,화면정의서 |
| 370 | KIRAMS2.2.3.1 | 화면설계 | 20d | 2009-03-23 A | 2009-04-17 |  | 5% | 19d | 2009-03-23 | 2009-04-17 | 20d | 371d | finish no earlier than 2009-04-17 | 화면설계 | 07060716O410153 | C07-1 1.5.2.1 | 보고서목록,보고서정의서,화면목록,화면정의서 |
| 371 | KIRAMS2.2.4 | **데이터설계** | 9d | 2009-04-27 | 2009-05-08 |  |  |  | 2009-04-27 | 2009-05-08 | 9d | 357d |  | 데이터 설계 | 07060716O410154 | C07-1 1.5.3 | 테이블목록,데이터코드정의서 |
| 372 | KIRAMS2.2.4.1 | 데이터코드 설계 | 9d | 2009-04-27 | 2009-05-08 |  |  |  | 2009-04-27 | 2009-05-08 | 9d | 357d | finish no earlier than 2009-05-08 | 데이터코드 설계 | 07060716O410154 | C07-1 1.5.3.1 | 데이터코드목록,데이터코드정의서 |
| 373 | KIRAMS2.2.4.2 | 물리데이터 모델링 | 9d | 2009-04-27 | 2009-05-08 |  |  |  | 2009-04-27 | 2009-05-08 | 9d | 357d | finish no earlier than 2009-05-08 | 물리데이터 모델링 | 07060716O410154 | C07-1 1.5.3.2 | ERD(물리),테이블목록,테이블정의서 |
| 374 | KIRAMS2.2.5 | **데이터전환설계 지원** | 34d | 2009-03-23 | 2009-05-08 |  |  |  | 2009-03-23 | 2009-05-08 | 34d | 357d |  | 컨버전 설계 | 07060716O410155 | C07-1 1.5.4 | 데이터전환설계서,코드매핑정의서,테이블매핑정의서 |
| 375 | KIRAMS2.2.5.1 | 컨버전매핑 정의 지원 | 34d | 2009-03-23 | 2009-05-08 |  |  |  | 2009-03-23 | 2009-05-08 | 34d | 357d | finish no earlier than 2009-05-08 | 컨버전매핑 정의 | 07060716O410155 | C07-1 1.5.4.1 | 데이터전환설계서,코드매핑정의서,테이블매핑정의서 |

| ID | WBS | Task | Duration | Start | Finish | Predecessors | Baseline start | Baseline finish | Baseline duration | Total slack | Free slack | Constraint | Text20 | Text25 | Text26 | 산출물 |
| --- | --- | --- | --- | --- | --- | --- | --- | --- | --- | --- | --- | --- | --- | --- | --- | --- |
| 376 | KIRAMS2.2.6 | **테스트설계** | 6d | 2009-04-27 | 2009-05-04 |  | 2009-04-27 | 2009-05-04 | 6d | 360d |  |  | 테스트 설계 | 07060716O410156 | C07-1 1.5.5 | 테스트계획서 |
| 377 | KIRAMS2.2.6.1 | 테스트 계획 수립 | 6d | 2009-04-27 | 2009-05-04 |  | 2009-04-27 | 2009-05-04 | 6d | 360d |  | finish no earlier than 2009-05-04 | 테스트계획 수립 | 07060716O410156 | C07-1 1.5.5.1 | 테스트계획서 |
| 378 | KIRAMS2.2.6.2 | 시스템테스트 계획 수립 | 6d | 2009-04-27 | 2009-05-04 |  | 2009-04-27 | 2009-05-04 | 6d | 360d |  | finish no earlier than 2009-05-04 | 시스템테스트계획 수립 | 07060716O410156 | C07-1 1.5.5.4 | 시스템테스트계획서 |
| 379 | KIRAMS2.2.7 | **단계완료** | 9d? | 2009-05-04 | 2009-05-15 |  | 2009-05-04 | 2009-05-15 | 9d? | 352d |  |  |  |  |  | Inspection결과,시정조치서 |
| 380 | KIRAMS2.2.7.1 | Inspection 실시 및 시정조치 | 4d? | 2009-05-04 | 2009-05-08 |  | 2009-05-04 | 2009-05-08 | 4d? | 356d | 4d | finish no earlier than 2009-05-08 |  |  |  | Inspection결과,시정조치서 |
| 381 | KIRAMS2.2.7.2 | 단계완료승인획득 | 1d? | 2009-05-15 | 2009-05-15 | 380 | 2009-05-15 | 2009-05-15 | 1d? | 352d |  | finish no earlier than 2009-05-15 |  |  |  | 고객인수확인서 |
| 382 | KIRAMS2.3 | **개발** | 118d? | 2009-04-20 | 2009-10-02 |  | 2009-04-20 | 2009-10-02 | 118d? | 253d |  |  | 개발 | 07060716O410157 | C07-1 1.6 |  |
| 383 | KIRAMS2.3.1 | **단계착수** | 19d? | 2009-04-20 | 2009-05-15 |  | 2009-04-20 | 2009-05-15 | 19d? | 352d |  |  |  |  |  | 표준및절차매뉴얼 |
| 384 | KIRAMS2.3.1.1 | 표준및절차정의 및 검토 | 10d? | 2009-04-20 | 2009-05-01 |  | 2009-04-20 | 2009-05-01 | 10d? | 361d |  | finish no earlier than 2009-05-01 |  |  |  | 표준및절차매뉴얼 |
| 385 | KIRAMS2.3.1.2 | 오리엔테이션 | 5d? | 2009-05-11 | 2009-05-15 |  | 2009-05-11 | 2009-05-15 | 5d? | 352d |  | finish no earlier than 2009-05-15 |  |  |  | 표준및절차매뉴얼 |
| 386 | KIRAMS2.3.2 | **코딩** | 108d | 2009-05-04 | 2009-10-02 |  | 2009-05-04 | 2009-10-02 | 108d | 253d |  |  |  |  |  |  |
| 387 | KIRAMS2.3.2.1 | 프로그램 코딩 | 107d | 2009-05-04 | 2009-09-30 |  | 2009-05-04 | 2009-09-30 | 107d | 254d |  | finish no earlier than 2009-09-30 | 코딩 | 07060716O410158 | C07-1 1.6.1 | 소스코드 |
| 388 | KIRAMS2.3.2.2 | 단위테스트 실시 | 104d | 2009-05-11 | 2009-10-02 |  | 2009-05-11 | 2009-10-02 | 104d | 253d |  | finish no earlier than 2009-10-02 | 코딩단위테스트 실시 | 07060716O410158 | C07-1 1.6.1.1 | 단위테스트체크리스트(결과) |
| 389 | KIRAMS2.3.2.3 | 통합빌드 | 88d | 2009-06-01 | 2009-09-30 |  | 2009-06-01 | 2009-09-30 | 88d | 254d |  | finish no earlier than 2009-09-30 | 통합빌드 | 07060716O410158 | C07-1 1.6.1.2 | 배포파일 |
| 390 | KIRAMS2.3.3 | 통합테스트 설계 | 6d? | 2009-04-27 | 2009-05-04 |  | 2009-04-27 | 2009-05-04 | 6d? | 360d |  | finish no earlier than 2009-05-04 |  |  |  | 통합테스트시나리오 |
| 391 | KIRAMS2.3.4 | **기초코드 구축** | 60d | 2009-05-11 | 2009-07-31 |  | 2009-05-11 | 2009-07-31 | 60d | 297d |  |  | 테스트 실시 | 07060716O410159 | C07-1 1.6.2 | 처방코드,기초코드 |
| 392 | KIRAMS2.3.4.1 | 처방코드 작성 | 60d | 2009-05-11 | 2009-07-31 |  | 2009-05-11 | 2009-07-31 | 60d | 297d |  | finish no earlier than 2009-07-31 | 시스템테스트 실시 | 07060716O410159 | C07-1 1.6.2.2 | 처방코드 |
| 393 | KIRAMS2.3.4.2 | 기초코드 작성 | 45d | 2009-06-01 | 2009-07-31 |  | 2009-06-01 | 2009-07-31 | 45d | 297d |  | finish no earlier than 2009-07-31 | 시스템테스트 실시 | 07060716O410159 | C07-1 1.6.2.2 | 기초코드 |
| 394 | KIRAMS2.4 | **이행** | 161d? | 2009-09-07 | 2010-04-21 |  | 2009-09-07 | 2010-04-21 | 161d? | 111d |  |  | 이행 | 07060716O410160 | C07-1 1.7 |  |
| 395 | KIRAMS2.4.1 | **단계착수** | 19d? | 2009-09-14 | 2009-10-09 |  | 2009-09-14 | 2009-10-09 | 19d? | 248d |  |  |  |  |  | 표준및절차매뉴얼 |
| 396 | KIRAMS2.4.1.1 | 표준및절차정의 및 검토 | 10d? | 2009-09-14 | 2009-09-25 |  | 2009-09-14 | 2009-09-25 | 10d? | 257d |  | finish no earlier than 2009-09-25 |  |  |  | 표준및절차매뉴얼 |
| 397 | KIRAMS2.4.1.2 | 오리엔테이션 | 4d? | 2009-10-06 | 2009-10-09 |  | 2009-10-06 | 2009-10-09 | 4d? | 248d |  | start no earlier than 2009-10-06 |  |  |  | 표준및절차매뉴얼 |
| 398 | KIRAMS2.4.2 | **이행계획 수립** | 63d | 2009-09-07 | 2009-12-03 |  | 2009-09-07 | 2009-12-03 | 63d | 209d |  |  | 이행계획 수립 | 07060716O410161 | C07-1 1.7.1 | 이행계획서 |
| 399 | KIRAMS2.4.2.1 | **교육훈련계획 수립** | 18d | 2009-09-07 | 2009-09-30 |  | 2009-09-07 | 2009-09-30 | 18d | 254d |  |  | 교육훈련계획 수립 | 07060716O410161 | C07-1 1.7.1.2 |  |
| 400 | KIRAMS2.4.2.1.1 | 교육계획서 작성 | 5d | 2009-09-07 | 2009-09-11 |  | 2009-09-07 | 2009-09-11 | 5d | 254d | 0d | finish no earlier than 2009-09-11 | 교육훈련계획 수립 | 07060716O410161 | C07-1 1.7.1.2 | 교육계획서 |
| 401 | KIRAMS2.4.2.1.2 | 교육상세일정 조정 | 3d | 2009-09-14 | 2009-09-16 | 400 | 2009-09-14 | 2009-09-16 | 3d | 254d | 0d | start no earlier than 2009-09-14 | 교육훈련계획 수립 | 07060716O410161 | C07-1 1.7.1.2 | 교육계획서 |
| 402 | KIRAMS2.4.2.1.3 | 교육대상자 선정 | 2d | 2009-09-17 | 2009-09-18 | 401 | 2009-09-17 | 2009-09-18 | 2d | 254d | 0d | start no earlier than 2009-09-17 | 교육훈련계획 수립 | 07060716O410161 | C07-1 1.7.1.2 | 교육계획서 |
| 403 | KIRAMS2.4.2.1.4 | 교육장 준비 확인 | 8d | 2009-09-21 | 2009-09-30 | 402 | 2009-09-21 | 2009-09-30 | 8d | 254d |  | start no earlier than 2009-09-21 | 교육훈련계획 수립 | 07060716O410161 | C07-1 1.7.1.2 | 교육계획서 |
| 404 | KIRAMS2.4.2.2 | 릴리이즈 및 비상계획 수립 | 14d | 2009-11-16 | 2009-12-03 |  | 2009-11-16 | 2009-12-03 | 14d | 209d |  | finish no earlier than 2009-12-03 | 릴리이즈 및 비상계획 수립 | 07060716O410161 | C07-1 1.7.1.1 | 이행계획서 |

| ID | WBS | Task | Duration | Start | Finish | Predecessors | Baseline start | Baseline finish | Baseline duration | Total slack | Free slack | Constraint | Text20 | Text25 | Text26 | 산출물 |
| --- | --- | --- | --- | --- | --- | --- | --- | --- | --- | --- | --- | --- | --- | --- | --- | --- |
| 405 | KIRAMS2.4.3 | **시스템 사용교육** | 35d | 2009-10-05 | 2009-11-20 |  | 2009-10-05 | 2009-11-20 | 35d | 218d |  |  | 시스템 사용교육 | 07060716O410163 | C07-1 1.7.3 | 이행계획서 |
| 406 | KIRAMS2.4.3.1 | 사용자매뉴얼 작성 | 10d | 2009-10-05 | 2009-10-16 |  | 2009-10-05 | 2009-10-16 | 10d | 243d |  | finish no earlier than 2009-10-16 | 사용자매뉴얼 작성 | 07060716O410163 | C07-1 1.7.3.1 | 사용자매뉴얼 |
| 407 | KIRAMS2.4.3.2 | 운영매뉴얼 작성 | 10d | 2009-10-05 | 2009-10-16 |  | 2009-10-05 | 2009-10-16 | 10d | 218d | 0d | start no earlier than 2009-10-05 | 운영매뉴얼 작성 | 07060716O410163 | C07-1 1.7.3.2 | 운영매뉴얼 |
| 408 | KIRAMS2.4.3.3 | 교육훈련 실시 | 25d | 2009-10-19 | 2009-11-20 | 407 | 2009-10-19 | 2009-11-20 | 25d | 218d |  | start no earlier than 2009-10-19 | 교육훈련 실시 | 07060716O410163 | C07-1 1.7.3.3 | 교육대상자명단 |
| 409 | KIRAMS2.4.4 | **본원(서울) 이행(~12/31)** | 80d | 2009-10-05 | 2010-01-22 |  | 2009-10-05 | 2010-01-22 | 80d | 173d |  |  | 교육훈련 실시 | 07060716O410163 | C07-1 1.7.3.3 | 이행계획서 |
| 410 | KIRAMS2.4.4.1 | **컨버전 및 릴리이즈(본원)** | 23d | 2009-11-30 | 2009-12-31 |  | 2009-11-30 | 2009-12-31 | 23d | 190d |  |  | 컨버전 및 릴리이즈 | 07060716O410162 | C07-1 1.7.2 |  |
| 411 | KIRAMS2.4.4.1.1 | 데이터베이스 구축 지원 및 확인 | 10d | 2009-11-30 | 2009-12-11 |  | 2009-11-30 | 2009-12-11 | 10d | 190d | 0d | start no earlier than 2009-11-30 | 데이터베이스 구축 | 07060716O410162 | C07-1 1.7.2.1 | 데이터베이스 |
| 412 | KIRAMS2.4.4.1.2 | 소프트웨어 설치 확인 | 9d | 2009-12-14 | 2009-12-24 | 411 | 2009-12-14 | 2009-12-24 | 9d | 190d | 0d | start no earlier than 2009-12-14 | 소프트웨어 설치 | 07060716O410162 | C07-1 1.7.2.2 | 어플리케이션 |
| 413 | KIRAMS2.4.4.1.3 | 데이터전환 확인 | 8d | 2009-12-21 | 2009-12-31 |  | 2009-12-21 | 2009-12-31 | 8d | 190d |  | start no earlier than 2009-12-21 | 데이터 컨버전 | 07060716O410162 | C07-1 1.7.2.3 | 컨버전된 데이터 |
| 414 | KIRAMS2.4.4.1.4 | 시스템 릴리이즈 | 4d | 2009-12-28 | 2009-12-31 | 412 | 2009-12-28 | 2009-12-31 | 4d | 190d |  | start no earlier than 2009-12-28 | 시스템 릴리이즈 | 07060716O410162 | C07-1 1.7.2.5 | 운영시스템 |
| 415 | KIRAMS2.4.4.2 | **테스트 실시(본원)** | 30d | 2009-10-05 | 2009-11-13 |  | 2009-10-05 | 2009-11-13 | 30d | 223d |  |  | 테스트 실시 | 07060716O410159 | C07-1 1.6.2 |  |
| 416 | KIRAMS2.4.4.2.1 | **통합테스트 실시** | 20d | 2009-10-05 | 2009-10-30 |  | 2009-10-05 | 2009-10-30 | 20d | 233d |  |  | 통합테스트 실시 | 07060716O410159 | C07-1 1.6.2.1 |  |
| 417 | KIRAMS2.4.4.2.1.1 | 통합테스트 환경구축 지원 | 5d | 2009-10-05 | 2009-10-09 |  | 2009-10-05 | 2009-10-09 | 5d | 248d |  | finish no earlier than 2009-10-09 | 교육훈련계획 수립 | 07060716O410161 | C07-1 1.7.1.2 | 이행계획서 |
| 418 | KIRAMS2.4.4.2.1.2 | **1차 통합테스트** | 10d | 2009-10-12 | 2009-10-23 |  | 2009-10-12 | 2009-10-23 | 10d | 238d |  |  | 교육훈련계획 수립 | 07060716O410161 | C07-1 1.7.1.2 |  |
| 419 | KIRAMS2.4.4.2.1.2.1 | 기초자료 구축(1차) | 2d | 2009-10-12 | 2009-10-13 |  | 2009-10-12 | 2009-10-13 | 2d | 238d | 0d | finish no earlier than 2009-10-13 | 교육훈련계획 수립 | 07060716O410161 | C07-1 1.7.1.2 | 테스트계획서 |
| 420 | KIRAMS2.4.4.2.1.2.2 | 통합테스트 실시(1차) | 2d | 2009-10-14 | 2009-10-15 | 419 | 2009-10-14 | 2009-10-15 | 2d | 238d | 0d |  | 교육훈련계획 수립 | 07060716O410161 | C07-1 1.7.1.2 | 결함보고서,통합테스트시나리오(결과),통합테스트결과보고서 |
| 421 | KIRAMS2.4.4.2.1.2.3 | 통합테스트 결과 분석(1차) | 1d | 2009-10-16 | 2009-10-16 | 420 | 2009-10-16 | 2009-10-16 | 1d | 238d | 0d |  | 교육훈련계획 수립 | 07060716O410161 | C07-1 1.7.1.2 | 결함보고서,통합테스트시나리오(결과),통합테스트결과보고서 |
| 422 | KIRAMS2.4.4.2.1.2.4 | 통합테스트 결과 조치(1차) | 5d | 2009-10-19 | 2009-10-23 | 421 | 2009-10-19 | 2009-10-23 | 5d | 238d |  | start no earlier than 2009-10-19 | 교육훈련계획 수립 | 07060716O410161 | C07-1 1.7.1.2 | 결함보고서,통합테스트시나리오(결과),통합테스트결과보고서 |
| 423 | KIRAMS2.4.4.2.1.3 | **2차 통합테스트** | 7d | 2009-10-22 | 2009-10-30 |  | 2009-10-22 | 2009-10-30 | 7d | 233d |  |  | 교육훈련계획 수립 | 07060716O410161 | C07-1 1.7.1.2 |  |
| 424 | KIRAMS2.4.4.2.1.3.1 | 기초자료 구축(2차) | 2d | 2009-10-22 | 2009-10-23 |  | 2009-10-22 | 2009-10-23 | 2d | 233d | 0d | start no earlier than 2009-10-22 | 교육훈련계획 수립 | 07060716O410161 | C07-1 1.7.1.2 | 테스트계획서 |
| 425 | KIRAMS2.4.4.2.1.3.2 | 통합테스트 실시(2차) | 2d | 2009-10-26 | 2009-10-27 | 424 | 2009-10-26 | 2009-10-27 | 2d | 233d | 0d |  | 교육훈련계획 수립 | 07060716O410161 | C07-1 1.7.1.2 | 결함보고서,통합테스트시나리오(결과),통합테스트결과보고서 |
| 426 | KIRAMS2.4.4.2.1.3.3 | 통합테스트 결과 분석(2차) | 1d | 2009-10-28 | 2009-10-28 | 425 | 2009-10-28 | 2009-10-28 | 1d | 233d | 0d |  | 교육훈련계획 수립 | 07060716O410161 | C07-1 1.7.1.2 | 결함보고서,통합테스트시나리오(결과),통합테스트결과보고서 |
| 427 | KIRAMS2.4.4.2.1.3.4 | 통합테스트 결과 조치(2차) | 2d | 2009-10-29 | 2009-10-30 | 426 | 2009-10-29 | 2009-10-30 | 2d | 233d |  |  | 교육훈련계획 수립 | 07060716O410161 | C07-1 1.7.1.2 | 결함보고서,통합테스트시나리오(결과),통합테스트결과보고서 |
| 428 | KIRAMS2.4.4.2.2 | **시스템테스트 실시** | 5d | 2009-11-09 | 2009-11-13 |  | 2009-11-09 | 2009-11-13 | 5d | 223d |  |  | 시스템테스트 실시 | 07060716O410159 | C07-1 1.6.2.2 |  |
| 429 | KIRAMS2.4.4.2.2.1 | 부하테스트 프로그램 지원 | 5d | 2009-11-09 | 2009-11-13 |  | 2009-11-09 | 2009-11-13 | 5d | 223d |  | start no earlier than 2009-11-09 | 시스템테스트 실시 | 07060716O410159 | C07-1 1.6.2.2 | 시스템테스트결과보고서 |

| ID | WBS | Task | Type | Duration | Start | Finish | Predecessors | Baseline start | Baseline finish | Baseline duration | Total slack | Free slack | Constraint | Text20 | Text25 | Text26 | 산출물 |
| --- | --- | --- | --- | --- | --- | --- | --- | --- | --- | --- | --- | --- | --- | --- | --- | --- | --- |
| 430 | KIRAMS2.4.4.3 | **리허설(본원)** |  | 26d | 2009-11-16 | 2009-12-21 |  | 2009-11-16 | 2009-12-21 | 26d | 197d |  |  | 시범운영 | 07060716O410164 | C07-1 1.7.4 |  |
| 431 | KIRAMS2.4.4.3.1 | 리허설 계획 수립지원(시나리오 작성) |  | 11d | 2009-11-16 | 2009-11-30 |  | 2009-11-16 | 2009-11-30 | 11d | 212d |  | finish no earlier than 2009-11-30 | 시범운영계획 수립 | 07060716O410164 | C07-1 1.7.4.1 | 리허설계획서,리허설시나리오 |
| 432 | KIRAMS2.4.4.3.2 | **1차 리허설 실시** |  | 7d | 2009-12-01 | 2009-12-09 |  | 2009-12-01 | 2009-12-09 | 7d | 205d |  |  | 시범운영 실시 | 07060716O410164 | C07-1 1.7.4.2 |  |
| 433 | KIRAMS2.4.4.3.2.1 | 기초자료 구축(1차) |  | 2d | 2009-12-01 | 2009-12-02 |  | 2009-12-01 | 2009-12-02 | 2d | 210d |  | start no earlier than 2009-12-01 | 시범운영 실시 | 07060716O410164 | C07-1 1.7.4.2 | 리허설계획서,리허설시나리오 |
| 434 | KIRAMS2.4.4.3.2.2 | 리허설 공지 및 상황실 운영(1차) |  | 2d | 2009-12-01 | 2009-12-02 |  | 2009-12-01 | 2009-12-02 | 2d | 210d |  | start no earlier than 2009-12-01 | 시범운영 실시 | 07060716O410164 | C07-1 1.7.4.2 | 리허설계획서,리허설시나리오 |
| 435 | KIRAMS2.4.4.3.2.3 | 가상환자 준비(1차) |  | 2d | 2009-12-01 | 2009-12-02 |  | 2009-12-01 | 2009-12-02 | 2d | 207d | 0d | start no earlier than 2009-12-01 | 시범운영 실시 | 07060716O410164 | C07-1 1.7.4.2 | 리허설계획서,리허설시나리오 |
| 436 | KIRAMS2.4.4.3.2.4 | 리허설 실시(1차) |  | 1d | 2009-12-03 | 2009-12-03 | 435 | 2009-12-03 | 2009-12-03 | 1d | 207d | 0d |  | 시범운영 실시 | 07060716O410164 | C07-1 1.7.4.2 | 리허설결과서 |
| 437 | KIRAMS2.4.4.3.2.5 | 리허설 결과 분석 및 보고(1차) |  | 2d | 2009-12-04 | 2009-12-07 | 436 | 2009-12-04 | 2009-12-07 | 2d | 207d |  |  | 시범운영 실시 | 07060716O410164 | C07-1 1.7.4.2 | 리허설결과보고서 |
| 438 | KIRAMS2.4.4.3.2.6 | 리허설 결과 조치(1차) |  | 4d | 2009-12-04 | 2009-12-09 |  | 2009-12-04 | 2009-12-09 | 4d | 205d |  | finish no earlier than 2009-12-09 | 시범운영 실시 | 07060716O410164 | C07-1 1.7.4.2 | 리허설결과서,리허설결과보고서 |
| 439 | KIRAMS2.4.4.3.3 | **2차 리허설 실시** |  | 8d | 2009-12-10 | 2009-12-21 |  | 2009-12-10 | 2009-12-21 | 8d | 197d |  |  | 시범운영 실시 | 07060716O410164 | C07-1 1.7.4.2 |  |
| 440 | KIRAMS2.4.4.3.3.1 | 기초자료 구축(2차) |  | 2d | 2009-12-10 | 2009-12-11 |  | 2009-12-10 | 2009-12-11 | 2d | 202d | 0d | start no earlier than 2009-12-10 | 시범운영 실시 | 07060716O410164 | C07-1 1.7.4.2 | 리허설계획서,리허설시나리오 |
| 441 | KIRAMS2.4.4.3.3.2 | 리허설 공지 및 상황실 운영(2차) |  | 1d | 2009-12-14 | 2009-12-14 | 440 | 2009-12-14 | 2009-12-14 | 1d | 202d |  |  | 시범운영 실시 | 07060716O410164 | C07-1 1.7.4.2 | 리허설계획서,리허설시나리오 |
| 442 | KIRAMS2.4.4.3.3.3 | 가상환자 준비(2차) |  | 1d | 2009-12-14 | 2009-12-14 |  | 2009-12-14 | 2009-12-14 | 1d | 197d | 0d | start no earlier than 2009-12-14 | 시범운영 실시 | 07060716O410164 | C07-1 1.7.4.2 | 리허설계획서,리허설시나리오 |
| 443 | KIRAMS2.4.4.3.3.4 | 리허설 실시(2차) |  | 1d | 2009-12-15 | 2009-12-15 | 442 | 2009-12-15 | 2009-12-15 | 1d | 197d | 0d |  | 시범운영 실시 | 07060716O410164 | C07-1 1.7.4.2 | 리허설결과서 |
| 444 | KIRAMS2.4.4.3.3.5 | 리허설 결과 분석 및 보고(2차) |  | 1d | 2009-12-16 | 2009-12-16 | 443 | 2009-12-16 | 2009-12-16 | 1d | 197d | 0d |  | 시범운영 실시 | 07060716O410164 | C07-1 1.7.4.2 | 리허설결과보고서 |
| 445 | KIRAMS2.4.4.3.3.6 | 리허설 결과 조치(2차) |  | 3d | 2009-12-17 | 2009-12-21 | 444 | 2009-12-17 | 2009-12-21 | 3d | 197d |  | start no earlier than 2009-12-17 | 시범운영 실시 | 07060716O410164 | C07-1 1.7.4.2 | 리허설결과서,리허설결과보고서 |
| 446 | KIRAMS2.4.4.4 | **컨버전 전환 지원(1차)** |  | 30d | 2009-10-19 | 2009-11-27 |  | 2009-10-19 | 2009-11-27 | 30d | 213d |  |  | 테스트 실시 | 07060716O410159 | C07-1 1.6.2 |  |
| 447 | KIRAMS2.4.4.4.1 | 컨버전 전환 실시 지원(1차) |  | 20d | 2009-10-19 | 2009-11-13 |  | 2009-10-19 | 2009-11-13 | 20d | 213d | 0d | start no earlier than 2009-10-19 | 테스트 실시 | 07060716O410159 | C07-1 1.6.2 | 컨버전대상테이블 |
| 448 | KIRAMS2.4.4.4.2 | 전환결과 검증 및 수정 지원(1차) |  | 10d | 2009-11-16 | 2009-11-27 | 447 | 2009-11-16 | 2009-11-27 | 10d | 213d |  | finish no earlier than 2009-11-27 | 테스트 실시 | 07060716O410159 | C07-1 1.6.2 | 컨버전대상테이블 |
| 449 | KIRAMS2.4.4.5 | **컨버전 전환 지원(2차)** |  | 20d | 2009-11-30 | 2009-12-28 |  | 2009-11-30 | 2009-12-28 | 20d | 193d |  |  | 테스트 실시 | 07060716O410159 | C07-1 1.6.2 |  |
| 450 | KIRAMS2.4.4.5.1 | 컨버전 전환 실시 지원(2차) |  | 15d | 2009-11-30 | 2009-12-18 |  | 2009-11-30 | 2009-12-18 | 15d | 193d | 0d | start no earlier than 2009-11-30 | 테스트 실시 | 07060716O410159 | C07-1 1.6.2 | 컨버전대상테이블 |
| 451 | KIRAMS2.4.4.5.2 | 전환결과 검증 및 수정 지원(2차) |  | 5d | 2009-12-21 | 2009-12-28 | 450 | 2009-12-21 | 2009-12-28 | 5d | 193d |  |  | 테스트 실시 | 07060716O410159 | C07-1 1.6.2 | 컨버전대상테이블 |
| 452 | KIRAMS2.4.4.6 | 병행운영(인수테스트) |  | 5d | 2009-12-21 | 2009-12-28 |  | 2009-12-21 | 2009-12-28 | 5d | 193d |  | finish no earlier than 2009-12-28 | 안정화 및 유지보수 | 08100808O000000 | C07-1 1.7.5 | 인수테스트결괴서 |
| 453 | KIRAMS2.4.4.7 | **시스템 오픈(본원)** |  | 21d | 2009-12-28 | 2010-01-22 |  | 2009-12-28 | 2010-01-22 | 21d | 173d |  |  | 시범운영 | 07060716O410164 | C07-1 1.7.4 |  |
| 454 | KIRAMS2.4.4.7.1 | 오픈준비 |  | 4d | 2009-12-28 | 2009-12-31 |  | 2009-12-28 | 2009-12-31 | 4d | 189d | 0d | finish no earlier than 2009-12-31 | 시범운영계획 수립 | 07060716O410164 | C07-1 1.7.4.1 | 이행계획서 |
| 455 | KIRAMS2.4.4.7.2 | 시스템 OPEN | milestone | 1d | 2010-01-01 | 2010-01-01 | 454 | 2010-01-01 | 2010-01-01 | 1d | 189d |  |  | 시범운영계획 수립 | 07060716O410164 | C07-1 1.7.4.1 | 이행계획서 |
| 456 | KIRAMS2.4.4.7.3 | 안정화 지원 |  | 16d | 2010-01-02 | 2010-01-22 |  | 2010-01-02 | 2010-01-22 | 16d | 173d |  | finish no earlier than 2010-01-22 | 시범운영계획 수립 | 07060716O410164 | C07-1 1.7.4.1 | Help Desk 일지 |

| ID | WBS | Task | Duration | Start | Finish | Predecessors | Baseline start | Baseline finish | Baseline duration | Total slack | Free slack | Constraint | Text20 | Text25 | Text26 | 산출물 |
| --- | --- | --- | --- | --- | --- | --- | --- | --- | --- | --- | --- | --- | --- | --- | --- | --- |
| 457 | KIRAMS2.4.5 | **분원(동남권) 이행(1/1~3/31)** | 67d | 2010-01-18 | 2010-04-21 |  | 2010-01-18 | 2010-04-21 | 67d | 111d |  |  | 교육훈련 실시 | 07060716O410163 | C07-1 1.7.3.3 | 이행계획서 |
| 458 | KIRAMS2.4.5.1 | **릴리이즈(분원)** | 47d | 2010-01-25 | 2010-03-31 |  | 2010-01-25 | 2010-03-31 | 47d | 126d |  |  | 컨버전 및 릴리이즈 | 07060716O410162 | C07-1 1.7.2 |  |
| 459 | KIRAMS2.4.5.1.1 | 데이터베이스 구축 지원 및 확인 | 10d | 2010-01-25 | 2010-02-05 |  | 2010-01-25 | 2010-02-05 | 10d | 163d |  | start no earlier than 2010-01-25 | 데이터베이스 구축 | 07060716O410162 | C07-1 1.7.2.1 | 데이터베이스 |
| 460 | KIRAMS2.4.5.1.2 | 소프트웨어 설치 확인 | 10d | 2010-01-25 | 2010-02-05 |  | 2010-01-25 | 2010-02-05 | 10d | 163d |  | finish no earlier than 2010-02-05 | 소프트웨어 설치 | 07060716O410162 | C07-1 1.7.2.2 | 어플리케이션 |
| 461 | KIRAMS2.4.5.1.3 | 기초 데이터 생성 | 39d | 2010-02-01 | 2010-03-26 |  | 2010-02-01 | 2010-03-26 | 39d | 129d |  | finish no earlier than 2010-03-26 | 데이터 컨버전 | 07060716O410162 | C07-1 1.7.2.3 | 기초 데이터 |
| 462 | KIRAMS2.4.5.1.4 | 시스템 릴리이즈 | 3d | 2010-03-29 | 2010-03-31 |  | 2010-03-29 | 2010-03-31 | 3d | 126d |  | finish no earlier than 2010-03-31 | 시스템 릴리이즈 | 07060716O410162 | C07-1 1.7.2.5 | 운영시스템 |
| 463 | KIRAMS2.4.5.2 | **테스트 실시(분원)** | 15d | 2010-01-18 | 2010-02-05 |  | 2010-01-18 | 2010-02-05 | 15d | 163d |  |  | 테스트 실시 | 07060716O410159 | C07-1 1.6.2 |  |
| 464 | KIRAMS2.4.5.2.1 | **통합테스트 실시** | 12d | 2010-01-18 | 2010-02-02 |  | 2010-01-18 | 2010-02-02 | 12d | 166d |  |  | 통합테스트 실시 | 07060716O410159 | C07-1 1.6.2.1 |  |
| 465 | KIRAMS2.4.5.2.1.1 | 통합테스트 환경구축 지원 | 5d | 2010-01-18 | 2010-01-22 |  | 2010-01-18 | 2010-01-22 | 5d | 173d |  | start no earlier than 2010-01-18 | 교육훈련계획 수립 | 07060716O410161 | C07-1 1.7.1.2 | 이행계획서 |
| 466 | KIRAMS2.4.5.2.1.2 | **통합테스트** | 7d | 2010-01-25 | 2010-02-02 |  | 2010-01-25 | 2010-02-02 | 7d | 166d |  |  | 교육훈련계획 수립 | 07060716O410161 | C07-1 1.7.1.2 |  |
| 467 | KIRAMS2.4.5.2.1.2.1 | 기초자료 구축 | 2d | 2010-01-25 | 2010-01-26 |  | 2010-01-25 | 2010-01-26 | 2d | 169d | 0d | start no earlier than 2010-01-25 | 교육훈련계획 수립 | 07060716O410161 | C07-1 1.7.1.2 | 테스트계획서 |
| 468 | KIRAMS2.4.5.2.1.2.2 | 통합테스트 실시 | 2d | 2010-01-27 | 2010-01-28 | 467 | 2010-01-27 | 2010-01-28 | 2d | 169d |  |  | 교육훈련계획 수립 | 07060716O410161 | C07-1 1.7.1.2 | 결함보고서,통합테스트시나리오(결과),통합테스트결과보고서 |
| 469 | KIRAMS2.4.5.2.1.2.3 | 통합테스트 결과 분석 | 1d | 2010-01-28 | 2010-01-28 |  | 2010-01-28 | 2010-01-28 | 1d | 166d | 0d | start no earlier than 2010-01-28 | 교육훈련계획 수립 | 07060716O410161 | C07-1 1.7.1.2 | 결함보고서,통합테스트시나리오(결과),통합테스트결과보고서 |
| 470 | KIRAMS2.4.5.2.1.2.4 | 통합테스트 결과 조치 | 3d | 2010-01-29 | 2010-02-02 | 469 | 2010-01-29 | 2010-02-02 | 3d | 166d |  |  | 교육훈련계획 수립 | 07060716O410161 | C07-1 1.7.1.2 | 결함보고서,통합테스트시나리오(결과),통합테스트결과보고서 |
| 471 | KIRAMS2.4.5.2.2 | **시스템테스트 실시 지원** | 5d | 2010-02-01 | 2010-02-05 |  | 2010-02-01 | 2010-02-05 | 5d | 163d |  |  | 시스템테스트 실시 | 07060716O410159 | C07-1 1.6.2.2 |  |
| 472 | KIRAMS2.4.5.2.2.1 | 부하테스트 프로그램 지원 | 5d | 2010-02-01 | 2010-02-05 |  | 2010-02-01 | 2010-02-05 | 5d | 163d |  | start no earlier than 2010-02-01 | 시스템테스트 실시 | 07060716O410159 | C07-1 1.6.2.2 | 시스템테스트결과보고서 |
| 473 | KIRAMS2.4.5.3 | **리허설-인수테스트(분원)** | 31d | 2010-02-08 | 2010-03-23 |  | 2010-02-08 | 2010-03-23 | 31d | 132d |  |  | 시범운영 | 07060716O410164 | C07-1 1.7.4 |  |
| 474 | KIRAMS2.4.5.3.1 | 리허설 계획 수립지원(시나리오 작성) | 9d | 2010-02-08 | 2010-02-19 |  | 2010-02-08 | 2010-02-19 | 9d | 154d |  | start no earlier than 2010-02-08 | 시범운영계획 수립 | 07060716O410164 | C07-1 1.7.4.1 | 리허설계획서,리허설시나리오 |
| 475 | KIRAMS2.4.5.3.2 | **1차 리허설 실시** | 10d | 2010-03-01 | 2010-03-12 |  | 2010-03-01 | 2010-03-12 | 10d | 139d |  |  | 시범운영 실시 | 07060716O410164 | C07-1 1.7.4.2 |  |
| 476 | KIRAMS2.4.5.3.2.1 | 기초자료 구축(1차) | 2d | 2010-03-01 | 2010-03-02 |  | 2010-03-01 | 2010-03-02 | 2d | 143d | 0d | start no earlier than 2010-03-01 | 시범운영 실시 | 07060716O410164 | C07-1 1.7.4.2 | 리허설계획서,리허설시나리오 |
| 477 | KIRAMS2.4.5.3.2.2 | 리허설 공지 및 상황실 운영(1차) | 2d | 2010-03-03 | 2010-03-04 | 476 | 2010-03-03 | 2010-03-04 | 2d | 143d | 0d |  | 시범운영 실시 | 07060716O410164 | C07-1 1.7.4.2 | 리허설계획서,리허설시나리오 |
| 478 | KIRAMS2.4.5.3.2.3 | 가상환자 준비(1차) | 2d | 2010-03-05 | 2010-03-08 | 477 | 2010-03-05 | 2010-03-08 | 2d | 143d |  |  | 시범운영 실시 | 07060716O410164 | C07-1 1.7.4.2 | 리허설계획서,리허설시나리오 |
| 479 | KIRAMS2.4.5.3.2.4 | 리허설 실시(1차) | 1d | 2010-03-09 | 2010-03-09 |  | 2010-03-09 | 2010-03-09 | 1d | 139d | 0d | start no earlier than 2010-03-09 | 시범운영 실시 | 07060716O410164 | C07-1 1.7.4.2 | 리허설결과서,인수테스트결과서 |
| 480 | KIRAMS2.4.5.3.2.5 | 리허설 결과 분석 및 보고(1차) | 1d | 2010-03-10 | 2010-03-10 | 479 | 2010-03-10 | 2010-03-10 | 1d | 139d | 0d |  | 시범운영 실시 | 07060716O410164 | C07-1 1.7.4.2 | 리허설결과보고서 |
| 481 | KIRAMS2.4.5.3.2.6 | 리허설 결과 조치(1차) | 2d | 2010-03-11 | 2010-03-12 | 480 | 2010-03-11 | 2010-03-12 | 2d | 139d |  |  | 시범운영 실시 | 07060716O410164 | C07-1 1.7.4.2 | 리허설결과서,리허설결과보고서 |

| ID | WBS | Task | Duration | Start | Finish | Predecessors | Complete | Remaining | Baseline start | Baseline finish | Baseline duration | Total slack | Free slack | Constraint | Text20 | Text25 | Text26 | 산출물 |
| --- | --- | --- | --- | --- | --- | --- | --- | --- | --- | --- | --- | --- | --- | --- | --- | --- | --- | --- |
| 482 | KIRAMS2.4.5.3.3 | **2차 리허설 실시** | 7d | 2010-03-15 | 2010-03-23 |  |  |  | 2010-03-15 | 2010-03-23 | 7d | 132d |  |  | 시범운영 실시 | 07060716O410164 | C07-1 1.7.4.2 |  |
| 483 | KIRAMS2.4.5.3.3.1 | 기초자료 구축(2차) | 2d | 2010-03-15 | 2010-03-16 |  |  |  | 2010-03-15 | 2010-03-16 | 2d | 137d |  | start no earlier than 2010-03-15 | 시범운영 실시 | 07060716O410164 | C07-1 1.7.4.2 | 리허설계획서,리허설시나리오 |
| 484 | KIRAMS2.4.5.3.3.2 | 리허설 공지 및 상황실 운영(2차) | 2d | 2010-03-16 | 2010-03-17 |  |  |  | 2010-03-16 | 2010-03-17 | 2d | 136d |  | start no earlier than 2010-03-16 | 시범운영 실시 | 07060716O410164 | C07-1 1.7.4.2 | 리허설계획서,리허설시나리오 |
| 485 | KIRAMS2.4.5.3.3.3 | 가상환자 준비(2차) | 2d | 2010-03-16 | 2010-03-17 |  |  |  | 2010-03-16 | 2010-03-17 | 2d | 134d | 0d | start no earlier than 2010-03-16 | 시범운영 실시 | 07060716O410164 | C07-1 1.7.4.2 | 리허설계획서,리허설시나리오 |
| 486 | KIRAMS2.4.5.3.3.4 | 리허설 실시(2차) | 1d | 2010-03-18 | 2010-03-18 | 485 |  |  | 2010-03-18 | 2010-03-18 | 1d | 134d | 2d |  | 시범운영 실시 | 07060716O410164 | C07-1 1.7.4.2 | 리허설결과서,인수테스트결과서 |
| 487 | KIRAMS2.4.5.3.3.5 | 리허설 결과 분석 및 보고(2차) | 1d | 2010-03-19 | 2010-03-19 |  |  |  | 2010-03-19 | 2010-03-19 | 1d | 134d |  | start no earlier than 2010-03-19 | 시범운영 실시 | 07060716O410164 | C07-1 1.7.4.2 | 리허설결과보고서 |
| 488 | KIRAMS2.4.5.3.3.6 | 리허설 결과 조치(2차) | 1d | 2010-03-23 | 2010-03-23 | 486 |  |  | 2010-03-23 | 2010-03-23 | 1d | 132d |  | finish no earlier than 2010-03-23 | 시범운영 실시 | 07060716O410164 | C07-1 1.7.4.2 | 리허설결과서,리허설결과보고서 |
| 489 | KIRAMS2.4.5.4 | **시스템 오픈(분원)** | 20d | 2010-03-25 | 2010-04-21 |  |  |  | 2010-03-25 | 2010-04-21 | 20d | 111d |  |  | 시범운영 | 07060716O410164 | C07-1 1.7.4 |  |
| 490 | KIRAMS2.4.5.4.1 | 오픈준비 | 5d | 2010-03-25 | 2010-03-31 |  |  |  | 2010-03-25 | 2010-03-31 | 5d | 125d | 0d | start no earlier than 2010-03-25 | 시범운영계획 수립 | 07060716O410164 | C07-1 1.7.4.1 | 이행계획서 |
| 491 | KIRAMS2.4.5.4.2 | 시스템 OPEN | 1d | 2010-04-01 | 2010-04-01 | 490 |  |  | 2010-04-01 | 2010-04-01 | 1d | 125d |  |  | 시범운영계획 수립 | 07060716O410164 | C07-1 1.7.4.1 | 이행계획서 |
| 492 | KIRAMS2.4.5.4.3 | 안정화 지원 | 15d | 2010-04-01 | 2010-04-21 |  |  |  | 2010-04-01 | 2010-04-21 | 15d | 111d |  | finish no earlier than 2010-04-21 | 시범운영계획 수립 | 07060716O410164 | C07-1 1.7.4.1 | Help Desk 일지 |
| 493 | KIRAMS2.5 | **안정화운영 및 종료** | 190d? | 2010-01-01 | 2010-09-30 |  |  |  | 2010-01-01 | 2010-09-30 | 190d? | 0d |  |  |  |  |  |  |
| 494 | KIRAMS2.5.1 | 본원(서울) 안정화 운영지원 | 127d | 2010-01-01 | 2010-06-30 |  |  |  | 2010-01-01 | 2010-06-30 | 127d | 63d |  | finish no earlier than 2010-06-30 | 시범운영계획 수립 | 07060716O410164 | C07-1 1.7.4.1 | Help Desk 일지 |
| 495 | KIRAMS2.5.2 | 분원(동남권) 안정화 운영지원 | 126d? | 2010-04-01 | 2010-09-30 |  |  |  | 2010-04-01 | 2010-09-30 | 126d? | 0d |  | finish no earlier than 2010-09-30 |  |  |  | Help Desk 일지 |
| 496 | KIRAMS3 | **OCS&EMR(원무)** | 439d? | 2009-01-12 A | 2010-09-30 |  | 11% | 388.89d? | 2009-01-12 | 2010-09-30 | 439d? | 0d |  |  |  |  |  |  |
| 497 | KIRAMS3.1 | **요구정의 및 분석** | 53d? | 2009-01-12 A | 2009-03-27 |  | 99% | 0.19d? | 2009-01-12 | 2009-03-27 | 53d? | 386d |  |  | 요구정의 | 07060716O410138 | C07-1 1.2 | 요구정의, 분석산출물 |
| 498 | KIRAMS3.1.1 | ITA 산출물 분석 | 18d | 2009-01-19 A | 2009-02-13 A |  | 100% |  | 2009-01-19 | 2009-02-13 | 18d |  |  | start no earlier than 2009-01-19 | 비즈니스 모델링(AS-IS) | 07060716O410139 | C07-1 1.2.1 | ITA결과산출물 |
| 499 | KIRAMS3.1.2 | **단계착수** | 8d? | 2009-02-02 A | 2009-02-11 A |  | 100% |  | 2009-02-02 | 2009-02-11 | 8d? |  |  |  |  |  |  |  |
| 500 | KIRAMS3.1.2.1 | 표준및절차정의 및 검토 | 6d | 2009-02-02 A | 2009-02-09 A |  | 100% |  | 2009-02-02 | 2009-02-09 | 6d |  |  | start no earlier than 2009-02-02 |  |  |  | 표준및절차매뉴얼 |
| 501 | KIRAMS3.1.2.2 | 오리엔테이션 | 2d? | 2009-02-10 A | 2009-02-11 A |  | 100% |  | 2009-02-10 | 2009-02-11 | 2d? |  |  |  |  |  |  | 표준및절차매뉴얼 |
| 502 | KIRAMS3.1.3 | **요구사항정의** | 32d | 2009-01-12 A | 2009-02-26 A |  | 100% |  | 2009-01-12 | 2009-02-26 | 32d |  |  |  | 요구사항 정의 | 07060716O410141 | C07-1 1.2.3 |  |
| 503 | KIRAMS3.1.3.1 | **인터뷰 실시** | 32d | 2009-01-12 A | 2009-02-26 A |  | 100% |  | 2009-01-12 | 2009-02-26 | 32d |  |  |  | 인터뷰 실시 | 07060716O410139 | C07-1 1.2.1.2 |  |
| 504 | KIRAMS3.1.3.1.1 | 현행시스템 분석(전산정보팀 인터뷰) | 13d | 2009-01-12 A | 2009-01-30 A |  | 100% |  | 2009-01-12 | 2009-01-30 | 13d |  |  | start no earlier than 2009-01-12 | 인터뷰 실시 | 07060716O410139 | C07-1 1.2.1.2 |  |
| 505 | KIRAMS3.1.3.1.2 | 실무추진T/F 인터뷰 상세일정 수립 | 5d | 2009-01-22 A | 2009-01-30 A |  | 100% |  | 2009-01-22 | 2009-01-30 | 5d |  |  | finish no earlier than 2009-01-30 | 인터뷰 실시 | 07060716O410139 | C07-1 1.2.1.2 | 인터뷰리스트 |
| 506 | KIRAMS3.1.3.1.3 | 현업 인터뷰 실시 | 17d | 2009-02-02 A | 2009-02-24 A | 505 | 100% |  | 2009-02-02 | 2009-02-24 | 17d |  |  | start no earlier than 2009-02-02 | 인터뷰 실시 | 07060716O410139 | C07-1 1.2.1.2 | 회의록 |
| 507 | KIRAMS3.1.3.1.4 | 인터뷰 결과 정리 | 14d | 2009-02-09 A | 2009-02-26 A |  | 100% |  | 2009-02-09 | 2009-02-26 | 14d |  |  | start no earlier than 2009-02-09 | 인터뷰 실시 | 07060716O410139 | C07-1 1.2.1.2 | 인터뷰결과서 |
| 508 | KIRAMS3.1.3.2 | 요구사항 도출/정제/확정 | 9d | 2009-02-16 A | 2009-02-26 A |  | 100% |  | 2009-02-16 | 2009-02-26 | 9d |  |  | finish no earlier than 2009-02-20 | 요구사항 정제 | 07060716O410141 | C07-1 1.2.3.2 | 요구사항정의서 |

| ID | WBS | Task | Duration | Start | Finish | Predecessors | Complete | Remaining | Baseline start | Baseline finish | Baseline duration | Total slack | Constraint | Text20 | Text25 | Text26 | 산출물 |
| --- | --- | --- | --- | --- | --- | --- | --- | --- | --- | --- | --- | --- | --- | --- | --- | --- | --- |
| 509 | KIRAMS3.1.4 | **업무분석** | 13d | 2009-02-23 A | 2009-03-11 A |  | 100% |  | 2009-02-23 | 2009-03-11 | 13d |  |  | 업무 분석 | 07060716O410143 | C07-1 1.3.1 |  |
| 510 | KIRAMS3.1.4.1 | 유스케이스 분석 | 11d | 2009-02-25 A | 2009-03-11 A |  | 100% |  | 2009-02-25 | 2009-03-11 | 11d |  | finish no earlier than 2009-03-06 | 유스케이스 분석 | 07060716O410143 | C07-1 1.3.1.3 | 유스케이스 정의서/다이어그램 |
| 511 | KIRAMS3.1.4.2 | 시스템인터페이스 분석 | 5d | 2009-02-23 A | 2009-02-27 A |  | 100% |  | 2009-02-23 | 2009-02-27 | 5d |  | finish no earlier than 2009-02-27 | 시스템인터페이스 분석 | 07060716O410143 | C07-1 1.3.1.4 | 시스템인터페이스정의서 |
| 512 | KIRAMS3.1.5 | **화면분석** | 10d | 2009-03-09 A | 2009-03-20 A |  | 100% |  | 2009-03-09 | 2009-03-18 | 8d |  |  | 화면 분석 | 07060716O410144 | C07-1 1.3.2 |  |
| 513 | KIRAMS3.1.5.1 | **화면표준 정의** | 10d | 2009-03-09 A | 2009-03-20 A |  | 100% |  | 2009-03-09 | 2009-03-18 | 8d |  |  | 화면표준 정의 | 07060716O410144 | C07-1 1.3.2.1 |  |
| 514 | KIRAMS3.1.5.1.1 | 표준 디자인 자체 검토 | 3d | 2009-03-09 A | 2009-03-11 A |  | 100% |  | 2009-03-09 | 2009-03-10 | 2d |  | start no earlier than 2009-03-09 | 화면레이아웃 정의 | 07060716O410144 | C07-1 1.3.2.2 | 디자인 시안 |
| 515 | KIRAMS3.1.5.1.2 | 표준 디자인 확정 의뢰 | 2d | 2009-03-12 A | 2009-03-13 A | 514 | 100% |  | 2009-03-11 | 2009-03-13 | 3d |  | start no earlier than 2009-03-11 | 화면레이아웃 정의 | 07060716O410144 | C07-1 1.3.2.2 | 디자인 시안 |
| 516 | KIRAMS3.1.5.1.3 | 화면표준정의서 작성 | 5d | 2009-03-16 A | 2009-03-20 A | 515 | 100% |  | 2009-03-16 | 2009-03-18 | 3d |  | start no earlier than 2009-03-16 | 화면레이아웃 정의 | 07060716O410144 | C07-1 1.3.2.2 | 화면표준정의서 |
| 517 | KIRAMS3.1.5.2 | 메뉴구조 정의 | 5d | 2009-03-09 A | 2009-03-13 A |  | 100% |  | 2009-03-09 | 2009-03-13 | 5d |  | finish no earlier than 2009-03-13 | 메뉴구조 정의 | 07060716O410144 | C07-1 1.3.2.3 | 메뉴구조도 |
| 518 | KIRAMS3.1.6 | **데이터분석** | 5d | 2009-03-09 A | 2009-03-13 A |  | 100% |  | 2009-03-09 | 2009-03-13 | 5d |  |  | 데이터 분석 | 07060716O410145 | C07-1 1.3.3 |  |
| 519 | KIRAMS3.1.6.1 | 논리데이터 모델링 | 4d | 2009-03-10 A | 2009-03-13 A |  | 100% |  | 2009-03-10 | 2009-03-13 | 4d |  | finish no earlier than 2009-03-20 | 논리데이터 모델링 | 07060716O410145 | C07-1 1.3.3.1 | ERD(논리) |
| 520 | KIRAMS3.1.6.2 | 자료사전 정의 | 5d | 2009-03-09 A | 2009-03-13 A |  | 100% |  | 2009-03-09 | 2009-03-13 | 5d |  | start no earlier than 2009-03-09 | 자료사전 정의 | 07060716O410145 | C07-1 1.3.3.2 | 자료사전 |
| 521 | KIRAMS3.1.7 | **데이터전환분석** | 12d | 2009-03-12 A | 2009-03-27 A |  | 100% |  | 2009-03-12 | 2009-03-23 | 8d |  |  | 컨버전 분석 | 07060716O410146 | C07-1 1.3.4 |  |
| 522 | KIRAMS3.1.7.1 | 데이터전환대상 정의 지원 | 12d | 2009-03-12 A | 2009-03-27 A |  | 100% |  | 2009-03-12 | 2009-03-23 | 8d |  | finish no earlier than 2009-03-27 | 컨버전대상 정의 | 07060716O410141 | C07-1 1.2.3.4 | 데이터전환대상목록 |
| 523 | KIRAMS3.1.8 | **단계완료** | 8d? | 2009-03-18 A | 2009-03-27 |  | 88% | 1d? | 2009-03-18 | 2009-03-27 | 8d? | 386d |  |  |  |  |  |
| 524 | KIRAMS3.1.8.1 | Inspection 실시 및 시정조치 | 3d? | 2009-03-18 A | 2009-03-20 A |  | 100% |  | 2009-03-18 | 2009-03-24 | 5d? |  | finish no earlier than 2009-03-24 |  |  |  | Inspection결과,시정조치서 |
| 525 | KIRAMS3.1.8.2 | 단계완료승인획득 | 1d? | 2009-03-24 A | 2009-03-27 | 524 | 50% | 0.5d? | 2009-03-27 | 2009-03-27 | 1d? | 386d | finish no earlier than 2009-03-27 |  |  |  | 고객인수확인서 |
| 526 | KIRAMS3.2 | **설계** | 49d? | 2009-03-09 A | 2009-05-15 |  | 10% | 44.04d? | 2009-02-24 | 2009-05-15 | 58d? | 352d |  | 설계 | 07060716O410151 | C07-1 1.5 |  |
| 527 | KIRAMS3.2.1 | **단계착수** | 15d? | 2009-03-09 A | 2009-03-27 A |  | 100% |  | 2009-02-24 | 2009-03-20 | 19d? |  |  |  |  |  | 표준및절차매뉴얼 |
| 528 | KIRAMS3.2.1.1 | 표준및절차정의 및 검토 | 10d? | 2009-03-09 A | 2009-03-20 A |  | 100% |  | 2009-03-09 | 2009-03-20 | 10d? |  | finish no earlier than 2009-03-20 |  |  |  | 표준및절차매뉴얼 |
| 529 | KIRAMS3.2.1.2 | 오리엔테이션 | 4d? | 2009-03-24 A | 2009-03-27 A | 528 | 100% |  | 2009-02-24 | 2009-02-27 | 4d? |  | finish no earlier than 2009-03-27 |  |  |  | 표준및절차매뉴얼 |
| 530 | KIRAMS3.2.2 | **업무설계** | 35d | 2009-03-23 A | 2009-05-11 |  | 1% | 34.65d | 2009-03-23 | 2009-05-11 | 35d | 356d |  | 업무 설계 | 07060716O410152 | C07-1 1.5.1 | 설계 산출물 |
| 531 | KIRAMS3.2.2.1 | 설계패키지 정의 | 10d | 2009-03-23 A | 2009-04-03 |  | 5% | 9.5d | 2009-03-23 | 2009-04-03 | 10d | 381d | finish no earlier than 2009-04-03 | 설계패키지 정의 | 07060716O410152 | C07-1 1.5.1.1 | 설계패키지정의서 |
| 532 | KIRAMS3.2.2.2 | 클래스 설계 | 10d | 2009-04-13 | 2009-04-24 |  |  |  | 2009-04-13 | 2009-04-24 | 10d | 366d | finish no earlier than 2009-04-24 | 클래스 설계 | 07060716O410152 | C07-1 1.5.1.2 | 클래스다이어그램, 클래스명세서 |
| 533 | KIRAMS3.2.2.3 | 배치프로그램 설계 | 10d | 2009-04-13 | 2009-04-24 |  |  |  | 2009-04-13 | 2009-04-24 | 10d | 366d | finish no earlier than 2009-04-24 | 시스템인터페이스 설계 | 07060716O410152 | C07-1 1.5.1.3 | 배치프로그램사양서 |
| 534 | KIRAMS3.2.2.4 | 시스템인터페이스 설계 | 10d | 2009-04-13 | 2009-04-24 |  |  |  | 2009-04-13 | 2009-04-24 | 10d | 366d | finish no earlier than 2009-04-24 | 배포구조 정의 | 07060716O410152 | C07-1 1.5.1.4 | 시스템인터페이스정의서 |
| 535 | KIRAMS3.2.2.5 | 배포구조 정의 | 10d | 2009-04-27 | 2009-05-11 |  |  |  | 2009-04-27 | 2009-05-11 | 10d | 356d | start no earlier than 2009-04-27 | 배포구조 정의 | 07060716O410152 | C07-1 1.5.1.4 | 배포정의서 |

| ID | WBS | Task | Duration | Start | Finish | Predecessors | Complete | Remaining | Baseline start | Baseline finish | Baseline duration | Total slack | Free slack | Constraint | Text20 | Text25 | Text26 | 산출물 |
| --- | --- | --- | --- | --- | --- | --- | --- | --- | --- | --- | --- | --- | --- | --- | --- | --- | --- | --- |
| 536 | KIRAMS3.2.3 | **화면설계** | 20d | 2009-03-23 A | 2009-04-17 |  | 5% | 19d | 2009-03-23 | 2009-04-17 | 20d | 371d |  |  | 화면 설계 | 07060716O410153 | C07-1 1.5.2 | 보고서목록,보고서정의서,화면목록,화면정의서 |
| 537 | KIRAMS3.2.3.1 | 화면설계 | 20d | 2009-03-23 A | 2009-04-17 |  | 5% | 19d | 2009-03-23 | 2009-04-17 | 20d | 371d |  | finish no earlier than 2009-04-17 | 화면설계 | 07060716O410153 | C07-1 1.5.2.1 | 보고서목록,보고서정의서,화면목록,화면정의서 |
| 538 | KIRAMS3.2.4 | **데이터설계** | 9d | 2009-04-27 | 2009-05-08 |  |  |  | 2009-04-27 | 2009-05-08 | 9d | 357d |  |  | 데이터 설계 | 07060716O410154 | C07-1 1.5.3 | 테이블목록,데이터코드정의서 |
| 539 | KIRAMS3.2.4.1 | 데이터코드 설계 | 9d | 2009-04-27 | 2009-05-08 |  |  |  | 2009-04-27 | 2009-05-08 | 9d | 357d |  | finish no earlier than 2009-05-08 | 데이터코드 설계 | 07060716O410154 | C07-1 1.5.3.1 | 데이터코드목록,데이터코드정의서 |
| 540 | KIRAMS3.2.4.2 | 물리데이터 모델링 | 9d | 2009-04-27 | 2009-05-08 |  |  |  | 2009-04-27 | 2009-05-08 | 9d | 357d |  | finish no earlier than 2009-05-08 | 물리데이터 모델링 | 07060716O410154 | C07-1 1.5.3.2 | ERD(물리),테이블목록,테이블정의서 |
| 541 | KIRAMS3.2.5 | **데이터전환설계 지원** | 34d | 2009-03-23 | 2009-05-08 |  |  |  | 2009-03-23 | 2009-05-08 | 34d | 357d |  |  | 컨버전 설계 | 07060716O410155 | C07-1 1.5.4 | 데이터전환설계서,코드매핑정의서,테이블매핑정의서 |
| 542 | KIRAMS3.2.5.1 | 컨버전매핑 정의 지원 | 34d | 2009-03-23 | 2009-05-08 |  |  |  | 2009-03-23 | 2009-05-08 | 34d | 357d |  | finish no earlier than 2009-05-08 | 컨버전매핑 정의 | 07060716O410155 | C07-1 1.5.4.1 | 데이터전환설계서,코드매핑정의서,테이블매핑정의서 |
| 543 | KIRAMS3.2.6 | **테스트설계** | 6d | 2009-04-27 | 2009-05-04 |  |  |  | 2009-04-27 | 2009-05-04 | 6d | 360d |  |  | 테스트 설계 | 07060716O410156 | C07-1 1.5.5 | 테스트계획서 |
| 544 | KIRAMS3.2.6.1 | 테스트 계획 수립 | 6d | 2009-04-27 | 2009-05-04 |  |  |  | 2009-04-27 | 2009-05-04 | 6d | 360d |  | finish no earlier than 2009-05-04 | 테스트계획 수립 | 07060716O410156 | C07-1 1.5.5.1 | 테스트계획서 |
| 545 | KIRAMS3.2.6.2 | 시스템테스트 계획 수립 | 6d | 2009-04-27 | 2009-05-04 |  |  |  | 2009-04-27 | 2009-05-04 | 6d | 360d |  | finish no earlier than 2009-05-04 | 시스템테스트계획 수립 | 07060716O410156 | C07-1 1.5.5.4 | 시스템테스트계획서 |
| 546 | KIRAMS3.2.7 | **단계완료** | 9d? | 2009-05-04 | 2009-05-15 |  |  |  | 2009-05-04 | 2009-05-15 | 9d? | 352d |  |  |  |  |  | Inspection결과,시정조치서 |
| 547 | KIRAMS3.2.7.1 | Inspection 실시 및 시정조치 | 4d? | 2009-05-04 | 2009-05-08 |  |  |  | 2009-05-04 | 2009-05-08 | 4d? | 356d | 4d | finish no earlier than 2009-05-08 |  |  |  | Inspection결과,시정조치서 |
| 548 | KIRAMS3.2.7.2 | 단계완료승인획득 | 1d? | 2009-05-15 | 2009-05-15 | 547 |  |  | 2009-05-15 | 2009-05-15 | 1d? | 352d |  | finish no earlier than 2009-05-15 |  |  |  | 고객인수확인서 |
| 549 | KIRAMS3.3 | **개발** | 118d? | 2009-04-20 | 2009-10-02 |  |  |  | 2009-04-20 | 2009-10-02 | 118d? | 253d |  |  | 개발 | 07060716O410157 | C07-1 1.6 |  |
| 550 | KIRAMS3.3.1 | **단계착수** | 19d? | 2009-04-20 | 2009-05-15 |  |  |  | 2009-04-20 | 2009-05-15 | 19d? | 352d |  |  |  |  |  | 표준및절차매뉴얼 |
| 551 | KIRAMS3.3.1.1 | 표준및절차정의 및 검토 | 10d? | 2009-04-20 | 2009-05-01 |  |  |  | 2009-04-20 | 2009-05-01 | 10d? | 361d |  | finish no earlier than 2009-05-01 |  |  |  | 표준및절차매뉴얼 |
| 552 | KIRAMS3.3.1.2 | 오리엔테이션 | 5d? | 2009-05-11 | 2009-05-15 |  |  |  | 2009-05-11 | 2009-05-15 | 5d? | 352d |  | finish no earlier than 2009-05-15 |  |  |  | 표준및절차매뉴얼 |
| 553 | KIRAMS3.3.2 | **코딩** | 108d | 2009-05-04 | 2009-10-02 |  |  |  | 2009-05-04 | 2009-10-02 | 108d | 253d |  |  |  |  |  |  |
| 554 | KIRAMS3.3.2.1 | 프로그램 코딩 | 107d | 2009-05-04 | 2009-09-30 |  |  |  | 2009-05-04 | 2009-09-30 | 107d | 254d |  | finish no earlier than 2009-09-30 | 코딩 | 07060716O410158 | C07-1 1.6.1 | 소스코드 |
| 555 | KIRAMS3.3.2.2 | 단위테스트 실시 | 104d | 2009-05-11 | 2009-10-02 |  |  |  | 2009-05-11 | 2009-10-02 | 104d | 253d |  | finish no earlier than 2009-10-02 | 코딩단위테스트 실시 | 07060716O410158 | C07-1 1.6.1.1 | 단위테스트체크리스트(결과) |
| 556 | KIRAMS3.3.2.3 | 통합빌드 | 88d | 2009-06-01 | 2009-09-30 |  |  |  | 2009-06-01 | 2009-09-30 | 88d | 254d |  | finish no earlier than 2009-09-30 | 통합빌드 | 07060716O410158 | C07-1 1.6.1.2 | 배포파일 |
| 557 | KIRAMS3.3.3 | 통합테스트 설계 | 6d? | 2009-04-27 | 2009-05-04 |  |  |  | 2009-04-27 | 2009-05-04 | 6d? | 360d |  | finish no earlier than 2009-05-04 |  |  |  | 통합테스트시나리오 |
| 558 | KIRAMS3.3.4 | **기초코드 구축** | 60d | 2009-05-11 | 2009-07-31 |  |  |  | 2009-05-11 | 2009-07-31 | 60d | 297d |  |  | 테스트 실시 | 07060716O410159 | C07-1 1.6.2 | 수가코드,기초코드 |
| 559 | KIRAMS3.3.4.1 | 수가코드 작성 | 60d | 2009-05-11 | 2009-07-31 |  |  |  | 2009-05-11 | 2009-07-31 | 60d | 297d |  | finish no earlier than 2009-07-31 | 시스템테스트 실시 | 07060716O410159 | C07-1 1.6.2.2 | 수가코드 |
| 560 | KIRAMS3.3.4.2 | 기초코드 작성 | 45d | 2009-06-01 | 2009-07-31 |  |  |  | 2009-06-01 | 2009-07-31 | 45d | 297d |  | finish no earlier than 2009-07-31 | 시스템테스트 실시 | 07060716O410159 | C07-1 1.6.2.2 | 기초코드 |

| ID | WBS | Task | Duration | Start | Finish | Predecessors | Baseline start | Baseline finish | Baseline duration | Total slack | Free slack | Constraint | Text20 | Text25 | Text26 | 산출물 |
| --- | --- | --- | --- | --- | --- | --- | --- | --- | --- | --- | --- | --- | --- | --- | --- | --- |
| 561 | KIRAMS3.4 | **이행** | 161d? | 2009-09-07 | 2010-04-21 |  | 2009-09-07 | 2010-04-21 | 161d? | 111d |  |  | 이행 | 07060716O410160 | C07-1 1.7 |  |
| 562 | KIRAMS3.4.1 | **단계착수** | 19d? | 2009-09-14 | 2009-10-09 |  | 2009-09-14 | 2009-10-09 | 19d? | 248d |  |  |  |  |  | 표준및절차매뉴얼 |
| 563 | KIRAMS3.4.1.1 | 표준및절차정의 및 검토 | 10d? | 2009-09-14 | 2009-09-25 |  | 2009-09-14 | 2009-09-25 | 10d? | 257d |  | finish no earlier than 2009-09-25 |  |  |  | 표준및절차매뉴얼 |
| 564 | KIRAMS3.4.1.2 | 오리엔테이션 | 4d? | 2009-10-06 | 2009-10-09 |  | 2009-10-06 | 2009-10-09 | 4d? | 248d |  | start no earlier than 2009-10-06 |  |  |  | 표준및절차매뉴얼 |
| 565 | KIRAMS3.4.2 | **이행계획 수립** | 63d | 2009-09-07 | 2009-12-03 |  | 2009-09-07 | 2009-12-03 | 63d | 209d |  |  | 이행계획 수립 | 07060716O410161 | C07-1 1.7.1 | 이행계획서 |
| 566 | KIRAMS3.4.2.1 | **교육훈련계획 수립** | 18d | 2009-09-07 | 2009-09-30 |  | 2009-09-07 | 2009-09-30 | 18d | 254d |  |  | 교육훈련계획 수립 | 07060716O410161 | C07-1 1.7.1.2 |  |
| 567 | KIRAMS3.4.2.1.1 | 교육계획서 작성 | 5d | 2009-09-07 | 2009-09-11 |  | 2009-09-07 | 2009-09-11 | 5d | 254d | 0d | finish no earlier than 2009-09-11 | 교육훈련계획 수립 | 07060716O410161 | C07-1 1.7.1.2 | 교육계획서 |
| 568 | KIRAMS3.4.2.1.2 | 교육상세일정 조정 | 3d | 2009-09-14 | 2009-09-16 | 567 | 2009-09-14 | 2009-09-16 | 3d | 254d | 0d | start no earlier than 2009-09-14 | 교육훈련계획 수립 | 07060716O410161 | C07-1 1.7.1.2 | 교육계획서 |
| 569 | KIRAMS3.4.2.1.3 | 교육대상자 선정 | 2d | 2009-09-17 | 2009-09-18 | 568 | 2009-09-17 | 2009-09-18 | 2d | 254d | 0d | start no earlier than 2009-09-17 | 교육훈련계획 수립 | 07060716O410161 | C07-1 1.7.1.2 | 교육계획서 |
| 570 | KIRAMS3.4.2.1.4 | 교육장 준비 확인 | 8d | 2009-09-21 | 2009-09-30 | 569 | 2009-09-21 | 2009-09-30 | 8d | 254d |  | start no earlier than 2009-09-21 | 교육훈련계획 수립 | 07060716O410161 | C07-1 1.7.1.2 | 교육계획서 |
| 571 | KIRAMS3.4.2.2 | 릴리이즈 및 비상계획 수립 | 14d | 2009-11-16 | 2009-12-03 |  | 2009-11-16 | 2009-12-03 | 14d | 209d |  | finish no earlier than 2009-12-03 | 릴리이즈 및 비상계획 수립 | 07060716O410161 | C07-1 1.7.1.1 | 이행계획서 |
| 572 | KIRAMS3.4.3 | **시스템 사용교육** | 35d | 2009-10-05 | 2009-11-20 |  | 2009-10-05 | 2009-11-20 | 35d | 218d |  |  | 시스템 사용교육 | 07060716O410163 | C07-1 1.7.3 | 이행계획서 |
| 573 | KIRAMS3.4.3.1 | 사용자매뉴얼 작성 | 10d | 2009-10-05 | 2009-10-16 |  | 2009-10-05 | 2009-10-16 | 10d | 243d |  | finish no earlier than 2009-10-16 | 사용자매뉴얼 작성 | 07060716O410163 | C07-1 1.7.3.1 | 사용자매뉴얼 |
| 574 | KIRAMS3.4.3.2 | 운영매뉴얼 작성 | 10d | 2009-10-05 | 2009-10-16 |  | 2009-10-05 | 2009-10-16 | 10d | 218d | 0d | start no earlier than 2009-10-05 | 운영매뉴얼 작성 | 07060716O410163 | C07-1 1.7.3.2 | 운영매뉴얼 |
| 575 | KIRAMS3.4.3.3 | 교육훈련 실시 | 25d | 2009-10-19 | 2009-11-20 | 574 | 2009-10-19 | 2009-11-20 | 25d | 218d |  | start no earlier than 2009-10-19 | 교육훈련 실시 | 07060716O410163 | C07-1 1.7.3.3 | 교육대상자명단 |
| 576 | KIRAMS3.4.4 | **본원(서울) 이행(~12/31)** | 80d | 2009-10-05 | 2010-01-22 |  | 2009-10-05 | 2010-01-22 | 80d | 173d |  |  | 교육훈련 실시 | 07060716O410163 | C07-1 1.7.3.3 | 이행계획서 |
| 577 | KIRAMS3.4.4.1 | **컨버전 및 릴리이즈(본원)** | 23d | 2009-11-30 | 2009-12-31 |  | 2009-11-30 | 2009-12-31 | 23d | 190d |  |  | 컨버전 및 릴리이즈 | 07060716O410162 | C07-1 1.7.2 |  |
| 578 | KIRAMS3.4.4.1.1 | 데이터베이스 구축 지원 및 확인 | 10d | 2009-11-30 | 2009-12-11 |  | 2009-11-30 | 2009-12-11 | 10d | 190d | 0d | start no earlier than 2009-11-30 | 데이터베이스 구축 | 07060716O410162 | C07-1 1.7.2.1 | 데이터베이스 |
| 579 | KIRAMS3.4.4.1.2 | 소프트웨어 설치 확인 | 9d | 2009-12-14 | 2009-12-24 | 578 | 2009-12-14 | 2009-12-24 | 9d | 190d | 0d | start no earlier than 2009-12-14 | 소프트웨어 설치 | 07060716O410162 | C07-1 1.7.2.2 | 어플리케이션 |
| 580 | KIRAMS3.4.4.1.3 | 데이터전환 확인 | 8d | 2009-12-21 | 2009-12-31 |  | 2009-12-21 | 2009-12-31 | 8d | 190d |  | start no earlier than 2009-12-21 | 데이터 컨버전 | 07060716O410162 | C07-1 1.7.2.3 | 컨버전된 데이터 |
| 581 | KIRAMS3.4.4.1.4 | 시스템 릴리이즈 | 4d | 2009-12-28 | 2009-12-31 | 579 | 2009-12-28 | 2009-12-31 | 4d | 190d |  | start no earlier than 2009-12-28 | 시스템 릴리이즈 | 07060716O410162 | C07-1 1.7.2.5 | 운영시스템 |
| 582 | KIRAMS3.4.4.2 | **테스트 실시(본원)** | 30d | 2009-10-05 | 2009-11-13 |  | 2009-10-05 | 2009-11-13 | 30d | 223d |  |  | 테스트 실시 | 07060716O410159 | C07-1 1.6.2 |  |
| 583 | KIRAMS3.4.4.2.1 | **통합테스트 실시** | 20d | 2009-10-05 | 2009-10-30 |  | 2009-10-05 | 2009-10-30 | 20d | 233d |  |  | 통합테스트 실시 | 07060716O410159 | C07-1 1.6.2.1 |  |
| 584 | KIRAMS3.4.4.2.1.1 | 통합테스트 환경구축 지원 | 5d | 2009-10-05 | 2009-10-09 |  | 2009-10-05 | 2009-10-09 | 5d | 248d |  | finish no earlier than 2009-10-09 | 교육훈련계획 수립 | 07060716O410161 | C07-1 1.7.1.2 | 이행계획서 |

| ID | WBS | Task | Duration | Start | Finish | Predecessors | Baseline start | Baseline finish | Baseline duration | Total slack | Free slack | Constraint | Text20 | Text25 | Text26 | 산출물 |
| --- | --- | --- | --- | --- | --- | --- | --- | --- | --- | --- | --- | --- | --- | --- | --- | --- |
| 585 | KIRAMS3.4.4.2.1.2 | **1차 통합테스트** | 10d | 2009-10-12 | 2009-10-23 |  | 2009-10-12 | 2009-10-23 | 10d | 238d |  |  | 교육훈련계획 수립 | 07060716O410161 | C07-1 1.7.1.2 |  |
| 586 | KIRAMS3.4.4.2.1.2.1 | 기초자료 구축(1차) | 2d | 2009-10-12 | 2009-10-13 |  | 2009-10-12 | 2009-10-13 | 2d | 238d | 0d | finish no earlier than 2009-10-13 | 교육훈련계획 수립 | 07060716O410161 | C07-1 1.7.1.2 | 테스트계획서 |
| 587 | KIRAMS3.4.4.2.1.2.2 | 통합테스트 실시(1차) | 2d | 2009-10-14 | 2009-10-15 | 586 | 2009-10-14 | 2009-10-15 | 2d | 238d | 0d |  | 교육훈련계획 수립 | 07060716O410161 | C07-1 1.7.1.2 | 결함보고서,통합테스트시나리오(결과),통합테스트결과보고서 |
| 588 | KIRAMS3.4.4.2.1.2.3 | 통합테스트 결과 분석(1차) | 1d | 2009-10-16 | 2009-10-16 | 587 | 2009-10-16 | 2009-10-16 | 1d | 238d | 0d |  | 교육훈련계획 수립 | 07060716O410161 | C07-1 1.7.1.2 | 결함보고서,통합테스트시나리오(결과),통합테스트결과보고서 |
| 589 | KIRAMS3.4.4.2.1.2.4 | 통합테스트 결과 조치(1차) | 5d | 2009-10-19 | 2009-10-23 | 588 | 2009-10-19 | 2009-10-23 | 5d | 238d |  | start no earlier than 2009-10-19 | 교육훈련계획 수립 | 07060716O410161 | C07-1 1.7.1.2 | 결함보고서,통합테스트시나리오(결과),통합테스트결과보고서 |
| 590 | KIRAMS3.4.4.2.1.3 | **2차 통합테스트** | 7d | 2009-10-22 | 2009-10-30 |  | 2009-10-22 | 2009-10-30 | 7d | 233d |  |  | 교육훈련계획 수립 | 07060716O410161 | C07-1 1.7.1.2 |  |
| 591 | KIRAMS3.4.4.2.1.3.1 | 기초자료 구축(2차) | 2d | 2009-10-22 | 2009-10-23 |  | 2009-10-22 | 2009-10-23 | 2d | 233d | 0d | start no earlier than 2009-10-22 | 교육훈련계획 수립 | 07060716O410161 | C07-1 1.7.1.2 | 테스트계획서 |
| 592 | KIRAMS3.4.4.2.1.3.2 | 통합테스트 실시(2차) | 2d | 2009-10-26 | 2009-10-27 | 591 | 2009-10-26 | 2009-10-27 | 2d | 233d | 0d |  | 교육훈련계획 수립 | 07060716O410161 | C07-1 1.7.1.2 | 결함보고서,통합테스트시나리오(결과),통합테스트결과보고서 |
| 593 | KIRAMS3.4.4.2.1.3.3 | 통합테스트 결과 분석(2차) | 1d | 2009-10-28 | 2009-10-28 | 592 | 2009-10-28 | 2009-10-28 | 1d | 233d | 0d |  | 교육훈련계획 수립 | 07060716O410161 | C07-1 1.7.1.2 | 결함보고서,통합테스트시나리오(결과),통합테스트결과보고서 |
| 594 | KIRAMS3.4.4.2.1.3.4 | 통합테스트 결과 조치(2차) | 2d | 2009-10-29 | 2009-10-30 | 593 | 2009-10-29 | 2009-10-30 | 2d | 233d |  |  | 교육훈련계획 수립 | 07060716O410161 | C07-1 1.7.1.2 | 결함보고서,통합테스트시나리오(결과),통합테스트결과보고서 |
| 595 | KIRAMS3.4.4.2.2 | **시스템테스트 실시** | 5d | 2009-11-09 | 2009-11-13 |  | 2009-11-09 | 2009-11-13 | 5d | 223d |  |  | 시스템테스트 실시 | 07060716O410159 | C07-1 1.6.2.2 |  |
| 596 | KIRAMS3.4.4.2.2.1 | 부하테스트 프로그램 지원 | 5d | 2009-11-09 | 2009-11-13 |  | 2009-11-09 | 2009-11-13 | 5d | 223d |  | start no earlier than 2009-11-09 | 시스템테스트 실시 | 07060716O410159 | C07-1 1.6.2.2 | 시스템테스트결과보고서 |
| 597 | KIRAMS3.4.4.3 | **리허설(본원)** | 26d | 2009-11-16 | 2009-12-21 |  | 2009-11-16 | 2009-12-21 | 26d | 197d |  |  | 시범운영 | 07060716O410164 | C07-1 1.7.4 |  |
| 598 | KIRAMS3.4.4.3.1 | 리허설 계획 수립지원(시나리오 작성) | 11d | 2009-11-16 | 2009-11-30 |  | 2009-11-16 | 2009-11-30 | 11d | 212d |  | finish no earlier than 2009-11-30 | 시범운영계획 수립 | 07060716O410164 | C07-1 1.7.4.1 | 리허설계획서,리허설시나리오 |
| 599 | KIRAMS3.4.4.3.2 | **1차 리허설 실시** | 7d | 2009-12-01 | 2009-12-09 |  | 2009-12-01 | 2009-12-09 | 7d | 205d |  |  | 시범운영 실시 | 07060716O410164 | C07-1 1.7.4.2 |  |
| 600 | KIRAMS3.4.4.3.2.1 | 기초자료 구축(1차) | 2d | 2009-12-01 | 2009-12-02 |  | 2009-12-01 | 2009-12-02 | 2d | 210d |  | start no earlier than 2009-12-01 | 시범운영 실시 | 07060716O410164 | C07-1 1.7.4.2 | 리허설계획서,리허설시나리오 |
| 601 | KIRAMS3.4.4.3.2.2 | 리허설 공지 및 상황실 운영(1차) | 2d | 2009-12-01 | 2009-12-02 |  | 2009-12-01 | 2009-12-02 | 2d | 210d |  | start no earlier than 2009-12-01 | 시범운영 실시 | 07060716O410164 | C07-1 1.7.4.2 | 리허설계획서,리허설시나리오 |
| 602 | KIRAMS3.4.4.3.2.3 | 가상환자 준비(1차) | 2d | 2009-12-01 | 2009-12-02 |  | 2009-12-01 | 2009-12-02 | 2d | 207d | 0d | start no earlier than 2009-12-01 | 시범운영 실시 | 07060716O410164 | C07-1 1.7.4.2 | 리허설계획서,리허설시나리오 |
| 603 | KIRAMS3.4.4.3.2.4 | 리허설 실시(1차) | 1d | 2009-12-03 | 2009-12-03 | 602 | 2009-12-03 | 2009-12-03 | 1d | 207d | 0d |  | 시범운영 실시 | 07060716O410164 | C07-1 1.7.4.2 | 리허설결과서 |
| 604 | KIRAMS3.4.4.3.2.5 | 리허설 결과 분석 및 보고(1차) | 2d | 2009-12-04 | 2009-12-07 | 603 | 2009-12-04 | 2009-12-07 | 2d | 207d |  |  | 시범운영 실시 | 07060716O410164 | C07-1 1.7.4.2 | 리허설결과보고서 |
| 605 | KIRAMS3.4.4.3.2.6 | 리허설 결과 조치(1차) | 4d | 2009-12-04 | 2009-12-09 |  | 2009-12-04 | 2009-12-09 | 4d | 205d |  | finish no earlier than 2009-12-09 | 시범운영 실시 | 07060716O410164 | C07-1 1.7.4.2 | 리허설결과서,리허설결과보고서 |
| 606 | KIRAMS3.4.4.3.3 | **2차 리허설 실시** | 8d | 2009-12-10 | 2009-12-21 |  | 2009-12-10 | 2009-12-21 | 8d | 197d |  |  | 시범운영 실시 | 07060716O410164 | C07-1 1.7.4.2 |  |
| 607 | KIRAMS3.4.4.3.3.1 | 기초자료 구축(2차) | 2d | 2009-12-10 | 2009-12-11 |  | 2009-12-10 | 2009-12-11 | 2d | 202d | 0d | start no earlier than 2009-12-10 | 시범운영 실시 | 07060716O410164 | C07-1 1.7.4.2 | 리허설계획서,리허설시나리오 |
| 608 | KIRAMS3.4.4.3.3.2 | 리허설 공지 및 상황실 운영(2차) | 1d | 2009-12-14 | 2009-12-14 | 607 | 2009-12-14 | 2009-12-14 | 1d | 202d |  |  | 시범운영 실시 | 07060716O410164 | C07-1 1.7.4.2 | 리허설계획서,리허설시나리오 |
| 609 | KIRAMS3.4.4.3.3.3 | 가상환자 준비(2차) | 1d | 2009-12-14 | 2009-12-14 |  | 2009-12-14 | 2009-12-14 | 1d | 197d | 0d | start no earlier than 2009-12-14 | 시범운영 실시 | 07060716O410164 | C07-1 1.7.4.2 | 리허설계획서,리허설시나리오 |
| 610 | KIRAMS3.4.4.3.3.4 | 리허설 실시(2차) | 1d | 2009-12-15 | 2009-12-15 | 609 | 2009-12-15 | 2009-12-15 | 1d | 197d | 0d |  | 시범운영 실시 | 07060716O410164 | C07-1 1.7.4.2 | 리허설결과서 |
| 611 | KIRAMS3.4.4.3.3.5 | 리허설 결과 분석 및 보고(2차) | 1d | 2009-12-16 | 2009-12-16 | 610 | 2009-12-16 | 2009-12-16 | 1d | 197d | 0d |  | 시범운영 실시 | 07060716O410164 | C07-1 1.7.4.2 | 리허설결과보고서 |
| 612 | KIRAMS3.4.4.3.3.6 | 리허설 결과 조치(2차) | 3d | 2009-12-17 | 2009-12-21 | 611 | 2009-12-17 | 2009-12-21 | 3d | 197d |  | start no earlier than 2009-12-17 | 시범운영 실시 | 07060716O410164 | C07-1 1.7.4.2 | 리허설결과서,리허설결과보고서 |

| ID | WBS | Task | Duration | Start | Finish | Predecessors | Baseline start | Baseline finish | Baseline duration | Total slack | Free slack | Constraint | Text20 | Text25 | Text26 | 산출물 |
| --- | --- | --- | --- | --- | --- | --- | --- | --- | --- | --- | --- | --- | --- | --- | --- | --- |
| 613 | KIRAMS3.4.4.4 | **컨버전 전환 지원(1차)** | 30d | 2009-10-19 | 2009-11-27 |  | 2009-10-19 | 2009-11-27 | 30d | 213d |  |  | 테스트 실시 | 07060716O410159 | C07-1 1.6.2 |  |
| 614 | KIRAMS3.4.4.4.1 | 컨버전 전환 실시 지원(1차) | 20d | 2009-10-19 | 2009-11-13 |  | 2009-10-19 | 2009-11-13 | 20d | 213d | 0d | start no earlier than 2009-10-19 | 테스트 실시 | 07060716O410159 | C07-1 1.6.2 | 컨버전대상테이블 |
| 615 | KIRAMS3.4.4.4.2 | 전환결과 검증 및 수정 지원(1차) | 10d | 2009-11-16 | 2009-11-27 | 614 | 2009-11-16 | 2009-11-27 | 10d | 213d |  | finish no earlier than 2009-11-27 | 테스트 실시 | 07060716O410159 | C07-1 1.6.2 | 컨버전대상테이블 |
| 616 | KIRAMS3.4.4.5 | **컨버전 전환 지원(2차)** | 20d | 2009-11-30 | 2009-12-28 |  | 2009-11-30 | 2009-12-28 | 20d | 193d |  |  | 테스트 실시 | 07060716O410159 | C07-1 1.6.2 |  |
| 617 | KIRAMS3.4.4.5.1 | 컨버전 전환 실시 지원(2차) | 15d | 2009-11-30 | 2009-12-18 |  | 2009-11-30 | 2009-12-18 | 15d | 193d | 0d | start no earlier than 2009-11-30 | 테스트 실시 | 07060716O410159 | C07-1 1.6.2 | 컨버전대상테이블 |
| 618 | KIRAMS3.4.4.5.2 | 전환결과 검증 및 수정 지원(2차) | 5d | 2009-12-21 | 2009-12-28 | 617 | 2009-12-21 | 2009-12-28 | 5d | 193d |  |  | 테스트 실시 | 07060716O410159 | C07-1 1.6.2 | 컨버전대상테이블 |
| 619 | KIRAMS3.4.4.6 | 병행운영(인수테스트) | 5d | 2009-12-21 | 2009-12-28 |  | 2009-12-21 | 2009-12-28 | 5d | 193d |  | finish no earlier than 2009-12-28 | 안정화 및 유지보수 | 08100808O000000 | C07-1 1.7.5 | 인수테스트결괴서 |
| 620 | KIRAMS3.4.4.7 | **시스템 오픈(본원)** | 21d | 2009-12-28 | 2010-01-22 |  | 2009-12-28 | 2010-01-22 | 21d | 173d |  |  | 시범운영 | 07060716O410164 | C07-1 1.7.4 |  |
| 621 | KIRAMS3.4.4.7.1 | 오픈준비 | 4d | 2009-12-28 | 2009-12-31 |  | 2009-12-28 | 2009-12-31 | 4d | 189d | 0d | finish no earlier than 2009-12-31 | 시범운영계획 수립 | 07060716O410164 | C07-1 1.7.4.1 | 이행계획서 |
| 622 | KIRAMS3.4.4.7.2 | 시스템 OPEN | 1d | 2010-01-01 | 2010-01-01 | 621 | 2010-01-01 | 2010-01-01 | 1d | 189d |  |  | 시범운영계획 수립 | 07060716O410164 | C07-1 1.7.4.1 | 이행계획서 |
| 623 | KIRAMS3.4.4.7.3 | 안정화 지원 | 16d | 2010-01-02 | 2010-01-22 |  | 2010-01-02 | 2010-01-22 | 16d | 173d |  | finish no earlier than 2010-01-22 | 시범운영계획 수립 | 07060716O410164 | C07-1 1.7.4.1 | Help Desk 일지 |
| 624 | KIRAMS3.4.5 | **분원(동남권) 이행(1/1~3/31)** | 67d | 2010-01-18 | 2010-04-21 |  | 2010-01-18 | 2010-04-21 | 67d | 111d |  |  | 교육훈련 실시 | 07060716O410163 | C07-1 1.7.3.3 | 이행계획서 |
| 625 | KIRAMS3.4.5.1 | **릴리이즈(분원)** | 47d | 2010-01-25 | 2010-03-31 |  | 2010-01-25 | 2010-03-31 | 47d | 126d |  |  | 컨버전 및 릴리이즈 | 07060716O410162 | C07-1 1.7.2 |  |
| 626 | KIRAMS3.4.5.1.1 | 데이터베이스 구축 지원 및 확인 | 10d | 2010-01-25 | 2010-02-05 |  | 2010-01-25 | 2010-02-05 | 10d | 163d |  | start no earlier than 2010-01-25 | 데이터베이스 구축 | 07060716O410162 | C07-1 1.7.2.1 | 데이터베이스 |
| 627 | KIRAMS3.4.5.1.2 | 소프트웨어 설치 확인 | 10d | 2010-01-25 | 2010-02-05 |  | 2010-01-25 | 2010-02-05 | 10d | 163d |  | finish no earlier than 2010-02-05 | 소프트웨어 설치 | 07060716O410162 | C07-1 1.7.2.2 | 어플리케이션 |
| 628 | KIRAMS3.4.5.1.3 | 기초 데이터 생성 | 39d | 2010-02-01 | 2010-03-26 |  | 2010-02-01 | 2010-03-26 | 39d | 129d |  | finish no earlier than 2010-03-26 | 데이터 컨버전 | 07060716O410162 | C07-1 1.7.2.3 | 기초 데이터 |
| 629 | KIRAMS3.4.5.1.4 | 시스템 릴리이즈 | 3d | 2010-03-29 | 2010-03-31 |  | 2010-03-29 | 2010-03-31 | 3d | 126d |  | finish no earlier than 2010-03-31 | 시스템 릴리이즈 | 07060716O410162 | C07-1 1.7.2.5 | 운영시스템 |
| 630 | KIRAMS3.4.5.2 | **테스트 실시(분원)** | 15d | 2010-01-18 | 2010-02-05 |  | 2010-01-18 | 2010-02-05 | 15d | 163d |  |  | 테스트 실시 | 07060716O410159 | C07-1 1.6.2 |  |
| 631 | KIRAMS3.4.5.2.1 | **통합테스트 실시** | 12d | 2010-01-18 | 2010-02-02 |  | 2010-01-18 | 2010-02-02 | 12d | 166d |  |  | 통합테스트 실시 | 07060716O410159 | C07-1 1.6.2.1 |  |
| 632 | KIRAMS3.4.5.2.1.1 | 통합테스트 환경구축 지원 | 5d | 2010-01-18 | 2010-01-22 |  | 2010-01-18 | 2010-01-22 | 5d | 173d |  | start no earlier than 2010-01-18 | 교육훈련계획 수립 | 07060716O410161 | C07-1 1.7.1.2 | 이행계획서 |
| 633 | KIRAMS3.4.5.2.1.2 | **통합테스트** | 7d | 2010-01-25 | 2010-02-02 |  | 2010-01-25 | 2010-02-02 | 7d | 166d |  |  | 교육훈련계획 수립 | 07060716O410161 | C07-1 1.7.1.2 |  |
| 634 | KIRAMS3.4.5.2.1.2.1 | 기초자료 구축 | 2d | 2010-01-25 | 2010-01-26 |  | 2010-01-25 | 2010-01-26 | 2d | 169d | 0d | start no earlier than 2010-01-25 | 교육훈련계획 수립 | 07060716O410161 | C07-1 1.7.1.2 | 테스트계획서 |
| 635 | KIRAMS3.4.5.2.1.2.2 | 통합테스트 실시 | 2d | 2010-01-27 | 2010-01-28 | 634 | 2010-01-27 | 2010-01-28 | 2d | 169d |  |  | 교육훈련계획 수립 | 07060716O410161 | C07-1 1.7.1.2 | 결함보고서,통합테스트시나리오(결과),통합테스트결과보고서 |
| 636 | KIRAMS3.4.5.2.1.2.3 | 통합테스트 결과 분석 | 1d | 2010-01-28 | 2010-01-28 |  | 2010-01-28 | 2010-01-28 | 1d | 166d | 0d | start no earlier than 2010-01-28 | 교육훈련계획 수립 | 07060716O410161 | C07-1 1.7.1.2 | 결함보고서,통합테스트시나리오(결과),통합테스트결과보고서 |
| 637 | KIRAMS3.4.5.2.1.2.4 | 통합테스트 결과 조치 | 3d | 2010-01-29 | 2010-02-02 | 636 | 2010-01-29 | 2010-02-02 | 3d | 166d |  |  | 교육훈련계획 수립 | 07060716O410161 | C07-1 1.7.1.2 | 결함보고서,통합테스트시나리오(결과),통합테스트결과보고서 |

| ID | WBS | Task | Duration | Start | Finish | Predecessors | Baseline start | Baseline finish | Baseline duration | Total slack | Free slack | Constraint | Text20 | Text25 | Text26 | 산출물 |
| --- | --- | --- | --- | --- | --- | --- | --- | --- | --- | --- | --- | --- | --- | --- | --- | --- |
| 638 | KIRAMS3.4.5.2.2 | **시스템테스트 실시 지원** | 5d | 2010-02-01 | 2010-02-05 |  | 2010-02-01 | 2010-02-05 | 5d | 163d |  |  | 시스템테스트 실시 | 07060716O410159 | C07-1 1.6.2.2 |  |
| 639 | KIRAMS3.4.5.2.2.1 | 부하테스트 프로그램 지원 | 5d | 2010-02-01 | 2010-02-05 |  | 2010-02-01 | 2010-02-05 | 5d | 163d |  | start no earlier than 2010-02-01 | 시스템테스트 실시 | 07060716O410159 | C07-1 1.6.2.2 | 시스템테스트결과보고서 |
| 640 | KIRAMS3.4.5.3 | **리허설-인수테스트(분원)** | 31d | 2010-02-08 | 2010-03-23 |  | 2010-02-08 | 2010-03-23 | 31d | 132d |  |  | 시범운영 | 07060716O410164 | C07-1 1.7.4 |  |
| 641 | KIRAMS3.4.5.3.1 | 리허설 계획 수립지원(시나리오 작성) | 9d | 2010-02-08 | 2010-02-19 |  | 2010-02-08 | 2010-02-19 | 9d | 154d |  | start no earlier than 2010-02-08 | 시범운영계획 수립 | 07060716O410164 | C07-1 1.7.4.1 | 리허설계획서,리허설시나리오 |
| 642 | KIRAMS3.4.5.3.2 | **1차 리허설 실시** | 10d | 2010-03-01 | 2010-03-12 |  | 2010-03-01 | 2010-03-12 | 10d | 139d |  |  | 시범운영 실시 | 07060716O410164 | C07-1 1.7.4.2 |  |
| 643 | KIRAMS3.4.5.3.2.1 | 기초자료 구축(1차) | 2d | 2010-03-01 | 2010-03-02 |  | 2010-03-01 | 2010-03-02 | 2d | 143d | 0d | start no earlier than 2010-03-01 | 시범운영 실시 | 07060716O410164 | C07-1 1.7.4.2 | 리허설계획서,리허설시나리오 |
| 644 | KIRAMS3.4.5.3.2.2 | 리허설 공지 및 상황실 운영(1차) | 2d | 2010-03-03 | 2010-03-04 | 643 | 2010-03-03 | 2010-03-04 | 2d | 143d | 0d |  | 시범운영 실시 | 07060716O410164 | C07-1 1.7.4.2 | 리허설계획서,리허설시나리오 |
| 645 | KIRAMS3.4.5.3.2.3 | 가상환자 준비(1차) | 2d | 2010-03-05 | 2010-03-08 | 644 | 2010-03-05 | 2010-03-08 | 2d | 143d |  |  | 시범운영 실시 | 07060716O410164 | C07-1 1.7.4.2 | 리허설계획서,리허설시나리오 |
| 646 | KIRAMS3.4.5.3.2.4 | 리허설 실시(1차) | 1d | 2010-03-09 | 2010-03-09 |  | 2010-03-09 | 2010-03-09 | 1d | 139d | 0d | start no earlier than 2010-03-09 | 시범운영 실시 | 07060716O410164 | C07-1 1.7.4.2 | 리허설결과서,인수테스트결과서 |
| 647 | KIRAMS3.4.5.3.2.5 | 리허설 결과 분석 및 보고(1차) | 1d | 2010-03-10 | 2010-03-10 | 646 | 2010-03-10 | 2010-03-10 | 1d | 139d | 0d |  | 시범운영 실시 | 07060716O410164 | C07-1 1.7.4.2 | 리허설결과보고서 |
| 648 | KIRAMS3.4.5.3.2.6 | 리허설 결과 조치(1차) | 2d | 2010-03-11 | 2010-03-12 | 647 | 2010-03-11 | 2010-03-12 | 2d | 139d |  |  | 시범운영 실시 | 07060716O410164 | C07-1 1.7.4.2 | 리허설결과서,리허설결과보고서 |
| 649 | KIRAMS3.4.5.3.3 | **2차 리허설 실시** | 7d | 2010-03-15 | 2010-03-23 |  | 2010-03-15 | 2010-03-23 | 7d | 132d |  |  | 시범운영 실시 | 07060716O410164 | C07-1 1.7.4.2 |  |
| 650 | KIRAMS3.4.5.3.3.1 | 기초자료 구축(2차) | 2d | 2010-03-15 | 2010-03-16 |  | 2010-03-15 | 2010-03-16 | 2d | 137d |  | start no earlier than 2010-03-15 | 시범운영 실시 | 07060716O410164 | C07-1 1.7.4.2 | 리허설계획서,리허설시나리오 |
| 651 | KIRAMS3.4.5.3.3.2 | 리허설 공지 및 상황실 운영(2차) | 2d | 2010-03-16 | 2010-03-17 |  | 2010-03-16 | 2010-03-17 | 2d | 136d |  | start no earlier than 2010-03-16 | 시범운영 실시 | 07060716O410164 | C07-1 1.7.4.2 | 리허설계획서,리허설시나리오 |
| 652 | KIRAMS3.4.5.3.3.3 | 가상환자 준비(2차) | 2d | 2010-03-16 | 2010-03-17 |  | 2010-03-16 | 2010-03-17 | 2d | 134d | 0d | start no earlier than 2010-03-16 | 시범운영 실시 | 07060716O410164 | C07-1 1.7.4.2 | 리허설계획서,리허설시나리오 |
| 653 | KIRAMS3.4.5.3.3.4 | 리허설 실시(2차) | 1d | 2010-03-18 | 2010-03-18 | 652 | 2010-03-18 | 2010-03-18 | 1d | 134d | 2d |  | 시범운영 실시 | 07060716O410164 | C07-1 1.7.4.2 | 리허설결과서,인수테스트결과서 |
| 654 | KIRAMS3.4.5.3.3.5 | 리허설 결과 분석 및 보고(2차) | 1d | 2010-03-19 | 2010-03-19 |  | 2010-03-19 | 2010-03-19 | 1d | 134d |  | start no earlier than 2010-03-19 | 시범운영 실시 | 07060716O410164 | C07-1 1.7.4.2 | 리허설결과보고서 |
| 655 | KIRAMS3.4.5.3.3.6 | 리허설 결과 조치(2차) | 1d | 2010-03-23 | 2010-03-23 | 653 | 2010-03-23 | 2010-03-23 | 1d | 132d |  | finish no earlier than 2010-03-23 | 시범운영 실시 | 07060716O410164 | C07-1 1.7.4.2 | 리허설결과서,리허설결과보고서 |
| 656 | KIRAMS3.4.5.4 | **시스템 오픈(분원)** | 20d | 2010-03-25 | 2010-04-21 |  | 2010-03-25 | 2010-04-21 | 20d | 111d |  |  | 시범운영 | 07060716O410164 | C07-1 1.7.4 |  |
| 657 | KIRAMS3.4.5.4.1 | 오픈준비 | 5d | 2010-03-25 | 2010-03-31 |  | 2010-03-25 | 2010-03-31 | 5d | 125d | 0d | start no earlier than 2010-03-25 | 시범운영계획 수립 | 07060716O410164 | C07-1 1.7.4.1 | 이행계획서 |
| 658 | KIRAMS3.4.5.4.2 | 시스템 OPEN | 1d | 2010-04-01 | 2010-04-01 | 657 | 2010-04-01 | 2010-04-01 | 1d | 125d |  |  | 시범운영계획 수립 | 07060716O410164 | C07-1 1.7.4.1 | 이행계획서 |
| 659 | KIRAMS3.4.5.4.3 | 안정화 지원 | 15d | 2010-04-01 | 2010-04-21 |  | 2010-04-01 | 2010-04-21 | 15d | 111d |  | finish no earlier than 2010-04-21 | 시범운영계획 수립 | 07060716O410164 | C07-1 1.7.4.1 | Help Desk 일지 |
| 660 | KIRAMS3.5 | **안정화운영 및 종료** | 190d? | 2010-01-01 | 2010-09-30 |  | 2010-01-01 | 2010-09-30 | 190d? | 0d |  |  |  |  |  |  |
| 661 | KIRAMS3.5.1 | 본원(서울) 안정화 운영지원 | 127d | 2010-01-01 | 2010-06-30 |  | 2010-01-01 | 2010-06-30 | 127d | 63d |  | start no earlier than 2010-01-01 | 시범운영계획 수립 | 07060716O410164 | C07-1 1.7.4.1 | Help Desk 일지 |
| 662 | KIRAMS3.5.2 | 분원(동남권) 안정화 운영지원 | 126d? | 2010-04-01 | 2010-09-30 |  | 2010-04-01 | 2010-09-30 | 126d? | 0d |  | start no earlier than 2010-04-01 |  |  |  | Help Desk 일지 |

| ID | WBS | Task | Duration | Start | Finish | Predecessors | Complete | Remaining | Baseline start | Baseline finish | Baseline duration | Total slack | Constraint | Text20 | Text25 | Text26 | 산출물 |
| --- | --- | --- | --- | --- | --- | --- | --- | --- | --- | --- | --- | --- | --- | --- | --- | --- | --- |
| 663 | KIRAMS4 | **OCS&EMR(진료지원/LIS)** | 439d? | 2009-01-12 A | 2010-09-30 |  | 14% | 379.53d? | 2009-01-12 | 2010-09-30 | 439d? | 0d |  |  |  |  |  |
| 664 | KIRAMS4.1 | **요구정의 및 분석** | 53d? | 2009-01-12 A | 2009-03-27 |  | 99% | 0.15d? | 2009-01-12 | 2009-03-27 | 53d? | 386d |  | 요구정의 | 07060716O410138 | C07-1 1.2 | 요구정의, 분석산출물 |
| 665 | KIRAMS4.1.1 | ITA 산출물 분석 | 18d | 2009-01-19 A | 2009-02-13 A |  | 100% |  | 2009-01-19 | 2009-02-13 | 18d |  | start no earlier than 2009-01-19 | 비즈니스 모델링(AS-IS) | 07060716O410139 | C07-1 1.2.1 | ITA결과산출물 |
| 666 | KIRAMS4.1.2 | **단계착수** | 8d? | 2009-02-02 A | 2009-02-11 A |  | 100% |  | 2009-02-02 | 2009-02-11 | 8d? |  |  |  |  |  |  |
| 667 | KIRAMS4.1.2.1 | 표준및절차정의 및 검토 | 6d | 2009-02-02 A | 2009-02-09 A |  | 100% |  | 2009-02-02 | 2009-02-09 | 6d |  | start no earlier than 2009-02-02 |  |  |  | 표준및절차매뉴얼 |
| 668 | KIRAMS4.1.2.2 | 오리엔테이션 | 2d? | 2009-02-10 A | 2009-02-11 A |  | 100% |  | 2009-02-10 | 2009-02-11 | 2d? |  |  |  |  |  | 표준및절차매뉴얼 |
| 669 | KIRAMS4.1.3 | **요구사항정의** | 38d | 2009-01-12 A | 2009-03-06 A |  | 100% |  | 2009-01-12 | 2009-03-06 | 38d |  |  | 요구사항 정의 | 07060716O410141 | C07-1 1.2.3 |  |
| 670 | KIRAMS4.1.3.1 | **인터뷰 실시** | 38d | 2009-01-12 A | 2009-03-06 A |  | 100% |  | 2009-01-12 | 2009-03-06 | 38d |  |  | 인터뷰 실시 | 07060716O410139 | C07-1 1.2.1.2 |  |
| 671 | KIRAMS4.1.3.1.1 | 현행시스템 분석(전산정보팀 인터뷰) | 13d | 2009-01-12 A | 2009-01-30 A |  | 100% |  | 2009-01-12 | 2009-01-30 | 13d |  | start no earlier than 2009-01-12 | 인터뷰 실시 | 07060716O410139 | C07-1 1.2.1.2 |  |
| 672 | KIRAMS4.1.3.1.2 | 실무추진T/F 인터뷰 상세일정 수립 | 5d | 2009-01-22 A | 2009-01-30 A |  | 100% |  | 2009-01-22 | 2009-01-30 | 5d |  | finish no earlier than 2009-01-30 | 인터뷰 실시 | 07060716O410139 | C07-1 1.2.1.2 | 인터뷰리스트 |
| 673 | KIRAMS4.1.3.1.3 | 현업 인터뷰 실시 | 25d | 2009-02-02 A | 2009-03-06 A | 672 | 100% |  | 2009-02-02 | 2009-03-06 | 25d |  | start no earlier than 2009-02-02 | 인터뷰 실시 | 07060716O410139 | C07-1 1.2.1.2 | 회의록 |
| 674 | KIRAMS4.1.3.1.4 | 인터뷰 결과 정리 | 20d | 2009-02-09 A | 2009-03-06 A |  | 100% |  | 2009-02-09 | 2009-03-06 | 20d |  | start no earlier than 2009-02-09 | 인터뷰 실시 | 07060716O410139 | C07-1 1.2.1.2 | 인터뷰결과서 |
| 675 | KIRAMS4.1.3.2 | 요구사항 도출/정제/확정 | 5d | 2009-02-16 A | 2009-02-20 A |  | 100% |  | 2009-02-16 | 2009-02-20 | 5d |  | finish no earlier than 2009-02-20 | 요구사항 정제 | 07060716O410141 | C07-1 1.2.3.2 | 요구사항정의서 |
| 676 | KIRAMS4.1.4 | **업무분석** | 20d | 2009-02-23 A | 2009-03-20 A |  | 100% |  | 2009-02-23 | 2009-03-13 | 15d |  |  | 업무 분석 | 07060716O410143 | C07-1 1.3.1 |  |
| 677 | KIRAMS4.1.4.1 | 유스케이스 분석 | 15d | 2009-03-02 A | 2009-03-20 A |  | 100% |  | 2009-03-02 | 2009-03-13 | 10d |  | finish no earlier than 2009-03-06 | 유스케이스 분석 | 07060716O410143 | C07-1 1.3.1.3 | 유스케이스 정의서/다이어그램 |
| 678 | KIRAMS4.1.4.2 | 시스템인터페이스 분석 | 5d | 2009-02-23 A | 2009-02-27 A |  | 100% |  | 2009-02-23 | 2009-02-27 | 5d |  | finish no earlier than 2009-02-27 | 시스템인터페이스 분석 | 07060716O410143 | C07-1 1.3.1.4 | 시스템인터페이스정의서 |
| 679 | KIRAMS4.1.5 | **화면분석** | 20d | 2009-02-23 A | 2009-03-20 A |  | 100% |  | 2009-02-23 | 2009-03-18 | 18d |  |  | 화면 분석 | 07060716O410144 | C07-1 1.3.2 |  |
| 680 | KIRAMS4.1.5.1 | **화면표준 정의** | 10d | 2009-03-09 A | 2009-03-20 A |  | 100% |  | 2009-03-09 | 2009-03-18 | 8d |  |  | 화면표준 정의 | 07060716O410144 | C07-1 1.3.2.1 |  |
| 681 | KIRAMS4.1.5.1.1 | 표준 디자인 자체 검토 | 3d | 2009-03-09 A | 2009-03-11 A |  | 100% |  | 2009-03-09 | 2009-03-10 | 2d |  | start no earlier than 2009-03-09 | 화면레이아웃 정의 | 07060716O410144 | C07-1 1.3.2.2 | 디자인 시안 |
| 682 | KIRAMS4.1.5.1.2 | 표준 디자인 확정 의뢰 | 2d | 2009-03-12 A | 2009-03-13 A | 681 | 100% |  | 2009-03-11 | 2009-03-13 | 3d |  | start no earlier than 2009-03-11 | 화면레이아웃 정의 | 07060716O410144 | C07-1 1.3.2.2 | 디자인 시안 |
| 683 | KIRAMS4.1.5.1.3 | 화면표준정의서 작성 | 5d | 2009-03-16 A | 2009-03-20 A | 682 | 100% |  | 2009-03-16 | 2009-03-18 | 3d |  | start no earlier than 2009-03-16 | 화면레이아웃 정의 | 07060716O410144 | C07-1 1.3.2.2 | 화면표준정의서 |
| 684 | KIRAMS4.1.5.2 | 메뉴구조 정의 | 15d | 2009-02-23 A | 2009-03-13 A |  | 100% |  | 2009-02-23 | 2009-03-13 | 15d |  | finish no earlier than 2009-03-13 | 메뉴구조 정의 | 07060716O410144 | C07-1 1.3.2.3 | 메뉴구조도 |
| 685 | KIRAMS4.1.6 | **데이터분석** | 10d | 2009-03-09 A | 2009-03-20 A |  | 100% |  | 2009-03-09 | 2009-03-20 | 10d |  |  | 데이터 분석 | 07060716O410145 | C07-1 1.3.3 |  |
| 686 | KIRAMS4.1.6.1 | 논리데이터 모델링 | 10d | 2009-03-09 A | 2009-03-20 A |  | 100% |  | 2009-03-09 | 2009-03-20 | 10d |  | finish no earlier than 2009-03-20 | 논리데이터 모델링 | 07060716O410145 | C07-1 1.3.3.1 | ERD(논리) |
| 687 | KIRAMS4.1.6.2 | 자료사전 정의 | 10d | 2009-03-09 A | 2009-03-20 A |  | 100% |  | 2009-03-09 | 2009-03-20 | 10d |  | start no earlier than 2009-03-09 | 자료사전 정의 | 07060716O410145 | C07-1 1.3.3.2 | 자료사전 |

| ID | WBS | Task | Duration | Start | Finish | Predecessors | Complete | Remaining | Baseline start | Baseline finish | Baseline duration | Total slack | Constraint | Text20 | Text25 | Text26 | 산출물 |
| --- | --- | --- | --- | --- | --- | --- | --- | --- | --- | --- | --- | --- | --- | --- | --- | --- | --- |
| 688 | KIRAMS4.1.7 | **데이터전환분석** | 12d | 2009-03-12 A | 2009-03-27 A |  | 100% |  | 2009-03-12 | 2009-03-23 | 8d |  |  | 컨버전 분석 | 07060716O410146 | C07-1 1.3.4 |  |
| 689 | KIRAMS4.1.7.1 | 데이터전환대상 정의 지원 | 12d | 2009-03-12 A | 2009-03-27 A |  | 100% |  | 2009-03-12 | 2009-03-23 | 8d |  | finish no earlier than 2009-03-27 | 컨버전대상 정의 | 07060716O410141 | C07-1 1.2.3.4 | 데이터전환대상목록 |
| 690 | KIRAMS4.1.8 | **단계완료** | 8d? | 2009-03-18 A | 2009-03-27 |  | 88% | 1d? | 2009-03-18 | 2009-03-27 | 8d? | 386d |  |  |  |  |  |
| 691 | KIRAMS4.1.8.1 | Inspection 실시 및 시정조치 | 3d? | 2009-03-18 A | 2009-03-20 A |  | 100% |  | 2009-03-18 | 2009-03-24 | 5d? |  | finish no earlier than 2009-03-24 |  |  |  | Inspection결과,시정조치서 |
| 692 | KIRAMS4.1.8.2 | 단계완료승인획득 | 1d? | 2009-03-24 A | 2009-03-27 | 691 | 50% | 0.5d? | 2009-03-27 | 2009-03-27 | 1d? | 386d | finish no earlier than 2009-03-27 |  |  |  | 고객인수확인서 |
| 693 | KIRAMS4.2 | **설계** | 49d? | 2009-03-09 A | 2009-05-15 |  | 9% | 44.45d? | 2009-02-24 | 2009-05-15 | 58d? | 352d |  | 설계 | 07060716O410151 | C07-1 1.5 |  |
| 694 | KIRAMS4.2.1 | **단계착수** | 15d? | 2009-03-09 A | 2009-03-27 A |  | 100% |  | 2009-02-24 | 2009-03-20 | 19d? |  |  |  |  |  | 표준및절차매뉴얼 |
| 695 | KIRAMS4.2.1.1 | 표준및절차정의 및 검토 | 10d? | 2009-03-09 A | 2009-03-20 A |  | 100% |  | 2009-03-09 | 2009-03-20 | 10d? |  | finish no earlier than 2009-03-20 |  |  |  | 표준및절차매뉴얼 |
| 696 | KIRAMS4.2.1.2 | 오리엔테이션 | 4d? | 2009-03-24 A | 2009-03-27 A |  | 100% |  | 2009-02-24 | 2009-02-27 | 4d? |  | start no earlier than 2009-03-24 |  |  |  | 표준및절차매뉴얼 |
| 697 | KIRAMS4.2.2 | **업무설계** | 35d | 2009-03-23 | 2009-05-11 |  |  |  | 2009-03-23 | 2009-05-11 | 35d | 356d |  | 업무 설계 | 07060716O410152 | C07-1 1.5.1 | 설계 산출물 |
| 698 | KIRAMS4.2.2.1 | 설계패키지 정의 | 10d | 2009-03-23 | 2009-04-03 |  |  |  | 2009-03-23 | 2009-04-03 | 10d | 381d | finish no earlier than 2009-04-03 | 설계패키지 정의 | 07060716O410152 | C07-1 1.5.1.1 | 설계패키지정의서 |
| 699 | KIRAMS4.2.2.2 | 클래스 설계 | 10d | 2009-04-13 | 2009-04-24 |  |  |  | 2009-04-13 | 2009-04-24 | 10d | 366d | finish no earlier than 2009-04-24 | 클래스 설계 | 07060716O410152 | C07-1 1.5.1.2 | 클래스다이어그램, 클래스명세서 |
| 700 | KIRAMS4.2.2.3 | 배치프로그램 설계 | 10d | 2009-04-13 | 2009-04-24 |  |  |  | 2009-04-13 | 2009-04-24 | 10d | 366d | finish no earlier than 2009-04-24 | 시스템인터페이스 설계 | 07060716O410152 | C07-1 1.5.1.3 | 배치프로그램사양서 |
| 701 | KIRAMS4.2.2.4 | 시스템인터페이스 설계 | 10d | 2009-04-13 | 2009-04-24 |  |  |  | 2009-04-13 | 2009-04-24 | 10d | 366d | finish no earlier than 2009-04-24 | 배포구조 정의 | 07060716O410152 | C07-1 1.5.1.4 | 시스템인터페이스정의서 |
| 702 | KIRAMS4.2.2.5 | 배포구조 정의 | 10d | 2009-04-27 | 2009-05-11 |  |  |  | 2009-04-27 | 2009-05-11 | 10d | 356d | start no earlier than 2009-04-27 | 배포구조 정의 | 07060716O410152 | C07-1 1.5.1.4 | 배포정의서 |
| 703 | KIRAMS4.2.3 | **화면설계** | 20d | 2009-03-23 A | 2009-04-17 |  | 1% | 19.8d | 2009-03-23 | 2009-04-17 | 20d | 371d |  | 화면 설계 | 07060716O410153 | C07-1 1.5.2 | 보고서목록,보고서정의서,화면목록,화면정의서 |
| 704 | KIRAMS4.2.3.1 | 화면설계 | 20d | 2009-03-23 A | 2009-04-17 |  | 1% | 19.8d | 2009-03-23 | 2009-04-17 | 20d | 371d | finish no earlier than 2009-04-17 | 화면설계 | 07060716O410153 | C07-1 1.5.2.1 | 보고서목록,보고서정의서,화면목록,화면정의서 |
| 705 | KIRAMS4.2.4 | **데이터설계** | 9d | 2009-04-27 | 2009-05-08 |  |  |  | 2009-04-27 | 2009-05-08 | 9d | 357d |  | 데이터 설계 | 07060716O410154 | C07-1 1.5.3 | 테이블목록,데이터코드정의서 |
| 706 | KIRAMS4.2.4.1 | 데이터코드 설계 | 9d | 2009-04-27 | 2009-05-08 |  |  |  | 2009-04-27 | 2009-05-08 | 9d | 357d | finish no earlier than 2009-05-08 | 데이터코드 설계 | 07060716O410154 | C07-1 1.5.3.1 | 데이터코드목록,데이터코드정의서 |
| 707 | KIRAMS4.2.4.2 | 물리데이터 모델링 | 9d | 2009-04-27 | 2009-05-08 |  |  |  | 2009-04-27 | 2009-05-08 | 9d | 357d | finish no earlier than 2009-05-08 | 물리데이터 모델링 | 07060716O410154 | C07-1 1.5.3.2 | ERD(물리),테이블목록,테이블정의서 |
| 708 | KIRAMS4.2.5 | **데이터전환설계 지원** | 34d | 2009-03-23 | 2009-05-08 |  |  |  | 2009-03-23 | 2009-05-08 | 34d | 357d |  | 컨버전 설계 | 07060716O410155 | C07-1 1.5.4 | 데이터전환설계서,코드매핑정의서,테이블매핑정의서 |
| 709 | KIRAMS4.2.5.1 | 컨버전매핑 정의 지원 | 34d | 2009-03-23 | 2009-05-08 |  |  |  | 2009-03-23 | 2009-05-08 | 34d | 357d | finish no earlier than 2009-05-08 | 컨버전매핑 정의 | 07060716O410155 | C07-1 1.5.4.1 | 데이터전환설계서,코드매핑정의서,테이블매핑정의서 |
| 710 | KIRAMS4.2.6 | **테스트설계** | 6d | 2009-04-27 | 2009-05-04 |  |  |  | 2009-04-27 | 2009-05-04 | 6d | 360d |  | 테스트 설계 | 07060716O410156 | C07-1 1.5.5 | 테스트계획서 |
| 711 | KIRAMS4.2.6.1 | 테스트 계획 수립 | 6d | 2009-04-27 | 2009-05-04 |  |  |  | 2009-04-27 | 2009-05-04 | 6d | 360d | finish no earlier than 2009-05-04 | 테스트계획 수립 | 07060716O410156 | C07-1 1.5.5.1 | 테스트계획서 |
| 712 | KIRAMS4.2.6.2 | 시스템테스트 계획 수립 | 6d | 2009-04-27 | 2009-05-04 |  |  |  | 2009-04-27 | 2009-05-04 | 6d | 360d | finish no earlier than 2009-05-04 | 시스템테스트계획 수립 | 07060716O410156 | C07-1 1.5.5.4 | 시스템테스트계획서 |

| ID | WBS | Task | Duration | Start | Finish | Predecessors | Baseline start | Baseline finish | Baseline duration | Total slack | Free slack | Constraint | 산출물 | Text20 | Text25 | Text26 |
| --- | --- | --- | --- | --- | --- | --- | --- | --- | --- | --- | --- | --- | --- | --- | --- | --- |
| 713 | KIRAMS4.2.7 | **단계완료** | 9d? | 2009-05-04 | 2009-05-15 |  | 2009-05-04 | 2009-05-15 | 9d? | 352d |  |  | Inspection결과,시정조치서 |  |  |  |
| 714 | KIRAMS4.2.7.1 | Inspection 실시 및 시정조치 | 4d? | 2009-05-04 | 2009-05-08 |  | 2009-05-04 | 2009-05-08 | 4d? | 356d | 4d | finish no earlier than 2009-05-08 | Inspection결과,시정조치서 |  |  |  |
| 715 | KIRAMS4.2.7.2 | 단계완료승인획득 | 1d? | 2009-05-15 | 2009-05-15 | 714 | 2009-05-15 | 2009-05-15 | 1d? | 352d |  | finish no earlier than 2009-05-15 | 고객인수확인서 |  |  |  |
| 716 | KIRAMS4.3 | **개발** | 118d? | 2009-04-20 | 2009-10-02 |  | 2009-04-20 | 2009-10-02 | 118d? | 253d |  |  |  | 개발 | 07060716O410157 | C07-1 1.6 |
| 717 | KIRAMS4.3.1 | **단계착수** | 19d? | 2009-04-20 | 2009-05-15 |  | 2009-04-20 | 2009-05-15 | 19d? | 352d |  |  | 표준및절차매뉴얼 |  |  |  |
| 718 | KIRAMS4.3.1.1 | 표준및절차정의 및 검토 | 10d? | 2009-04-20 | 2009-05-01 |  | 2009-04-20 | 2009-05-01 | 10d? | 361d |  | finish no earlier than 2009-05-01 | 표준및절차매뉴얼 |  |  |  |
| 719 | KIRAMS4.3.1.2 | 오리엔테이션 | 5d? | 2009-05-11 | 2009-05-15 |  | 2009-05-11 | 2009-05-15 | 5d? | 352d |  | finish no earlier than 2009-05-15 | 표준및절차매뉴얼 |  |  |  |
| 720 | KIRAMS4.3.2 | **코딩** | 108d | 2009-05-04 | 2009-10-02 |  | 2009-05-04 | 2009-10-02 | 108d | 253d |  |  |  |  |  |  |
| 721 | KIRAMS4.3.2.1 | 프로그램 코딩 | 107d | 2009-05-04 | 2009-09-30 |  | 2009-05-04 | 2009-09-30 | 107d | 254d |  | finish no earlier than 2009-09-30 | 소스코드 | 코딩 | 07060716O410158 | C07-1 1.6.1 |
| 722 | KIRAMS4.3.2.2 | 단위테스트 실시 | 104d | 2009-05-11 | 2009-10-02 |  | 2009-05-11 | 2009-10-02 | 104d | 253d |  | finish no earlier than 2009-10-02 | 단위테스트체크리스트(결과) | 코딩단위테스트 실시 | 07060716O410158 | C07-1 1.6.1.1 |
| 723 | KIRAMS4.3.2.3 | 통합빌드 | 88d | 2009-06-01 | 2009-09-30 |  | 2009-06-01 | 2009-09-30 | 88d | 254d |  | finish no earlier than 2009-09-30 | 배포파일 | 통합빌드 | 07060716O410158 | C07-1 1.6.1.2 |
| 724 | KIRAMS4.3.3 | 통합테스트 설계 | 6d? | 2009-04-27 | 2009-05-04 |  | 2009-04-27 | 2009-05-04 | 6d? | 360d |  | finish no earlier than 2009-05-04 | 통합테스트시나리오 |  |  |  |
| 725 | KIRAMS4.3.4 | **기초코드 구축** | 60d | 2009-05-11 | 2009-07-31 |  | 2009-05-11 | 2009-07-31 | 60d | 297d |  |  |  | 테스트 실시 | 07060716O410159 | C07-1 1.6.2 |
| 726 | KIRAMS4.3.4.1 | 수가코드 작성 | 60d | 2009-05-11 | 2009-07-31 |  | 2009-05-11 | 2009-07-31 | 60d | 297d |  | finish no earlier than 2009-07-31 | 수가코드 | 시스템테스트 실시 | 07060716O410159 | C07-1 1.6.2.2 |
| 727 | KIRAMS4.3.4.2 | 기초코드 작성 | 45d | 2009-06-01 | 2009-07-31 |  | 2009-06-01 | 2009-07-31 | 45d | 297d |  | finish no earlier than 2009-07-31 | 기초코드 | 시스템테스트 실시 | 07060716O410159 | C07-1 1.6.2.2 |
| 728 | KIRAMS4.4 | **이행** | 161d? | 2009-09-07 | 2010-04-21 |  | 2009-09-07 | 2010-04-21 | 161d? | 111d |  |  |  | 이행 | 07060716O410160 | C07-1 1.7 |
| 729 | KIRAMS4.4.1 | **단계착수** | 19d? | 2009-09-14 | 2009-10-09 |  | 2009-09-14 | 2009-10-09 | 19d? | 248d |  |  | 표준및절차매뉴얼 |  |  |  |
| 730 | KIRAMS4.4.1.1 | 표준및절차정의 및 검토 | 10d? | 2009-09-14 | 2009-09-25 |  | 2009-09-14 | 2009-09-25 | 10d? | 257d |  | finish no earlier than 2009-09-25 | 표준및절차매뉴얼 |  |  |  |
| 731 | KIRAMS4.4.1.2 | 오리엔테이션 | 4d? | 2009-10-06 | 2009-10-09 |  | 2009-10-06 | 2009-10-09 | 4d? | 248d |  | start no earlier than 2009-10-06 | 표준및절차매뉴얼 |  |  |  |
| 732 | KIRAMS4.4.2 | **이행계획 수립** | 63d | 2009-09-07 | 2009-12-03 |  | 2009-09-07 | 2009-12-03 | 63d | 209d |  |  | 이행계획서 | 이행계획 수립 | 07060716O410161 | C07-1 1.7.1 |
| 733 | KIRAMS4.4.2.1 | **교육훈련계획 수립** | 18d | 2009-09-07 | 2009-09-30 |  | 2009-09-07 | 2009-09-30 | 18d | 254d |  |  |  | 교육훈련계획 수립 | 07060716O410161 | C07-1 1.7.1.2 |
| 734 | KIRAMS4.4.2.1.1 | 교육계획서 작성 | 5d | 2009-09-07 | 2009-09-11 |  | 2009-09-07 | 2009-09-11 | 5d | 254d | 0d | finish no earlier than 2009-09-11 | 교육계획서 | 교육훈련계획 수립 | 07060716O410161 | C07-1 1.7.1.2 |
| 735 | KIRAMS4.4.2.1.2 | 교육상세일정 조정 | 3d | 2009-09-14 | 2009-09-16 | 734 | 2009-09-14 | 2009-09-16 | 3d | 254d | 0d | start no earlier than 2009-09-14 | 교육계획서 | 교육훈련계획 수립 | 07060716O410161 | C07-1 1.7.1.2 |
| 736 | KIRAMS4.4.2.1.3 | 교육대상자 선정 | 2d | 2009-09-17 | 2009-09-18 | 735 | 2009-09-17 | 2009-09-18 | 2d | 254d | 0d | start no earlier than 2009-09-17 | 교육계획서 | 교육훈련계획 수립 | 07060716O410161 | C07-1 1.7.1.2 |
| 737 | KIRAMS4.4.2.1.4 | 교육장 준비 확인 | 8d | 2009-09-21 | 2009-09-30 | 736 | 2009-09-21 | 2009-09-30 | 8d | 254d |  | start no earlier than 2009-09-21 | 교육계획서 | 교육훈련계획 수립 | 07060716O410161 | C07-1 1.7.1.2 |
| 738 | KIRAMS4.4.2.2 | 릴리이즈 및 비상계획 수립 | 14d | 2009-11-16 | 2009-12-03 |  | 2009-11-16 | 2009-12-03 | 14d | 209d |  | finish no earlier than 2009-12-03 | 이행계획서 | 릴리이즈 및 비상계획 수립 | 07060716O410161 | C07-1 1.7.1.1 |

| ID | WBS | Task | Duration | Start | Finish | Predecessors | Baseline start | Baseline finish | Baseline duration | Total slack | Free slack | Constraint | Text20 | Text25 | Text26 | 산출물 |
| --- | --- | --- | --- | --- | --- | --- | --- | --- | --- | --- | --- | --- | --- | --- | --- | --- |
| 739 | KIRAMS4.4.3 | **시스템 사용교육** | 35d | 2009-10-05 | 2009-11-20 |  | 2009-10-05 | 2009-11-20 | 35d | 218d |  |  | 시스템 사용교육 | 07060716O410163 | C07-1 1.7.3 | 이행계획서 |
| 740 | KIRAMS4.4.3.1 | 사용자매뉴얼 작성 | 10d | 2009-10-05 | 2009-10-16 |  | 2009-10-05 | 2009-10-16 | 10d | 243d |  | finish no earlier than 2009-10-16 | 사용자매뉴얼 작성 | 07060716O410163 | C07-1 1.7.3.1 | 사용자매뉴얼 |
| 741 | KIRAMS4.4.3.2 | 운영매뉴얼 작성 | 10d | 2009-10-05 | 2009-10-16 |  | 2009-10-05 | 2009-10-16 | 10d | 218d | 0d | start no earlier than 2009-10-05 | 운영매뉴얼 작성 | 07060716O410163 | C07-1 1.7.3.2 | 운영매뉴얼 |
| 742 | KIRAMS4.4.3.3 | 교육훈련 실시 | 25d | 2009-10-19 | 2009-11-20 | 741 | 2009-10-19 | 2009-11-20 | 25d | 218d |  | start no earlier than 2009-10-19 | 교육훈련 실시 | 07060716O410163 | C07-1 1.7.3.3 | 교육대상자명단 |
| 743 | KIRAMS4.4.4 | **본원(서울) 이행(~12/31)** | 80d | 2009-10-05 | 2010-01-22 |  | 2009-10-05 | 2010-01-22 | 80d | 173d |  |  | 교육훈련 실시 | 07060716O410163 | C07-1 1.7.3.3 | 이행계획서 |
| 744 | KIRAMS4.4.4.1 | **컨버전 및 릴리이즈(본원)** | 23d | 2009-11-30 | 2009-12-31 |  | 2009-11-30 | 2009-12-31 | 23d | 190d |  |  | 컨버전 및 릴리이즈 | 07060716O410162 | C07-1 1.7.2 |  |
| 745 | KIRAMS4.4.4.1.1 | 데이터베이스 구축 지원 및 확인 | 10d | 2009-11-30 | 2009-12-11 |  | 2009-11-30 | 2009-12-11 | 10d | 190d | 0d | start no earlier than 2009-11-30 | 데이터베이스 구축 | 07060716O410162 | C07-1 1.7.2.1 | 데이터베이스 |
| 746 | KIRAMS4.4.4.1.2 | 소프트웨어 설치 확인 | 9d | 2009-12-14 | 2009-12-24 | 745 | 2009-12-14 | 2009-12-24 | 9d | 190d | 0d | start no earlier than 2009-12-14 | 소프트웨어 설치 | 07060716O410162 | C07-1 1.7.2.2 | 어플리케이션 |
| 747 | KIRAMS4.4.4.1.3 | 데이터전환 확인 | 8d | 2009-12-21 | 2009-12-31 |  | 2009-12-21 | 2009-12-31 | 8d | 190d |  | start no earlier than 2009-12-21 | 데이터 컨버전 | 07060716O410162 | C07-1 1.7.2.3 | 컨버전된 데이터 |
| 748 | KIRAMS4.4.4.1.4 | 시스템 릴리이즈 | 4d | 2009-12-28 | 2009-12-31 | 746 | 2009-12-28 | 2009-12-31 | 4d | 190d |  | start no earlier than 2009-12-28 | 시스템 릴리이즈 | 07060716O410162 | C07-1 1.7.2.5 | 운영시스템 |
| 749 | KIRAMS4.4.4.2 | **테스트 실시(본원)** | 30d | 2009-10-05 | 2009-11-13 |  | 2009-10-05 | 2009-11-13 | 30d | 223d |  |  | 테스트 실시 | 07060716O410159 | C07-1 1.6.2 |  |
| 750 | KIRAMS4.4.4.2.1 | **통합테스트 실시** | 20d | 2009-10-05 | 2009-10-30 |  | 2009-10-05 | 2009-10-30 | 20d | 233d |  |  | 통합테스트 실시 | 07060716O410159 | C07-1 1.6.2.1 |  |
| 751 | KIRAMS4.4.4.2.1.1 | 통합테스트 환경구축 지원 | 5d | 2009-10-05 | 2009-10-09 |  | 2009-10-05 | 2009-10-09 | 5d | 248d |  | finish no earlier than 2009-10-09 | 교육훈련계획 수립 | 07060716O410161 | C07-1 1.7.1.2 | 이행계획서 |
| 752 | KIRAMS4.4.4.2.1.2 | **1차 통합테스트** | 10d | 2009-10-12 | 2009-10-23 |  | 2009-10-12 | 2009-10-23 | 10d | 238d |  |  | 교육훈련계획 수립 | 07060716O410161 | C07-1 1.7.1.2 |  |
| 753 | KIRAMS4.4.4.2.1.2.1 | 기초자료 구축(1차) | 2d | 2009-10-12 | 2009-10-13 |  | 2009-10-12 | 2009-10-13 | 2d | 238d | 0d | finish no earlier than 2009-10-13 | 교육훈련계획 수립 | 07060716O410161 | C07-1 1.7.1.2 | 테스트계획서 |
| 754 | KIRAMS4.4.4.2.1.2.2 | 통합테스트 실시(1차) | 2d | 2009-10-14 | 2009-10-15 | 753 | 2009-10-14 | 2009-10-15 | 2d | 238d | 0d |  | 교육훈련계획 수립 | 07060716O410161 | C07-1 1.7.1.2 | 결함보고서,통합테스트시나리오(결과),통합테스트결과보고서 |
| 755 | KIRAMS4.4.4.2.1.2.3 | 통합테스트 결과 분석(1차) | 1d | 2009-10-16 | 2009-10-16 | 754 | 2009-10-16 | 2009-10-16 | 1d | 238d | 0d |  | 교육훈련계획 수립 | 07060716O410161 | C07-1 1.7.1.2 | 결함보고서,통합테스트시나리오(결과),통합테스트결과보고서 |
| 756 | KIRAMS4.4.4.2.1.2.4 | 통합테스트 결과 조치(1차) | 5d | 2009-10-19 | 2009-10-23 | 755 | 2009-10-19 | 2009-10-23 | 5d | 238d |  | start no earlier than 2009-10-19 | 교육훈련계획 수립 | 07060716O410161 | C07-1 1.7.1.2 | 결함보고서,통합테스트시나리오(결과),통합테스트결과보고서 |
| 757 | KIRAMS4.4.4.2.1.3 | **2차 통합테스트** | 7d | 2009-10-22 | 2009-10-30 |  | 2009-10-22 | 2009-10-30 | 7d | 233d |  |  | 교육훈련계획 수립 | 07060716O410161 | C07-1 1.7.1.2 |  |
| 758 | KIRAMS4.4.4.2.1.3.1 | 기초자료 구축(2차) | 2d | 2009-10-22 | 2009-10-23 |  | 2009-10-22 | 2009-10-23 | 2d | 233d | 0d | start no earlier than 2009-10-22 | 교육훈련계획 수립 | 07060716O410161 | C07-1 1.7.1.2 | 테스트계획서 |
| 759 | KIRAMS4.4.4.2.1.3.2 | 통합테스트 실시(2차) | 2d | 2009-10-26 | 2009-10-27 | 758 | 2009-10-26 | 2009-10-27 | 2d | 233d | 0d |  | 교육훈련계획 수립 | 07060716O410161 | C07-1 1.7.1.2 | 결함보고서,통합테스트시나리오(결과),통합테스트결과보고서 |
| 760 | KIRAMS4.4.4.2.1.3.3 | 통합테스트 결과 분석(2차) | 1d | 2009-10-28 | 2009-10-28 | 759 | 2009-10-28 | 2009-10-28 | 1d | 233d | 0d |  | 교육훈련계획 수립 | 07060716O410161 | C07-1 1.7.1.2 | 결함보고서,통합테스트시나리오(결과),통합테스트결과보고서 |
| 761 | KIRAMS4.4.4.2.1.3.4 | 통합테스트 결과 조치(2차) | 2d | 2009-10-29 | 2009-10-30 | 760 | 2009-10-29 | 2009-10-30 | 2d | 233d |  |  | 교육훈련계획 수립 | 07060716O410161 | C07-1 1.7.1.2 | 결함보고서,통합테스트시나리오(결과),통합테스트결과보고서 |
| 762 | KIRAMS4.4.4.2.2 | **시스템테스트 실시** | 5d | 2009-11-09 | 2009-11-13 |  | 2009-11-09 | 2009-11-13 | 5d | 223d |  |  | 시스템테스트 실시 | 07060716O410159 | C07-1 1.6.2.2 |  |
| 763 | KIRAMS4.4.4.2.2.1 | 부하테스트 프로그램 지원 | 5d | 2009-11-09 | 2009-11-13 |  | 2009-11-09 | 2009-11-13 | 5d | 223d |  | start no earlier than 2009-11-09 | 시스템테스트 실시 | 07060716O410159 | C07-1 1.6.2.2 | 시스템테스트결과보고서 |

| ID | WBS | Task | Duration | Start | Finish | Predecessors | Baseline start | Baseline finish | Baseline duration | Total slack | Free slack | Constraint | Text20 | Text25 | Text26 | 산출물 |
| --- | --- | --- | --- | --- | --- | --- | --- | --- | --- | --- | --- | --- | --- | --- | --- | --- |
| 764 | KIRAMS4.4.4.3 | **리허설(본원)** | 26d | 2009-11-16 | 2009-12-21 |  | 2009-11-16 | 2009-12-21 | 26d | 197d |  |  | 시범운영 | 07060716O410164 | C07-1 1.7.4 |  |
| 765 | KIRAMS4.4.4.3.1 | 리허설 계획 수립지원(시나리오 작성) | 11d | 2009-11-16 | 2009-11-30 |  | 2009-11-16 | 2009-11-30 | 11d | 212d |  | finish no earlier than 2009-11-30 | 시범운영계획 수립 | 07060716O410164 | C07-1 1.7.4.1 | 리허설계획서,리허설시나리오 |
| 766 | KIRAMS4.4.4.3.2 | **1차 리허설 실시** | 7d | 2009-12-01 | 2009-12-09 |  | 2009-12-01 | 2009-12-09 | 7d | 205d |  |  | 시범운영 실시 | 07060716O410164 | C07-1 1.7.4.2 |  |
| 767 | KIRAMS4.4.4.3.2.1 | 기초자료 구축(1차) | 2d | 2009-12-01 | 2009-12-02 |  | 2009-12-01 | 2009-12-02 | 2d | 210d |  | start no earlier than 2009-12-01 | 시범운영 실시 | 07060716O410164 | C07-1 1.7.4.2 | 리허설계획서,리허설시나리오 |
| 768 | KIRAMS4.4.4.3.2.2 | 리허설 공지 및 상황실 운영(1차) | 2d | 2009-12-01 | 2009-12-02 |  | 2009-12-01 | 2009-12-02 | 2d | 210d |  | start no earlier than 2009-12-01 | 시범운영 실시 | 07060716O410164 | C07-1 1.7.4.2 | 리허설계획서,리허설시나리오 |
| 769 | KIRAMS4.4.4.3.2.3 | 가상환자 준비(1차) | 2d | 2009-12-01 | 2009-12-02 |  | 2009-12-01 | 2009-12-02 | 2d | 207d | 0d | start no earlier than 2009-12-01 | 시범운영 실시 | 07060716O410164 | C07-1 1.7.4.2 | 리허설계획서,리허설시나리오 |
| 770 | KIRAMS4.4.4.3.2.4 | 리허설 실시(1차) | 1d | 2009-12-03 | 2009-12-03 | 769 | 2009-12-03 | 2009-12-03 | 1d | 207d | 0d |  | 시범운영 실시 | 07060716O410164 | C07-1 1.7.4.2 | 리허설결과서 |
| 771 | KIRAMS4.4.4.3.2.5 | 리허설 결과 분석 및 보고(1차) | 2d | 2009-12-04 | 2009-12-07 | 770 | 2009-12-04 | 2009-12-07 | 2d | 207d |  |  | 시범운영 실시 | 07060716O410164 | C07-1 1.7.4.2 | 리허설결과보고서 |
| 772 | KIRAMS4.4.4.3.2.6 | 리허설 결과 조치(1차) | 4d | 2009-12-04 | 2009-12-09 |  | 2009-12-04 | 2009-12-09 | 4d | 205d |  | finish no earlier than 2009-12-09 | 시범운영 실시 | 07060716O410164 | C07-1 1.7.4.2 | 리허설결과서,리허설결과보고서 |
| 773 | KIRAMS4.4.4.3.3 | **2차 리허설 실시** | 8d | 2009-12-10 | 2009-12-21 |  | 2009-12-10 | 2009-12-21 | 8d | 197d |  |  | 시범운영 실시 | 07060716O410164 | C07-1 1.7.4.2 |  |
| 774 | KIRAMS4.4.4.3.3.1 | 기초자료 구축(2차) | 2d | 2009-12-10 | 2009-12-11 |  | 2009-12-10 | 2009-12-11 | 2d | 202d | 0d | start no earlier than 2009-12-10 | 시범운영 실시 | 07060716O410164 | C07-1 1.7.4.2 | 리허설계획서,리허설시나리오 |
| 775 | KIRAMS4.4.4.3.3.2 | 리허설 공지 및 상황실 운영(2차) | 1d | 2009-12-14 | 2009-12-14 | 774 | 2009-12-14 | 2009-12-14 | 1d | 202d |  |  | 시범운영 실시 | 07060716O410164 | C07-1 1.7.4.2 | 리허설계획서,리허설시나리오 |
| 776 | KIRAMS4.4.4.3.3.3 | 가상환자 준비(2차) | 1d | 2009-12-14 | 2009-12-14 |  | 2009-12-14 | 2009-12-14 | 1d | 197d | 0d | start no earlier than 2009-12-14 | 시범운영 실시 | 07060716O410164 | C07-1 1.7.4.2 | 리허설계획서,리허설시나리오 |
| 777 | KIRAMS4.4.4.3.3.4 | 리허설 실시(2차) | 1d | 2009-12-15 | 2009-12-15 | 776 | 2009-12-15 | 2009-12-15 | 1d | 197d | 0d |  | 시범운영 실시 | 07060716O410164 | C07-1 1.7.4.2 | 리허설결과서 |
| 778 | KIRAMS4.4.4.3.3.5 | 리허설 결과 분석 및 보고(2차) | 1d | 2009-12-16 | 2009-12-16 | 777 | 2009-12-16 | 2009-12-16 | 1d | 197d | 0d |  | 시범운영 실시 | 07060716O410164 | C07-1 1.7.4.2 | 리허설결과보고서 |
| 779 | KIRAMS4.4.4.3.3.6 | 리허설 결과 조치(2차) | 3d | 2009-12-17 | 2009-12-21 | 778 | 2009-12-17 | 2009-12-21 | 3d | 197d |  | start no earlier than 2009-12-17 | 시범운영 실시 | 07060716O410164 | C07-1 1.7.4.2 | 리허설결과서,리허설결과보고서 |
| 780 | KIRAMS4.4.4.4 | **컨버전 전환 지원(1차)** | 30d | 2009-10-19 | 2009-11-27 |  | 2009-10-19 | 2009-11-27 | 30d | 213d |  |  | 테스트 실시 | 07060716O410159 | C07-1 1.6.2 |  |
| 781 | KIRAMS4.4.4.4.1 | 컨버전 전환 실시 지원(1차) | 20d | 2009-10-19 | 2009-11-13 |  | 2009-10-19 | 2009-11-13 | 20d | 213d | 0d | start no earlier than 2009-10-19 | 테스트 실시 | 07060716O410159 | C07-1 1.6.2 | 컨버전대상테이블 |
| 782 | KIRAMS4.4.4.4.2 | 전환결과 검증 및 수정 지원(1차) | 10d | 2009-11-16 | 2009-11-27 | 781 | 2009-11-16 | 2009-11-27 | 10d | 213d |  | finish no earlier than 2009-11-27 | 테스트 실시 | 07060716O410159 | C07-1 1.6.2 | 컨버전대상테이블 |
| 783 | KIRAMS4.4.4.5 | **컨버전 전환 지원(2차)** | 20d | 2009-11-30 | 2009-12-28 |  | 2009-11-30 | 2009-12-28 | 20d | 193d |  |  | 테스트 실시 | 07060716O410159 | C07-1 1.6.2 |  |
| 784 | KIRAMS4.4.4.5.1 | 컨버전 전환 실시 지원(2차) | 15d | 2009-11-30 | 2009-12-18 |  | 2009-11-30 | 2009-12-18 | 15d | 193d | 0d | start no earlier than 2009-11-30 | 테스트 실시 | 07060716O410159 | C07-1 1.6.2 | 컨버전대상테이블 |
| 785 | KIRAMS4.4.4.5.2 | 전환결과 검증 및 수정 지원(2차) | 5d | 2009-12-21 | 2009-12-28 | 784 | 2009-12-21 | 2009-12-28 | 5d | 193d |  |  | 테스트 실시 | 07060716O410159 | C07-1 1.6.2 | 컨버전대상테이블 |
| 786 | KIRAMS4.4.4.6 | 병행운영(인수테스트) | 5d | 2009-12-21 | 2009-12-28 |  | 2009-12-21 | 2009-12-28 | 5d | 193d |  | finish no earlier than 2009-12-28 | 안정화 및 유지보수 | 08100808O000000 | C07-1 1.7.5 | 인수테스트결괴서 |
| 787 | KIRAMS4.4.4.7 | **시스템 오픈(본원)** | 21d | 2009-12-28 | 2010-01-22 |  | 2009-12-28 | 2010-01-22 | 21d | 173d |  |  | 시범운영 | 07060716O410164 | C07-1 1.7.4 |  |
| 788 | KIRAMS4.4.4.7.1 | 오픈준비 | 4d | 2009-12-28 | 2009-12-31 |  | 2009-12-28 | 2009-12-31 | 4d | 189d | 0d | finish no earlier than 2009-12-31 | 시범운영계획 수립 | 07060716O410164 | C07-1 1.7.4.1 | 이행계획서 |
| 789 | KIRAMS4.4.4.7.2 | 시스템 OPEN | 1d | 2010-01-01 | 2010-01-01 | 788 | 2010-01-01 | 2010-01-01 | 1d | 189d |  |  | 시범운영계획 수립 | 07060716O410164 | C07-1 1.7.4.1 | 이행계획서 |
| 790 | KIRAMS4.4.4.7.3 | 안정화 지원 | 16d | 2010-01-02 | 2010-01-22 |  | 2010-01-02 | 2010-01-22 | 16d | 173d |  | finish no earlier than 2010-01-22 | 시범운영계획 수립 | 07060716O410164 | C07-1 1.7.4.1 | Help Desk 일지 |

| ID | WBS | Task | Duration | Start | Finish | Predecessors | Baseline start | Baseline finish | Baseline duration | Total slack | Free slack | Constraint | Text20 | Text25 | Text26 | 산출물 |
| --- | --- | --- | --- | --- | --- | --- | --- | --- | --- | --- | --- | --- | --- | --- | --- | --- |
| 791 | KIRAMS4.4.5 | **분원(동남권) 이행(1/1~3/31)** | 67d | 2010-01-18 | 2010-04-21 |  | 2010-01-18 | 2010-04-21 | 67d | 111d |  |  | 교육훈련 실시 | 07060716O410163 | C07-1 1.7.3.3 | 이행계획서 |
| 792 | KIRAMS4.4.5.1 | **릴리이즈(분원)** | 47d | 2010-01-25 | 2010-03-31 |  | 2010-01-25 | 2010-03-31 | 47d | 126d |  |  | 컨버전 및 릴리이즈 | 07060716O410162 | C07-1 1.7.2 |  |
| 793 | KIRAMS4.4.5.1.1 | 데이터베이스 구축 지원 및 확인 | 10d | 2010-01-25 | 2010-02-05 |  | 2010-01-25 | 2010-02-05 | 10d | 163d |  | start no earlier than 2010-01-25 | 데이터베이스 구축 | 07060716O410162 | C07-1 1.7.2.1 | 데이터베이스 |
| 794 | KIRAMS4.4.5.1.2 | 소프트웨어 설치 확인 | 10d | 2010-01-25 | 2010-02-05 |  | 2010-01-25 | 2010-02-05 | 10d | 163d |  | finish no earlier than 2010-02-05 | 소프트웨어 설치 | 07060716O410162 | C07-1 1.7.2.2 | 어플리케이션 |
| 795 | KIRAMS4.4.5.1.3 | 기초 데이터 생성 | 39d | 2010-02-01 | 2010-03-26 |  | 2010-02-01 | 2010-03-26 | 39d | 129d |  | finish no earlier than 2010-03-26 | 데이터 컨버전 | 07060716O410162 | C07-1 1.7.2.3 | 기초 데이터 |
| 796 | KIRAMS4.4.5.1.4 | 시스템 릴리이즈 | 3d | 2010-03-29 | 2010-03-31 |  | 2010-03-29 | 2010-03-31 | 3d | 126d |  | finish no earlier than 2010-03-31 | 시스템 릴리이즈 | 07060716O410162 | C07-1 1.7.2.5 | 운영시스템 |
| 797 | KIRAMS4.4.5.2 | **테스트 실시(분원)** | 15d | 2010-01-18 | 2010-02-05 |  | 2010-01-18 | 2010-02-05 | 15d | 163d |  |  | 테스트 실시 | 07060716O410159 | C07-1 1.6.2 |  |
| 798 | KIRAMS4.4.5.2.1 | **통합테스트 실시** | 12d | 2010-01-18 | 2010-02-02 |  | 2010-01-18 | 2010-02-02 | 12d | 166d |  |  | 통합테스트 실시 | 07060716O410159 | C07-1 1.6.2.1 |  |
| 799 | KIRAMS4.4.5.2.1.1 | 통합테스트 환경구축 지원 | 5d | 2010-01-18 | 2010-01-22 |  | 2010-01-18 | 2010-01-22 | 5d | 173d |  | start no earlier than 2010-01-18 | 교육훈련계획 수립 | 07060716O410161 | C07-1 1.7.1.2 | 이행계획서 |
| 800 | KIRAMS4.4.5.2.1.2 | **통합테스트** | 7d | 2010-01-25 | 2010-02-02 |  | 2010-01-25 | 2010-02-02 | 7d | 166d |  |  | 교육훈련계획 수립 | 07060716O410161 | C07-1 1.7.1.2 |  |
| 801 | KIRAMS4.4.5.2.1.2.1 | 기초자료 구축 | 2d | 2010-01-25 | 2010-01-26 |  | 2010-01-25 | 2010-01-26 | 2d | 169d | 0d | start no earlier than 2010-01-25 | 교육훈련계획 수립 | 07060716O410161 | C07-1 1.7.1.2 | 테스트계획서 |
| 802 | KIRAMS4.4.5.2.1.2.2 | 통합테스트 실시 | 2d | 2010-01-27 | 2010-01-28 | 801 | 2010-01-27 | 2010-01-28 | 2d | 169d |  |  | 교육훈련계획 수립 | 07060716O410161 | C07-1 1.7.1.2 | 결함보고서,통합테스트시나리오(결과),통합테스트결과보고서 |
| 803 | KIRAMS4.4.5.2.1.2.3 | 통합테스트 결과 분석 | 1d | 2010-01-28 | 2010-01-28 |  | 2010-01-28 | 2010-01-28 | 1d | 166d | 0d | start no earlier than 2010-01-28 | 교육훈련계획 수립 | 07060716O410161 | C07-1 1.7.1.2 | 결함보고서,통합테스트시나리오(결과),통합테스트결과보고서 |
| 804 | KIRAMS4.4.5.2.1.2.4 | 통합테스트 결과 조치 | 3d | 2010-01-29 | 2010-02-02 | 803 | 2010-01-29 | 2010-02-02 | 3d | 166d |  |  | 교육훈련계획 수립 | 07060716O410161 | C07-1 1.7.1.2 | 결함보고서,통합테스트시나리오(결과),통합테스트결과보고서 |
| 805 | KIRAMS4.4.5.2.2 | **시스템테스트 실시 지원** | 5d | 2010-02-01 | 2010-02-05 |  | 2010-02-01 | 2010-02-05 | 5d | 163d |  |  | 시스템테스트 실시 | 07060716O410159 | C07-1 1.6.2.2 |  |
| 806 | KIRAMS4.4.5.2.2.1 | 부하테스트 프로그램 지원 | 5d | 2010-02-01 | 2010-02-05 |  | 2010-02-01 | 2010-02-05 | 5d | 163d |  | start no earlier than 2010-02-01 | 시스템테스트 실시 | 07060716O410159 | C07-1 1.6.2.2 | 시스템테스트결과보고서 |
| 807 | KIRAMS4.4.5.3 | **리허설-인수테스트(분원)** | 31d | 2010-02-08 | 2010-03-23 |  | 2010-02-08 | 2010-03-23 | 31d | 132d |  |  | 시범운영 | 07060716O410164 | C07-1 1.7.4 |  |
| 808 | KIRAMS4.4.5.3.1 | 리허설 계획 수립지원(시나리오 작성) | 9d | 2010-02-08 | 2010-02-19 |  | 2010-02-08 | 2010-02-19 | 9d | 154d |  | start no earlier than 2010-02-08 | 시범운영계획 수립 | 07060716O410164 | C07-1 1.7.4.1 | 리허설계획서,리허설시나리오 |
| 809 | KIRAMS4.4.5.3.2 | **1차 리허설 실시** | 10d | 2010-03-01 | 2010-03-12 |  | 2010-03-01 | 2010-03-12 | 10d | 139d |  |  | 시범운영 실시 | 07060716O410164 | C07-1 1.7.4.2 |  |
| 810 | KIRAMS4.4.5.3.2.1 | 기초자료 구축(1차) | 2d | 2010-03-01 | 2010-03-02 |  | 2010-03-01 | 2010-03-02 | 2d | 143d | 0d | start no earlier than 2010-03-01 | 시범운영 실시 | 07060716O410164 | C07-1 1.7.4.2 | 리허설계획서,리허설시나리오 |
| 811 | KIRAMS4.4.5.3.2.2 | 리허설 공지 및 상황실 운영(1차) | 2d | 2010-03-03 | 2010-03-04 | 810 | 2010-03-03 | 2010-03-04 | 2d | 143d | 0d |  | 시범운영 실시 | 07060716O410164 | C07-1 1.7.4.2 | 리허설계획서,리허설시나리오 |
| 812 | KIRAMS4.4.5.3.2.3 | 가상환자 준비(1차) | 2d | 2010-03-05 | 2010-03-08 | 811 | 2010-03-05 | 2010-03-08 | 2d | 143d |  |  | 시범운영 실시 | 07060716O410164 | C07-1 1.7.4.2 | 리허설계획서,리허설시나리오 |
| 813 | KIRAMS4.4.5.3.2.4 | 리허설 실시(1차) | 1d | 2010-03-09 | 2010-03-09 |  | 2010-03-09 | 2010-03-09 | 1d | 139d | 0d | start no earlier than 2010-03-09 | 시범운영 실시 | 07060716O410164 | C07-1 1.7.4.2 | 리허설결과서,인수테스트결과서 |
| 814 | KIRAMS4.4.5.3.2.5 | 리허설 결과 분석 및 보고(1차) | 1d | 2010-03-10 | 2010-03-10 | 813 | 2010-03-10 | 2010-03-10 | 1d | 139d | 0d |  | 시범운영 실시 | 07060716O410164 | C07-1 1.7.4.2 | 리허설결과보고서 |
| 815 | KIRAMS4.4.5.3.2.6 | 리허설 결과 조치(1차) | 2d | 2010-03-11 | 2010-03-12 | 814 | 2010-03-11 | 2010-03-12 | 2d | 139d |  |  | 시범운영 실시 | 07060716O410164 | C07-1 1.7.4.2 | 리허설결과서,리허설결과보고서 |

| ID | WBS | Task | Duration | Start | Finish | Predecessors | Complete | Remaining | Baseline start | Baseline finish | Baseline duration | Total slack | Free slack | Constraint | Text20 | Text25 | Text26 | 산출물 |
| --- | --- | --- | --- | --- | --- | --- | --- | --- | --- | --- | --- | --- | --- | --- | --- | --- | --- | --- |
| 816 | KIRAMS4.4.5.3.3 | **2차 리허설 실시** | 7d | 2010-03-15 | 2010-03-23 |  |  |  | 2010-03-15 | 2010-03-23 | 7d | 132d |  |  | 시범운영 실시 | 07060716O410164 | C07-1 1.7.4.2 |  |
| 817 | KIRAMS4.4.5.3.3.1 | 기초자료 구축(2차) | 2d | 2010-03-15 | 2010-03-16 |  |  |  | 2010-03-15 | 2010-03-16 | 2d | 137d |  | start no earlier than 2010-03-15 | 시범운영 실시 | 07060716O410164 | C07-1 1.7.4.2 | 리허설계획서,리허설시나리오 |
| 818 | KIRAMS4.4.5.3.3.2 | 리허설 공지 및 상황실 운영(2차) | 2d | 2010-03-16 | 2010-03-17 |  |  |  | 2010-03-16 | 2010-03-17 | 2d | 136d |  | start no earlier than 2010-03-16 | 시범운영 실시 | 07060716O410164 | C07-1 1.7.4.2 | 리허설계획서,리허설시나리오 |
| 819 | KIRAMS4.4.5.3.3.3 | 가상환자 준비(2차) | 2d | 2010-03-16 | 2010-03-17 |  |  |  | 2010-03-16 | 2010-03-17 | 2d | 134d | 0d | start no earlier than 2010-03-16 | 시범운영 실시 | 07060716O410164 | C07-1 1.7.4.2 | 리허설계획서,리허설시나리오 |
| 820 | KIRAMS4.4.5.3.3.4 | 리허설 실시(2차) | 1d | 2010-03-18 | 2010-03-18 | 819 |  |  | 2010-03-18 | 2010-03-18 | 1d | 134d | 2d |  | 시범운영 실시 | 07060716O410164 | C07-1 1.7.4.2 | 리허설결과서,인수테스트결과서 |
| 821 | KIRAMS4.4.5.3.3.5 | 리허설 결과 분석 및 보고(2차) | 1d | 2010-03-19 | 2010-03-19 |  |  |  | 2010-03-19 | 2010-03-19 | 1d | 134d |  | start no earlier than 2010-03-19 | 시범운영 실시 | 07060716O410164 | C07-1 1.7.4.2 | 리허설결과보고서 |
| 822 | KIRAMS4.4.5.3.3.6 | 리허설 결과 조치(2차) | 1d | 2010-03-23 | 2010-03-23 | 820 |  |  | 2010-03-23 | 2010-03-23 | 1d | 132d |  | finish no earlier than 2010-03-23 | 시범운영 실시 | 07060716O410164 | C07-1 1.7.4.2 | 리허설결과서,리허설결과보고서 |
| 823 | KIRAMS4.4.5.4 | **시스템 오픈(분원)** | 20d | 2010-03-25 | 2010-04-21 |  |  |  | 2010-03-25 | 2010-04-21 | 20d | 111d |  |  | 시범운영 | 07060716O410164 | C07-1 1.7.4 |  |
| 824 | KIRAMS4.4.5.4.1 | 오픈준비 | 5d | 2010-03-25 | 2010-03-31 |  |  |  | 2010-03-25 | 2010-03-31 | 5d | 125d | 0d | start no earlier than 2010-03-25 | 시범운영계획 수립 | 07060716O410164 | C07-1 1.7.4.1 | 이행계획서 |
| 825 | KIRAMS4.4.5.4.2 | 시스템 OPEN | 1d | 2010-04-01 | 2010-04-01 | 824 |  |  | 2010-04-01 | 2010-04-01 | 1d | 125d |  |  | 시범운영계획 수립 | 07060716O410164 | C07-1 1.7.4.1 | 이행계획서 |
| 826 | KIRAMS4.4.5.4.3 | 안정화 지원 | 15d | 2010-04-01 | 2010-04-21 |  |  |  | 2010-04-01 | 2010-04-21 | 15d | 111d |  | finish no earlier than 2010-04-21 | 시범운영계획 수립 | 07060716O410164 | C07-1 1.7.4.1 | Help Desk 일지 |
| 827 | KIRAMS4.5 | **안정화운영 및 종료** | 190d? | 2010-01-01 | 2010-09-30 |  |  |  | 2010-01-01 | 2010-09-30 | 190d? | 0d |  |  |  |  |  |  |
| 828 | KIRAMS4.5.1 | 본원(서울) 안정화 운영지원 | 127d | 2010-01-01 | 2010-06-30 |  |  |  | 2010-01-01 | 2010-06-30 | 127d | 63d |  | start no earlier than 2010-01-01 | 시범운영계획 수립 | 07060716O410164 | C07-1 1.7.4.1 | Help Desk 일지 |
| 829 | KIRAMS4.5.2 | 분원(동남권) 안정화 운영지원 | 126d? | 2010-04-01 | 2010-09-30 |  |  |  | 2010-04-01 | 2010-09-30 | 126d? | 0d |  | start no earlier than 2010-04-01 |  |  |  | Help Desk 일지 |
| 830 | KIRAMS5 | **OCS&EMR(일반관리)** | 439d? | 2009-01-12 A | 2010-09-30 |  | 10% | 395.9d? | 2009-01-12 | 2010-09-30 | 439d? | 0d |  |  |  |  |  |  |
| 831 | KIRAMS5.1 | **요구정의 및 분석** | 58d? | 2009-01-12 A | 2009-04-03 |  | 76% | 13.79d? | 2009-01-12 | 2009-03-27 | 53d? | 381d |  |  | 요구정의 | 07060716O410138 | C07-1 1.2 | 요구정의, 분석산출물 |
| 832 | KIRAMS5.1.1 | ITA 산출물 분석 | 18d | 2009-01-19 A | 2009-02-13 A |  | 100% |  | 2009-01-19 | 2009-02-13 | 18d |  |  | start no earlier than 2009-01-19 | 비즈니스 모델링(AS-IS) | 07060716O410139 | C07-1 1.2.1 | ITA결과산출물 |
| 833 | KIRAMS5.1.2 | **단계착수** | 8d? | 2009-02-02 A | 2009-02-11 A |  | 100% |  | 2009-02-02 | 2009-02-11 | 8d? |  |  |  |  |  |  |  |
| 834 | KIRAMS5.1.2.1 | 표준및절차정의 및 검토 | 6d | 2009-02-02 A | 2009-02-09 A |  | 100% |  | 2009-02-02 | 2009-02-09 | 6d |  |  | start no earlier than 2009-02-02 |  |  |  | 표준및절차매뉴얼 |
| 835 | KIRAMS5.1.2.2 | 오리엔테이션 | 2d? | 2009-02-10 A | 2009-02-11 A |  | 100% |  | 2009-02-10 | 2009-02-11 | 2d? |  |  |  |  |  |  | 표준및절차매뉴얼 |
| 836 | KIRAMS5.1.3 | **요구사항정의** | 37d | 2009-01-12 A | 2009-03-05 |  | 92% | 2.83d | 2009-01-12 | 2009-03-05 | 37d | 402d |  |  | 요구사항 정의 | 07060716O410141 | C07-1 1.2.3 |  |
| 837 | KIRAMS5.1.3.1 | **인터뷰 실시** | 37d | 2009-01-12 A | 2009-03-05 |  | 94% | 2.13d | 2009-01-12 | 2009-03-05 | 37d | 402d |  |  | 인터뷰 실시 | 07060716O410139 | C07-1 1.2.1.2 |  |
| 838 | KIRAMS5.1.3.1.1 | 현행시스템 분석(전산정보팀 인터뷰) | 13d | 2009-01-12 A | 2009-01-30 A |  | 100% |  | 2009-01-12 | 2009-01-30 | 13d |  |  | start no earlier than 2009-01-12 | 인터뷰 실시 | 07060716O410139 | C07-1 1.2.1.2 |  |
| 839 | KIRAMS5.1.3.1.2 | 실무추진T/F 인터뷰 상세일정 수립 | 5d | 2009-01-22 A | 2009-01-30 A |  | 100% |  | 2009-01-22 | 2009-01-30 | 5d |  |  | finish no earlier than 2009-01-30 | 인터뷰 실시 | 07060716O410139 | C07-1 1.2.1.2 | 인터뷰리스트 |
| 840 | KIRAMS5.1.3.1.3 | 현업 인터뷰 실시 | 24d | 2009-02-02 A | 2009-03-05 A | 839 | 100% |  | 2009-02-02 | 2009-03-05 | 24d |  |  | start no earlier than 2009-02-02 | 인터뷰 실시 | 07060716O410139 | C07-1 1.2.1.2 | 회의록 |
| 841 | KIRAMS5.1.3.1.4 | 인터뷰 결과 정리 | 17d | 2009-02-09 A | 2009-03-03 |  | 80% | 3.4d | 2009-02-09 | 2009-03-03 | 17d | 404d |  | start no earlier than 2009-02-09 | 인터뷰 실시 | 07060716O410139 | C07-1 1.2.1.2 | 인터뷰결과서 |
| 842 | KIRAMS5.1.3.2 | 요구사항 도출/정제/확정 | 5d | 2009-02-16 A | 2009-02-20 |  | 70% | 1.5d | 2009-02-16 | 2009-02-20 | 5d | 411d |  | finish no earlier than 2009-02-20 | 요구사항 정제 | 07060716O410141 | C07-1 1.2.3.2 | 요구사항정의서 |

| ID | WBS | Task | Duration | Start | Finish | Predecessors | Complete | Remaining | Baseline start | Baseline finish | Baseline duration | Total slack | Constraint | Text20 | Text25 | Text26 | 산출물 |
| --- | --- | --- | --- | --- | --- | --- | --- | --- | --- | --- | --- | --- | --- | --- | --- | --- | --- |
| 843 | KIRAMS5.1.4 | **업무분석** | 15d | 2009-02-23 A | 2009-03-13 |  | 43% | 8.5d | 2009-02-23 | 2009-03-13 | 15d | 396d |  | 업무 분석 | 07060716O410143 | C07-1 1.3.1 |  |
| 844 | KIRAMS5.1.4.1 | 유스케이스 분석 | 10d | 2009-03-02 A | 2009-03-13 |  | 40% | 6d | 2009-03-02 | 2009-03-13 | 10d | 396d | finish no earlier than 2009-03-06 | 유스케이스 분석 | 07060716O410143 | C07-1 1.3.1.3 | 유스케이스 정의서/다이어그램 |
| 845 | KIRAMS5.1.4.2 | 시스템인터페이스 분석 | 5d | 2009-02-23 A | 2009-02-27 |  | 50% | 2.5d | 2009-02-23 | 2009-02-27 | 5d | 406d | finish no earlier than 2009-02-27 | 시스템인터페이스 분석 | 07060716O410143 | C07-1 1.3.1.4 | 시스템인터페이스정의서 |
| 846 | KIRAMS5.1.5 | **화면분석** | 15d | 2009-03-09 A | 2009-03-27 |  | 70% | 4.5d | 2009-03-09 | 2009-03-27 | 15d | 386d |  | 화면 분석 | 07060716O410144 | C07-1 1.3.2 |  |
| 847 | KIRAMS5.1.5.1 | **화면표준 정의** | 10d | 2009-03-09 A | 2009-03-20 A |  | 100% |  | 2009-03-09 | 2009-03-18 | 8d |  |  | 화면표준 정의 | 07060716O410144 | C07-1 1.3.2.1 |  |
| 848 | KIRAMS5.1.5.1.1 | 표준 디자인 자체 검토 | 3d | 2009-03-09 A | 2009-03-11 A |  | 100% |  | 2009-03-09 | 2009-03-10 | 2d |  | start no earlier than 2009-03-09 | 화면레이아웃 정의 | 07060716O410144 | C07-1 1.3.2.2 | 디자인 시안 |
| 849 | KIRAMS5.1.5.1.2 | 표준 디자인 확정 의뢰 | 2d | 2009-03-12 A | 2009-03-13 A | 848 | 100% |  | 2009-03-11 | 2009-03-13 | 3d |  | start no earlier than 2009-03-11 | 화면레이아웃 정의 | 07060716O410144 | C07-1 1.3.2.2 | 디자인 시안 |
| 850 | KIRAMS5.1.5.1.3 | 화면표준정의서 작성 | 5d | 2009-03-16 A | 2009-03-20 A | 849 | 100% |  | 2009-03-16 | 2009-03-18 | 3d |  | start no earlier than 2009-03-16 | 화면레이아웃 정의 | 07060716O410144 | C07-1 1.3.2.2 | 화면표준정의서 |
| 851 | KIRAMS5.1.5.2 | 메뉴구조 정의 | 15d | 2009-03-09 A | 2009-03-27 |  | 50% | 7.5d | 2009-03-09 | 2009-03-27 | 15d | 386d | finish no earlier than 2009-03-13 | 메뉴구조 정의 | 07060716O410144 | C07-1 1.3.2.3 | 메뉴구조도 |
| 852 | KIRAMS5.1.6 | **데이터분석** | 15d | 2009-03-16 A | 2009-04-03 |  | 50% | 7.5d | 2009-03-09 | 2009-03-20 | 10d | 381d |  | 데이터 분석 | 07060716O410145 | C07-1 1.3.3 |  |
| 853 | KIRAMS5.1.6.1 | 논리데이터 모델링 | 10d | 2009-03-23 A | 2009-04-03 |  | 25% | 7.5d | 2009-03-09 | 2009-03-20 | 10d | 381d | finish no earlier than 2009-03-20 | 논리데이터 모델링 | 07060716O410145 | C07-1 1.3.3.1 | ERD(논리) |
| 854 | KIRAMS5.1.6.2 | 자료사전 정의 | 5d | 2009-03-16 A | 2009-03-20 A |  | 100% |  | 2009-03-09 | 2009-03-20 | 10d |  | start no earlier than 2009-03-09 | 자료사전 정의 | 07060716O410145 | C07-1 1.3.3.2 | 자료사전 |
| 855 | KIRAMS5.1.7 | **데이터전환분석** | 10d | 2009-03-16 A | 2009-03-27 |  | 16% | 8.4d | 2009-03-11 | 2009-03-20 | 8d | 386d |  | 컨버전 분석 | 07060716O410146 | C07-1 1.3.4 |  |
| 856 | KIRAMS5.1.7.1 | 데이터전환대상 정의 지원 | 10d | 2009-03-16 A | 2009-03-27 |  | 16% | 8.4d | 2009-03-11 | 2009-03-20 | 8d | 386d | finish no earlier than 2009-03-27 | 컨버전대상 정의 | 07060716O410141 | C07-1 1.2.3.4 | 데이터전환대상목록 |
| 857 | KIRAMS5.1.8 | **단계완료** | 8d? | 2009-03-18 A | 2009-03-27 |  | 75% | 2d? | 2009-03-18 | 2009-03-27 | 8d? | 386d |  |  |  |  |  |
| 858 | KIRAMS5.1.8.1 | Inspection 실시 및 시정조치 | 3d? | 2009-03-18 A | 2009-03-24 A |  | 100% |  | 2009-03-18 | 2009-03-24 | 5d? |  | finish no earlier than 2009-03-24 |  |  |  | Inspection결과,시정조치서 |
| 859 | KIRAMS5.1.8.2 | 단계완료승인획득 | 1d? | 2009-03-27 | 2009-03-27 | 858 |  |  | 2009-03-27 | 2009-03-27 | 1d? | 386d | finish no earlier than 2009-03-27 |  |  |  | 고객인수확인서 |
| 860 | KIRAMS5.2 | **설계** | 49d? | 2009-03-09 A | 2009-05-15 |  | 9% | 44.52d? | 2009-02-24 | 2009-05-15 | 58d? | 352d |  | 설계 | 07060716O410151 | C07-1 1.5 |  |
| 861 | KIRAMS5.2.1 | **단계착수** | 15d? | 2009-03-09 A | 2009-03-27 A |  | 100% |  | 2009-02-24 | 2009-03-20 | 19d? |  |  |  |  |  | 표준및절차매뉴얼 |
| 862 | KIRAMS5.2.1.1 | 표준및절차정의 및 검토 | 10d? | 2009-03-09 A | 2009-03-20 A |  | 100% |  | 2009-03-09 | 2009-03-20 | 10d? |  | finish no earlier than 2009-03-20 |  |  |  | 표준및절차매뉴얼 |
| 863 | KIRAMS5.2.1.2 | 오리엔테이션 | 4d? | 2009-03-24 A | 2009-03-27 A |  | 100% |  | 2009-02-24 | 2009-02-27 | 4d? |  | start no earlier than 2009-03-24 |  |  |  | 표준및절차매뉴얼 |
| 864 | KIRAMS5.2.2 | **업무설계** | 35d | 2009-03-23 | 2009-05-11 |  |  |  | 2009-03-23 | 2009-05-11 | 35d | 356d |  | 업무 설계 | 07060716O410152 | C07-1 1.5.1 | 설계 산출물 |
| 865 | KIRAMS5.2.2.1 | 설계패키지 정의 | 10d | 2009-03-23 | 2009-04-03 |  |  |  | 2009-03-23 | 2009-04-03 | 10d | 381d | finish no earlier than 2009-04-03 | 설계패키지 정의 | 07060716O410152 | C07-1 1.5.1.1 | 설계패키지정의서 |
| 866 | KIRAMS5.2.2.2 | 클래스 설계 | 10d | 2009-04-13 | 2009-04-24 |  |  |  | 2009-04-13 | 2009-04-24 | 10d | 366d | finish no earlier than 2009-04-24 | 클래스 설계 | 07060716O410152 | C07-1 1.5.1.2 | 클래스다이어그램, 클래스명세서 |
| 867 | KIRAMS5.2.2.3 | 배치프로그램 설계 | 10d | 2009-04-13 | 2009-04-24 |  |  |  | 2009-04-13 | 2009-04-24 | 10d | 366d | finish no earlier than 2009-04-24 | 시스템인터페이스 설계 | 07060716O410152 | C07-1 1.5.1.3 | 배치프로그램사양서 |
| 868 | KIRAMS5.2.2.4 | 시스템인터페이스 설계 | 10d | 2009-04-13 | 2009-04-24 |  |  |  | 2009-04-13 | 2009-04-24 | 10d | 366d | finish no earlier than 2009-04-24 | 배포구조 정의 | 07060716O410152 | C07-1 1.5.1.4 | 시스템인터페이스정의서 |
| 869 | KIRAMS5.2.2.5 | 배포구조 정의 | 10d | 2009-04-27 | 2009-05-11 |  |  |  | 2009-04-27 | 2009-05-11 | 10d | 356d | start no earlier than 2009-04-27 | 배포구조 정의 | 07060716O410152 | C07-1 1.5.1.4 | 배포정의서 |

| ID | WBS | Task | Duration | Start | Finish | Predecessors | Baseline start | Baseline finish | Baseline duration | Total slack | Free slack | Constraint | Text20 | Text25 | Text26 | 산출물 |
| --- | --- | --- | --- | --- | --- | --- | --- | --- | --- | --- | --- | --- | --- | --- | --- | --- |
| 870 | KIRAMS5.2.3 | **화면설계** | 20d | 2009-03-23 | 2009-04-17 |  | 2009-03-23 | 2009-04-17 | 20d | 371d |  |  | 화면 설계 | 07060716O410153 | C07-1 1.5.2 | 보고서목록,보고서정의서,화면목록,화면정의서 |
| 871 | KIRAMS5.2.3.1 | 화면설계 | 20d | 2009-03-23 | 2009-04-17 |  | 2009-03-23 | 2009-04-17 | 20d | 371d |  | finish no earlier than 2009-04-17 | 화면설계 | 07060716O410153 | C07-1 1.5.2.1 | 보고서목록,보고서정의서,화면목록,화면정의서 |
| 872 | KIRAMS5.2.4 | **데이터설계** | 9d | 2009-04-27 | 2009-05-08 |  | 2009-04-27 | 2009-05-08 | 9d | 357d |  |  | 데이터 설계 | 07060716O410154 | C07-1 1.5.3 | 테이블목록,데이터코드정의서 |
| 873 | KIRAMS5.2.4.1 | 데이터코드 설계 | 9d | 2009-04-27 | 2009-05-08 |  | 2009-04-27 | 2009-05-08 | 9d | 357d |  | finish no earlier than 2009-05-08 | 데이터코드 설계 | 07060716O410154 | C07-1 1.5.3.1 | 데이터코드목록,데이터코드정의서 |
| 874 | KIRAMS5.2.4.2 | 물리데이터 모델링 | 9d | 2009-04-27 | 2009-05-08 |  | 2009-04-27 | 2009-05-08 | 9d | 357d |  | finish no earlier than 2009-05-08 | 물리데이터 모델링 | 07060716O410154 | C07-1 1.5.3.2 | ERD(물리),테이블목록,테이블정의서 |
| 875 | KIRAMS5.2.5 | **데이터전환설계 지원** | 34d | 2009-03-23 | 2009-05-08 |  | 2009-03-23 | 2009-05-08 | 34d | 357d |  |  | 컨버전 설계 | 07060716O410155 | C07-1 1.5.4 | 데이터전환설계서,코드매핑정의서,테이블매핑정의서 |
| 876 | KIRAMS5.2.5.1 | 컨버전매핑 정의 지원 | 34d | 2009-03-23 | 2009-05-08 |  | 2009-03-23 | 2009-05-08 | 34d | 357d |  | finish no earlier than 2009-05-08 | 컨버전매핑 정의 | 07060716O410155 | C07-1 1.5.4.1 | 데이터전환설계서,코드매핑정의서,테이블매핑정의서 |
| 877 | KIRAMS5.2.6 | **테스트설계** | 6d | 2009-04-27 | 2009-05-04 |  | 2009-04-27 | 2009-05-04 | 6d | 360d |  |  | 테스트 설계 | 07060716O410156 | C07-1 1.5.5 | 테스트계획서 |
| 878 | KIRAMS5.2.6.1 | 테스트 계획 수립 | 6d | 2009-04-27 | 2009-05-04 |  | 2009-04-27 | 2009-05-04 | 6d | 360d |  | finish no earlier than 2009-05-04 | 테스트계획 수립 | 07060716O410156 | C07-1 1.5.5.1 | 테스트계획서 |
| 879 | KIRAMS5.2.6.2 | 시스템테스트 계획 수립 | 6d | 2009-04-27 | 2009-05-04 |  | 2009-04-27 | 2009-05-04 | 6d | 360d |  | finish no earlier than 2009-05-04 | 시스템테스트계획 수립 | 07060716O410156 | C07-1 1.5.5.4 | 시스템테스트계획서 |
| 880 | KIRAMS5.2.7 | **단계완료** | 9d? | 2009-05-04 | 2009-05-15 |  | 2009-05-04 | 2009-05-15 | 9d? | 352d |  |  |  |  |  | Inspection결과,시정조치서 |
| 881 | KIRAMS5.2.7.1 | Inspection 실시 및 시정조치 | 4d? | 2009-05-04 | 2009-05-08 |  | 2009-05-04 | 2009-05-08 | 4d? | 356d | 4d | finish no earlier than 2009-05-08 |  |  |  | Inspection결과,시정조치서 |
| 882 | KIRAMS5.2.7.2 | 단계완료승인획득 | 1d? | 2009-05-15 | 2009-05-15 | 881 | 2009-05-15 | 2009-05-15 | 1d? | 352d |  | finish no earlier than 2009-05-15 |  |  |  | 고객인수확인서 |
| 883 | KIRAMS5.3 | **개발** | 118d? | 2009-04-20 | 2009-10-02 |  | 2009-04-20 | 2009-10-02 | 118d? | 253d |  |  | 개발 | 07060716O410157 | C07-1 1.6 |  |
| 884 | KIRAMS5.3.1 | **단계착수** | 19d? | 2009-04-20 | 2009-05-15 |  | 2009-04-20 | 2009-05-15 | 19d? | 352d |  |  |  |  |  | 표준및절차매뉴얼 |
| 885 | KIRAMS5.3.1.1 | 표준및절차정의 및 검토 | 10d? | 2009-04-20 | 2009-05-01 |  | 2009-04-20 | 2009-05-01 | 10d? | 361d |  | finish no earlier than 2009-05-01 |  |  |  | 표준및절차매뉴얼 |
| 886 | KIRAMS5.3.1.2 | 오리엔테이션 | 5d? | 2009-05-11 | 2009-05-15 |  | 2009-05-11 | 2009-05-15 | 5d? | 352d |  | finish no earlier than 2009-05-15 |  |  |  | 표준및절차매뉴얼 |
| 887 | KIRAMS5.3.2 | **코딩** | 108d | 2009-05-04 | 2009-10-02 |  | 2009-05-04 | 2009-10-02 | 108d | 253d |  |  |  |  |  |  |
| 888 | KIRAMS5.3.2.1 | 프로그램 코딩 | 107d | 2009-05-04 | 2009-09-30 |  | 2009-05-04 | 2009-09-30 | 107d | 254d |  | finish no earlier than 2009-09-30 | 코딩 | 07060716O410158 | C07-1 1.6.1 | 소스코드 |
| 889 | KIRAMS5.3.2.2 | 단위테스트 실시 | 104d | 2009-05-11 | 2009-10-02 |  | 2009-05-11 | 2009-10-02 | 104d | 253d |  | finish no earlier than 2009-10-02 | 코딩단위테스트 실시 | 07060716O410158 | C07-1 1.6.1.1 | 단위테스트체크리스트(결과) |
| 890 | KIRAMS5.3.2.3 | 통합빌드 | 88d | 2009-06-01 | 2009-09-30 |  | 2009-06-01 | 2009-09-30 | 88d | 254d |  | finish no earlier than 2009-09-30 | 통합빌드 | 07060716O410158 | C07-1 1.6.1.2 | 배포파일 |
| 891 | KIRAMS5.3.3 | 통합테스트 설계 | 6d? | 2009-04-27 | 2009-05-04 |  | 2009-04-27 | 2009-05-04 | 6d? | 360d |  | finish no earlier than 2009-05-04 |  |  |  | 통합테스트시나리오 |
| 892 | KIRAMS5.3.4 | **기초코드 구축** | 60d | 2009-05-11 | 2009-07-31 |  | 2009-05-11 | 2009-07-31 | 60d | 297d |  |  | 테스트 실시 | 07060716O410159 | C07-1 1.6.2 |  |
| 893 | KIRAMS5.3.4.1 | 수가코드 작성 | 60d | 2009-05-11 | 2009-07-31 |  | 2009-05-11 | 2009-07-31 | 60d | 297d |  | finish no earlier than 2009-07-31 | 시스템테스트 실시 | 07060716O410159 | C07-1 1.6.2.2 | 수가코드 |
| 894 | KIRAMS5.3.4.2 | 기초코드 작성 | 45d | 2009-06-01 | 2009-07-31 |  | 2009-06-01 | 2009-07-31 | 45d | 297d |  | finish no earlier than 2009-07-31 | 시스템테스트 실시 | 07060716O410159 | C07-1 1.6.2.2 | 기초코드 |

| ID | WBS | Task | Duration | Start | Finish | Predecessors | Baseline start | Baseline finish | Baseline duration | Total slack | Free slack | Constraint | Text20 | Text25 | Text26 | 산출물 |
| --- | --- | --- | --- | --- | --- | --- | --- | --- | --- | --- | --- | --- | --- | --- | --- | --- |
| 895 | KIRAMS5.4 | **이행** | 161d? | 2009-09-07 | 2010-04-21 |  | 2009-09-07 | 2010-04-21 | 161d? | 111d |  |  | 이행 | 07060716O410160 | C07-1 1.7 |  |
| 896 | KIRAMS5.4.1 | **단계착수** | 19d? | 2009-09-14 | 2009-10-09 |  | 2009-09-14 | 2009-10-09 | 19d? | 248d |  |  |  |  |  | 표준및절차매뉴얼 |
| 897 | KIRAMS5.4.1.1 | 표준및절차정의 및 검토 | 10d? | 2009-09-14 | 2009-09-25 |  | 2009-09-14 | 2009-09-25 | 10d? | 257d |  | finish no earlier than 2009-09-25 |  |  |  | 표준및절차매뉴얼 |
| 898 | KIRAMS5.4.1.2 | 오리엔테이션 | 4d? | 2009-10-06 | 2009-10-09 |  | 2009-10-06 | 2009-10-09 | 4d? | 248d |  | start no earlier than 2009-10-06 |  |  |  | 표준및절차매뉴얼 |
| 899 | KIRAMS5.4.2 | **이행계획 수립** | 63d | 2009-09-07 | 2009-12-03 |  | 2009-09-07 | 2009-12-03 | 63d | 209d |  |  | 이행계획 수립 | 07060716O410161 | C07-1 1.7.1 | 이행계획서 |
| 900 | KIRAMS5.4.2.1 | **교육훈련계획 수립** | 18d | 2009-09-07 | 2009-09-30 |  | 2009-09-07 | 2009-09-30 | 18d | 254d |  |  | 교육훈련계획 수립 | 07060716O410161 | C07-1 1.7.1.2 |  |
| 901 | KIRAMS5.4.2.1.1 | 교육계획서 작성 | 5d | 2009-09-07 | 2009-09-11 |  | 2009-09-07 | 2009-09-11 | 5d | 254d | 0d | finish no earlier than 2009-09-11 | 교육훈련계획 수립 | 07060716O410161 | C07-1 1.7.1.2 | 교육계획서 |
| 902 | KIRAMS5.4.2.1.2 | 교육상세일정 조정 | 3d | 2009-09-14 | 2009-09-16 | 901 | 2009-09-14 | 2009-09-16 | 3d | 254d | 0d | start no earlier than 2009-09-14 | 교육훈련계획 수립 | 07060716O410161 | C07-1 1.7.1.2 | 교육계획서 |
| 903 | KIRAMS5.4.2.1.3 | 교육대상자 선정 | 2d | 2009-09-17 | 2009-09-18 | 902 | 2009-09-17 | 2009-09-18 | 2d | 254d | 0d | start no earlier than 2009-09-17 | 교육훈련계획 수립 | 07060716O410161 | C07-1 1.7.1.2 | 교육계획서 |
| 904 | KIRAMS5.4.2.1.4 | 교육장 준비 확인 | 8d | 2009-09-21 | 2009-09-30 | 903 | 2009-09-21 | 2009-09-30 | 8d | 254d |  | start no earlier than 2009-09-21 | 교육훈련계획 수립 | 07060716O410161 | C07-1 1.7.1.2 | 교육계획서 |
| 905 | KIRAMS5.4.2.2 | 릴리이즈 및 비상계획 수립 | 14d | 2009-11-16 | 2009-12-03 |  | 2009-11-16 | 2009-12-03 | 14d | 209d |  | finish no earlier than 2009-12-03 | 릴리이즈 및 비상계획 수립 | 07060716O410161 | C07-1 1.7.1.1 | 이행계획서 |
| 906 | KIRAMS5.4.3 | **시스템 사용교육** | 35d | 2009-10-05 | 2009-11-20 |  | 2009-10-05 | 2009-11-20 | 35d | 218d |  |  | 시스템 사용교육 | 07060716O410163 | C07-1 1.7.3 | 이행계획서 |
| 907 | KIRAMS5.4.3.1 | 사용자매뉴얼 작성 | 10d | 2009-10-05 | 2009-10-16 |  | 2009-10-05 | 2009-10-16 | 10d | 243d |  | finish no earlier than 2009-10-16 | 사용자매뉴얼 작성 | 07060716O410163 | C07-1 1.7.3.1 | 사용자매뉴얼 |
| 908 | KIRAMS5.4.3.2 | 운영매뉴얼 작성 | 10d | 2009-10-05 | 2009-10-16 |  | 2009-10-05 | 2009-10-16 | 10d | 218d | 0d | start no earlier than 2009-10-05 | 운영매뉴얼 작성 | 07060716O410163 | C07-1 1.7.3.2 | 운영매뉴얼 |
| 909 | KIRAMS5.4.3.3 | 교육훈련 실시 | 25d | 2009-10-19 | 2009-11-20 | 908 | 2009-10-19 | 2009-11-20 | 25d | 218d |  | start no earlier than 2009-10-19 | 교육훈련 실시 | 07060716O410163 | C07-1 1.7.3.3 | 교육대상자명단 |
| 910 | KIRAMS5.4.4 | **본원(서울) 이행** | 80d | 2009-10-05 | 2010-01-22 |  | 2009-10-05 | 2010-01-22 | 80d | 173d |  |  | 교육훈련 실시 | 07060716O410163 | C07-1 1.7.3.3 | 이행계획서 |
| 911 | KIRAMS5.4.4.1 | **컨버전 및 릴리이즈(본원)** | 23d | 2009-11-30 | 2009-12-31 |  | 2009-11-30 | 2009-12-31 | 23d | 190d |  |  | 컨버전 및 릴리이즈 | 07060716O410162 | C07-1 1.7.2 |  |
| 912 | KIRAMS5.4.4.1.1 | 데이터베이스 구축 지원 및 확인 | 10d | 2009-11-30 | 2009-12-11 |  | 2009-11-30 | 2009-12-11 | 10d | 190d | 0d | start no earlier than 2009-11-30 | 데이터베이스 구축 | 07060716O410162 | C07-1 1.7.2.1 | 데이터베이스 |
| 913 | KIRAMS5.4.4.1.2 | 소프트웨어 설치 확인 | 9d | 2009-12-14 | 2009-12-24 | 912 | 2009-12-14 | 2009-12-24 | 9d | 190d | 0d | start no earlier than 2009-12-14 | 소프트웨어 설치 | 07060716O410162 | C07-1 1.7.2.2 | 어플리케이션 |
| 914 | KIRAMS5.4.4.1.3 | 데이터전환 확인 | 8d | 2009-12-21 | 2009-12-31 |  | 2009-12-21 | 2009-12-31 | 8d | 190d |  | start no earlier than 2009-12-21 | 데이터 컨버전 | 07060716O410162 | C07-1 1.7.2.3 | 컨버전된 데이터 |
| 915 | KIRAMS5.4.4.1.4 | 시스템 릴리이즈 | 4d | 2009-12-28 | 2009-12-31 | 913 | 2009-12-28 | 2009-12-31 | 4d | 190d |  | start no earlier than 2009-12-28 | 시스템 릴리이즈 | 07060716O410162 | C07-1 1.7.2.5 | 운영시스템 |
| 916 | KIRAMS5.4.4.2 | **테스트 실시(본원)** | 30d | 2009-10-05 | 2009-11-13 |  | 2009-10-05 | 2009-11-13 | 30d | 223d |  |  | 테스트 실시 | 07060716O410159 | C07-1 1.6.2 |  |
| 917 | KIRAMS5.4.4.2.1 | **통합테스트 실시** | 20d | 2009-10-05 | 2009-10-30 |  | 2009-10-05 | 2009-10-30 | 20d | 233d |  |  | 통합테스트 실시 | 07060716O410159 | C07-1 1.6.2.1 |  |
| 918 | KIRAMS5.4.4.2.1.1 | 통합테스트 환경구축 지원 | 5d | 2009-10-05 | 2009-10-09 |  | 2009-10-05 | 2009-10-09 | 5d | 248d |  | finish no earlier than 2009-10-09 | 교육훈련계획 수립 | 07060716O410161 | C07-1 1.7.1.2 | 이행계획서 |

| ID | WBS | Task | Duration | Start | Finish | Predecessors | Baseline start | Baseline finish | Baseline duration | Total slack | Free slack | Constraint | Text20 | Text25 | Text26 | 산출물 |
| --- | --- | --- | --- | --- | --- | --- | --- | --- | --- | --- | --- | --- | --- | --- | --- | --- |
| 919 | KIRAMS5.4.4.2.1.2 | **1차 통합테스트** | 10d | 2009-10-12 | 2009-10-23 |  | 2009-10-12 | 2009-10-23 | 10d | 238d |  |  | 교육훈련계획 수립 | 07060716O410161 | C07-1 1.7.1.2 |  |
| 920 | KIRAMS5.4.4.2.1.2.1 | 기초자료 구축(1차) | 2d | 2009-10-12 | 2009-10-13 |  | 2009-10-12 | 2009-10-13 | 2d | 238d | 0d | finish no earlier than 2009-10-13 | 교육훈련계획 수립 | 07060716O410161 | C07-1 1.7.1.2 | 테스트계획서 |
| 921 | KIRAMS5.4.4.2.1.2.2 | 통합테스트 실시(1차) | 2d | 2009-10-14 | 2009-10-15 | 920 | 2009-10-14 | 2009-10-15 | 2d | 238d | 0d |  | 교육훈련계획 수립 | 07060716O410161 | C07-1 1.7.1.2 | 결함보고서,통합테스트시나리오(결과),통합테스트결과보고서 |
| 922 | KIRAMS5.4.4.2.1.2.3 | 통합테스트 결과 분석(1차) | 1d | 2009-10-16 | 2009-10-16 | 921 | 2009-10-16 | 2009-10-16 | 1d | 238d | 0d |  | 교육훈련계획 수립 | 07060716O410161 | C07-1 1.7.1.2 | 결함보고서,통합테스트시나리오(결과),통합테스트결과보고서 |
| 923 | KIRAMS5.4.4.2.1.2.4 | 통합테스트 결과 조치(1차) | 5d | 2009-10-19 | 2009-10-23 | 922 | 2009-10-19 | 2009-10-23 | 5d | 238d |  | start no earlier than 2009-10-19 | 교육훈련계획 수립 | 07060716O410161 | C07-1 1.7.1.2 | 결함보고서,통합테스트시나리오(결과),통합테스트결과보고서 |
| 924 | KIRAMS5.4.4.2.1.3 | **2차 통합테스트** | 7d | 2009-10-22 | 2009-10-30 |  | 2009-10-22 | 2009-10-30 | 7d | 233d |  |  | 교육훈련계획 수립 | 07060716O410161 | C07-1 1.7.1.2 |  |
| 925 | KIRAMS5.4.4.2.1.3.1 | 기초자료 구축(2차) | 2d | 2009-10-22 | 2009-10-23 |  | 2009-10-22 | 2009-10-23 | 2d | 233d | 0d | start no earlier than 2009-10-22 | 교육훈련계획 수립 | 07060716O410161 | C07-1 1.7.1.2 | 테스트계획서 |
| 926 | KIRAMS5.4.4.2.1.3.2 | 통합테스트 실시(2차) | 2d | 2009-10-26 | 2009-10-27 | 925 | 2009-10-26 | 2009-10-27 | 2d | 233d | 0d |  | 교육훈련계획 수립 | 07060716O410161 | C07-1 1.7.1.2 | 결함보고서,통합테스트시나리오(결과),통합테스트결과보고서 |
| 927 | KIRAMS5.4.4.2.1.3.3 | 통합테스트 결과 분석(2차) | 1d | 2009-10-28 | 2009-10-28 | 926 | 2009-10-28 | 2009-10-28 | 1d | 233d | 0d |  | 교육훈련계획 수립 | 07060716O410161 | C07-1 1.7.1.2 | 결함보고서,통합테스트시나리오(결과),통합테스트결과보고서 |
| 928 | KIRAMS5.4.4.2.1.3.4 | 통합테스트 결과 조치(2차) | 2d | 2009-10-29 | 2009-10-30 | 927 | 2009-10-29 | 2009-10-30 | 2d | 233d |  |  | 교육훈련계획 수립 | 07060716O410161 | C07-1 1.7.1.2 | 결함보고서,통합테스트시나리오(결과),통합테스트결과보고서 |
| 929 | KIRAMS5.4.4.2.2 | **시스템테스트 실시** | 5d | 2009-11-09 | 2009-11-13 |  | 2009-11-09 | 2009-11-13 | 5d | 223d |  |  | 시스템테스트 실시 | 07060716O410159 | C07-1 1.6.2.2 |  |
| 930 | KIRAMS5.4.4.2.2.1 | 부하테스트 프로그램 지원 | 5d | 2009-11-09 | 2009-11-13 |  | 2009-11-09 | 2009-11-13 | 5d | 223d |  | start no earlier than 2009-11-09 | 시스템테스트 실시 | 07060716O410159 | C07-1 1.6.2.2 | 시스템테스트결과보고서 |
| 931 | KIRAMS5.4.4.3 | **리허설(본원)** | 26d | 2009-11-16 | 2009-12-21 |  | 2009-11-16 | 2009-12-21 | 26d | 197d |  |  | 시범운영 | 07060716O410164 | C07-1 1.7.4 |  |
| 932 | KIRAMS5.4.4.3.1 | 리허설 계획 수립지원(시나리오 작성) | 11d | 2009-11-16 | 2009-11-30 |  | 2009-11-16 | 2009-11-30 | 11d | 212d |  | finish no earlier than 2009-11-30 | 시범운영계획 수립 | 07060716O410164 | C07-1 1.7.4.1 | 리허설계획서,리허설시나리오 |
| 933 | KIRAMS5.4.4.3.2 | **1차 리허설 실시** | 7d | 2009-12-01 | 2009-12-09 |  | 2009-12-01 | 2009-12-09 | 7d | 205d |  |  | 시범운영 실시 | 07060716O410164 | C07-1 1.7.4.2 |  |
| 934 | KIRAMS5.4.4.3.2.1 | 기초자료 구축(1차) | 2d | 2009-12-01 | 2009-12-02 |  | 2009-12-01 | 2009-12-02 | 2d | 210d |  | start no earlier than 2009-12-01 | 시범운영 실시 | 07060716O410164 | C07-1 1.7.4.2 | 리허설계획서,리허설시나리오 |
| 935 | KIRAMS5.4.4.3.2.2 | 리허설 공지 및 상황실 운영(1차) | 2d | 2009-12-01 | 2009-12-02 |  | 2009-12-01 | 2009-12-02 | 2d | 210d |  | start no earlier than 2009-12-01 | 시범운영 실시 | 07060716O410164 | C07-1 1.7.4.2 | 리허설계획서,리허설시나리오 |
| 936 | KIRAMS5.4.4.3.2.3 | 가상환자 준비(1차) | 2d | 2009-12-01 | 2009-12-02 |  | 2009-12-01 | 2009-12-02 | 2d | 207d | 0d | start no earlier than 2009-12-01 | 시범운영 실시 | 07060716O410164 | C07-1 1.7.4.2 | 리허설계획서,리허설시나리오 |
| 937 | KIRAMS5.4.4.3.2.4 | 리허설 실시(1차) | 1d | 2009-12-03 | 2009-12-03 | 936 | 2009-12-03 | 2009-12-03 | 1d | 207d | 0d |  | 시범운영 실시 | 07060716O410164 | C07-1 1.7.4.2 | 리허설결과서 |
| 938 | KIRAMS5.4.4.3.2.5 | 리허설 결과 분석 및 보고(1차) | 2d | 2009-12-04 | 2009-12-07 | 937 | 2009-12-04 | 2009-12-07 | 2d | 207d |  |  | 시범운영 실시 | 07060716O410164 | C07-1 1.7.4.2 | 리허설결과보고서 |
| 939 | KIRAMS5.4.4.3.2.6 | 리허설 결과 조치(1차) | 4d | 2009-12-04 | 2009-12-09 |  | 2009-12-04 | 2009-12-09 | 4d | 205d |  | finish no earlier than 2009-12-09 | 시범운영 실시 | 07060716O410164 | C07-1 1.7.4.2 | 리허설결과서,리허설결과보고서 |
| 940 | KIRAMS5.4.4.3.3 | **2차 리허설 실시** | 8d | 2009-12-10 | 2009-12-21 |  | 2009-12-10 | 2009-12-21 | 8d | 197d |  |  | 시범운영 실시 | 07060716O410164 | C07-1 1.7.4.2 |  |
| 941 | KIRAMS5.4.4.3.3.1 | 기초자료 구축(2차) | 2d | 2009-12-10 | 2009-12-11 |  | 2009-12-10 | 2009-12-11 | 2d | 202d | 0d | start no earlier than 2009-12-10 | 시범운영 실시 | 07060716O410164 | C07-1 1.7.4.2 | 리허설계획서,리허설시나리오 |
| 942 | KIRAMS5.4.4.3.3.2 | 리허설 공지 및 상황실 운영(2차) | 1d | 2009-12-14 | 2009-12-14 | 941 | 2009-12-14 | 2009-12-14 | 1d | 202d |  |  | 시범운영 실시 | 07060716O410164 | C07-1 1.7.4.2 | 리허설계획서,리허설시나리오 |
| 943 | KIRAMS5.4.4.3.3.3 | 가상환자 준비(2차) | 1d | 2009-12-14 | 2009-12-14 |  | 2009-12-14 | 2009-12-14 | 1d | 197d | 0d | start no earlier than 2009-12-14 | 시범운영 실시 | 07060716O410164 | C07-1 1.7.4.2 | 리허설계획서,리허설시나리오 |
| 944 | KIRAMS5.4.4.3.3.4 | 리허설 실시(2차) | 1d | 2009-12-15 | 2009-12-15 | 943 | 2009-12-15 | 2009-12-15 | 1d | 197d | 0d |  | 시범운영 실시 | 07060716O410164 | C07-1 1.7.4.2 | 리허설결과서 |
| 945 | KIRAMS5.4.4.3.3.5 | 리허설 결과 분석 및 보고(2차) | 1d | 2009-12-16 | 2009-12-16 | 944 | 2009-12-16 | 2009-12-16 | 1d | 197d | 0d |  | 시범운영 실시 | 07060716O410164 | C07-1 1.7.4.2 | 리허설결과보고서 |
| 946 | KIRAMS5.4.4.3.3.6 | 리허설 결과 조치(2차) | 3d | 2009-12-17 | 2009-12-21 | 945 | 2009-12-17 | 2009-12-21 | 3d | 197d |  | start no earlier than 2009-12-17 | 시범운영 실시 | 07060716O410164 | C07-1 1.7.4.2 | 리허설결과서,리허설결과보고서 |

| ID | WBS | Task | Duration | Start | Finish | Predecessors | Baseline start | Baseline finish | Baseline duration | Total slack | Free slack | Constraint | Text20 | Text25 | Text26 | 산출물 |
| --- | --- | --- | --- | --- | --- | --- | --- | --- | --- | --- | --- | --- | --- | --- | --- | --- |
| 947 | KIRAMS5.4.4.4 | **컨버전 전환 지원(1차)** | 30d | 2009-10-19 | 2009-11-27 |  | 2009-10-19 | 2009-11-27 | 30d | 213d |  |  | 테스트 실시 | 07060716O410159 | C07-1 1.6.2 |  |
| 948 | KIRAMS5.4.4.4.1 | 컨버전 전환 실시 지원(1차) | 20d | 2009-10-19 | 2009-11-13 |  | 2009-10-19 | 2009-11-13 | 20d | 213d | 0d | start no earlier than 2009-10-19 | 테스트 실시 | 07060716O410159 | C07-1 1.6.2 | 컨버전대상테이블 |
| 949 | KIRAMS5.4.4.4.2 | 전환결과 검증 및 수정 지원(1차) | 10d | 2009-11-16 | 2009-11-27 | 948 | 2009-11-16 | 2009-11-27 | 10d | 213d |  | finish no earlier than 2009-11-27 | 테스트 실시 | 07060716O410159 | C07-1 1.6.2 | 컨버전대상테이블 |
| 950 | KIRAMS5.4.4.5 | **컨버전 전환 지원(2차)** | 20d | 2009-11-30 | 2009-12-28 |  | 2009-11-30 | 2009-12-28 | 20d | 193d |  |  | 테스트 실시 | 07060716O410159 | C07-1 1.6.2 |  |
| 951 | KIRAMS5.4.4.5.1 | 컨버전 전환 실시 지원(2차) | 15d | 2009-11-30 | 2009-12-18 |  | 2009-11-30 | 2009-12-18 | 15d | 193d | 0d | start no earlier than 2009-11-30 | 테스트 실시 | 07060716O410159 | C07-1 1.6.2 | 컨버전대상테이블 |
| 952 | KIRAMS5.4.4.5.2 | 전환결과 검증 및 수정 지원(2차) | 5d | 2009-12-21 | 2009-12-28 | 951 | 2009-12-21 | 2009-12-28 | 5d | 193d |  |  | 테스트 실시 | 07060716O410159 | C07-1 1.6.2 | 컨버전대상테이블 |
| 953 | KIRAMS5.4.4.6 | 병행운영(인수테스트) | 5d | 2009-12-21 | 2009-12-28 |  | 2009-12-21 | 2009-12-28 | 5d | 193d |  | finish no earlier than 2009-12-28 | 안정화 및 유지보수 | 08100808O000000 | C07-1 1.7.5 | 인수테스트결괴서 |
| 954 | KIRAMS5.4.4.7 | **시스템 오픈(본원)** | 21d | 2009-12-28 | 2010-01-22 |  | 2009-12-28 | 2010-01-22 | 21d | 173d |  |  | 시범운영 | 07060716O410164 | C07-1 1.7.4 |  |
| 955 | KIRAMS5.4.4.7.1 | 오픈준비 | 4d | 2009-12-28 | 2009-12-31 |  | 2009-12-28 | 2009-12-31 | 4d | 189d | 0d | finish no earlier than 2009-12-31 | 시범운영계획 수립 | 07060716O410164 | C07-1 1.7.4.1 | 이행계획서 |
| 956 | KIRAMS5.4.4.7.2 | 시스템 OPEN | 1d | 2010-01-01 | 2010-01-01 | 955 | 2010-01-01 | 2010-01-01 | 1d | 189d |  |  | 시범운영계획 수립 | 07060716O410164 | C07-1 1.7.4.1 | 이행계획서 |
| 957 | KIRAMS5.4.4.7.3 | 안정화 지원 | 16d | 2010-01-02 | 2010-01-22 |  | 2010-01-02 | 2010-01-22 | 16d | 173d |  | finish no earlier than 2010-01-22 | 시범운영계획 수립 | 07060716O410164 | C07-1 1.7.4.1 | Help Desk 일지 |
| 958 | KIRAMS5.4.5 | **분원(동남권) 이행** | 67d | 2010-01-18 | 2010-04-21 |  | 2010-01-18 | 2010-04-21 | 67d | 111d |  |  | 교육훈련 실시 | 07060716O410163 | C07-1 1.7.3.3 | 이행계획서 |
| 959 | KIRAMS5.4.5.1 | **릴리이즈(분원)** | 47d | 2010-01-25 | 2010-03-31 |  | 2010-01-25 | 2010-03-31 | 47d | 126d |  |  | 컨버전 및 릴리이즈 | 07060716O410162 | C07-1 1.7.2 |  |
| 960 | KIRAMS5.4.5.1.1 | 데이터베이스 구축 지원 및 확인 | 10d | 2010-01-25 | 2010-02-05 |  | 2010-01-25 | 2010-02-05 | 10d | 163d |  | start no earlier than 2010-01-25 | 데이터베이스 구축 | 07060716O410162 | C07-1 1.7.2.1 | 데이터베이스 |
| 961 | KIRAMS5.4.5.1.2 | 소프트웨어 설치 확인 | 10d | 2010-01-25 | 2010-02-05 |  | 2010-01-25 | 2010-02-05 | 10d | 163d |  | finish no earlier than 2010-02-05 | 소프트웨어 설치 | 07060716O410162 | C07-1 1.7.2.2 | 어플리케이션 |
| 962 | KIRAMS5.4.5.1.3 | 기초 데이터 생성 | 39d | 2010-02-01 | 2010-03-26 |  | 2010-02-01 | 2010-03-26 | 39d | 129d |  | finish no earlier than 2010-03-26 | 데이터 컨버전 | 07060716O410162 | C07-1 1.7.2.3 | 기초 데이터 |
| 963 | KIRAMS5.4.5.1.4 | 시스템 릴리이즈 | 3d | 2010-03-29 | 2010-03-31 |  | 2010-03-29 | 2010-03-31 | 3d | 126d |  | finish no earlier than 2010-03-31 | 시스템 릴리이즈 | 07060716O410162 | C07-1 1.7.2.5 | 운영시스템 |
| 964 | KIRAMS5.4.5.2 | **테스트 실시(분원)** | 15d | 2010-01-18 | 2010-02-05 |  | 2010-01-18 | 2010-02-05 | 15d | 163d |  |  | 테스트 실시 | 07060716O410159 | C07-1 1.6.2 |  |
| 965 | KIRAMS5.4.5.2.1 | **통합테스트 실시** | 12d | 2010-01-18 | 2010-02-02 |  | 2010-01-18 | 2010-02-02 | 12d | 166d |  |  | 통합테스트 실시 | 07060716O410159 | C07-1 1.6.2.1 |  |
| 966 | KIRAMS5.4.5.2.1.1 | 통합테스트 환경구축 지원 | 5d | 2010-01-18 | 2010-01-22 |  | 2010-01-18 | 2010-01-22 | 5d | 173d |  | start no earlier than 2010-01-18 | 교육훈련계획 수립 | 07060716O410161 | C07-1 1.7.1.2 | 이행계획서 |
| 967 | KIRAMS5.4.5.2.1.2 | **통합테스트** | 7d | 2010-01-25 | 2010-02-02 |  | 2010-01-25 | 2010-02-02 | 7d | 166d |  |  | 교육훈련계획 수립 | 07060716O410161 | C07-1 1.7.1.2 |  |
| 968 | KIRAMS5.4.5.2.1.2.1 | 기초자료 구축 | 2d | 2010-01-25 | 2010-01-26 |  | 2010-01-25 | 2010-01-26 | 2d | 169d | 0d | start no earlier than 2010-01-25 | 교육훈련계획 수립 | 07060716O410161 | C07-1 1.7.1.2 | 테스트계획서 |
| 969 | KIRAMS5.4.5.2.1.2.2 | 통합테스트 실시 | 2d | 2010-01-27 | 2010-01-28 | 968 | 2010-01-27 | 2010-01-28 | 2d | 169d |  |  | 교육훈련계획 수립 | 07060716O410161 | C07-1 1.7.1.2 | 결함보고서,통합테스트시나리오(결과),통합테스트결과보고서 |
| 970 | KIRAMS5.4.5.2.1.2.3 | 통합테스트 결과 분석 | 1d | 2010-01-28 | 2010-01-28 |  | 2010-01-28 | 2010-01-28 | 1d | 166d | 0d | start no earlier than 2010-01-28 | 교육훈련계획 수립 | 07060716O410161 | C07-1 1.7.1.2 | 결함보고서,통합테스트시나리오(결과),통합테스트결과보고서 |
| 971 | KIRAMS5.4.5.2.1.2.4 | 통합테스트 결과 조치 | 3d | 2010-01-29 | 2010-02-02 | 970 | 2010-01-29 | 2010-02-02 | 3d | 166d |  |  | 교육훈련계획 수립 | 07060716O410161 | C07-1 1.7.1.2 | 결함보고서,통합테스트시나리오(결과),통합테스트결과보고서 |

| ID | WBS | Task | Duration | Start | Finish | Predecessors | Baseline start | Baseline finish | Baseline duration | Total slack | Free slack | Constraint | Text20 | Text25 | Text26 | 산출물 |
| --- | --- | --- | --- | --- | --- | --- | --- | --- | --- | --- | --- | --- | --- | --- | --- | --- |
| 972 | KIRAMS5.4.5.2.2 | **시스템테스트 실시 지원** | 5d | 2010-02-01 | 2010-02-05 |  | 2010-02-01 | 2010-02-05 | 5d | 163d |  |  | 시스템테스트 실시 | 07060716O410159 | C07-1 1.6.2.2 |  |
| 973 | KIRAMS5.4.5.2.2.1 | 부하테스트 프로그램 지원 | 5d | 2010-02-01 | 2010-02-05 |  | 2010-02-01 | 2010-02-05 | 5d | 163d |  | start no earlier than 2010-02-01 | 시스템테스트 실시 | 07060716O410159 | C07-1 1.6.2.2 | 시스템테스트결과보고서 |
| 974 | KIRAMS5.4.5.3 | **리허설-인수테스트(분원)** | 31d | 2010-02-08 | 2010-03-23 |  | 2010-02-08 | 2010-03-23 | 31d | 132d |  |  | 시범운영 | 07060716O410164 | C07-1 1.7.4 |  |
| 975 | KIRAMS5.4.5.3.1 | 리허설 계획 수립지원(시나리오 작성) | 9d | 2010-02-08 | 2010-02-19 |  | 2010-02-08 | 2010-02-19 | 9d | 154d |  | start no earlier than 2010-02-08 | 시범운영계획 수립 | 07060716O410164 | C07-1 1.7.4.1 | 리허설계획서,리허설시나리오 |
| 976 | KIRAMS5.4.5.3.2 | **1차 리허설 실시** | 10d | 2010-03-01 | 2010-03-12 |  | 2010-03-01 | 2010-03-12 | 10d | 139d |  |  | 시범운영 실시 | 07060716O410164 | C07-1 1.7.4.2 |  |
| 977 | KIRAMS5.4.5.3.2.1 | 기초자료 구축(1차) | 2d | 2010-03-01 | 2010-03-02 |  | 2010-03-01 | 2010-03-02 | 2d | 143d | 0d | start no earlier than 2010-03-01 | 시범운영 실시 | 07060716O410164 | C07-1 1.7.4.2 | 리허설계획서,리허설시나리오 |
| 978 | KIRAMS5.4.5.3.2.2 | 리허설 공지 및 상황실 운영(1차) | 2d | 2010-03-03 | 2010-03-04 | 977 | 2010-03-03 | 2010-03-04 | 2d | 143d | 0d |  | 시범운영 실시 | 07060716O410164 | C07-1 1.7.4.2 | 리허설계획서,리허설시나리오 |
| 979 | KIRAMS5.4.5.3.2.3 | 가상환자 준비(1차) | 2d | 2010-03-05 | 2010-03-08 | 978 | 2010-03-05 | 2010-03-08 | 2d | 143d |  |  | 시범운영 실시 | 07060716O410164 | C07-1 1.7.4.2 | 리허설계획서,리허설시나리오 |
| 980 | KIRAMS5.4.5.3.2.4 | 리허설 실시(1차) | 1d | 2010-03-09 | 2010-03-09 |  | 2010-03-09 | 2010-03-09 | 1d | 139d | 0d | start no earlier than 2010-03-09 | 시범운영 실시 | 07060716O410164 | C07-1 1.7.4.2 | 리허설결과서,인수테스트결과서 |
| 981 | KIRAMS5.4.5.3.2.5 | 리허설 결과 분석 및 보고(1차) | 1d | 2010-03-10 | 2010-03-10 | 980 | 2010-03-10 | 2010-03-10 | 1d | 139d | 0d |  | 시범운영 실시 | 07060716O410164 | C07-1 1.7.4.2 | 리허설결과보고서 |
| 982 | KIRAMS5.4.5.3.2.6 | 리허설 결과 조치(1차) | 2d | 2010-03-11 | 2010-03-12 | 981 | 2010-03-11 | 2010-03-12 | 2d | 139d |  |  | 시범운영 실시 | 07060716O410164 | C07-1 1.7.4.2 | 리허설결과서,리허설결과보고서 |
| 983 | KIRAMS5.4.5.3.3 | **2차 리허설 실시** | 7d | 2010-03-15 | 2010-03-23 |  | 2010-03-15 | 2010-03-23 | 7d | 132d |  |  | 시범운영 실시 | 07060716O410164 | C07-1 1.7.4.2 |  |
| 984 | KIRAMS5.4.5.3.3.1 | 기초자료 구축(2차) | 2d | 2010-03-15 | 2010-03-16 |  | 2010-03-15 | 2010-03-16 | 2d | 137d |  | start no earlier than 2010-03-15 | 시범운영 실시 | 07060716O410164 | C07-1 1.7.4.2 | 리허설계획서,리허설시나리오 |
| 985 | KIRAMS5.4.5.3.3.2 | 리허설 공지 및 상황실 운영(2차) | 2d | 2010-03-16 | 2010-03-17 |  | 2010-03-16 | 2010-03-17 | 2d | 136d |  | start no earlier than 2010-03-16 | 시범운영 실시 | 07060716O410164 | C07-1 1.7.4.2 | 리허설계획서,리허설시나리오 |
| 986 | KIRAMS5.4.5.3.3.3 | 가상환자 준비(2차) | 2d | 2010-03-16 | 2010-03-17 |  | 2010-03-16 | 2010-03-17 | 2d | 134d | 0d | start no earlier than 2010-03-16 | 시범운영 실시 | 07060716O410164 | C07-1 1.7.4.2 | 리허설계획서,리허설시나리오 |
| 987 | KIRAMS5.4.5.3.3.4 | 리허설 실시(2차) | 1d | 2010-03-18 | 2010-03-18 | 986 | 2010-03-18 | 2010-03-18 | 1d | 134d | 2d |  | 시범운영 실시 | 07060716O410164 | C07-1 1.7.4.2 | 리허설결과서,인수테스트결과서 |
| 988 | KIRAMS5.4.5.3.3.5 | 리허설 결과 분석 및 보고(2차) | 1d | 2010-03-19 | 2010-03-19 |  | 2010-03-19 | 2010-03-19 | 1d | 134d |  | start no earlier than 2010-03-19 | 시범운영 실시 | 07060716O410164 | C07-1 1.7.4.2 | 리허설결과보고서 |
| 989 | KIRAMS5.4.5.3.3.6 | 리허설 결과 조치(2차) | 1d | 2010-03-23 | 2010-03-23 | 987 | 2010-03-23 | 2010-03-23 | 1d | 132d |  | finish no earlier than 2010-03-23 | 시범운영 실시 | 07060716O410164 | C07-1 1.7.4.2 | 리허설결과서,리허설결과보고서 |
| 990 | KIRAMS5.4.5.4 | **시스템 오픈(분원)** | 20d | 2010-03-25 | 2010-04-21 |  | 2010-03-25 | 2010-04-21 | 20d | 111d |  |  | 시범운영 | 07060716O410164 | C07-1 1.7.4 |  |
| 991 | KIRAMS5.4.5.4.1 | 오픈준비 | 5d | 2010-03-25 | 2010-03-31 |  | 2010-03-25 | 2010-03-31 | 5d | 125d | 0d | start no earlier than 2010-03-25 | 시범운영계획 수립 | 07060716O410164 | C07-1 1.7.4.1 | 이행계획서 |
| 992 | KIRAMS5.4.5.4.2 | 시스템 OPEN | 1d | 2010-04-01 | 2010-04-01 | 991 | 2010-04-01 | 2010-04-01 | 1d | 125d |  |  | 시범운영계획 수립 | 07060716O410164 | C07-1 1.7.4.1 | 이행계획서 |
| 993 | KIRAMS5.4.5.4.3 | 안정화 지원 | 15d | 2010-04-01 | 2010-04-21 |  | 2010-04-01 | 2010-04-21 | 15d | 111d |  | finish no earlier than 2010-04-21 | 시범운영계획 수립 | 07060716O410164 | C07-1 1.7.4.1 | Help Desk 일지 |
| 994 | KIRAMS5.5 | **안정화운영 및 종료** | 190d? | 2010-01-01 | 2010-09-30 |  | 2010-01-01 | 2010-09-30 | 190d? | 0d |  |  |  |  |  |  |
| 995 | KIRAMS5.5.1 | 본원(서울) 안정화 운영지원 | 127d | 2010-01-01 | 2010-06-30 |  | 2010-01-01 | 2010-06-30 | 127d | 63d |  | start no earlier than 2010-01-01 | 시범운영계획 수립 | 07060716O410164 | C07-1 1.7.4.1 | Help Desk 일지 |
| 996 | KIRAMS5.5.2 | 분원(동남권) 안정화 운영지원 | 126d? | 2010-04-01 | 2010-09-30 |  | 2010-04-01 | 2010-09-30 | 126d? | 0d |  | start no earlier than 2010-04-01 |  |  |  | Help Desk 일지 |

| ID | WBS | Task | Duration | Start | Finish | Predecessors | Complete | Remaining | Baseline start | Baseline finish | Baseline duration | Total slack | Constraint | Text20 | Text25 | Text26 | 산출물 |
| --- | --- | --- | --- | --- | --- | --- | --- | --- | --- | --- | --- | --- | --- | --- | --- | --- | --- |
| 997 | KIRAMS6 | **OCS&EMR(공통/소프트웨어아키텍처)** | 328d? | 2009-01-12 A | 2010-04-21 |  | 24% | 250.69d? | 2009-01-12 | 2010-04-21 | 328d? | 111d |  |  |  |  |  |
| 998 | KIRAMS6.1 | **요구정의 및 분석** | 63d? | 2009-01-12 A | 2009-04-10 |  | 88% | 7.73d? | 2009-01-12 | 2009-04-10 | 63d? | 376d |  | 요구정의 | 07060716O410138 | C07-1 1.2 | 요구정의, 분석산출물 |
| 999 | KIRAMS6.1.1 | ITA 산출물 분석 | 18d | 2009-01-19 A | 2009-02-13 A |  | 100% |  | 2009-01-19 | 2009-02-13 | 18d |  | start no earlier than 2009-01-19 | 비즈니스 모델링(AS-IS) | 07060716O410139 | C07-1 1.2.1 | ITA결과산출물 |
| 1000 | KIRAMS6.1.2 | **단계착수** | 8d? | 2009-02-02 A | 2009-02-11 A |  | 100% |  | 2009-02-02 | 2009-02-11 | 8d? |  |  |  |  |  |  |
| 1001 | KIRAMS6.1.2.1 | 표준및절차정의 및 검토 | 6d | 2009-02-02 A | 2009-02-09 A |  | 100% |  | 2009-02-02 | 2009-02-09 | 6d |  | start no earlier than 2009-02-02 |  |  |  | 표준및절차매뉴얼 |
| 1002 | KIRAMS6.1.2.2 | 오리엔테이션 | 2d? | 2009-02-10 A | 2009-02-11 A |  | 100% |  | 2009-02-10 | 2009-02-11 | 2d? |  |  |  |  |  | 표준및절차매뉴얼 |
| 1003 | KIRAMS6.1.3 | **요구사항정의** | 48d | 2009-01-12 A | 2009-03-20 A |  | 100% |  | 2009-01-12 | 2009-03-03 | 35d |  |  | 요구사항 정의 | 07060716O410141 | C07-1 1.2.3 |  |
| 1004 | KIRAMS6.1.3.1 | **인터뷰 실시** | 35d | 2009-01-12 A | 2009-03-03 A |  | 100% |  | 2009-01-12 | 2009-03-03 | 35d |  |  | 인터뷰 실시 | 07060716O410139 | C07-1 1.2.1.2 |  |
| 1005 | KIRAMS6.1.3.1.1 | 현행시스템 분석(전산정보팀 인터뷰) | 13d | 2009-01-12 A | 2009-01-30 A |  | 100% |  | 2009-01-12 | 2009-01-30 | 13d |  | start no earlier than 2009-01-12 | 인터뷰 실시 | 07060716O410139 | C07-1 1.2.1.2 |  |
| 1006 | KIRAMS6.1.3.1.2 | 인터뷰 결과 정리 | 17d | 2009-02-09 A | 2009-03-03 A |  | 100% |  | 2009-02-09 | 2009-03-03 | 17d |  | start no earlier than 2009-02-09 | 인터뷰 실시 | 07060716O410139 | C07-1 1.2.1.2 | 인터뷰결과서 |
| 1007 | KIRAMS6.1.3.2 | 요구사항 도출/정제/확정 | 25d | 2009-02-16 A | 2009-03-20 A |  | 100% |  | 2009-02-16 | 2009-02-20 | 5d |  | finish no earlier than 2009-02-20 | 요구사항 정제 | 07060716O410141 | C07-1 1.2.3.2 | 요구사항정의서 |
| 1008 | KIRAMS6.1.4 | **화면분석** | 20d? | 2009-02-23 A | 2009-03-20 A |  | 100% |  | 2009-02-23 | 2009-03-18 | 18d? |  |  | 화면 분석 | 07060716O410144 | C07-1 1.3.2 |  |
| 1009 | KIRAMS6.1.4.1 | UI 적용 방안 검토 | 7d? | 2009-02-23 A | 2009-03-03 A |  | 100% |  | 2009-02-23 | 2009-03-03 | 7d? |  | finish no earlier than 2009-02-20 |  |  |  |  |
| 1010 | KIRAMS6.1.4.2 | UI Layer 설계 전략 수립 | 7d? | 2009-02-23 A | 2009-03-03 A |  | 100% |  | 2009-02-23 | 2009-03-03 | 7d? |  | finish no earlier than 2009-02-27 |  |  |  |  |
| 1011 | KIRAMS6.1.4.3 | **화면표준 정의** | 15d | 2009-03-02 A | 2009-03-20 A |  | 100% |  | 2009-03-02 | 2009-03-18 | 13d |  |  | 화면표준 정의 | 07060716O410144 | C07-1 1.3.2.1 |  |
| 1012 | KIRAMS6.1.4.3.1 | 화면 표준 디자인 작성 | 7d | 2009-03-02 A | 2009-03-10 A |  | 100% |  | 2009-03-02 | 2009-03-10 | 7d |  | start no earlier than 2009-03-09 | 화면레이아웃 정의 | 07060716O410144 | C07-1 1.3.2.2 | 디자인 시안 |
| 1013 | KIRAMS6.1.4.3.2 | 표준 디자인 자체 검토 | 1d | 2009-03-10 A | 2009-03-10 A |  | 100% |  | 2009-03-10 | 2009-03-10 | 1d |  | start no earlier than 2009-03-11 | 화면레이아웃 정의 | 07060716O410144 | C07-1 1.3.2.2 | 디자인 시안 |
| 1014 | KIRAMS6.1.4.3.3 | 표준 디자인 확정 의뢰 | 3d | 2009-03-11 A | 2009-03-13 A | 1013 | 100% |  | 2009-03-11 | 2009-03-13 | 3d |  | start no earlier than 2009-03-16 | 화면레이아웃 정의 | 07060716O410144 | C07-1 1.3.2.2 | 디자인 시안 |
| 1015 | KIRAMS6.1.4.3.4 | 화면표준정의서 작성 | 5d | 2009-03-16 A | 2009-03-20 A | 1014 | 100% |  | 2009-03-16 | 2009-03-18 | 3d |  |  | 화면레이아웃 정의 | 07060716O410144 | C07-1 1.3.2.2 | 화면표준정의서 |
| 1016 | KIRAMS6.1.5 | **아키텍처분석** | 35d? | 2009-02-09 A | 2009-03-27 A |  | 100% |  | 2009-02-09 | 2009-03-31 | 37d? |  |  | 아키텍처분석 | 07060716O410148 | C07-1 1.4.1 |  |
| 1017 | KIRAMS6.1.5.1 | 현행시스템 분석 | 15d | 2009-02-09 A | 2009-02-27 A |  | 100% |  | 2009-02-09 | 2009-02-27 | 15d |  | finish no earlier than 2009-02-27 | 현행시스템 분석 | 07060716O410148 | C07-1 1.4.1.1 | 현행시스템분석서 |
| 1018 | KIRAMS6.1.5.2 | 소프트웨어아키텍처 설계 | 23d? | 2009-02-25 A | 2009-03-27 A |  | 100% |  | 2009-02-25 | 2009-03-31 | 25d? |  | finish no earlier than 2009-03-20 |  |  |  | 아키텍처정의서(초안) |
| 1019 | KIRAMS6.1.6 | **SW 아키텍처 검증** | 40d? | 2009-02-16 A | 2009-04-10 |  | 58% | 16.75d? | 2009-02-16 | 2009-04-10 | 40d? | 376d |  |  |  |  |  |
| 1020 | KIRAMS6.1.6.1 | 개발 환경 구축 | 5d? | 2009-02-16 A | 2009-02-20 A |  | 100% |  | 2009-02-16 | 2009-02-20 | 5d? |  | finish no earlier than 2009-02-13 |  |  |  |  |
| 1021 | KIRAMS6.1.6.2 | AnyFrame 환경 구축 | 5d? | 2009-02-23 A | 2009-02-27 A |  | 100% |  | 2009-02-23 | 2009-02-27 | 5d? |  | finish no earlier than 2009-02-20 |  |  |  |  |
| 1022 | KIRAMS6.1.6.3 | App. 솔루션 통합 환경 구성 | 16d? | 2009-03-02 A | 2009-03-23 A |  | 100% |  | 2009-03-02 | 2009-03-06 | 5d? |  | finish no earlier than 2009-02-20 |  |  |  |  |
| 1023 | KIRAMS6.1.6.4 | SW 아키텍쳐 검증 (POC) 개발 지원 | 27d? | 2009-02-23 A | 2009-03-31 |  | 35% | 17.55d? | 2009-02-23 | 2009-03-31 | 27d? | 384d | finish no earlier than 2009-03-31 |  |  |  |  |
| 1024 | KIRAMS6.1.6.5 | 아키텍쳐 성능 검증 | 8d? | 2009-04-01 | 2009-04-10 |  |  |  | 2009-04-01 | 2009-04-10 | 8d? | 376d | finish no earlier than 2009-04-10 |  |  |  |  |

| ID | WBS | Task | Duration | Start | Finish | Predecessors | Complete | Remaining | Baseline start | Baseline finish | Baseline duration | Total slack | Free slack | Constraint | 산출물 | Text20 | Text25 | Text26 |
| --- | --- | --- | --- | --- | --- | --- | --- | --- | --- | --- | --- | --- | --- | --- | --- | --- | --- | --- |
| 1025 | KIRAMS6.1.7 | **단계완료** | 8d? | 2009-03-18 A | 2009-03-27 |  | 83% | 1.4d? | 2009-03-18 | 2009-03-27 | 8d? | 386d |  |  |  |  |  |  |
| 1026 | KIRAMS6.1.7.1 | Inspection 실시 및 시정조치 | 3d? | 2009-03-18 A | 2009-03-20 A |  | 100% |  | 2009-03-18 | 2009-03-24 | 5d? |  |  | finish no earlier than 2009-03-24 | Inspection결과,시정조치서 |  |  |  |
| 1027 | KIRAMS6.1.7.2 | 단계완료승인획득 | 1d? | 2009-03-24 A | 2009-03-27 | 1026 | 30% | 0.7d? | 2009-03-27 | 2009-03-27 | 1d? | 386d |  | finish no earlier than 2009-03-27 | 고객인수확인서 |  |  |  |
| 1028 | KIRAMS6.2 | **설계** | 49d? | 2009-03-09 A | 2009-05-15 |  | 57% | 21.01d? | 2009-02-24 | 2009-05-15 | 58d? | 352d |  |  |  | 설계 | 07060716O410151 | C07-1 1.5 |
| 1029 | KIRAMS6.2.1 | **단계착수** | 15d? | 2009-03-09 A | 2009-03-27 A |  | 100% |  | 2009-02-24 | 2009-03-20 | 19d? |  |  |  | 표준및절차매뉴얼 |  |  |  |
| 1030 | KIRAMS6.2.1.1 | 표준및절차정의 및 검토 | 10d? | 2009-03-09 A | 2009-03-20 A |  | 100% |  | 2009-03-09 | 2009-03-20 | 10d? |  |  | finish no earlier than 2009-03-20 | 표준및절차매뉴얼 |  |  |  |
| 1031 | KIRAMS6.2.1.2 | 오리엔테이션 | 4d? | 2009-03-24 A | 2009-03-27 A |  | 100% |  | 2009-02-24 | 2009-02-27 | 4d? |  |  | start no earlier than 2009-03-24 | 표준및절차매뉴얼 |  |  |  |
| 1032 | KIRAMS6.2.2 | **아키텍처설계** | 29d | 2009-03-16 A | 2009-04-23 |  | 17% | 24d | 2009-03-23 | 2009-04-23 | 24d | 367d |  |  | 설계 산출물 | 아키텍처설계 | 07060716O410149 | C07-1 1.4.2 |
| 1033 | KIRAMS6.2.2.1 | 어플리케이션아키텍처 정의 | 10d | 2009-03-16 A | 2009-03-27 A |  | 100% |  | 2009-03-23 | 2009-04-23 | 24d |  |  | finish no earlier than 2009-04-23 | 아키텍처정의서 | 어플리케이션아키텍처 설계 | 07060716O410149 | C07-1 1.4.2.1 |
| 1034 | KIRAMS6.2.2.2 | 데이터아키텍처 정의 | 24d | 2009-03-23 | 2009-04-23 |  |  |  | 2009-03-23 | 2009-04-23 | 24d | 367d |  | finish no earlier than 2009-04-23 | 아키텍처정의서 | 데이터아키텍처 설계 | 07060716O410149 | C07-1 1.4.2.2 |
| 1035 | KIRAMS6.2.2.3 | 기술인프라아키텍처 정의 | 24d | 2009-03-23 | 2009-04-23 |  |  |  | 2009-03-23 | 2009-04-23 | 24d | 367d |  | finish no earlier than 2009-04-23 | 아키텍처정의서 | 기술인프라아키텍처 설계 | 07060716O410149 | C07-1 1.4.2.3 |
| 1036 | KIRAMS6.2.3 | **아키텍처개발** | 30d | 2009-03-23 A | 2009-05-01 |  | 1% | 29.75d | 2009-03-16 | 2009-04-24 | 30d | 361d |  |  | 아키텍처정의서 | 아키텍처개발 | 07060716O410150 | C07-1 1.4.3 |
| 1037 | KIRAMS6.2.3.1 | 실행아키텍처 계획 | 5d | 2009-03-23 A | 2009-03-27 |  | 5% | 4.75d | 2009-03-16 | 2009-03-20 | 5d | 361d | 0d | finish no earlier than 2009-03-20 | 실행아키텍처구축계획서 | 실행아키텍처 계획 | 07060716O410150 | C07-1 1.4.3.1 |
| 1038 | KIRAMS6.2.3.2 | 실행아키텍처 구축 | 20d | 2009-03-30 | 2009-04-24 | 1037 |  |  | 2009-03-23 | 2009-04-17 | 20d | 361d | 0d | start no earlier than 2009-03-23 | 실행아키텍처 | 실행아키텍처 구축 | 07060716O410150 | C07-1 1.4.3.2 |
| 1039 | KIRAMS6.2.3.3 | 실행아키텍처 테스트 | 5d | 2009-04-27 | 2009-05-01 | 1038 |  |  | 2009-04-20 | 2009-04-24 | 5d | 361d |  | start no earlier than 2009-04-20 | 실행아키텍처구축결과서 | 실행아키텍처 테스트 | 07060716O410150 | C07-1 1.4.3.3 |
| 1040 | KIRAMS6.2.4 | **개발표준수립 및 가이드** | 30d? | 2009-03-16 A | 2009-04-24 |  | 89% | 3.45d? | 2009-03-30 | 2009-04-24 | 20d? | 366d |  |  | 아키텍처정의서 |  |  |  |
| 1041 | KIRAMS6.2.4.1 | 패키지 표준 | 3d? | 2009-03-16 A | 2009-03-18 A |  | 100% |  | 2009-03-30 | 2009-03-31 | 2d? |  |  | finish no earlier than 2009-03-31 | 아키텍처정의서 |  |  |  |
| 1042 | KIRAMS6.2.4.2 | 명명규칙정의 | 2d? | 2009-03-18 A | 2009-03-19 A |  | 100% |  | 2009-04-01 | 2009-04-02 | 2d? |  |  | finish no earlier than 2009-04-02 | 아키텍처정의서 |  |  |  |
| 1043 | KIRAMS6.2.4.3 | 코딩표준 템플릿 | 2d? | 2009-03-19 A | 2009-03-20 A |  | 100% |  | 2009-04-06 | 2009-04-07 | 2d? |  |  | finish no earlier than 2009-04-07 | 아키텍처정의서 |  |  |  |
| 1044 | KIRAMS6.2.4.4 | 로깅처리 가이드 | 10d? | 2009-03-16 A | 2009-03-27 A |  | 100% |  | 2009-04-13 | 2009-04-24 | 10d? |  |  | finish no earlier than 2009-04-24 | 아키텍처정의서 |  |  |  |
| 1045 | KIRAMS6.2.4.5 | 에러(Exception)처리 가이드 | 10d? | 2009-03-16 A | 2009-03-27 A |  | 100% |  | 2009-04-13 | 2009-04-24 | 10d? |  |  | finish no earlier than 2009-04-24 | 아키텍처정의서 |  |  |  |
| 1046 | KIRAMS6.2.4.6 | 트랜잭션처리 가이드 | 10d? | 2009-03-16 A | 2009-03-27 A |  | 100% |  | 2009-04-13 | 2009-04-24 | 10d? |  |  | finish no earlier than 2009-04-24 | 아키텍처정의서 |  |  |  |
| 1047 | KIRAMS6.2.4.7 | 권한처리 가이드 | 10d? | 2009-03-16 A | 2009-03-27 A |  | 100% |  | 2009-04-13 | 2009-04-24 | 10d? |  |  | finish no earlier than 2009-04-24 | 아키텍처정의서 |  |  |  |
| 1048 | KIRAMS6.2.4.8 | 배치작업처리 가이드 | 10d? | 2009-03-16 A | 2009-03-27 A |  | 100% |  | 2009-04-13 | 2009-04-24 | 10d? |  |  | finish no earlier than 2009-04-24 | 아키텍처정의서 |  |  |  |
| 1049 | KIRAMS6.2.4.9 | 메시지처리 가이드 | 10d? | 2009-03-16 A | 2009-03-27 A |  | 100% |  | 2009-04-13 | 2009-04-24 | 10d? |  |  | finish no earlier than 2009-04-24 | 아키텍처정의서 |  |  |  |
| 1050 | KIRAMS6.2.4.10 | 상용솔루션(SSO 등)연계처리 가이드 | 10d? | 2009-03-16 A | 2009-03-27 A |  | 100% |  | 2009-04-13 | 2009-04-24 | 10d? |  |  | finish no earlier than 2009-04-24 | 아키텍처정의서 |  |  |  |
| 1051 | KIRAMS6.2.4.11 | 웹리포팅툴 적용가이드 | 10d? | 2009-04-13 | 2009-04-24 |  |  |  | 2009-04-13 | 2009-04-24 | 10d? | 366d |  | finish no earlier than 2009-04-24 | 아키텍처정의서 |  |  |  |

| ID | WBS | Task | Duration | Start | Finish | Predecessors | Complete | Baseline start | Baseline finish | Baseline duration | Total slack | Free slack | Constraint | 산출물 | Text20 | Text25 | Text26 |
| --- | --- | --- | --- | --- | --- | --- | --- | --- | --- | --- | --- | --- | --- | --- | --- | --- | --- |
| 1052 | KIRAMS6.2.5 | **개발프레임워크 적용** | 5d? | 2009-04-20 | 2009-04-24 |  |  | 2009-04-20 | 2009-04-24 | 5d? | 366d |  |  | 개발템플릿 |  |  |  |
| 1053 | KIRAMS6.2.5.1 | AnyFrame개발템플릿 작성 | 5d? | 2009-04-20 | 2009-04-24 |  |  | 2009-04-20 | 2009-04-24 | 5d? | 366d |  | finish no earlier than 2009-04-24 |  |  |  |  |
| 1054 | KIRAMS6.2.6 | **개발환경구성가이드** | 10d? | 2009-03-16 A | 2009-03-27 A |  | 100% | 2009-03-23 | 2009-04-10 | 15d? |  |  |  | 개발환경가이드 |  |  |  |
| 1055 | KIRAMS6.2.6.1 | Together 산출물자동화 템플릿 작성 | 10d? | 2009-03-16 A | 2009-03-27 A |  | 100% | 2009-03-23 | 2009-04-10 | 15d? |  |  | finish no earlier than 2009-04-10 |  |  |  |  |
| 1056 | KIRAMS6.2.6.2 | Together 개발환경 구성 | 5d? | 2009-03-23 A | 2009-03-27 A |  | 100% | 2009-03-23 | 2009-04-10 | 15d? |  |  | finish no earlier than 2009-04-10 |  |  |  |  |
| 1057 | KIRAMS6.2.6.3 | Eclipse 개발환경 구성 | 5d? | 2009-03-23 A | 2009-03-27 A |  | 100% | 2009-03-23 | 2009-04-10 | 15d? |  |  | finish no earlier than 2009-04-10 |  |  |  |  |
| 1058 | KIRAMS6.2.6.4 | 웹서버(SunOne) 개발환경 구성 | 5d? | 2009-03-23 A | 2009-03-27 A |  | 100% | 2009-03-23 | 2009-04-10 | 15d? |  |  | finish no earlier than 2009-04-10 |  |  |  |  |
| 1059 | KIRAMS6.2.6.5 | WAS(WebLogic) 개발환경 구성 | 5d? | 2009-03-23 A | 2009-03-27 A |  | 100% | 2009-03-23 | 2009-04-10 | 15d? |  |  | finish no earlier than 2009-04-10 |  |  |  |  |
| 1060 | KIRAMS6.2.6.6 | Ant표준빌드 가이드 | 5d? | 2009-03-23 A | 2009-03-27 A |  | 100% | 2009-03-23 | 2009-04-10 | 15d? |  |  | finish no earlier than 2009-04-10 |  |  |  |  |
| 1061 | KIRAMS6.2.6.7 | 개발프레임워크 플러그인 적용 | 5d? | 2009-03-23 A | 2009-03-27 A |  | 100% | 2009-03-23 | 2009-04-10 | 15d? |  |  | finish no earlier than 2009-04-10 |  |  |  |  |
| 1062 | KIRAMS6.2.6.8 | 소스형상관리 가이드 | 5d? | 2009-03-23 A | 2009-03-27 A |  | 100% | 2009-03-23 | 2009-04-10 | 15d? |  |  | finish no earlier than 2009-04-10 |  |  |  |  |
| 1063 | KIRAMS6.2.7 | **테스트설계** | 6d | 2009-04-27 | 2009-05-04 |  |  | 2009-04-27 | 2009-05-04 | 6d | 360d |  |  | 테스트계획서 | 테스트 설계 | 07060716O410156 | C07-1 1.5.5 |
| 1064 | KIRAMS6.2.7.1 | 테스트 계획 수립 | 6d | 2009-04-27 | 2009-05-04 |  |  | 2009-04-27 | 2009-05-04 | 6d | 360d |  | finish no earlier than 2009-05-04 | 테스트계획서 | 테스트계획 수립 | 07060716O410156 | C07-1 1.5.5.1 |
| 1065 | KIRAMS6.2.7.2 | 시스템테스트 계획 수립 | 6d | 2009-04-27 | 2009-05-04 |  |  | 2009-04-27 | 2009-05-04 | 6d | 360d |  | finish no earlier than 2009-05-04 | 시스템테스트계획서 | 시스템테스트계획 수립 | 07060716O410156 | C07-1 1.5.5.4 |
| 1066 | KIRAMS6.2.8 | **단계완료** | 9d? | 2009-05-04 | 2009-05-15 |  |  | 2009-05-04 | 2009-05-15 | 9d? | 352d |  |  | Inspection결과,시정조치서 |  |  |  |
| 1067 | KIRAMS6.2.8.1 | Inspection 실시 및 시정조치 | 4d? | 2009-05-04 | 2009-05-08 |  |  | 2009-05-04 | 2009-05-08 | 4d? | 356d | 4d | finish no earlier than 2009-05-08 | Inspection결과,시정조치서 |  |  |  |
| 1068 | KIRAMS6.2.8.2 | 단계완료승인획득 | 1d? | 2009-05-15 | 2009-05-15 | 1067 |  | 2009-05-15 | 2009-05-15 | 1d? | 352d |  | finish no earlier than 2009-05-15 | 고객인수확인서 |  |  |  |
| 1069 | KIRAMS6.3 | **개발** | 118d? | 2009-04-20 | 2009-10-02 |  |  | 2009-04-20 | 2009-10-02 | 118d? | 253d |  |  |  | 개발 | 07060716O410157 | C07-1 1.6 |
| 1070 | KIRAMS6.3.1 | **단계착수** | 19d? | 2009-04-20 | 2009-05-15 |  |  | 2009-04-20 | 2009-05-15 | 19d? | 352d |  |  | 표준및절차매뉴얼 |  |  |  |
| 1071 | KIRAMS6.3.1.1 | 표준및절차정의 및 검토 | 10d? | 2009-04-20 | 2009-05-01 |  |  | 2009-04-20 | 2009-05-01 | 10d? | 361d |  | finish no earlier than 2009-05-01 | 표준및절차매뉴얼 |  |  |  |
| 1072 | KIRAMS6.3.1.2 | 오리엔테이션 | 5d? | 2009-05-11 | 2009-05-15 |  |  | 2009-05-11 | 2009-05-15 | 5d? | 352d |  | finish no earlier than 2009-05-15 | 표준및절차매뉴얼 |  |  |  |
| 1073 | KIRAMS6.3.2 | **개발단계지원** | 112d? | 2009-04-27 | 2009-09-30 |  |  | 2009-04-27 | 2009-09-30 | 112d? | 254d |  |  |  |  |  |  |
| 1074 | KIRAMS6.3.2.1 | 개발표준 교육 및 표준 보완 | 9d? | 2009-04-27 | 2009-05-08 |  |  | 2009-04-27 | 2009-05-08 | 9d? | 357d |  | finish no earlier than 2009-05-08 |  |  |  |  |
| 1075 | KIRAMS6.3.2.2 | 코드 인스펙션 실시 지원 | 103d? | 2009-05-11 | 2009-09-30 |  |  | 2009-05-11 | 2009-09-30 | 103d? | 254d |  | finish no earlier than 2009-09-30 |  |  |  |  |
| 1076 | KIRAMS6.3.2.3 | SW아키텍쳐 리뷰 및 보완 | 103d? | 2009-05-11 | 2009-09-30 |  |  | 2009-05-11 | 2009-09-30 | 103d? | 254d |  | finish no earlier than 2009-09-30 |  |  |  |  |

| ID | WBS | Task | Duration | Start | Finish | Predecessors | Baseline start | Baseline finish | Baseline duration | Total slack | Free slack | Constraint | Text20 | Text25 | Text26 | 산출물 |
| --- | --- | --- | --- | --- | --- | --- | --- | --- | --- | --- | --- | --- | --- | --- | --- | --- |
| 1077 | KIRAMS6.3.3 | **코딩** | 108d | 2009-05-04 | 2009-10-02 |  | 2009-05-04 | 2009-10-02 | 108d | 253d |  |  |  |  |  |  |
| 1078 | KIRAMS6.3.3.1 | 프로그램 코딩 | 107d | 2009-05-04 | 2009-09-30 |  | 2009-05-04 | 2009-09-30 | 107d | 254d |  | finish no earlier than 2009-09-30 | 코딩 | 07060716O410158 | C07-1 1.6.1 | 소스코드 |
| 1079 | KIRAMS6.3.3.2 | 단위테스트 실시 | 104d | 2009-05-11 | 2009-10-02 |  | 2009-05-11 | 2009-10-02 | 104d | 253d |  | finish no earlier than 2009-10-02 | 코딩단위테스트 실시 | 07060716O410158 | C07-1 1.6.1.1 | 단위테스트체크리스트(결과) |
| 1080 | KIRAMS6.3.3.3 | 통합빌드 관리 | 98d | 2009-05-18 | 2009-09-30 |  | 2009-05-18 | 2009-09-30 | 98d | 254d |  | start no earlier than 2009-05-18 | 통합빌드 | 07060716O410158 | C07-1 1.6.1.2 | 배포파일 |
| 1081 | KIRAMS6.3.4 | 통합테스트 설계 | 6d? | 2009-04-27 | 2009-05-04 |  | 2009-04-27 | 2009-05-04 | 6d? | 360d |  | finish no earlier than 2009-05-04 |  |  |  | 통합테스트시나리오 |
| 1082 | KIRAMS6.3.5 | **공통코드 구축** | 60d | 2009-05-18 | 2009-08-07 |  | 2009-05-18 | 2009-08-07 | 60d | 292d |  |  | 테스트 실시 | 07060716O410159 | C07-1 1.6.2 | 공통코드 |
| 1083 | KIRAMS6.3.5.1 | 공통코드 작성 | 60d | 2009-05-18 | 2009-08-07 |  | 2009-05-18 | 2009-08-07 | 60d | 292d |  | finish no earlier than 2009-08-07 | 시스템테스트 실시 | 07060716O410159 | C07-1 1.6.2.2 | 수가코드 |
| 1084 | KIRAMS6.4 | **이행** | 161d? | 2009-09-07 | 2010-04-21 |  | 2009-09-07 | 2010-04-21 | 161d? | 111d |  |  | 이행 | 07060716O410160 | C07-1 1.7 |  |
| 1085 | KIRAMS6.4.1 | **단계착수** | 19d? | 2009-09-14 | 2009-10-09 |  | 2009-09-14 | 2009-10-09 | 19d? | 248d |  |  |  |  |  | 표준및절차매뉴얼 |
| 1086 | KIRAMS6.4.1.1 | 표준및절차정의 및 검토 | 10d? | 2009-09-14 | 2009-09-25 |  | 2009-09-14 | 2009-09-25 | 10d? | 257d |  | finish no earlier than 2009-09-25 |  |  |  | 표준및절차매뉴얼 |
| 1087 | KIRAMS6.4.1.2 | 오리엔테이션 | 4d? | 2009-10-06 | 2009-10-09 |  | 2009-10-06 | 2009-10-09 | 4d? | 248d |  | start no earlier than 2009-10-06 |  |  |  | 표준및절차매뉴얼 |
| 1088 | KIRAMS6.4.2 | **이행계획 수립** | 63d | 2009-09-07 | 2009-12-03 |  | 2009-09-07 | 2009-12-03 | 63d | 209d |  |  | 이행계획 수립 | 07060716O410161 | C07-1 1.7.1 | 이행계획서 |
| 1089 | KIRAMS6.4.2.1 | **교육훈련계획 수립** | 18d | 2009-09-07 | 2009-09-30 |  | 2009-09-07 | 2009-09-30 | 18d | 254d |  |  | 교육훈련계획 수립 | 07060716O410161 | C07-1 1.7.1.2 |  |
| 1090 | KIRAMS6.4.2.1.1 | 교육계획서 작성 | 5d | 2009-09-07 | 2009-09-11 |  | 2009-09-07 | 2009-09-11 | 5d | 254d | 0d | finish no earlier than 2009-09-11 | 교육훈련계획 수립 | 07060716O410161 | C07-1 1.7.1.2 | 교육계획서 |
| 1091 | KIRAMS6.4.2.1.2 | 교육상세일정 조정 | 3d | 2009-09-14 | 2009-09-16 | 1090 | 2009-09-14 | 2009-09-16 | 3d | 254d | 0d | start no earlier than 2009-09-14 | 교육훈련계획 수립 | 07060716O410161 | C07-1 1.7.1.2 | 교육계획서 |
| 1092 | KIRAMS6.4.2.1.3 | 교육대상자 선정 | 2d | 2009-09-17 | 2009-09-18 | 1091 | 2009-09-17 | 2009-09-18 | 2d | 254d | 0d | start no earlier than 2009-09-17 | 교육훈련계획 수립 | 07060716O410161 | C07-1 1.7.1.2 | 교육계획서 |
| 1093 | KIRAMS6.4.2.1.4 | 교육장 준비 확인 | 8d | 2009-09-21 | 2009-09-30 | 1092 | 2009-09-21 | 2009-09-30 | 8d | 254d |  | start no earlier than 2009-09-21 | 교육훈련계획 수립 | 07060716O410161 | C07-1 1.7.1.2 | 교육계획서 |
| 1094 | KIRAMS6.4.2.2 | 릴리이즈 및 비상계획 수립 | 14d | 2009-11-16 | 2009-12-03 |  | 2009-11-16 | 2009-12-03 | 14d | 209d |  | finish no earlier than 2009-12-03 | 릴리이즈 및 비상계획 수립 | 07060716O410161 | C07-1 1.7.1.1 | 이행계획서 |
| 1095 | KIRAMS6.4.3 | **시스템 사용교육** | 35d | 2009-10-05 | 2009-11-20 |  | 2009-10-05 | 2009-11-20 | 35d | 218d |  |  | 시스템 사용교육 | 07060716O410163 | C07-1 1.7.3 | 이행계획서 |
| 1096 | KIRAMS6.4.3.1 | 사용자매뉴얼 작성 | 10d | 2009-10-05 | 2009-10-16 |  | 2009-10-05 | 2009-10-16 | 10d | 243d |  | finish no earlier than 2009-10-16 | 사용자매뉴얼 작성 | 07060716O410163 | C07-1 1.7.3.1 | 사용자매뉴얼 |
| 1097 | KIRAMS6.4.3.2 | 운영매뉴얼 작성 | 10d | 2009-10-05 | 2009-10-16 |  | 2009-10-05 | 2009-10-16 | 10d | 218d | 0d | start no earlier than 2009-10-05 | 운영매뉴얼 작성 | 07060716O410163 | C07-1 1.7.3.2 | 운영매뉴얼 |
| 1098 | KIRAMS6.4.3.3 | 교육훈련 실시 | 25d | 2009-10-19 | 2009-11-20 | 1097 | 2009-10-19 | 2009-11-20 | 25d | 218d |  | start no earlier than 2009-10-19 | 교육훈련 실시 | 07060716O410163 | C07-1 1.7.3.3 | 교육대상자명단 |
| 1099 | KIRAMS6.4.4 | **본원(서울) 이행** | 80d | 2009-10-05 | 2010-01-22 |  | 2009-10-05 | 2010-01-22 | 80d | 173d |  |  | 교육훈련 실시 | 07060716O410163 | C07-1 1.7.3.3 | 이행계획서 |
| 1100 | KIRAMS6.4.4.1 | **컨버전 및 릴리이즈(본원)** | 23d | 2009-11-30 | 2009-12-31 |  | 2009-11-30 | 2009-12-31 | 23d | 190d |  |  | 컨버전 및 릴리이즈 | 07060716O410162 | C07-1 1.7.2 |  |
| 1101 | KIRAMS6.4.4.1.1 | 데이터베이스 구축 지원 및 확인 | 10d | 2009-11-30 | 2009-12-11 |  | 2009-11-30 | 2009-12-11 | 10d | 203d |  | start no earlier than 2009-11-30 | 데이터베이스 구축 | 07060716O410162 | C07-1 1.7.2.1 | 데이터베이스 |
| 1102 | KIRAMS6.4.4.1.2 | 소프트웨어 설치 | 14d | 2009-12-07 | 2009-12-24 |  | 2009-12-07 | 2009-12-24 | 14d | 190d | 0d | start no earlier than 2009-12-07 | 소프트웨어 설치 | 07060716O410162 | C07-1 1.7.2.2 | 어플리케이션 |
| 1103 | KIRAMS6.4.4.1.3 | 데이터전환 확인 | 8d | 2009-12-21 | 2009-12-31 |  | 2009-12-21 | 2009-12-31 | 8d | 190d |  | start no earlier than 2009-12-21 | 데이터 컨버전 | 07060716O410162 | C07-1 1.7.2.3 | 컨버전된 데이터 |
| 1104 | KIRAMS6.4.4.1.4 | 시스템 릴리이즈 | 4d | 2009-12-28 | 2009-12-31 | 1102 | 2009-12-28 | 2009-12-31 | 4d | 190d |  | start no earlier than 2009-12-28 | 시스템 릴리이즈 | 07060716O410162 | C07-1 1.7.2.5 | 운영시스템 |

| ID | WBS | Task | Duration | Start | Finish | Predecessors | Baseline start | Baseline finish | Baseline duration | Total slack | Free slack | Constraint | Text20 | Text25 | Text26 | 산출물 |
| --- | --- | --- | --- | --- | --- | --- | --- | --- | --- | --- | --- | --- | --- | --- | --- | --- |
| 1105 | KIRAMS6.4.4.2 | **테스트 실시(본원)** | 30d | 2009-10-05 | 2009-11-13 |  | 2009-10-05 | 2009-11-13 | 30d | 223d |  |  | 테스트 실시 | 07060716O410159 | C07-1 1.6.2 |  |
| 1106 | KIRAMS6.4.4.2.1 | **통합테스트 실시** | 20d | 2009-10-05 | 2009-10-30 |  | 2009-10-05 | 2009-10-30 | 20d | 233d |  |  | 통합테스트 실시 | 07060716O410159 | C07-1 1.6.2.1 |  |
| 1107 | KIRAMS6.4.4.2.1.1 | 통합테스트 환경구축 지원 | 5d | 2009-10-05 | 2009-10-09 |  | 2009-10-05 | 2009-10-09 | 5d | 248d |  | finish no earlier than 2009-10-09 | 교육훈련계획 수립 | 07060716O410161 | C07-1 1.7.1.2 | 이행계획서 |
| 1108 | KIRAMS6.4.4.2.1.2 | **1차 통합테스트** | 10d | 2009-10-12 | 2009-10-23 |  | 2009-10-12 | 2009-10-23 | 10d | 238d |  |  | 교육훈련계획 수립 | 07060716O410161 | C07-1 1.7.1.2 |  |
| 1109 | KIRAMS6.4.4.2.1.2.1 | 기초자료 구축(1차) | 2d | 2009-10-12 | 2009-10-13 |  | 2009-10-12 | 2009-10-13 | 2d | 238d | 0d | finish no earlier than 2009-10-13 | 교육훈련계획 수립 | 07060716O410161 | C07-1 1.7.1.2 | 테스트계획서 |
| 1110 | KIRAMS6.4.4.2.1.2.2 | 통합테스트 실시(1차) | 2d | 2009-10-14 | 2009-10-15 | 1109 | 2009-10-14 | 2009-10-15 | 2d | 238d | 0d |  | 교육훈련계획 수립 | 07060716O410161 | C07-1 1.7.1.2 | 결함보고서,통합테스트시나리오(결과),통합테스트결과보고서 |
| 1111 | KIRAMS6.4.4.2.1.2.3 | 통합테스트 결과 분석(1차) | 1d | 2009-10-16 | 2009-10-16 | 1110 | 2009-10-16 | 2009-10-16 | 1d | 238d | 0d |  | 교육훈련계획 수립 | 07060716O410161 | C07-1 1.7.1.2 | 결함보고서,통합테스트시나리오(결과),통합테스트결과보고서 |
| 1112 | KIRAMS6.4.4.2.1.2.4 | 통합테스트 결과 조치(1차) | 5d | 2009-10-19 | 2009-10-23 | 1111 | 2009-10-19 | 2009-10-23 | 5d | 238d |  | start no earlier than 2009-10-19 | 교육훈련계획 수립 | 07060716O410161 | C07-1 1.7.1.2 | 결함보고서,통합테스트시나리오(결과),통합테스트결과보고서 |
| 1113 | KIRAMS6.4.4.2.1.3 | **2차 통합테스트** | 7d | 2009-10-22 | 2009-10-30 |  | 2009-10-22 | 2009-10-30 | 7d | 233d |  |  | 교육훈련계획 수립 | 07060716O410161 | C07-1 1.7.1.2 |  |
| 1114 | KIRAMS6.4.4.2.1.3.1 | 기초자료 구축(2차) | 2d | 2009-10-22 | 2009-10-23 |  | 2009-10-22 | 2009-10-23 | 2d | 233d | 0d | start no earlier than 2009-10-22 | 교육훈련계획 수립 | 07060716O410161 | C07-1 1.7.1.2 | 테스트계획서 |
| 1115 | KIRAMS6.4.4.2.1.3.2 | 통합테스트 실시(2차) | 2d | 2009-10-26 | 2009-10-27 | 1114 | 2009-10-26 | 2009-10-27 | 2d | 233d | 0d |  | 교육훈련계획 수립 | 07060716O410161 | C07-1 1.7.1.2 | 결함보고서,통합테스트시나리오(결과),통합테스트결과보고서 |
| 1116 | KIRAMS6.4.4.2.1.3.3 | 통합테스트 결과 분석(2차) | 1d | 2009-10-28 | 2009-10-28 | 1115 | 2009-10-28 | 2009-10-28 | 1d | 233d | 0d |  | 교육훈련계획 수립 | 07060716O410161 | C07-1 1.7.1.2 | 결함보고서,통합테스트시나리오(결과),통합테스트결과보고서 |
| 1117 | KIRAMS6.4.4.2.1.3.4 | 통합테스트 결과 조치(2차) | 2d | 2009-10-29 | 2009-10-30 | 1116 | 2009-10-29 | 2009-10-30 | 2d | 233d |  |  | 교육훈련계획 수립 | 07060716O410161 | C07-1 1.7.1.2 | 결함보고서,통합테스트시나리오(결과),통합테스트결과보고서 |
| 1118 | KIRAMS6.4.4.2.2 | **시스템테스트 실시** | 5d | 2009-11-09 | 2009-11-13 |  | 2009-11-09 | 2009-11-13 | 5d | 223d |  |  | 시스템테스트 실시 | 07060716O410159 | C07-1 1.6.2.2 |  |
| 1119 | KIRAMS6.4.4.2.2.1 | 부하테스트 프로그램 지원 | 5d | 2009-11-09 | 2009-11-13 |  | 2009-11-09 | 2009-11-13 | 5d | 223d |  | start no earlier than 2009-11-09 | 시스템테스트 실시 | 07060716O410159 | C07-1 1.6.2.2 | 시스템테스트결과보고서 |
| 1120 | KIRAMS6.4.4.3 | **리허설(본원)** | 30d | 2009-11-16 | 2009-12-28 |  | 2009-11-16 | 2009-12-28 | 30d | 193d |  |  | 시범운영 | 07060716O410164 | C07-1 1.7.4 |  |
| 1121 | KIRAMS6.4.4.3.1 | 리허설 계획 수립지원(시나리오 작성) | 11d | 2009-11-16 | 2009-11-30 |  | 2009-11-16 | 2009-11-30 | 11d | 212d |  | finish no earlier than 2009-11-30 | 시범운영계획 수립 | 07060716O410164 | C07-1 1.7.4.1 | 리허설계획서,리허설시나리오 |
| 1122 | KIRAMS6.4.4.3.2 | **1차 리허설 실시** | 7d | 2009-12-01 | 2009-12-09 |  | 2009-12-01 | 2009-12-09 | 7d | 205d |  |  | 시범운영 실시 | 07060716O410164 | C07-1 1.7.4.2 |  |
| 1123 | KIRAMS6.4.4.3.2.1 | 기초자료 구축(1차) | 2d | 2009-12-01 | 2009-12-02 |  | 2009-12-01 | 2009-12-02 | 2d | 210d |  | start no earlier than 2009-12-01 | 시범운영 실시 | 07060716O410164 | C07-1 1.7.4.2 | 리허설계획서,리허설시나리오 |
| 1124 | KIRAMS6.4.4.3.2.2 | 리허설 공지 및 상황실 운영(1차) | 2d | 2009-12-01 | 2009-12-02 |  | 2009-12-01 | 2009-12-02 | 2d | 210d |  | start no earlier than 2009-12-01 | 시범운영 실시 | 07060716O410164 | C07-1 1.7.4.2 | 리허설계획서,리허설시나리오 |
| 1125 | KIRAMS6.4.4.3.2.3 | 가상환자 준비(1차) | 2d | 2009-12-01 | 2009-12-02 |  | 2009-12-01 | 2009-12-02 | 2d | 207d | 0d | start no earlier than 2009-12-01 | 시범운영 실시 | 07060716O410164 | C07-1 1.7.4.2 | 리허설계획서,리허설시나리오 |
| 1126 | KIRAMS6.4.4.3.2.4 | 리허설 실시(1차) | 1d | 2009-12-03 | 2009-12-03 | 1125 | 2009-12-03 | 2009-12-03 | 1d | 207d | 0d |  | 시범운영 실시 | 07060716O410164 | C07-1 1.7.4.2 | 리허설결과서 |
| 1127 | KIRAMS6.4.4.3.2.5 | 리허설 결과 분석 및 보고(1차) | 2d | 2009-12-04 | 2009-12-07 | 1126 | 2009-12-04 | 2009-12-07 | 2d | 207d |  |  | 시범운영 실시 | 07060716O410164 | C07-1 1.7.4.2 | 리허설결과보고서 |
| 1128 | KIRAMS6.4.4.3.2.6 | 리허설 결과 조치(1차) | 4d | 2009-12-04 | 2009-12-09 |  | 2009-12-04 | 2009-12-09 | 4d | 205d |  | finish no earlier than 2009-12-09 | 시범운영 실시 | 07060716O410164 | C07-1 1.7.4.2 | 리허설결과서,리허설결과보고서 |

| ID | WBS | Task | Duration | Start | Finish | Predecessors | Baseline start | Baseline finish | Baseline duration | Total slack | Free slack | Constraint | Text20 | Text25 | Text26 | 산출물 |
| --- | --- | --- | --- | --- | --- | --- | --- | --- | --- | --- | --- | --- | --- | --- | --- | --- |
| 1129 | KIRAMS6.4.4.3.3 | **2차 리허설 실시** | 8d | 2009-12-10 | 2009-12-21 |  | 2009-12-10 | 2009-12-21 | 8d | 197d |  |  | 시범운영 실시 | 07060716O410164 | C07-1 1.7.4.2 |  |
| 1130 | KIRAMS6.4.4.3.3.1 | 기초자료 구축(2차) | 2d | 2009-12-10 | 2009-12-11 |  | 2009-12-10 | 2009-12-11 | 2d | 202d | 0d | start no earlier than 2009-12-10 | 시범운영 실시 | 07060716O410164 | C07-1 1.7.4.2 | 리허설계획서,리허설시나리오 |
| 1131 | KIRAMS6.4.4.3.3.2 | 리허설 공지 및 상황실 운영(2차) | 1d | 2009-12-14 | 2009-12-14 | 1130 | 2009-12-14 | 2009-12-14 | 1d | 202d |  |  | 시범운영 실시 | 07060716O410164 | C07-1 1.7.4.2 | 리허설계획서,리허설시나리오 |
| 1132 | KIRAMS6.4.4.3.3.3 | 가상환자 준비(2차) | 1d | 2009-12-14 | 2009-12-14 |  | 2009-12-14 | 2009-12-14 | 1d | 197d | 0d | start no earlier than 2009-12-14 | 시범운영 실시 | 07060716O410164 | C07-1 1.7.4.2 | 리허설계획서,리허설시나리오 |
| 1133 | KIRAMS6.4.4.3.3.4 | 리허설 실시(2차) | 1d | 2009-12-15 | 2009-12-15 | 1132 | 2009-12-15 | 2009-12-15 | 1d | 197d | 0d |  | 시범운영 실시 | 07060716O410164 | C07-1 1.7.4.2 | 리허설결과서 |
| 1134 | KIRAMS6.4.4.3.3.5 | 리허설 결과 분석 및 보고(2차) | 1d | 2009-12-16 | 2009-12-16 | 1133 | 2009-12-16 | 2009-12-16 | 1d | 197d | 0d |  | 시범운영 실시 | 07060716O410164 | C07-1 1.7.4.2 | 리허설결과보고서 |
| 1135 | KIRAMS6.4.4.3.3.6 | 리허설 결과 조치(2차) | 3d | 2009-12-17 | 2009-12-21 | 1134 | 2009-12-17 | 2009-12-21 | 3d | 197d |  | start no earlier than 2009-12-17 | 시범운영 실시 | 07060716O410164 | C07-1 1.7.4.2 | 리허설결과서,리허설결과보고서 |
| 1136 | KIRAMS6.4.4.3.4 | 병행운영(인수테스트) | 5d | 2009-12-21 | 2009-12-28 |  | 2009-12-21 | 2009-12-28 | 5d | 193d |  | finish no earlier than 2009-12-28 | 안정화 및 유지보수 | 08100808O000000 | C07-1 1.7.5 | 인수테스트결괴서 |
| 1137 | KIRAMS6.4.4.4 | **시스템 오픈(본원)** | 21d | 2009-12-28 | 2010-01-22 |  | 2009-12-28 | 2010-01-22 | 21d | 173d |  |  | 시범운영 | 07060716O410164 | C07-1 1.7.4 |  |
| 1138 | KIRAMS6.4.4.4.1 | 오픈준비 | 4d | 2009-12-28 | 2009-12-31 |  | 2009-12-28 | 2009-12-31 | 4d | 189d | 0d | finish no earlier than 2009-12-31 | 시범운영계획 수립 | 07060716O410164 | C07-1 1.7.4.1 | 이행계획서 |
| 1139 | KIRAMS6.4.4.4.2 | 시스템 OPEN | 1d | 2010-01-01 | 2010-01-01 | 1138 | 2010-01-01 | 2010-01-01 | 1d | 189d |  |  | 시범운영계획 수립 | 07060716O410164 | C07-1 1.7.4.1 | 이행계획서 |
| 1140 | KIRAMS6.4.4.4.3 | 안정화 지원 | 16d | 2010-01-02 | 2010-01-22 |  | 2010-01-02 | 2010-01-22 | 16d | 173d |  | finish no earlier than 2010-01-22 | 시범운영계획 수립 | 07060716O410164 | C07-1 1.7.4.1 | Help Desk 일지 |
| 1141 | KIRAMS6.4.5 | **분원(동남권) 이행** | 67d | 2010-01-18 | 2010-04-21 |  | 2010-01-18 | 2010-04-21 | 67d | 111d |  |  | 교육훈련 실시 | 07060716O410163 | C07-1 1.7.3.3 | 이행계획서 |
| 1142 | KIRAMS6.4.5.1 | **릴리이즈(분원)** | 47d | 2010-01-25 | 2010-03-31 |  | 2010-01-25 | 2010-03-31 | 47d | 126d |  |  | 컨버전 및 릴리이즈 | 07060716O410162 | C07-1 1.7.2 |  |
| 1143 | KIRAMS6.4.5.1.1 | 데이터베이스 구축 지원 및 확인 | 10d | 2010-01-25 | 2010-02-05 |  | 2010-01-25 | 2010-02-05 | 10d | 163d |  | start no earlier than 2010-01-25 | 데이터베이스 구축 | 07060716O410162 | C07-1 1.7.2.1 | 데이터베이스 |
| 1144 | KIRAMS6.4.5.1.2 | 소프트웨어 설치 | 10d | 2010-01-25 | 2010-02-05 |  | 2010-01-25 | 2010-02-05 | 10d | 163d |  | finish no earlier than 2010-02-05 | 소프트웨어 설치 | 07060716O410162 | C07-1 1.7.2.2 | 어플리케이션 |
| 1145 | KIRAMS6.4.5.1.3 | 기초 데이터 생성 | 39d | 2010-02-01 | 2010-03-26 |  | 2010-02-01 | 2010-03-26 | 39d | 129d |  | finish no earlier than 2010-03-26 | 데이터 컨버전 | 07060716O410162 | C07-1 1.7.2.3 | 기초 데이터 |
| 1146 | KIRAMS6.4.5.1.4 | 시스템 릴리이즈 | 3d | 2010-03-29 | 2010-03-31 |  | 2010-03-29 | 2010-03-31 | 3d | 126d |  | finish no earlier than 2010-03-31 | 시스템 릴리이즈 | 07060716O410162 | C07-1 1.7.2.5 | 운영시스템 |
| 1147 | KIRAMS6.4.5.2 | **테스트 실시(분원)** | 15d | 2010-01-18 | 2010-02-05 |  | 2010-01-18 | 2010-02-05 | 15d | 163d |  |  | 테스트 실시 | 07060716O410159 | C07-1 1.6.2 |  |
| 1148 | KIRAMS6.4.5.2.1 | **통합테스트 실시** | 12d | 2010-01-18 | 2010-02-02 |  | 2010-01-18 | 2010-02-02 | 12d | 166d |  |  | 통합테스트 실시 | 07060716O410159 | C07-1 1.6.2.1 |  |
| 1149 | KIRAMS6.4.5.2.1.1 | 통합테스트 환경구축 지원 | 5d | 2010-01-18 | 2010-01-22 |  | 2010-01-18 | 2010-01-22 | 5d | 173d |  | start no earlier than 2010-01-18 | 교육훈련계획 수립 | 07060716O410161 | C07-1 1.7.1.2 | 이행계획서 |
| 1150 | KIRAMS6.4.5.2.1.2 | **통합테스트** | 7d | 2010-01-25 | 2010-02-02 |  | 2010-01-25 | 2010-02-02 | 7d | 166d |  |  | 교육훈련계획 수립 | 07060716O410161 | C07-1 1.7.1.2 |  |
| 1151 | KIRAMS6.4.5.2.1.2.1 | 기초자료 구축 | 2d | 2010-01-25 | 2010-01-26 |  | 2010-01-25 | 2010-01-26 | 2d | 169d | 0d | start no earlier than 2010-01-25 | 교육훈련계획 수립 | 07060716O410161 | C07-1 1.7.1.2 | 테스트계획서 |
| 1152 | KIRAMS6.4.5.2.1.2.2 | 통합테스트 실시 | 2d | 2010-01-27 | 2010-01-28 | 1151 | 2010-01-27 | 2010-01-28 | 2d | 169d |  |  | 교육훈련계획 수립 | 07060716O410161 | C07-1 1.7.1.2 | 결함보고서,통합테스트시나리오(결과),통합테스트결과보고서 |
| 1153 | KIRAMS6.4.5.2.1.2.3 | 통합테스트 결과 분석 | 1d | 2010-01-28 | 2010-01-28 |  | 2010-01-28 | 2010-01-28 | 1d | 166d | 0d | start no earlier than 2010-01-28 | 교육훈련계획 수립 | 07060716O410161 | C07-1 1.7.1.2 | 결함보고서,통합테스트시나리오(결과),통합테스트결과보고서 |
| 1154 | KIRAMS6.4.5.2.1.2.4 | 통합테스트 결과 조치 | 3d | 2010-01-29 | 2010-02-02 | 1153 | 2010-01-29 | 2010-02-02 | 3d | 166d |  |  | 교육훈련계획 수립 | 07060716O410161 | C07-1 1.7.1.2 | 결함보고서,통합테스트시나리오(결과),통합테스트결과보고서 |

| ID | WBS | Task | Duration | Start | Finish | Predecessors | Complete | Remaining | Baseline start | Baseline finish | Baseline duration | Total slack | Free slack | Constraint | Text20 | Text25 | Text26 | 산출물 |
| --- | --- | --- | --- | --- | --- | --- | --- | --- | --- | --- | --- | --- | --- | --- | --- | --- | --- | --- |
| 1155 | KIRAMS6.4.5.2.2 | **시스템테스트 실시 지원** | 5d | 2010-02-01 | 2010-02-05 |  |  |  | 2010-02-01 | 2010-02-05 | 5d | 163d |  |  | 시스템테스트 실시 | 07060716O410159 | C07-1 1.6.2.2 |  |
| 1156 | KIRAMS6.4.5.2.2.1 | 부하테스트 프로그램 지원 | 5d | 2010-02-01 | 2010-02-05 |  |  |  | 2010-02-01 | 2010-02-05 | 5d | 163d |  | start no earlier than 2010-02-01 | 시스템테스트 실시 | 07060716O410159 | C07-1 1.6.2.2 | 시스템테스트결과보고서 |
| 1157 | KIRAMS6.4.5.3 | **리허설-인수테스트(분원)** | 31d | 2010-02-08 | 2010-03-23 |  |  |  | 2010-02-08 | 2010-03-23 | 31d | 132d |  |  | 시범운영 | 07060716O410164 | C07-1 1.7.4 |  |
| 1158 | KIRAMS6.4.5.3.1 | 리허설 계획 수립지원(시나리오 작성) | 9d | 2010-02-08 | 2010-02-19 |  |  |  | 2010-02-08 | 2010-02-19 | 9d | 154d |  | start no earlier than 2010-02-08 | 시범운영계획 수립 | 07060716O410164 | C07-1 1.7.4.1 | 리허설계획서,리허설시나리오 |
| 1159 | KIRAMS6.4.5.3.2 | **1차 리허설 실시** | 10d | 2010-03-01 | 2010-03-12 |  |  |  | 2010-03-01 | 2010-03-12 | 10d | 139d |  |  | 시범운영 실시 | 07060716O410164 | C07-1 1.7.4.2 |  |
| 1160 | KIRAMS6.4.5.3.2.1 | 기초자료 구축(1차) | 2d | 2010-03-01 | 2010-03-02 |  |  |  | 2010-03-01 | 2010-03-02 | 2d | 143d | 0d | start no earlier than 2010-03-01 | 시범운영 실시 | 07060716O410164 | C07-1 1.7.4.2 | 리허설계획서,리허설시나리오 |
| 1161 | KIRAMS6.4.5.3.2.2 | 리허설 공지 및 상황실 운영(1차) | 2d | 2010-03-03 | 2010-03-04 | 1160 |  |  | 2010-03-03 | 2010-03-04 | 2d | 143d | 0d |  | 시범운영 실시 | 07060716O410164 | C07-1 1.7.4.2 | 리허설계획서,리허설시나리오 |
| 1162 | KIRAMS6.4.5.3.2.3 | 가상환자 준비(1차) | 2d | 2010-03-05 | 2010-03-08 | 1161 |  |  | 2010-03-05 | 2010-03-08 | 2d | 143d |  |  | 시범운영 실시 | 07060716O410164 | C07-1 1.7.4.2 | 리허설계획서,리허설시나리오 |
| 1163 | KIRAMS6.4.5.3.2.4 | 리허설 실시(1차) | 1d | 2010-03-09 | 2010-03-09 |  |  |  | 2010-03-09 | 2010-03-09 | 1d | 139d | 0d | start no earlier than 2010-03-09 | 시범운영 실시 | 07060716O410164 | C07-1 1.7.4.2 | 리허설결과서,인수테스트결과서 |
| 1164 | KIRAMS6.4.5.3.2.5 | 리허설 결과 분석 및 보고(1차) | 1d | 2010-03-10 | 2010-03-10 | 1163 |  |  | 2010-03-10 | 2010-03-10 | 1d | 139d | 0d |  | 시범운영 실시 | 07060716O410164 | C07-1 1.7.4.2 | 리허설결과보고서 |
| 1165 | KIRAMS6.4.5.3.2.6 | 리허설 결과 조치(1차) | 2d | 2010-03-11 | 2010-03-12 | 1164 |  |  | 2010-03-11 | 2010-03-12 | 2d | 139d |  |  | 시범운영 실시 | 07060716O410164 | C07-1 1.7.4.2 | 리허설결과서,리허설결과보고서 |
| 1166 | KIRAMS6.4.5.3.3 | **2차 리허설 실시** | 7d | 2010-03-15 | 2010-03-23 |  |  |  | 2010-03-15 | 2010-03-23 | 7d | 132d |  |  | 시범운영 실시 | 07060716O410164 | C07-1 1.7.4.2 |  |
| 1167 | KIRAMS6.4.5.3.3.1 | 기초자료 구축(2차) | 2d | 2010-03-15 | 2010-03-16 |  |  |  | 2010-03-15 | 2010-03-16 | 2d | 137d |  | start no earlier than 2010-03-15 | 시범운영 실시 | 07060716O410164 | C07-1 1.7.4.2 | 리허설계획서,리허설시나리오 |
| 1168 | KIRAMS6.4.5.3.3.2 | 리허설 공지 및 상황실 운영(2차) | 2d | 2010-03-16 | 2010-03-17 |  |  |  | 2010-03-16 | 2010-03-17 | 2d | 136d |  | start no earlier than 2010-03-16 | 시범운영 실시 | 07060716O410164 | C07-1 1.7.4.2 | 리허설계획서,리허설시나리오 |
| 1169 | KIRAMS6.4.5.3.3.3 | 가상환자 준비(2차) | 2d | 2010-03-16 | 2010-03-17 |  |  |  | 2010-03-16 | 2010-03-17 | 2d | 134d | 0d | start no earlier than 2010-03-16 | 시범운영 실시 | 07060716O410164 | C07-1 1.7.4.2 | 리허설계획서,리허설시나리오 |
| 1170 | KIRAMS6.4.5.3.3.4 | 리허설 실시(2차) | 1d | 2010-03-18 | 2010-03-18 | 1169 |  |  | 2010-03-18 | 2010-03-18 | 1d | 134d | 2d |  | 시범운영 실시 | 07060716O410164 | C07-1 1.7.4.2 | 리허설결과서,인수테스트결과서 |
| 1171 | KIRAMS6.4.5.3.3.5 | 리허설 결과 분석 및 보고(2차) | 1d | 2010-03-19 | 2010-03-19 |  |  |  | 2010-03-19 | 2010-03-19 | 1d | 134d |  | start no earlier than 2010-03-19 | 시범운영 실시 | 07060716O410164 | C07-1 1.7.4.2 | 리허설결과보고서 |
| 1172 | KIRAMS6.4.5.3.3.6 | 리허설 결과 조치(2차) | 1d | 2010-03-23 | 2010-03-23 | 1170 |  |  | 2010-03-23 | 2010-03-23 | 1d | 132d |  | finish no earlier than 2010-03-23 | 시범운영 실시 | 07060716O410164 | C07-1 1.7.4.2 | 리허설결과서,리허설결과보고서 |
| 1173 | KIRAMS6.4.5.4 | **시스템 오픈(분원)** | 20d | 2010-03-25 | 2010-04-21 |  |  |  | 2010-03-25 | 2010-04-21 | 20d | 111d |  |  | 시범운영 | 07060716O410164 | C07-1 1.7.4 |  |
| 1174 | KIRAMS6.4.5.4.1 | 오픈준비 | 5d | 2010-03-25 | 2010-03-31 |  |  |  | 2010-03-25 | 2010-03-31 | 5d | 125d | 0d | start no earlier than 2010-03-25 | 시범운영계획 수립 | 07060716O410164 | C07-1 1.7.4.1 | 이행계획서 |
| 1175 | KIRAMS6.4.5.4.2 | 시스템 OPEN | 1d | 2010-04-01 | 2010-04-01 | 1174 |  |  | 2010-04-01 | 2010-04-01 | 1d | 125d |  |  | 시범운영계획 수립 | 07060716O410164 | C07-1 1.7.4.1 | 이행계획서 |
| 1176 | KIRAMS6.4.5.4.3 | 안정화 지원 | 15d | 2010-04-01 | 2010-04-21 |  |  |  | 2010-04-01 | 2010-04-21 | 15d | 111d |  | finish no earlier than 2010-04-21 | 시범운영계획 수립 | 07060716O410164 | C07-1 1.7.4.1 | Help Desk 일지 |
| 1177 | KIRAMS7 | **데이터 전환** | 214d | 2009-03-09 A | 2010-01-04 |  | 5% | 204.23d | 2009-03-09 | 2010-01-04 | 214d | 187d |  |  |  |  |  |  |
| 1178 | KIRAMS7.1 | **계획 및 분석** | 30d | 2009-03-09 A | 2009-04-17 |  | 45% | 16.5d | 2009-03-09 | 2009-05-01 | 40d | 371d |  |  | 요구정의 | 07060716O410138 | C07-1 1.2 | 데이터전환계획서 |
| 1179 | KIRAMS7.1.1 | RFP 컨버전 대상 분석 및 1차 선정 | 5d | 2009-03-09 A | 2009-03-13 A |  | 100% |  | 2009-03-09 | 2009-03-13 | 5d |  |  | finish no earlier than 2009-03-13 | 비즈니스 모델링(AS-IS) | 07060716O410139 | C07-1 1.2.1 | RFP 컨버전전환목록 |
| 1180 | KIRAMS7.1.2 | 데이터전환 계획수립 | 5d | 2009-03-16 A | 2009-03-20 A |  | 100% |  | 2009-03-16 | 2009-03-20 | 5d |  |  | finish no earlier than 2009-03-20 | 컨버전 분석 | 07060716O410146 | C07-1 1.3.4 | 데이터전환계획서 |

| ID | WBS | Task | Duration | Start | Finish | Predecessors | Complete | Remaining | Baseline start | Baseline finish | Baseline duration | Total slack | Free slack | Constraint | Text20 | Text25 | Text26 | 산출물 |
| --- | --- | --- | --- | --- | --- | --- | --- | --- | --- | --- | --- | --- | --- | --- | --- | --- | --- | --- |
| 1181 | KIRAMS7.1.3 | **분석 작업** | 25d | 2009-03-16 A | 2009-04-17 |  | 23% | 19.25d | 2009-03-16 | 2009-05-01 | 30d | 371d |  |  | 요구사항 정의 | 07060716O410141 | C07-1 1.2.3 |  |
| 1182 | KIRAMS7.1.3.4 | 현행시스템 분석(전산정보팀 인터뷰) | 5d | 2009-03-16 A | 2009-03-20 |  | 75% | 1.25d | 2009-03-16 | 2009-03-27 | 5d | 373d | 0d | start no earlier than 2009-03-23 | 인터뷰 실시 | 07060716O410139 | C07-1 1.2.1.2 | 회의록 |
| 1183 | KIRAMS7.1.3.4 | 현행데이터분석 | 20d | 2009-03-23 A | 2009-04-17 | 1182 | 10% | 18d | 2009-03-16 | 2009-05-01 | 21d | 371d |  | finish no earlier than 2009-04-17 | 컨버전대상 정의 | 07060716O410141 | C07-1 1.2.3.4 |  |
| 1184 | KIRAMS7.2 | **맵핑 설계** | 54d | 2009-04-20 | 2009-07-03 |  |  |  | 2009-04-20 | 2009-07-03 | 44d | 317d |  |  | 설계 | 07060716O410151 | C07-1 1.5 |  |
| 1185 | KIRAMS7.2.1 | **컨버전매핑 정의 및 테스트 설계** | 54d | 2009-04-20 | 2009-07-03 |  |  |  | 2009-04-20 | 2009-07-03 | 44d | 317d |  |  | 컨버전매핑 정의 | 07060716O410155 | C07-1 1.5.4.1 | 데이터전환설계서,코드매핑정의서,테이블매핑정의서 |
| 1186 | KIRAMS7.2.1.1 | 컨버전우선순위 결정 | 10d | 2009-04-20 | 2009-05-01 |  |  |  | 2009-04-20 | 2009-05-08 | 4d | 361d |  | finish no earlier than 2009-05-01 | 컨버전대상 정의 | 07060716O410141 | C07-1 1.2.3.4 | 데이터전환대상목록 |
| 1187 | KIRAMS7.2.1.2 | 컨버전 매핑정의서 작성 | 54d | 2009-04-20 | 2009-07-03 |  |  |  | 2009-04-20 | 2009-06-26 | 35d | 317d |  | finish no earlier than 2009-07-03 | 컨버전매핑 정의 | 07060716O410155 | C07-1 1.5.4.1 | 데이터전환설계서,코드매핑정의서,테이블매핑정의서 |
| 1188 | KIRAMS7.2.1.2 | 컨버전 데이터 검증기준 수립 | 5d | 2009-06-29 | 2009-07-03 |  |  |  | 2009-06-29 | 2009-07-03 | 5d | 317d |  | start no earlier than 2009-06-29 | 컨버전대상 정의 | 07060716O410141 | C07-1 1.2.3.4 |  |
| 1189 | KIRAMS7.3 | **맵핑 개발 및 단위 TEST** | 80d | 2009-06-01 | 2009-09-18 |  |  |  | 2009-06-01 | 2009-10-01 | 64d | 262d |  |  | 개발 | 07060716O410157 | C07-1 1.6 | 테스트결과서 |
| 1190 | KIRAMS7.3.1 | 쿼리 개발 및 INFORMATICA 프로그램 적용 | 80d | 2009-06-01 | 2009-09-18 |  |  |  | 2009-06-01 | 2009-10-01 | 64d | 262d |  | start no earlier than 2009-06-01 |  |  |  | 소스 |
| 1191 | KIRAMS7.3.2 | 단위 TEST 실시(각 프로그램 개발 직후 실시) | 80d | 2009-06-01 | 2009-09-18 |  |  |  | 2009-06-01 | 2009-10-01 | 64d | 262d |  | start no earlier than 2009-06-01 | 통합테스트 실시 | 07060716O410159 | C07-1 1.6.2.1 | 단위테스트결과서 |
| 1192 | KIRAMS7.5 | 이행TEST (통합TEST) 및 공용 데이터 이행 | 9d | 2009-09-21 | 2009-10-01 |  |  |  | 2009-09-21 | 2009-10-16 | 10d | 253d |  | start no earlier than 2009-09-21 | 인터뷰 실시 | 07060716O410139 | C07-1 1.2.1.2 | 통합테스트결과서 |
| 1193 | KIRAMS7.4 | **이행 및 DATA 점검** | 63d | 2009-10-05 | 2009-12-31 |  |  |  | 2009-10-05 | 2009-12-31 | 53d | 190d |  |  | 이행 | 07060716O410160 | C07-1 1.7 | 데이터전환계획서 |
| 1194 | KIRAMS7.4.1 | **컨버전 전환(1차)** | 25d | 2009-10-05 | 2009-11-06 |  |  |  | 2009-10-05 | 2009-11-27 | 30d | 228d |  |  | 테스트 실시 | 07060716O410159 | C07-1 1.6.2 |  |
| 1195 | KIRAMS7.4.1.1 | 컨버전 데이터 수령(1차) | 5d | 2009-10-05 | 2009-10-09 |  |  |  | 2009-10-05 | 2009-10-23 | 5d | 228d | 0d | start no earlier than 2009-10-05 | 테스트 실시 | 07060716O410159 | C07-1 1.6.2 |  |
| 1196 | KIRAMS7.4.1.2 | 컨버전 전환 실시(1차) | 10d | 2009-10-12 | 2009-10-23 | 1195 |  |  | 2009-10-12 | 2009-11-13 | 15d | 228d | 0d | start no earlier than 2009-10-12 | 테스트 실시 | 07060716O410159 | C07-1 1.6.2 |  |
| 1197 | KIRAMS7.4.1.3 | 컨버전 결과 검증(자동,현업,업무설계) 및 프로그램 보완 | 10d | 2009-10-26 | 2009-11-06 | 1196 |  |  | 2009-10-26 | 2009-11-27 | 10d | 228d |  | start no earlier than 2009-10-26 | 테스트 실시 | 07060716O410159 | C07-1 1.6.2 | 데이터검증결과서 |
| 1198 | KIRAMS7.4.2 | **컨버전 전환(2차)** | 20d | 2009-11-09 | 2009-12-04 |  |  |  | 2009-11-09 | 2009-12-24 | 19d | 208d |  |  | 테스트 실시 | 07060716O410159 | C07-1 1.6.2 |  |
| 1199 | 7.5.2.1 | 컨버전 데이터 수령(2차) | 5d | 2009-11-09 | 2009-11-13 |  |  |  | 2009-11-09 | 2009-12-04 | 5d | 208d | 0d | start no earlier than 2009-11-09 | 테스트 실시 | 07060716O410159 | C07-1 1.6.2 |  |
| 1200 | KIRAMS7.4.2.2 | 컨버전 전환 실시(2차) | 5d | 2009-11-16 | 2009-11-20 | 1199 |  |  | 2009-11-16 | 2009-12-18 | 10d | 208d | 0d |  | 테스트 실시 | 07060716O410159 | C07-1 1.6.2 |  |
| 1201 | KIRAMS7.4.2.3 | 컨버전 결과 검증(자동,현업,업무설계) 및 프로그램 보완 | 10d | 2009-11-23 | 2009-12-04 | 1200 |  |  | 2009-11-23 | 2009-12-24 | 4d | 208d |  |  | 테스트 실시 | 07060716O410159 | C07-1 1.6.2 | 데이터검증결과서 |
| 1202 | KIRAMS7.4.1 | **컨버전 전환(3차)** | 14d | 2009-12-07 | 2009-12-24 |  |  |  | 2009-12-07 | 2009-12-24 | 19d | 194d |  |  | 테스트 실시 | 07060716O410159 | C07-1 1.6.2 |  |
| 1203 | KIRAMS7.4.1.1 | 컨버전 데이터 수령(3차) | 5d | 2009-12-07 | 2009-12-11 |  |  |  | 2009-12-07 | 2009-12-04 | 5d | 194d | 0d | start no earlier than 2009-12-07 | 테스트 실시 | 07060716O410159 | C07-1 1.6.2 |  |
| 1204 | KIRAMS7.4.1.2 | 컨버전 전환 실시(3차) | 5d | 2009-12-14 | 2009-12-18 | 1203 |  |  | 2009-12-14 | 2009-12-18 | 10d | 194d | 0d |  | 테스트 실시 | 07060716O410159 | C07-1 1.6.2 |  |
| 1205 | KIRAMS7.4.1.3 | 컨버전 결과 검증(자동,현업,업무설계) 및 프로그램 보완 | 4d | 2009-12-21 | 2009-12-24 | 1204 |  |  | 2009-12-21 | 2009-12-24 | 4d | 194d |  |  | 테스트 실시 | 07060716O410159 | C07-1 1.6.2 | 데이터검증결과서 |

| ID | WBS | Task | Duration | Start | Finish | Predecessors | Complete | Remaining | Baseline start | Baseline finish | Baseline duration | Total slack | Constraint | Text20 | Text25 | Text26 | 산출물 |
| --- | --- | --- | --- | --- | --- | --- | --- | --- | --- | --- | --- | --- | --- | --- | --- | --- | --- |
| 1206 | KIRAMS7.4.4 | **컨버전 전환(오픈당일이관)** | 4d | 2009-12-28 | 2009-12-31 |  |  |  | 2009-12-28 | 2009-12-31 | 4d | 190d |  | 테스트 실시 | 07060716O410159 | C07-1 1.6.2 |  |
| 1207 | 7.5.4.1 | 컨버전 데이터 수령(당일) | 1d | 2009-12-28 | 2009-12-28 |  |  |  | 2009-12-28 | 2009-12-28 | 1d | 193d | start no earlier than 2009-12-28 | 테스트 실시 | 07060716O410159 | C07-1 1.6.2 |  |
| 1208 | 7.5.4.2 | 컨버전 전환 실시(당일) | 4d | 2009-12-28 | 2009-12-31 |  |  |  | 2009-12-28 | 2009-12-31 | 4d | 190d | start no earlier than 2009-12-28 | 테스트 실시 | 07060716O410159 | C07-1 1.6.2 |  |
| 1209 | 7.5.4.3 | 컨버전 결과 검증(자동검증) 및 프로그램 보완 | 4d | 2009-12-28 | 2009-12-31 |  |  |  | 2009-12-28 | 2009-12-31 | 4d | 190d | start no earlier than 2009-12-28 | 테스트 실시 | 07060716O410159 | C07-1 1.6.2 | 데이터검증결과서 |
| 1210 | KIRAMS7.5 | **시스템 오픈(본원) 및 안정화 지원** | 3d | 2010-01-01 | 2010-01-04 |  |  |  | 2010-01-01 | 2010-01-04 | 3d | 187d |  | 시범운영 | 07060716O410164 | C07-1 1.7.4 |  |
| 1211 | 7.6.1 | 시스템 OPEN | 1d | 2010-01-01 | 2010-01-01 |  |  |  | 2010-01-01 | 2010-01-01 | 1d | 189d | start no earlier than 2010-01-01 | 시범운영계획 수립 | 07060716O410164 | C07-1 1.7.4.1 |  |
| 1212 | 7.6.2 | 컨버전 데이터 안정화 지원 | 3d | 2010-01-01 | 2010-01-04 |  |  |  | 2010-01-01 | 2010-01-04 | 3d | 187d | start no earlier than 2010-01-01 | 시범운영계획 수립 | 07060716O410164 | C07-1 1.7.4.1 |  |
| 1213 | KIRAMS8 | **연구관리** | 439d? | 2009-01-12 A | 2010-09-30 |  | 10% | 395.46d? | 2009-01-02 | 2010-09-30 | 445d? | 0d |  |  |  |  |  |
| 1214 | KIRAMS8.1 | **요구정의 및 분석** | 48d? | 2009-01-12 A | 2009-03-20 A |  | 100% |  | 2009-01-12 | 2009-03-13 | 43d? |  |  | 요구정의 | 07060716O410138 | C07-1 1.2 | 요구정의, 분석산출물 |
| 1215 | KIRAMS8.1.1 | ITA 산출물 분석 | 18d | 2009-01-19 A | 2009-02-13 A |  | 100% |  | 2009-01-19 | 2009-02-13 | 18d |  | start no earlier than 2009-01-19 | 비즈니스 모델링(AS-IS) | 07060716O410139 | C07-1 1.2.1 | ITA결과산출물 |
| 1216 | KIRAMS8.1.2 | **단계착수** | 38d? | 2009-01-12 A | 2009-03-06 A |  | 100% |  | 2009-01-12 | 2009-03-06 | 38d? |  |  | 인터뷰 실시 | 07060716O410139 | C07-1 1.2.1.2 |  |
| 1217 | KIRAMS8.1.2.1 | 표준및절차정의 및 검토 | 6d | 2009-02-02 A | 2009-02-09 A |  | 100% |  | 2009-02-02 | 2009-02-09 | 6d |  | start no earlier than 2009-02-02 | 인터뷰 실시 | 07060716O410139 | C07-1 1.2.1.2 | 표준및절차매뉴얼 |
| 1218 | KIRAMS8.1.2.2 | 오리엔테이션 | 2d? | 2009-02-10 A | 2009-02-11 A |  | 100% |  | 2009-02-10 | 2009-02-11 | 2d? |  | start no earlier than 2009-02-10 | 인터뷰 실시 | 07060716O410139 | C07-1 1.2.1.2 | 표준및절차매뉴얼 |
| 1219 | KIRAMS8.1.2.3 | 요구사항정의 | 38d | 2009-01-12 A | 2009-03-06 A | 1218 | 100% |  | 2009-01-12 | 2009-03-06 | 38d |  | start no earlier than 2009-01-12 | 인터뷰 실시 | 07060716O410139 | C07-1 1.2.1.2 |  |
| 1220 | KIRAMS8.1.2.4 | 인터뷰 실시 | 38d | 2009-01-12 A | 2009-03-06 A |  | 100% |  | 2009-01-12 | 2009-03-06 | 38d |  | start no earlier than 2009-01-12 | 인터뷰 실시 | 07060716O410139 | C07-1 1.2.1.2 |  |
| 1221 | KIRAMS8.1.3 | **요구사항 도출/정제/확정** | 20d | 2009-02-23 A | 2009-03-20 A |  | 100% |  | 2009-02-23 | 2009-03-13 | 15d |  |  | 요구사항 정의 | 07060716O410141 | C07-1 1.2.3 | 요구사항정의서 |
| 1222 | KIRAMS8.1.3.1 | 업무분석 | 15d | 2009-02-23 A | 2009-03-13 A |  | 100% |  | 2009-02-23 | 2009-03-13 | 15d |  | start no earlier than 2009-02-23 | 요구사항 정제 | 07060716O410141 | C07-1 1.2.3.2 |  |
| 1223 | KIRAMS8.1.3.2 | 유스케이스 분석 | 15d | 2009-03-02 A | 2009-03-20 A |  | 100% |  | 2009-03-02 | 2009-03-13 | 10d |  | start no earlier than 2009-03-02 | 컨버전대상 정의 | 07060716O410141 | C07-1 1.2.3.4 | 유스케이스 정의서/다이어그램 |
| 1224 | KIRAMS8.1.3.3 | 시스템인터페이스 분석 | 5d | 2009-02-23 A | 2009-02-27 A | 1222 | 100% |  | 2009-02-23 | 2009-02-27 | 5d |  | start no earlier than 2009-02-23 | 요구사항확정 | 07060716O410141 | C07-1 1.2.3.5 | 시스템인터페이스정의서 |
| 1225 | KIRAMS8.2 | **화면분석** | 20d? | 2009-03-02 A | 2009-03-27 |  | 98% | 0.45d? | 2009-02-24 | 2009-05-15 | 58d? | 386d |  | 분석 | 07060716O410142 | C07-1 1.3 |  |
| 1226 | KIRAMS8.2.1 | **화면표준 정의** | 4d | 2009-03-10 A | 2009-03-13 A |  | 100% |  | 2009-03-09 | 2009-03-13 | 5d |  |  | 업무 분석 | 07060716O410143 | C07-1 1.3.1 |  |
| 1227 | KIRAMS8.2.1.1 | 표준 디자인 자체 검토 | 1d | 2009-03-10 A | 2009-03-10 A |  | 100% |  | 2009-03-09 | 2009-03-10 | 2d |  | start no earlier than 2009-03-09 | 유스케이스 분석 | 07060716O410143 | C07-1 1.3.1.3 | 디자인 시안 |
| 1228 | KIRAMS8.2.1.2 | 표준 디자인 확정 의뢰 | 3d | 2009-03-11 A | 2009-03-13 A |  | 100% |  | 2009-03-11 | 2009-03-13 | 3d |  | start no earlier than 2009-03-11 | 시스템인터페이스 분석 | 07060716O410143 | C07-1 1.3.1.4 | 디자인 시안 |
| 1229 | KIRAMS8.2.2 | **화면표준정의서 작성** | 20d | 2009-03-02 A | 2009-03-27 A |  | 100% |  | 2009-03-09 | 2009-04-01 | 18d? |  |  | 화면 분석 | 07060716O410144 | C07-1 1.3.2 | 화면표준정의서 |
| 1230 | KIRAMS8.2.2.1 | **메뉴구조 정의** | 15d | 2009-03-02 A | 2009-03-20 A |  | 100% |  | 2009-03-09 | 2009-04-01 | 18d |  |  | 화면표준 정의 | 07060716O410144 | C07-1 1.3.2.1 | 메뉴구조도 |
| 1231 | KIRAMS8.2.2.1.1 | 데이터분석 | 10d | 2009-03-09 A | 2009-03-20 A |  | 100% |  | 2009-03-09 | 2009-03-20 | 10d |  | start no earlier than 2009-03-09 | 화면레이아웃 정의 | 07060716O410144 | C07-1 1.3.2.2 |  |
| 1232 | KIRAMS8.2.2.1.2 | 논리데이터 모델링 | 10d | 2009-03-09 A | 2009-03-20 A |  | 100% |  | 2009-03-09 | 2009-03-20 | 10d |  | start no earlier than 2009-03-09 | 화면레이아웃 정의 | 07060716O410144 | C07-1 1.3.2.2 | ERD(논리) |
| 1233 | KIRAMS8.2.2.1.3 | 자료사전 정의 | 10d | 2009-03-09 A | 2009-03-20 A |  | 100% |  | 2009-03-09 | 2009-03-20 | 10d |  | start no earlier than 2009-03-09 | 화면레이아웃 정의 | 07060716O410144 | C07-1 1.3.2.2 | 자료사전 |
| 1234 | KIRAMS8.2.2.1.4 | 데이터전환분석 | 15d | 2009-03-02 A | 2009-03-20 A | 1233 | 100% |  | 2009-03-23 | 2009-04-01 | 8d |  | start no earlier than 2009-03-11 | 화면레이아웃 정의 | 07060716O410144 | C07-1 1.3.2.2 |  |
| 1235 | KIRAMS8.2.2.2 | 데이터전환대상 정의 지원 | 12d | 2009-03-12 A | 2009-03-27 A |  | 100% |  | 2009-03-12 | 2009-03-23 | 8d |  | finish no earlier than 2009-03-27 | 메뉴구조 정의 | 07060716O410144 | C07-1 1.3.2.3 | 데이터전환대상목록 |

| ID | WBS | Task | Duration | Start | Finish | Complete | Remaining | Baseline start | Baseline finish | Baseline duration | Total slack | Constraint | Text20 | Text25 | Text26 | 산출물 |
| --- | --- | --- | --- | --- | --- | --- | --- | --- | --- | --- | --- | --- | --- | --- | --- | --- |
| 1236 | KIRAMS8.2.3 | **단계완료** | 7d? | 2009-03-18 A | 2009-03-26 | 75% | 1.75d? | 2009-02-24 | 2009-05-15 | 58d? | 387d |  | 데이터 분석 | 07060716O410145 | C07-1 1.3.3 | Inspection결과,시정조치서 |
| 1237 | KIRAMS8.2.3.1 | Inspection 실시 및 시정조치 | 3d? | 2009-03-18 A | 2009-03-20 A | 100% |  | 2009-03-18 | 2009-03-24 | 5d? |  | finish no earlier than 2009-03-24 |  |  |  | Inspection결과,시정조치서 |
| 1238 | KIRAMS8.2.3.1 | 단계완료승인획득 | 3d? | 2009-03-24 A | 2009-03-26 | 50% | 1.5d? | 2009-03-27 | 2009-03-27 | 1d? | 387d | start no earlier than 2009-03-27 | 논리데이터 모델링 | 07060716O410145 | C07-1 1.3.3.1 | 고객인수확인서 |
| 1239 | KIRAMS8.3 | **업무설계** | 149d? | 2009-03-23 A | 2009-10-19 | 1% | 148.02d? | 2009-03-23 | 2009-10-19 | 149d? | 242d |  | 설계 | 07060716O410151 | C07-1 1.5 |  |
| 1240 | KIRAMS8.3.1 | **설계패키지 정의** | 10d | 2009-04-13 | 2009-04-24 |  |  | 2009-04-13 | 2009-04-24 | 10d | 366d |  | 아키텍처설계 | 07060716O410149 | C07-1 1.4.2 | 설계패키지정의서 |
| 1241 | KIRAMS8.3.1.1 | 클래스 설계 | 10d | 2009-04-13 | 2009-04-24 |  |  | 2009-04-13 | 2009-04-24 | 10d | 366d | start no earlier than 2009-04-13 | 어플리케이션아키텍처 설계 | 07060716O410149 | C07-1 1.4.2.1 | 클래스다이어그램, 클래스명세서 |
| 1242 | KIRAMS8.3.1.2 | 배치프로그램 설계 | 10d | 2009-04-13 | 2009-04-24 |  |  | 2009-04-13 | 2009-04-24 | 10d | 366d | start no earlier than 2009-04-13 | 데이터아키텍처 설계 | 07060716O410149 | C07-1 1.4.2.2 | 배치프로그램사양서 |
| 1243 | KIRAMS8.3.1.3 | 시스템인터페이스 설계 | 10d | 2009-04-13 | 2009-04-24 |  |  | 2009-04-13 | 2009-04-24 | 10d | 366d | start no earlier than 2009-04-13 | 기술인프라아키텍처 설계 | 07060716O410149 | C07-1 1.4.2.3 | 시스템인터페이스정의서 |
| 1244 | KIRAMS8.3.2 | **배포구조 정의** | 34d | 2009-03-23 A | 2009-05-08 | 3% | 32.98d | 2009-03-23 | 2009-05-08 | 34d | 357d |  | 업무 설계 | 07060716O410152 | C07-1 1.5.1 | 배포정의서 |
| 1245 | KIRAMS8.3.2.1 | 화면설계 | 20d | 2009-03-23 A | 2009-04-17 | 5% | 19d | 2009-03-23 | 2009-04-17 | 20d | 371d | start no earlier than 2009-03-23 | 설계패키지 정의 | 07060716O410152 | C07-1 1.5.1.1 |  |
| 1246 | KIRAMS8.3.2.2 | 화면설계 | 20d | 2009-03-23 A | 2009-04-17 | 5% | 19d | 2009-03-23 | 2009-04-17 | 20d | 371d | start no earlier than 2009-03-23 | 클래스 설계 | 07060716O410152 | C07-1 1.5.1.2 | 보고서목록,보고서정의서,화면목록,화면정의서 |
| 1247 | KIRAMS8.3.2.3 | 데이터설계 | 9d | 2009-04-27 | 2009-05-08 |  |  | 2009-04-27 | 2009-05-08 | 9d | 357d | start no earlier than 2009-04-27 | 시스템인터페이스 설계 | 07060716O410152 | C07-1 1.5.1.3 |  |
| 1248 | KIRAMS8.3.2.4 | 데이터코드 설계 | 9d | 2009-04-27 | 2009-05-08 |  |  | 2009-04-27 | 2009-05-08 | 9d | 357d | start no earlier than 2009-04-27 | 배포구조 정의 | 07060716O410152 | C07-1 1.5.1.4 | 데이터코드목록,데이터코드정의서 |
| 1249 | KIRAMS8.3.2.5 | 물리데이터 모델링 | 9d | 2009-04-27 | 2009-05-08 |  |  | 2009-04-27 | 2009-05-08 | 9d | 357d | start no earlier than 2009-04-27 | 배포구조 정의 | 07060716O410152 | C07-1 1.5.1.4 | ERD(물리),테이블목록,테이블정의서 |
| 1250 | KIRAMS8.3.3 | **데이터전환설계 지원** | 34d | 2009-03-23 | 2009-05-08 |  |  | 2009-03-23 | 2009-05-08 | 34d | 357d |  | 화면 설계 | 07060716O410153 | C07-1 1.5.2 | 데이터전환설계서,코드매핑정의서,테이블매핑정의서 |
| 1251 | KIRAMS8.3.3.1 | 컨버전매핑 정의 지원 | 34d | 2009-03-23 | 2009-05-08 |  |  | 2009-03-23 | 2009-05-08 | 34d | 357d | start no earlier than 2009-03-23 | 화면설계 | 07060716O410153 | C07-1 1.5.2.1 | 데이터전환설계서,코드매핑정의서,테이블매핑정의서 |
| 1252 | KIRAMS8.3.4 | **테스트설계** | 6d | 2009-04-27 | 2009-05-04 |  |  | 2009-04-27 | 2009-05-04 | 6d | 360d |  | 데이터 설계 | 07060716O410154 | C07-1 1.5.3 | 테이블목록,데이터코드정의서 |
| 1253 | KIRAMS8.3.4.1 | 테스트 계획 수립 | 6d | 2009-04-27 | 2009-05-04 |  |  | 2009-04-27 | 2009-05-04 | 6d | 360d | start no earlier than 2009-04-27 | 데이터코드 설계 | 07060716O410154 | C07-1 1.5.3.1 | 테스트계획서 |
| 1254 | KIRAMS8.3.4.2 | 시스템테스트 계획 수립 | 6d | 2009-04-27 | 2009-05-04 |  |  | 2009-04-27 | 2009-05-04 | 6d | 360d | start no earlier than 2009-04-27 | 물리데이터 모델링 | 07060716O410154 | C07-1 1.5.3.2 | 시스템테스트계획서 |
| 1255 | KIRAMS8.3.5 | **단계완료** | 4d? | 2009-05-04 | 2009-05-08 |  |  | 2009-05-04 | 2009-05-08 | 4d? | 357d |  | 컨버전 설계 | 07060716O410155 | C07-1 1.5.4 | Inspection결과,시정조치서 |
| 1256 | KIRAMS8.3.5.1 | Inspection 실시 및 시정조치 | 4d? | 2009-05-04 | 2009-05-08 |  |  | 2009-05-04 | 2009-05-08 | 4d? | 357d | start no earlier than 2009-05-04 | 컨버전매핑 정의 | 07060716O410155 | C07-1 1.5.4.1 | Inspection결과,시정조치서 |
| 1257 | KIRAMS8.3.6 | **단계완료승인획득** | 129d? | 2009-04-20 | 2009-10-19 |  |  | 2009-04-20 | 2009-10-19 | 129d? | 242d |  | 테스트 설계 | 07060716O410156 | C07-1 1.5.5 | 고객인수확인서 |
| 1258 | KIRAMS8.3.6.1 | 개발 | 129d? | 2009-04-20 | 2009-10-19 |  |  | 2009-04-20 | 2009-10-19 | 129d? | 242d | start no earlier than 2009-04-20 | 테스트계획 수립 | 07060716O410156 | C07-1 1.5.5.1 |  |
| 1259 | KIRAMS8.3.6.2 | 단계착수 | 19d? | 2009-04-20 | 2009-05-15 |  |  | 2009-04-20 | 2009-05-15 | 19d? | 352d | start no earlier than 2009-04-20 | 통합테스트 설계 | 07060716O410156 | C07-1 1.5.5.3 |  |
| 1260 | KIRAMS8.3.6.3 | 표준및절차정의 및 검토 | 10d? | 2009-04-20 | 2009-05-01 |  |  | 2009-04-20 | 2009-05-01 | 10d? | 361d | start no earlier than 2009-04-20 | 시스템테스트계획 수립 | 07060716O410156 | C07-1 1.5.5.4 | 표준및절차매뉴얼 |

| ID | WBS | Task | Duration | Start | Finish | Baseline start | Baseline finish | Baseline duration | Total slack | Constraint | Text20 | Text25 | Text26 | 산출물 |
| --- | --- | --- | --- | --- | --- | --- | --- | --- | --- | --- | --- | --- | --- | --- |
| 1261 | KIRAMS8.4 | **개발** | 118d? | 2009-04-20 | 2009-10-02 | 2009-04-20 | 2009-10-02 | 118d? | 253d |  | 개발 | 07060716O410157 | C07-1 1.6 |  |
| 1262 | KIRAMS8.4.1 | **단계착수** | 19d? | 2009-04-20 | 2009-05-15 | 2009-04-20 | 2009-05-15 | 19d? | 352d |  |  |  |  | 표준및절차매뉴얼 |
| 1263 | KIRAMS8.4.1.1 | 표준및절차정의 및 검토 | 10d? | 2009-04-20 | 2009-05-01 | 2009-04-20 | 2009-05-01 | 10d? | 361d | finish no earlier than 2009-05-01 |  |  |  | 표준및절차매뉴얼 |
| 1264 | KIRAMS8.4.1.2 | 오리엔테이션 | 5d? | 2009-05-11 | 2009-05-15 | 2009-05-11 | 2009-05-15 | 5d? | 352d | finish no earlier than 2009-05-15 |  |  |  | 표준및절차매뉴얼 |
| 1265 | KIRAMS8.4.2 | **개발단계지원** | 112d? | 2009-04-27 | 2009-09-30 | 2009-04-27 | 2009-09-30 | 112d? | 254d |  |  |  |  |  |
| 1266 | KIRAMS8.4.2.1 | 개발표준 교육 및 표준 보완 | 9d? | 2009-04-27 | 2009-05-08 | 2009-04-27 | 2009-05-08 | 9d? | 357d | finish no earlier than 2009-05-08 |  |  |  |  |
| 1267 | KIRAMS8.4.2.2 | 코드 인스펙션 실시 지원 | 103d? | 2009-05-11 | 2009-09-30 | 2009-05-11 | 2009-09-30 | 103d? | 254d | finish no earlier than 2009-09-30 |  |  |  |  |
| 1268 | KIRAMS8.4.2.3 | SW아키텍쳐 리뷰 및 보완 | 103d? | 2009-05-11 | 2009-09-30 | 2009-05-11 | 2009-09-30 | 103d? | 254d | finish no earlier than 2009-09-30 |  |  |  |  |
| 1269 | KIRAMS8.4.3 | **코딩** | 108d | 2009-05-04 | 2009-10-02 | 2009-05-04 | 2009-10-02 | 108d | 253d |  |  |  |  |  |
| 1270 | KIRAMS8.4.3.1 | 프로그램 코딩 | 107d | 2009-05-04 | 2009-09-30 | 2009-05-04 | 2009-09-30 | 107d | 254d | finish no earlier than 2009-09-30 | 코딩 | 07060716O410158 | C07-1 1.6.1 | 소스코드 |
| 1271 | KIRAMS8.4.3.2 | 단위테스트 실시 | 104d | 2009-05-11 | 2009-10-02 | 2009-05-11 | 2009-10-02 | 104d | 253d | finish no earlier than 2009-10-02 | 코딩단위테스트 실시 | 07060716O410158 | C07-1 1.6.1.1 | 단위테스트체크리스트(결과) |
| 1272 | KIRAMS8.4.3.3 | 통합빌드 관리 | 98d | 2009-05-18 | 2009-09-30 | 2009-05-18 | 2009-09-30 | 98d | 254d | start no earlier than 2009-05-18 | 통합빌드 | 07060716O410158 | C07-1 1.6.1.2 | 배포파일 |
| 1273 | KIRAMS8.4.4 | **통합테스트 설계** | 60d | 2009-05-11 | 2009-07-31 | 2009-05-11 | 2009-07-31 | 60d | 297d |  | 테스트 실시 | 07060716O410159 | C07-1 1.6.2 | 통합테스트시나리오 |
| 1274 | KIRAMS8.4.4.1 | 기초코드 구축 | 60d | 2009-05-11 | 2009-07-31 | 2009-05-11 | 2009-07-31 | 60d | 297d | start no earlier than 2009-05-11 | 통합테스트 실시 | 07060716O410159 | C07-1 1.6.2.1 |  |
| 1275 | KIRAMS8.4.4.2 | NTIS코드 작성 | 60d | 2009-05-11 | 2009-07-31 | 2009-05-11 | 2009-07-31 | 60d | 297d | start no earlier than 2009-05-11 | 시스템테스트 실시 | 07060716O410159 | C07-1 1.6.2.2 | NTIS 코드 |
| 1276 | KIRAMS8.4.4.3 | 기초코드 작성 | 45d | 2009-06-01 | 2009-07-31 | 2009-06-01 | 2009-07-31 | 45d | 297d | start no earlier than 2009-06-01 | 시스템테스트 실시 | 07060716O410159 | C07-1 1.6.2.2 | 기초코드 |
| 1277 | KIRAMS8.5 | **이행** | 185d | 2009-09-07 | 2010-05-27 | 2009-01-02 | 2010-05-27 | 358d? | 87d |  | 이행 | 07060716O410160 | C07-1 1.7 |  |
| 1278 | KIRAMS8.5.1 | **단계착수** | 63d | 2009-09-07 | 2009-12-03 | 2009-09-07 | 2009-12-03 | 63d | 209d |  | 교육훈련계획 수립 | 07060716O410161 | C07-1 1.7.1.2 | 표준및절차매뉴얼 |
| 1279 | KIRAMS8.5.1.1 | 이행계획 수립 | 63d | 2009-09-07 | 2009-12-03 | 2009-09-07 | 2009-12-03 | 63d | 209d | start no earlier than 2009-09-07 | 교육훈련계획 수립 | 07060716O410161 | C07-1 1.7.1.2 |  |
| 1280 | KIRAMS8.5.1.2 | 교육훈련계획 수립 | 18d | 2009-09-07 | 2009-09-30 | 2009-09-07 | 2009-09-30 | 18d | 254d | start no earlier than 2009-09-07 | 교육훈련계획 수립 | 07060716O410161 | C07-1 1.7.1.2 |  |
| 1281 | KIRAMS8.5.1.3 | 교육계획서 작성 | 5d | 2009-09-07 | 2009-09-11 | 2009-09-07 | 2009-09-11 | 5d | 267d | start no earlier than 2009-09-07 | 교육훈련계획 수립 | 07060716O410161 | C07-1 1.7.1.2 | 교육계획서 |
| 1282 | KIRAMS8.5.1.4 | 교육상세일정 조정 | 3d | 2009-09-14 | 2009-09-16 | 2009-09-14 | 2009-09-16 | 3d | 264d | start no earlier than 2009-09-14 | 교육훈련계획 수립 | 07060716O410161 | C07-1 1.7.1.2 | 교육계획서 |
| 1283 | KIRAMS8.5.2 | **교육대상자 선정** | 44d | 2009-09-21 | 2009-11-20 | 2009-09-21 | 2010-01-21 | 88d | 218d |  | 시스템 사용교육 | 07060716O410163 | C07-1 1.7.3 | 교육계획서 |
| 1284 | KIRAMS8.5.2.1 | 교육장 준비 확인 | 8d | 2009-09-21 | 2009-09-30 | 2009-09-21 | 2009-09-30 | 8d | 254d | start no earlier than 2009-09-21 | 사용자매뉴얼 작성 | 07060716O410163 | C07-1 1.7.3.1 | 교육계획서 |
| 1285 | KIRAMS8.5.2.3 | 시스템 사용교육 | 35d | 2009-10-05 | 2009-11-20 | 2009-12-04 | 2010-01-21 | 35d | 218d | start no earlier than 2009-10-05 | 교육훈련 실시 | 07060716O410163 | C07-1 1.7.3.3 |  |

| ID | WBS | Task | Duration | Start | Finish | Predecessors | Baseline start | Baseline finish | Baseline duration | Total slack | Free slack | Constraint | Text20 | Text25 | Text26 | 산출물 |
| --- | --- | --- | --- | --- | --- | --- | --- | --- | --- | --- | --- | --- | --- | --- | --- | --- |
| 1286 | KIRAMS8.5.3 | **본원(서울) 이행(~12/31)** | 84d | 2009-10-12 | 2010-02-04 |  | 2009-10-12 | 2010-02-04 | 84d | 164d |  |  | 교육훈련 실시 | 07060716O410163 | C07-1 1.7.3.3 | 이행계획서 |
| 1287 | KIRAMS8.5.3.1 | **컨버전 및 릴리이즈(본원)** | 49d | 2009-11-30 | 2010-02-04 |  | 2009-11-30 | 2010-02-04 | 49d | 164d |  |  | 컨버전 및 릴리이즈 | 07060716O410162 | C07-1 1.7.2 |  |
| 1288 | KIRAMS8.5.3.1.1 | 데이터베이스 구축 지원 및 확인 | 10d | 2009-11-30 | 2009-12-11 |  | 2009-11-30 | 2009-12-11 | 10d | 164d | 0d | start no earlier than 2009-11-30 | 데이터베이스 구축 | 07060716O410162 | C07-1 1.7.2.1 | 데이터베이스 |
| 1289 | KIRAMS8.5.3.1.2 | 소프트웨어 설치 확인 | 9d | 2009-12-14 | 2009-12-24 | 1288 | 2009-12-14 | 2009-12-24 | 9d | 164d | 0d | start no earlier than 2009-12-14 | 소프트웨어 설치 | 07060716O410162 | C07-1 1.7.2.2 | 어플리케이션 |
| 1290 | KIRAMS8.5.3.1.3 | 데이터전환 확인 | 8d | 2009-12-21 | 2009-12-31 |  | 2009-12-21 | 2009-12-31 | 8d | 190d |  | start no earlier than 2009-12-21 | 데이터 컨버전 | 07060716O410162 | C07-1 1.7.2.3 | 컨버전된 데이터 |
| 1291 | KIRAMS8.5.3.1.4 | 시스템 릴리이즈 | 4d | 2009-12-28 | 2009-12-31 |  | 2009-12-28 | 2009-12-31 | 4d | 190d |  | start no earlier than 2009-12-28 | 인수테스트 실시 | 07060716O410162 | C07-1 1.7.2.4 | 운영시스템 |
| 1292 | KIRAMS8.5.3.1.5 | 테스트 실시(본원) | 30d | 2009-12-28 | 2010-02-04 | 1289 | 2009-12-28 | 2010-02-04 | 30d | 164d |  | start no earlier than 2009-10-05 | 시스템 릴리이즈 | 07060716O410162 | C07-1 1.7.2.5 |  |
| 1293 | KIRAMS8.5.3.2 | **통합테스트 실시** | 25d | 2009-10-12 | 2009-11-13 |  | 2009-10-12 | 2009-11-13 | 25d | 223d |  |  | 테스트 실시 | 07060716O410159 | C07-1 1.6.2 |  |
| 1294 | KIRAMS8.5.3.2.1 | **통합테스트 환경구축 지원** | 25d | 2009-10-12 | 2009-11-13 |  | 2009-10-12 | 2009-11-13 | 25d | 223d |  |  | 통합테스트 실시 | 07060716O410159 | C07-1 1.6.2.1 | 이행계획서 |
| 1295 | KIRAMS8.5.3.2.1.1 | 1차 통합테스트 | 10d | 2009-10-12 | 2009-10-23 |  | 2009-10-12 | 2009-10-23 | 10d | 238d |  | start no earlier than 2009-10-12 | 교육훈련계획 수립 | 07060716O410161 | C07-1 1.7.1.2 |  |
| 1296 | KIRAMS8.5.3.2.1.2 | **기초자료 구축(1차)** | 15d | 2009-10-14 | 2009-11-03 |  | 2009-10-14 | 2009-11-03 | 15d | 231d |  |  | 교육훈련계획 수립 | 07060716O410161 | C07-1 1.7.1.2 | 테스트계획서 |
| 1297 | KIRAMS8.5.3.2.1.2.1 | 통합테스트 실시(1차) | 2d | 2009-10-14 | 2009-10-15 |  | 2009-10-14 | 2009-10-15 | 2d | 231d | 0d | start no earlier than 2009-10-14 | 교육훈련계획 수립 | 07060716O410161 | C07-1 1.7.1.2 | 결함보고서,통합테스트시나리오(결과),통합테스트결과보고서 |
| 1298 | KIRAMS8.5.3.2.1.2.2 | 통합테스트 결과 분석(1차) | 1d | 2009-10-16 | 2009-10-16 | 1297 | 2009-10-16 | 2009-10-16 | 1d | 231d | 0d | start no earlier than 2009-10-16 | 교육훈련계획 수립 | 07060716O410161 | C07-1 1.7.1.2 | 결함보고서,통합테스트시나리오(결과),통합테스트결과보고서 |
| 1299 | KIRAMS8.5.3.2.1.2.3 | 통합테스트 결과 조치(1차) | 5d | 2009-10-19 | 2009-10-23 | 1298 | 2009-10-19 | 2009-10-23 | 5d | 231d | 0d | start no earlier than 2009-10-19 | 교육훈련계획 수립 | 07060716O410161 | C07-1 1.7.1.2 | 결함보고서,통합테스트시나리오(결과),통합테스트결과보고서 |
| 1300 | KIRAMS8.5.3.2.1.2.4 | 2차 통합테스트 | 7d | 2009-10-26 | 2009-11-03 | 1299 | 2009-10-26 | 2009-11-03 | 7d | 231d |  | start no earlier than 2009-10-22 | 교육훈련계획 수립 | 07060716O410161 | C07-1 1.7.1.2 |  |
| 1301 | KIRAMS8.5.3.2.1.3 | **기초자료 구축(2차)** | 15d | 2009-10-26 | 2009-11-13 |  | 2009-10-26 | 2009-11-13 | 15d | 223d |  |  | 교육훈련계획 수립 | 07060716O410161 | C07-1 1.7.1.2 | 테스트계획서 |
| 1302 | KIRAMS8.5.3.2.1.3.1 | 통합테스트 실시(2차) | 2d | 2009-10-26 | 2009-10-27 |  | 2009-10-26 | 2009-10-27 | 2d | 228d | 0d | start no earlier than 2009-10-26 | 교육훈련계획 수립 | 07060716O410161 | C07-1 1.7.1.2 | 결함보고서,통합테스트시나리오(결과),통합테스트결과보고서 |
| 1303 | KIRAMS8.5.3.2.1.3.2 | 통합테스트 결과 분석(2차) | 1d | 2009-10-28 | 2009-10-28 | 1302 | 2009-10-28 | 2009-10-28 | 1d | 228d | 0d | start no earlier than 2009-10-28 | 교육훈련계획 수립 | 07060716O410161 | C07-1 1.7.1.2 | 결함보고서,통합테스트시나리오(결과),통합테스트결과보고서 |
| 1304 | KIRAMS8.5.3.2.1.3.3 | 통합테스트 결과 조치(2차) | 2d | 2009-10-29 | 2009-10-30 | 1303 | 2009-10-29 | 2009-10-30 | 2d | 228d | 5d | start no earlier than 2009-10-29 | 교육훈련계획 수립 | 07060716O410161 | C07-1 1.7.1.2 | 결함보고서,통합테스트시나리오(결과),통합테스트결과보고서 |
| 1305 | KIRAMS8.5.3.2.1.3.4 | 시스템테스트 실시 | 5d | 2009-11-09 | 2009-11-13 | 1304 | 2009-11-09 | 2009-11-13 | 5d | 223d |  | start no earlier than 2009-11-09 | 교육훈련계획 수립 | 07060716O410161 | C07-1 1.7.1.2 |  |
| 1306 | KIRAMS8.5.3.3 | **부하테스트 프로그램 지원** | 30d | 2009-11-16 | 2009-12-28 |  | 2009-11-16 | 2009-12-28 | 30d | 193d |  |  | 시범운영 | 07060716O410164 | C07-1 1.7.4 | 시스템테스트결과보고서 |
| 1307 | KIRAMS8.5.3.3.1 | 리허설(본원) | 30d | 2009-11-16 | 2009-12-28 |  | 2009-11-16 | 2009-12-28 | 30d | 193d |  | start no earlier than 2009-11-16 | 시범운영계획 수립 | 07060716O410164 | C07-1 1.7.4.1 |  |
| 1308 | KIRAMS8.5.3.3.2 | 리허설 계획 수립지원(시나리오 작성) | 11d | 2009-11-16 | 2009-11-30 |  | 2009-11-16 | 2009-11-30 | 11d | 212d |  | start no earlier than 2009-11-16 | 시범운영계획 수립 | 07060716O410164 | C07-1 1.7.4.1 | 리허설계획서,리허설시나리오 |
| 1309 | KIRAMS8.5.3.3.3 | **1차 리허설 실시** | 7d | 2009-12-01 | 2009-12-09 |  | 2009-12-01 | 2009-12-09 | 7d | 205d |  |  | 시범운영 실시 | 07060716O410164 | C07-1 1.7.4.2 |  |
| 1310 | KIRAMS8.5.3.3.3.1 | 기초자료 구축(1차) | 2d | 2009-12-01 | 2009-12-02 |  | 2009-12-01 | 2009-12-02 | 2d | 210d |  | start no earlier than 2009-12-01 | 시범운영 실시 | 07060716O410164 | C07-1 1.7.4.2 | 리허설계획서,리허설시나리오 |
| 1311 | KIRAMS8.5.3.3.3.2 | 리허설 공지 및 상황실 운영(1차) | 2d | 2009-12-01 | 2009-12-02 |  | 2009-12-01 | 2009-12-02 | 2d | 210d |  | start no earlier than 2009-12-01 | 시범운영 실시 | 07060716O410164 | C07-1 1.7.4.2 | 리허설계획서,리허설시나리오 |
| 1312 | KIRAMS8.5.3.3.3.3 | 가상 과제 준비(1차) | 2d | 2009-12-01 | 2009-12-02 |  | 2009-12-01 | 2009-12-02 | 2d | 207d | 0d | start no earlier than 2009-12-01 | 시범운영 실시 | 07060716O410164 | C07-1 1.7.4.2 | 리허설계획서,리허설시나리오 |
| 1313 | KIRAMS8.5.3.3.3.4 | 리허설 실시(1차) | 1d | 2009-12-03 | 2009-12-03 | 1312 | 2009-12-03 | 2009-12-03 | 1d | 207d | 0d | start no earlier than 2009-12-03 | 시범운영 실시 | 07060716O410164 | C07-1 1.7.4.2 | 리허설결과서 |
| 1314 | KIRAMS8.5.3.3.3.5 | 리허설 결과 분석 및 보고(1차) | 2d | 2009-12-04 | 2009-12-07 | 1313 | 2009-12-04 | 2009-12-07 | 2d | 207d |  | start no earlier than 2009-12-04 | 시범운영 실시 | 07060716O410164 | C07-1 1.7.4.2 | 리허설결과보고서 |
| 1315 | KIRAMS8.5.3.3.3.6 | 리허설 결과 조치(1차) | 4d | 2009-12-04 | 2009-12-09 |  | 2009-12-04 | 2009-12-09 | 4d | 205d |  | start no earlier than 2009-12-04 | 시범운영 실시 | 07060716O410164 | C07-1 1.7.4.2 | 리허설결과서,리허설결과보고서 |

| ID | WBS | Task | Duration | Start | Finish | Predecessors | Baseline start | Baseline finish | Baseline duration | Total slack | Free slack | Constraint | Text20 | Text25 | Text26 | 산출물 |
| --- | --- | --- | --- | --- | --- | --- | --- | --- | --- | --- | --- | --- | --- | --- | --- | --- |
| 1316 | KIRAMS8.5.3.3.4 | **2차 리허설 실시** | 8d | 2009-12-10 | 2009-12-21 |  | 2009-12-10 | 2009-12-21 | 8d | 197d |  |  | 시범운영 실시 | 07060716O410164 | C07-1 1.7.4.2 |  |
| 1317 | KIRAMS8.5.3.3.4.1 | 기초자료 구축(2차) | 2d | 2009-12-10 | 2009-12-11 |  | 2009-12-10 | 2009-12-11 | 2d | 202d | 0d | start no earlier than 2009-12-10 | 시범운영 실시 | 07060716O410164 | C07-1 1.7.4.2 | 리허설계획서,리허설시나리오 |
| 1318 | KIRAMS8.5.3.3.4.2 | 리허설 공지 및 상황실 운영(2차) | 1d | 2009-12-14 | 2009-12-14 | 1317 | 2009-12-14 | 2009-12-14 | 1d | 202d |  | start no earlier than 2009-12-14 | 시범운영 실시 | 07060716O410164 | C07-1 1.7.4.2 | 리허설계획서,리허설시나리오 |
| 1319 | KIRAMS8.5.3.3.4.3 | 가상 과제 준비(2차) | 1d | 2009-12-14 | 2009-12-14 |  | 2009-12-14 | 2009-12-14 | 1d | 197d | 0d | start no earlier than 2009-12-14 | 시범운영 실시 | 07060716O410164 | C07-1 1.7.4.2 | 리허설계획서,리허설시나리오 |
| 1320 | KIRAMS8.5.3.3.4.4 | 리허설 실시(2차) | 1d | 2009-12-15 | 2009-12-15 | 1319 | 2009-12-15 | 2009-12-15 | 1d | 197d | 0d | start no earlier than 2009-12-15 | 시범운영 실시 | 07060716O410164 | C07-1 1.7.4.2 | 리허설결과서 |
| 1321 | KIRAMS8.5.3.3.4.5 | 리허설 결과 분석 및 보고(2차) | 1d | 2009-12-16 | 2009-12-16 | 1320 | 2009-12-16 | 2009-12-16 | 1d | 197d | 0d | start no earlier than 2009-12-16 | 시범운영 실시 | 07060716O410164 | C07-1 1.7.4.2 | 리허설결과보고서 |
| 1322 | KIRAMS8.5.3.3.4.6 | 리허설 결과 조치(2차) | 3d | 2009-12-17 | 2009-12-21 | 1321 | 2009-12-17 | 2009-12-21 | 3d | 197d |  | start no earlier than 2009-12-17 | 시범운영 실시 | 07060716O410164 | C07-1 1.7.4.2 | 리허설결과서,리허설결과보고서 |
| 1323 | KIRAMS8.5.3.4 | **컨버전 전환 지원(1차)** | 30d | 2009-10-19 | 2009-11-27 |  | 2009-10-19 | 2009-11-27 | 30d | 213d |  |  | 테스트 실시 | 07060716O410159 | C07-1 1.6.2 |  |
| 1324 | KIRAMS8.5.3.4.1 | 컨버전 전환 실시 지원(1차) | 20d | 2009-10-19 | 2009-11-13 |  | 2009-10-19 | 2009-11-13 | 20d | 213d | 0d | start no earlier than 2009-10-19 | 테스트 실시 | 07060716O410159 | C07-1 1.6.2 | 컨버전대상테이블 |
| 1325 | KIRAMS8.5.3.4.2 | 전환결과 검증 및 수정 지원(1차) | 10d | 2009-11-16 | 2009-11-27 | 1324 | 2009-11-16 | 2009-11-27 | 10d | 213d |  | finish no earlier than 2009-11-27 | 테스트 실시 | 07060716O410159 | C07-1 1.6.2 | 컨버전대상테이블 |
| 1326 | KIRAMS8.5.3.5 | **컨버전 전환 지원(2차)** | 20d | 2009-11-30 | 2009-12-28 |  | 2009-11-30 | 2009-12-28 | 20d | 193d |  |  | 테스트 실시 | 07060716O410159 | C07-1 1.6.2 |  |
| 1327 | KIRAMS8.5.3.5.1 | 컨버전 전환 실시 지원(2차) | 15d | 2009-11-30 | 2009-12-18 |  | 2009-11-30 | 2009-12-18 | 15d | 193d | 0d | start no earlier than 2009-11-30 | 테스트 실시 | 07060716O410159 | C07-1 1.6.2 | 컨버전대상테이블 |
| 1328 | KIRAMS8.5.3.5.2 | 전환결과 검증 및 수정 지원(2차) | 5d | 2009-12-21 | 2009-12-28 | 1327 | 2009-12-21 | 2009-12-28 | 5d | 193d |  |  | 테스트 실시 | 07060716O410159 | C07-1 1.6.2 | 컨버전대상테이블 |
| 1329 | KIRAMS8.5.3.6 | 병행운영(인수테스트) | 5d | 2009-12-21 | 2009-12-28 |  | 2009-12-21 | 2009-12-28 | 5d | 193d |  | finish no earlier than 2009-12-28 | 안정화 및 유지보수 | 08100808O000000 | C07-1 1.7.5 | 인수테스트결괴서 |
| 1330 | KIRAMS8.5.3.7 | **시스템 오픈(본원)** | 21d | 2009-12-28 | 2010-01-22 |  | 2009-12-28 | 2010-01-22 | 21d | 173d |  |  | 시범운영 | 07060716O410164 | C07-1 1.7.4 |  |
| 1331 | KIRAMS8.5.3.7.1 | 오픈준비 | 4d | 2009-12-28 | 2009-12-31 |  | 2009-12-28 | 2009-12-31 | 4d | 190d |  | start no earlier than 2009-12-28 | 시범운영계획 수립 | 07060716O410164 | C07-1 1.7.4.1 | 이행계획서 |
| 1332 | KIRAMS8.5.3.7.2 | 시스템 OPEN | 1d | 2010-01-01 | 2010-01-01 |  | 2010-01-01 | 2010-01-01 | 1d | 189d |  | start no earlier than 2010-01-01 | 시범운영계획 수립 | 07060716O410164 | C07-1 1.7.4.1 | 이행계획서 |
| 1333 | KIRAMS8.5.3.7.3 | 안정화 지원 | 16d | 2010-01-02 | 2010-01-22 |  | 2010-01-02 | 2010-01-22 | 16d | 173d |  | start no earlier than 2010-01-02 | 시범운영계획 수립 | 07060716O410164 | C07-1 1.7.4.1 | Help Desk 일지 |
| 1334 | KIRAMS8.5.4 | **분원(동남권) 이행(1/1~3/31)** | 91d | 2010-01-18 | 2010-05-27 |  | 2009-01-02 | 2010-05-27 | 358d? | 87d |  |  | 교육훈련 실시 | 07060716O410163 | C07-1 1.7.3.3 | 이행계획서 |
| 1335 | KIRAMS8.5.4.1 | **릴리이즈(분원)** | 91d | 2010-01-18 | 2010-05-27 |  | 2010-01-18 | 2010-05-27 | 91d | 87d |  |  | 컨버전 및 릴리이즈 | 07060716O410162 | C07-1 1.7.2 |  |
| 1336 | KIRAMS8.5.4.1.1 | 데이터베이스 구축 지원 및 확인 | 10d | 2010-01-25 | 2010-02-05 |  | 2010-01-25 | 2010-02-05 | 10d | 153d | 0d | start no earlier than 2010-01-25 | 데이터베이스 구축 | 07060716O410162 | C07-1 1.7.2.1 | 데이터베이스 |
| 1337 | KIRAMS8.5.4.1.2 | 소프트웨어 설치 확인 | 10d | 2010-02-08 | 2010-02-22 | 1336 | 2010-02-08 | 2010-02-22 | 10d | 153d |  | start no earlier than 2010-01-25 | 소프트웨어 설치 | 07060716O410162 | C07-1 1.7.2.2 | 어플리케이션 |
| 1338 | KIRAMS8.5.4.1.3 | 기초 데이터 생성 | 39d | 2010-04-01 | 2010-05-27 | 1339 | 2010-04-01 | 2010-05-27 | 39d | 87d |  | start no earlier than 2010-02-01 | 데이터 컨버전 | 07060716O410162 | C07-1 1.7.2.3 | 기초 데이터 |
| 1339 | KIRAMS8.5.4.1.4 | 시스템 릴리이즈 | 3d | 2010-03-29 | 2010-03-31 |  | 2010-03-29 | 2010-03-31 | 3d | 87d | 0d | start no earlier than 2010-03-29 | 인수테스트 실시 | 07060716O410162 | C07-1 1.7.2.4 | 운영시스템 |
| 1340 | KIRAMS8.5.4.1.5 | 테스트 실시(분원) | 15d | 2010-01-18 | 2010-02-05 |  | 2010-01-18 | 2010-02-05 | 15d | 163d |  | start no earlier than 2010-01-18 | 시스템 릴리이즈 | 07060716O410162 | C07-1 1.7.2.5 |  |

| ID | WBS | Task | Duration | Start | Finish | Predecessors | Baseline start | Baseline finish | Baseline duration | Total slack | Free slack | Constraint | Text20 | Text25 | Text26 | 산출물 |
| --- | --- | --- | --- | --- | --- | --- | --- | --- | --- | --- | --- | --- | --- | --- | --- | --- |
| 1341 | KIRAMS8.5.4.2 | **통합테스트 실시** | 60d | 2010-01-25 | 2010-04-19 |  | 2010-01-25 | 2010-04-19 | 60d | 113d |  |  | 테스트 실시 | 07060716O410159 | C07-1 1.6.2 |  |
| 1342 | KIRAMS8.5.4.2.1 | **통합테스트 환경구축 지원** | 12d | 2010-01-25 | 2010-02-09 |  | 2010-01-25 | 2010-02-09 | 12d | 161d |  |  | 통합테스트 실시 | 07060716O410159 | C07-1 1.6.2.1 | 이행계획서 |
| 1343 | KIRAMS8.5.4.2.1.1 | 통합테스트 | 7d | 2010-01-25 | 2010-02-02 |  | 2010-01-25 | 2010-02-02 | 7d | 166d |  | start no earlier than 2010-01-25 | 교육훈련계획 수립 | 07060716O410161 | C07-1 1.7.1.2 |  |
| 1344 | KIRAMS8.5.4.2.1.2 | **기초자료 구축** | 10d | 2010-01-27 | 2010-02-09 |  | 2010-01-27 | 2010-02-09 | 10d | 161d |  |  | 교육훈련계획 수립 | 07060716O410161 | C07-1 1.7.1.2 | 테스트계획서 |
| 1345 | KIRAMS8.5.4.2.1.2.1 | 통합테스트 실시 | 2d | 2010-01-27 | 2010-01-28 |  | 2010-01-27 | 2010-01-28 | 2d | 168d | 0d | start no earlier than 2010-01-27 | 교육훈련계획 수립 | 07060716O410161 | C07-1 1.7.1.2 | 결함보고서,통합테스트시나리오(결과),통합테스트결과보고서 |
| 1346 | KIRAMS8.5.4.2.1.2.2 | 통합테스트 결과 분석 | 1d | 2010-01-29 | 2010-01-29 | 1345 | 2010-01-29 | 2010-01-29 | 1d | 168d |  | start no earlier than 2010-01-28 | 교육훈련계획 수립 | 07060716O410161 | C07-1 1.7.1.2 | 결함보고서,통합테스트시나리오(결과),통합테스트결과보고서 |
| 1347 | KIRAMS8.5.4.2.1.2.3 | 통합테스트 결과 조치 | 3d | 2010-01-29 | 2010-02-02 |  | 2010-01-29 | 2010-02-02 | 3d | 161d | 0d | start no earlier than 2010-01-29 | 교육훈련계획 수립 | 07060716O410161 | C07-1 1.7.1.2 | 결함보고서,통합테스트시나리오(결과),통합테스트결과보고서 |
| 1348 | KIRAMS8.5.4.2.1.2.4 | 시스템테스트 실시 지원 | 5d | 2010-02-03 | 2010-02-09 | 1347 | 2010-02-03 | 2010-02-09 | 5d | 161d |  | start no earlier than 2010-02-01 | 교육훈련계획 수립 | 07060716O410161 | C07-1 1.7.1.2 |  |
| 1349 | KIRAMS8.5.4.2.2 | **부하테스트 프로그램 지원** | 50d | 2010-02-08 | 2010-04-19 |  | 2010-02-08 | 2010-04-19 | 50d | 113d |  |  | 시스템테스트 실시 | 07060716O410159 | C07-1 1.6.2.2 | 시스템테스트결과보고서 |
| 1350 | KIRAMS8.5.4.2.2.1 | 리허설-인수테스트(분원) | 31d | 2010-02-08 | 2010-03-23 |  | 2010-02-08 | 2010-03-23 | 31d | 113d | 0d | start no earlier than 2010-02-08 | 시스템테스트 실시 | 07060716O410159 | C07-1 1.6.2.2 |  |
| 1351 | KIRAMS8.5.4.2.2.2 | 리허설 계획 수립지원(시나리오 작성) | 9d | 2010-03-24 | 2010-04-05 | 1350 | 2010-03-24 | 2010-04-05 | 9d | 113d | 0d | start no earlier than 2010-02-08 | 시스템테스트 실시 | 07060716O410159 | C07-1 1.6.2.2 | 리허설계획서,리허설시나리오 |
| 1352 | KIRAMS8.5.4.2.2.3 | 1차 리허설 실시 | 10d | 2010-04-06 | 2010-04-19 | 1351 | 2010-04-06 | 2010-04-19 | 10d | 113d |  | start no earlier than 2010-03-01 | 시스템테스트 실시 | 07060716O410159 | C07-1 1.6.2.2 |  |
| 1353 | KIRAMS8.5.4.3 | **리허설** | 56d | 2010-03-03 | 2010-05-20 |  | 2010-03-03 | 2010-05-20 | 56d | 91d |  |  | 시범운영 | 07060716O410164 | C07-1 1.7.4 | 리허설계획서,리허설시나리오 |
| 1354 | KIRAMS8.5.4.3.1 | 리허설 공지 및 상황실 운영(1차) | 2d | 2010-03-03 | 2010-03-04 |  | 2010-03-03 | 2010-03-04 | 2d | 145d |  | start no earlier than 2010-03-03 | 시범운영계획 수립 | 07060716O410164 | C07-1 1.7.4.1 | 리허설계획서,리허설시나리오 |
| 1355 | KIRAMS8.5.4.3.2 | 가상 과제 준비(1차) | 2d | 2010-03-05 | 2010-03-08 |  | 2010-03-05 | 2010-03-08 | 2d | 143d |  | start no earlier than 2010-03-05 | 시범운영계획 수립 | 07060716O410164 | C07-1 1.7.4.1 | 리허설계획서,리허설시나리오 |
| 1356 | KIRAMS8.5.4.3.3 | **리허설 실시(1차)** | 10d | 2010-03-10 | 2010-03-23 |  | 2010-03-10 | 2010-03-23 | 10d | 132d |  |  | 시범운영 실시 | 07060716O410164 | C07-1 1.7.4.2 | 리허설결과서,인수테스트결과서 |
| 1357 | KIRAMS8.5.4.3.3.1 | 리허설 결과 분석 및 보고(1차) | 1d | 2010-03-10 | 2010-03-10 |  | 2010-03-10 | 2010-03-10 | 1d | 132d | 0d | start no earlier than 2010-03-10 | 시범운영 실시 | 07060716O410164 | C07-1 1.7.4.2 | 리허설결과보고서 |
| 1358 | KIRAMS8.5.4.3.3.2 | 리허설 결과 조치(1차) | 2d | 2010-03-11 | 2010-03-12 | 1357 | 2010-03-11 | 2010-03-12 | 2d | 132d | 0d | start no earlier than 2010-03-11 | 시범운영 실시 | 07060716O410164 | C07-1 1.7.4.2 | 리허설결과서,리허설결과보고서 |
| 1359 | KIRAMS8.5.4.3.3.3 | 2차 리허설 실시 | 7d | 2010-03-15 | 2010-03-23 | 1358 | 2010-03-15 | 2010-03-23 | 7d | 132d |  | start no earlier than 2010-03-15 | 시범운영 실시 | 07060716O410164 | C07-1 1.7.4.2 |  |
| 1360 | KIRAMS8.5.4.3.3.4 | 기초자료 구축(2차) | 2d | 2010-03-15 | 2010-03-16 |  | 2010-03-15 | 2010-03-16 | 2d | 133d | 0d | start no earlier than 2010-03-15 | 시범운영 실시 | 07060716O410164 | C07-1 1.7.4.2 | 리허설계획서,리허설시나리오 |
| 1361 | KIRAMS8.5.4.3.3.5 | 리허설 공지 및 상황실 운영(2차) | 2d | 2010-03-17 | 2010-03-18 | 1360 | 2010-03-17 | 2010-03-18 | 2d | 133d | 0d | start no earlier than 2010-03-16 | 시범운영 실시 | 07060716O410164 | C07-1 1.7.4.2 | 리허설계획서,리허설시나리오 |
| 1362 | KIRAMS8.5.4.3.3.6 | 가상 과제 준비(2차) | 2d | 2010-03-19 | 2010-03-22 | 1361 | 2010-03-19 | 2010-03-22 | 2d | 133d |  | start no earlier than 2010-03-16 | 시범운영 실시 | 07060716O410164 | C07-1 1.7.4.2 | 리허설계획서,리허설시나리오 |
| 1363 | KIRAMS8.5.4.3.4 | **리허설 실시(2차)** | 44d | 2010-03-19 | 2010-05-20 |  | 2010-03-19 | 2010-05-20 | 44d | 91d |  |  | 시범운영 실시 | 07060716O410164 | C07-1 1.7.4.2 | 리허설결과서,인수테스트결과서 |
| 1364 | KIRAMS8.5.4.3.4.1 | 리허설 결과 분석 및 보고(2차) | 1d | 2010-03-19 | 2010-03-19 |  | 2010-03-19 | 2010-03-19 | 1d | 134d |  | start no earlier than 2010-03-19 | 시범운영 실시 | 07060716O410164 | C07-1 1.7.4.2 | 리허설결과보고서 |
| 1365 | KIRAMS8.5.4.3.4.2 | 리허설 결과 조치(2차) | 1d | 2010-03-23 | 2010-03-23 |  | 2010-03-23 | 2010-03-23 | 1d | 132d |  | start no earlier than 2010-03-23 | 시범운영 실시 | 07060716O410164 | C07-1 1.7.4.2 | 리허설결과서,리허설결과보고서 |
| 1366 | KIRAMS8.5.4.3.4.3 | 시스템 오픈(분원) | 20d | 2010-03-25 | 2010-04-21 |  | 2010-03-25 | 2010-04-21 | 20d | 91d | 0d | start no earlier than 2010-03-25 | 시범운영 실시 | 07060716O410164 | C07-1 1.7.4.2 |  |
| 1367 | KIRAMS8.5.4.3.4.4 | 오픈준비 | 5d | 2010-04-22 | 2010-04-28 | 1366 | 2010-04-22 | 2010-04-28 | 5d | 91d | 0d | start no earlier than 2010-03-25 | 시범운영 실시 | 07060716O410164 | C07-1 1.7.4.2 | 이행계획서 |
| 1368 | KIRAMS8.5.4.3.4.5 | 시스템 OPEN | 1d | 2010-04-01 | 2010-04-01 |  | 2010-04-01 | 2010-04-01 | 1d | 125d |  | start no earlier than 2010-04-01 | 시범운영 실시 | 07060716O410164 | C07-1 1.7.4.2 | 이행계획서 |
| 1369 | KIRAMS8.5.4.3.4.6 | 안정화 지원 | 15d | 2010-04-29 | 2010-05-20 | 1367 | 2010-04-29 | 2010-05-20 | 15d | 91d |  | start no earlier than 2010-04-01 | 시범운영 실시 | 07060716O410164 | C07-1 1.7.4.2 | Help Desk 일지 |

| ID | WBS | Task | Duration | Start | Finish | Predecessors | Complete | Remaining | Baseline start | Baseline finish | Baseline duration | Total slack | Free slack | Constraint | Text20 | Text25 | Text26 | 산출물 |
| --- | --- | --- | --- | --- | --- | --- | --- | --- | --- | --- | --- | --- | --- | --- | --- | --- | --- | --- |
| 1370 | 8.5.4.4 | **시스템 오픈(분원)** | 20d | 2010-03-25 | 2010-04-21 |  |  |  | 2010-03-25 | 2010-04-21 | 20d | 111d |  |  | 시범운영 | 07060716O410164 | C07-1 1.7.4 |  |
| 1371 | 8.5.4.4.1 | 오픈준비 | 5d | 2010-03-25 | 2010-03-31 |  |  |  | 2010-03-25 | 2010-03-31 | 5d | 125d | 0d | start no earlier than 2010-03-25 | 시범운영계획 수립 | 07060716O410164 | C07-1 1.7.4.1 | 이행계획서 |
| 1372 | 8.5.4.4.2 | 시스템 OPEN | 1d | 2010-04-01 | 2010-04-01 | 1371 |  |  | 2010-04-01 | 2010-04-01 | 1d | 125d |  |  | 시범운영계획 수립 | 07060716O410164 | C07-1 1.7.4.1 | 이행계획서 |
| 1373 | 8.5.4.4.3 | 안정화 지원 | 15d | 2010-04-01 | 2010-04-21 |  |  |  | 2010-04-01 | 2010-04-21 | 15d | 111d |  | finish no earlier than 2010-04-21 | 시범운영계획 수립 | 07060716O410164 | C07-1 1.7.4.1 | Help Desk 일지 |
| 1374 | KIRAMS8.6 | **안정화운영 및 종료** | 190d? | 2010-01-01 | 2010-09-30 |  |  |  | 2010-01-01 | 2010-09-30 | 190d? | 0d |  |  |  |  |  |  |
| 1375 | KIRAMS8.6.1 | 본원(서울) 안정화 운영지원 | 127d | 2010-01-01 | 2010-06-30 |  |  |  | 2010-01-01 | 2010-06-30 | 127d | 63d |  | start no earlier than 2010-01-01 | 시범운영계획 수립 | 07060716O410164 | C07-1 1.7.4.1 | Help Desk 일지 |
| 1376 | KIRAMS8.6.2 | 분원(동남권) 안정화 운영지원 | 126d? | 2010-04-01 | 2010-09-30 |  |  |  | 2010-04-01 | 2010-09-30 | 126d? | 0d |  | start no earlier than 2010-04-01 |  |  |  | Help Desk 일지 |
| 1377 | KIRAMS9 | **내부사용자포탈(그룹웨어)** | 308d? | 2009-02-11 A | 2010-04-21 |  | 7% | 287.11d? | 2009-02-11 | 2010-04-21 | 308d? | 111d |  |  |  |  |  |  |
| 1378 | KIRAMS9.1 | **그룹웨어 착수 및 계획수립** | 5d | 2009-02-11 A | 2009-02-17 A |  | 100% |  | 2009-02-11 | 2009-02-17 | 5d |  |  |  | 프로젝트 착수 | 07061114O410023 | C07-1 1.1 | 그룹웨어구축 계획서 |
| 1379 | KIRAMS9.1.1 | 그룹웨어 계획수립 | 4d | 2009-02-11 A | 2009-02-16 A |  | 100% |  | 2009-02-11 | 2009-02-16 | 4d |  |  | finish no earlier than 2009-02-16 | 착수준비 | 07061114O410024 | C07-1 1.1.1 | 그룹웨어구축 계획서 |
| 1380 | KIRAMS9.1.2 | 그룹웨어 계획수립 검토 | 2d | 2009-02-16 A | 2009-02-17 A | 1379 | 100% |  | 2009-02-16 | 2009-02-17 | 2d |  |  | start no earlier than 2009-02-16 | 착수준비 | 07061114O410024 | C07-1 1.1.1 | 그룹웨어구축 계획서 |
| 1381 | KIRAMS9.2 | **요구정의 및 분석** | 74d? | 2009-02-16 A | 2009-05-29 |  | 43% | 41.85d? | 2009-02-16 | 2009-05-29 | 74d? | 342d |  |  | 요구정의 | 07060716O410138 | C07-1 1.2 | 요구정의, 분석산출물 |
| 1382 | KIRAMS9.2.1 | ITA 산출물 분석 | 15d | 2009-02-16 A | 2009-03-06 A |  | 100% |  | 2009-02-16 | 2009-03-06 | 15d |  |  | start no earlier than 2009-02-16 | 비즈니스 모델링(AS-IS) | 07060716O410139 | C07-1 1.2.1 |  |
| 1383 | KIRAMS9.2.2 | **아키텍쳐 분석** | 8d | 2009-02-16 A | 2009-02-25 A |  | 100% |  | 2009-02-16 | 2009-02-25 | 8d |  |  |  | 인터뷰 실시 | 07060716O410139 | C07-1 1.2.1.2 |  |
| 1384 | KIRAMS9.2.2.1 | 현행시스템 분석 | 8d | 2009-02-16 A | 2009-02-25 A |  | 100% |  | 2009-02-16 | 2009-02-25 | 8d |  |  | finish no earlier than 2009-02-25 | 인터뷰 실시 | 07060716O410139 | C07-1 1.2.1.2 | 현행시스템 분석서 |
| 1385 | KIRAMS9.2.3 | **인터뷰 실시** | 10d | 2009-03-02 A | 2009-03-13 A |  | 100% |  | 2009-03-02 | 2009-03-13 | 10d |  |  |  | 인터뷰 실시 | 07060716O410139 | C07-1 1.2.1.2 |  |
| 1386 | KIRAMS9.2.3.1 | 현업 인터뷰 실시 | 10d | 2009-03-02 A | 2009-03-13 A |  | 100% |  | 2009-03-02 | 2009-03-13 | 10d |  |  | start no earlier than 2009-03-02 | 인터뷰 실시 | 07060716O410139 | C07-1 1.2.1.2 | 인터뷰 결과서 |
| 1387 | KIRAMS9.2.3.2 | 인터뷰 결과 정리 | 10d | 2009-03-02 A | 2009-03-13 A |  | 100% |  | 2009-03-02 | 2009-03-13 | 10d |  |  | finish no earlier than 2009-03-13 | 인터뷰 실시 | 07060716O410139 | C07-1 1.2.1.2 | 인터뷰 결과서 |
| 1388 | KIRAMS9.2.4 | **요구사항 정의** | 20d | 2009-03-16 A | 2009-04-10 |  | 56% | 8.89d | 2009-03-16 | 2009-04-10 | 20d | 376d |  |  | 요구사항 정의 | 07060716O410141 | C07-1 1.2.3 |  |
| 1389 | KIRAMS9.2.4.1 | 요구사항 도출/정제 | 10d | 2009-03-16 A | 2009-03-27 A |  | 100% |  | 2009-03-16 | 2009-03-27 | 10d |  |  | finish no earlier than 2009-03-27 | 요구사항 정제 | 07060716O410141 | C07-1 1.2.3.2 | 요구사항정의서 |
| 1390 | KIRAMS9.2.4.2 | 요구사항확정 | 8d | 2009-04-01 | 2009-04-10 | 1389 |  |  | 2009-04-01 | 2009-04-10 | 8d | 376d |  | start no earlier than 2009-04-01 | 요구사항확정 | 07060716O410141 | C07-1 1.2.3.5 | 요구사항정의서 |
| 1391 | KIRAMS9.2.5 | **업무분석** | 22d? | 2009-04-01 | 2009-04-30 |  |  |  | 2009-04-01 | 2009-04-30 | 22d? | 362d |  |  |  |  |  |  |
| 1392 | KIRAMS9.2.5.1 | 시스템 인터페이스 정의 | 10d? | 2009-04-13 | 2009-04-24 |  |  |  | 2009-04-13 | 2009-04-24 | 10d? | 366d |  | start no earlier than 2009-04-13 |  |  |  | 시스템인터페이스정의서 |
| 1393 | KIRAMS9.2.5.2 | 보안정책수립 | 22d? | 2009-04-01 | 2009-04-30 |  |  |  | 2009-04-01 | 2009-04-30 | 22d? | 362d |  | start no earlier than 2009-04-01 |  |  |  | 보안정책서 |

| ID | WBS | Task | Duration | Start | Finish | Baseline start | Baseline finish | Baseline duration | Total slack | Constraint | 산출물 | Text20 | Text25 | Text26 |
| --- | --- | --- | --- | --- | --- | --- | --- | --- | --- | --- | --- | --- | --- | --- |
| 1394 | KIRAMS9.2.6 | **화면분석** | 24d? | 2009-04-27 | 2009-05-29 | 2009-04-27 | 2009-05-29 | 24d? | 342d |  |  |  |  |  |
| 1395 | KIRAMS9.2.6.1 | 메뉴구조정의 | 9d? | 2009-04-27 | 2009-05-08 | 2009-04-27 | 2009-05-08 | 9d? | 357d | start no earlier than 2009-04-27 | 메뉴구조도 |  |  |  |
| 1396 | KIRAMS9.2.6.2 | 화면표준정의 | 15d? | 2009-05-11 | 2009-05-29 | 2009-05-11 | 2009-05-29 | 15d? | 342d | start no earlier than 2009-05-11 | 화면표준정의서 |  |  |  |
| 1397 | KIRAMS9.2.7 | **데이터전환분석** | 5d | 2009-03-30 | 2009-04-03 | 2009-03-30 | 2009-04-03 | 5d | 381d |  |  | 컨버전 분석 | 07060716O410146 | C07-1 1.3.4 |
| 1398 | KIRAMS9.2.7.1 | 데이터전환대상 정의 | 5d | 2009-03-30 | 2009-04-03 | 2009-03-30 | 2009-04-03 | 5d | 381d | start no earlier than 2009-03-30 | 데이터전환대상목록 | 컨버전대상 정의 | 07060716O410141 | C07-1 1.2.3.4 |
| 1399 | KIRAMS9.3 | **설계** | 66d? | 2009-06-01 | 2009-08-31 | 2009-06-01 | 2009-08-31 | 66d? | 276d |  |  | 설계 | 07060716O410151 | C07-1 1.5 |
| 1400 | KIRAMS9.3.1 | **화면 설계** | 66d | 2009-06-01 | 2009-08-31 | 2009-06-01 | 2009-08-31 | 66d | 276d |  | 보고서목록,보고서정의서,화면목록,화면정의서 | 화면 설계 | 07060716O410153 | C07-1 1.5.2 |
| 1401 | KIRAMS9.3.1.1 | 화면레이아웃 정의 | 45d | 2009-06-01 | 2009-07-31 | 2009-06-01 | 2009-07-31 | 45d | 297d | start no earlier than 2009-06-01 | 보고서목록,보고서정의서,화면목록,화면정의서 | 화면설계 | 07060716O410153 | C07-1 1.5.2.1 |
| 1402 | KIRAMS9.3.1.2 | 분류체계 컨설팅 | 44d | 2009-07-01 | 2009-08-31 | 2009-07-01 | 2009-08-31 | 44d | 276d | finish no earlier than 2009-08-31 | 컨설팅결과보고서 | 화면설계 | 07060716O410153 | C07-1 1.5.2.1 |
| 1403 | KIRAMS9.3.2 | **업무 설계** | 45d? | 2009-06-01 | 2009-07-31 | 2009-06-01 | 2009-07-31 | 45d? | 297d |  | 설계 산출물 | 업무 설계 | 07060716O410152 | C07-1 1.5.1 |
| 1404 | KIRAMS9.3.2.1 | 프로그램 설계 | 30d | 2009-06-01 | 2009-07-10 | 2009-06-01 | 2009-07-10 | 30d | 312d | finish no earlier than 2009-07-10 | 프로그램사양서 | 설계패키지 정의 | 07060716O410152 | C07-1 1.5.1.1 |
| 1405 | KIRAMS9.3.2.2 | 시스템 인터페이스 설계 | 15d? | 2009-07-13 | 2009-07-31 | 2009-07-13 | 2009-07-31 | 15d? | 297d | finish no earlier than 2009-07-31 | 시스템인터페이스정의서 |  |  |  |
| 1406 | KIRAMS9.3.3 | **데이터 전환 설계** | 23d? | 2009-07-01 | 2009-07-31 | 2009-07-01 | 2009-07-31 | 23d? | 297d |  | 데이터전환설계서,코드매핑정의서,테이블매핑정의서 |  |  |  |
| 1407 | KIRAMS9.3.3.1 | 컨버전 매핑 정의 | 23d? | 2009-07-01 | 2009-07-31 | 2009-07-01 | 2009-07-31 | 23d? | 297d | finish no earlier than 2009-07-31 | 데이터전환설계서,코드매핑정의서,테이블매핑정의서 |  |  |  |
| 1408 | KIRAMS9.3.4 | **테스트 설계** | 15d | 2009-07-13 | 2009-07-31 | 2009-07-13 | 2009-07-31 | 15d | 297d |  | 테스트계획서 | 테스트 설계 | 07060716O410156 | C07-1 1.5.5 |
| 1409 | KIRAMS9.3.4.1 | 테스트 계획 수립 | 8d | 2009-07-13 | 2009-07-22 | 2009-07-13 | 2009-07-22 | 8d | 304d | finish no earlier than 2009-07-22 | 테스트계획서 | 테스트계획 수립 | 07060716O410156 | C07-1 1.5.5.1 |
| 1410 | KIRAMS9.3.4.2 | 통합테스트 설계 | 10d | 2009-07-20 | 2009-07-31 | 2009-07-20 | 2009-07-31 | 10d | 297d | finish no earlier than 2009-07-31 | 통합테스트시나리오 | 통합테스트 설계 | 07060716O410156 | C07-1 1.5.5.3 |
| 1411 | KIRAMS9.4 | **개발** | 43d? | 2009-08-03 | 2009-09-30 | 2009-08-03 | 2009-09-30 | 43d? | 254d |  |  | 개발 | 07060716O410157 | C07-1 1.6 |
| 1412 | KIRAMS9.4.1 | 포털,SSO 커스터마이징 | 43d | 2009-08-03 | 2009-09-30 | 2009-08-03 | 2009-09-30 | 43d | 254d | start no earlier than 2009-08-03 | 소스코드 | 코딩 | 07060716O410158 | C07-1 1.6.1 |
| 1413 | KIRAMS9.4.2 | 메일,메신저 커스터마이징 | 43d? | 2009-08-03 | 2009-09-30 | 2009-08-03 | 2009-09-30 | 43d? | 254d | start no earlier than 2009-08-03 | 소스코드 |  |  |  |
| 1414 | KIRAMS9.4.3 | 전자결재 커스터마이징 | 43d? | 2009-08-03 | 2009-09-30 | 2009-08-03 | 2009-09-30 | 43d? | 254d | start no earlier than 2009-08-03 | 소스코드 |  |  |  |
| 1415 | KIRAMS9.4.4 | KMS,EDMS 커스터마이징 | 43d? | 2009-08-03 | 2009-09-30 | 2009-08-03 | 2009-09-30 | 43d? | 254d | start no earlier than 2009-08-03 | 소스코드 |  |  |  |
| 1416 | KIRAMS9.4.5 | 통합검색 커스터마이징 | 43d? | 2009-08-03 | 2009-09-30 | 2009-08-03 | 2009-09-30 | 43d? | 254d | start no earlier than 2009-08-03 | 소스코드 |  |  |  |
| 1417 | KIRAMS9.4.6 | PKI, 문서/웹보안 커스터마이징 | 43d? | 2009-08-03 | 2009-09-30 | 2009-08-03 | 2009-09-30 | 43d? | 254d | start no earlier than 2009-08-03 | 소스코드 |  |  |  |
| 1418 | KIRAMS9.4.7 | 단위테스트 실시 | 38d | 2009-08-10 | 2009-09-30 | 2009-08-10 | 2009-09-30 | 38d | 254d | finish no earlier than 2009-09-30 | 단위테스트체크리스트 | 코딩단위테스트 실시 | 07060716O410158 | C07-1 1.6.1.1 |

| ID | WBS | Task | Duration | Start | Finish | Predecessors | Baseline start | Baseline finish | Baseline duration | Total slack | Free slack | Constraint | Text20 | Text25 | Text26 | 산출물 |
| --- | --- | --- | --- | --- | --- | --- | --- | --- | --- | --- | --- | --- | --- | --- | --- | --- |
| 1419 | KIRAMS9.5 | **이행** | 142d | 2009-10-05 | 2010-04-21 |  | 2009-10-05 | 2010-04-21 | 142d | 111d |  |  | 이행 | 07060716O410160 | C07-1 1.7 |  |
| 1420 | KIRAMS9.5.1 | **교육훈련계획 수립** | 10d | 2009-10-05 | 2009-10-16 |  | 2009-10-05 | 2009-10-16 | 10d | 243d |  |  | 교육훈련계획 수립 | 07060716O410161 | C07-1 1.7.1.2 | 교육계획서 |
| 1421 | KIRAMS9.5.1.1 | 교육계획서 작성 | 5d | 2009-10-05 | 2009-10-09 |  | 2009-10-05 | 2009-10-09 | 5d | 243d | 0d | start no earlier than 2009-10-05 | 교육훈련계획 수립 | 07060716O410161 | C07-1 1.7.1.2 | 교육계획서 |
| 1422 | KIRAMS9.5.1.2 | 교육상세일정 조정 | 3d | 2009-10-12 | 2009-10-14 | 1421 | 2009-10-12 | 2009-10-14 | 3d | 243d | 0d |  | 교육훈련계획 수립 | 07060716O410161 | C07-1 1.7.1.2 | 교육계획서 |
| 1423 | KIRAMS9.5.1.3 | 교육대상자 선정 | 2d | 2009-10-15 | 2009-10-16 | 1422 | 2009-10-15 | 2009-10-16 | 2d | 243d |  |  | 교육훈련계획 수립 | 07060716O410161 | C07-1 1.7.1.2 | 교육계획서 |
| 1424 | KIRAMS9.5.2 | **시스템 사용교육** | 10d | 2009-10-19 | 2009-10-30 |  | 2009-10-19 | 2009-10-30 | 10d | 233d |  |  | 시스템 사용교육 | 07060716O410163 | C07-1 1.7.3 | 교육계획서 |
| 1425 | KIRAMS9.5.2.1 | 사용자매뉴얼 작성 | 5d | 2009-10-19 | 2009-10-23 |  | 2009-10-19 | 2009-10-23 | 5d | 238d |  | start no earlier than 2009-10-19 | 사용자매뉴얼 작성 | 07060716O410163 | C07-1 1.7.3.1 | 사용자매뉴얼 |
| 1426 | KIRAMS9.5.2.2 | 운영매뉴얼 작성 | 5d | 2009-10-19 | 2009-10-23 |  | 2009-10-19 | 2009-10-23 | 5d | 233d | 0d | start no earlier than 2009-10-19 | 운영매뉴얼 작성 | 07060716O410163 | C07-1 1.7.3.2 | 운영매뉴얼 |
| 1427 | KIRAMS9.5.2.3 | 교육훈련 실시 | 5d | 2009-10-26 | 2009-10-30 | 1426 | 2009-10-26 | 2009-10-30 | 5d | 233d |  | finish no earlier than 2009-10-30 | 교육훈련 실시 | 07060716O410163 | C07-1 1.7.3.3 | 교육대상자명단 |
| 1428 | KIRAMS9.5.3 | **본원(서울) 이행** | 80d | 2009-10-05 | 2010-01-22 |  | 2009-10-05 | 2010-01-22 | 80d | 173d |  |  | 교육훈련 실시 | 07060716O410163 | C07-1 1.7.3.3 | 이행계획서 |
| 1429 | KIRAMS9.5.3.1 | **컨버전 및 릴리이즈(본원)** | 23d | 2009-11-30 | 2009-12-31 |  | 2009-11-30 | 2009-12-31 | 23d | 190d |  |  | 컨버전 및 릴리이즈 | 07060716O410162 | C07-1 1.7.2 |  |
| 1430 | KIRAMS9.5.3.1.1 | 데이터베이스 구축 지원 및 확인 | 10d | 2009-11-30 | 2009-12-11 |  | 2009-11-30 | 2009-12-11 | 10d | 190d | 0d | start no earlier than 2009-11-30 | 데이터베이스 구축 | 07060716O410162 | C07-1 1.7.2.1 | 데이터베이스 |
| 1431 | KIRAMS9.5.3.1.2 | 소프트웨어 설치 확인 | 9d | 2009-12-14 | 2009-12-24 | 1430 | 2009-12-14 | 2009-12-24 | 9d | 190d | 0d | start no earlier than 2009-12-14 | 소프트웨어 설치 | 07060716O410162 | C07-1 1.7.2.2 | 어플리케이션 |
| 1432 | KIRAMS9.5.3.1.3 | 데이터전환 확인 | 8d | 2009-12-21 | 2009-12-31 |  | 2009-12-21 | 2009-12-31 | 8d | 190d |  | start no earlier than 2009-12-21 | 데이터 컨버전 | 07060716O410162 | C07-1 1.7.2.3 | 컨버전된 데이터 |
| 1433 | KIRAMS9.5.3.1.4 | 시스템 릴리이즈 | 4d | 2009-12-28 | 2009-12-31 | 1431 | 2009-12-28 | 2009-12-31 | 4d | 190d |  | start no earlier than 2009-12-28 | 시스템 릴리이즈 | 07060716O410162 | C07-1 1.7.2.5 | 운영시스템 |
| 1434 | KIRAMS9.5.3.2 | **테스트 실시(본원)** | 30d | 2009-10-05 | 2009-11-13 |  | 2009-10-05 | 2009-11-13 | 30d | 223d |  |  | 테스트 실시 | 07060716O410159 | C07-1 1.6.2 |  |
| 1435 | KIRAMS9.5.3.2.1 | **통합테스트 실시** | 20d | 2009-10-05 | 2009-10-30 |  | 2009-10-05 | 2009-10-30 | 20d | 233d |  |  | 통합테스트 실시 | 07060716O410159 | C07-1 1.6.2.1 |  |
| 1436 | KIRAMS9.5.3.2.1.1 | 통합테스트 환경구축 지원 | 5d | 2009-10-05 | 2009-10-09 |  | 2009-10-05 | 2009-10-09 | 5d | 248d |  | finish no earlier than 2009-10-09 | 교육훈련계획 수립 | 07060716O410161 | C07-1 1.7.1.2 | 이행계획서 |
| 1437 | KIRAMS9.5.3.2.1.2 | **1차 통합테스트** | 10d | 2009-10-12 | 2009-10-23 |  | 2009-10-12 | 2009-10-23 | 10d | 238d |  |  | 교육훈련계획 수립 | 07060716O410161 | C07-1 1.7.1.2 |  |
| 1438 | KIRAMS9.5.3.2.1.2.1 | 기초자료 구축(1차) | 2d | 2009-10-12 | 2009-10-13 |  | 2009-10-12 | 2009-10-13 | 2d | 238d | 0d | finish no earlier than 2009-10-13 | 교육훈련계획 수립 | 07060716O410161 | C07-1 1.7.1.2 | 테스트계획서 |
| 1439 | KIRAMS9.5.3.2.1.2.2 | 통합테스트 실시(1차) | 2d | 2009-10-14 | 2009-10-15 | 1438 | 2009-10-14 | 2009-10-15 | 2d | 238d | 0d |  | 교육훈련계획 수립 | 07060716O410161 | C07-1 1.7.1.2 | 결함보고서,통합테스트시나리오(결과),통합테스트결과보고서 |
| 1440 | KIRAMS9.5.3.2.1.2.3 | 통합테스트 결과 분석(1차) | 1d | 2009-10-16 | 2009-10-16 | 1439 | 2009-10-16 | 2009-10-16 | 1d | 238d | 0d |  | 교육훈련계획 수립 | 07060716O410161 | C07-1 1.7.1.2 | 결함보고서,통합테스트시나리오(결과),통합테스트결과보고서 |
| 1441 | KIRAMS9.5.3.2.1.2.4 | 통합테스트 결과 조치(1차) | 5d | 2009-10-19 | 2009-10-23 | 1440 | 2009-10-19 | 2009-10-23 | 5d | 238d |  | start no earlier than 2009-10-19 | 교육훈련계획 수립 | 07060716O410161 | C07-1 1.7.1.2 | 결함보고서,통합테스트시나리오(결과),통합테스트결과보고서 |
| 1442 | KIRAMS9.5.3.2.1.3 | **2차 통합테스트** | 7d | 2009-10-22 | 2009-10-30 |  | 2009-10-22 | 2009-10-30 | 7d | 233d |  |  | 교육훈련계획 수립 | 07060716O410161 | C07-1 1.7.1.2 |  |
| 1443 | KIRAMS9.5.3.2.1.3.1 | 기초자료 구축(2차) | 2d | 2009-10-22 | 2009-10-23 |  | 2009-10-22 | 2009-10-23 | 2d | 233d | 0d | start no earlier than 2009-10-22 | 교육훈련계획 수립 | 07060716O410161 | C07-1 1.7.1.2 | 테스트계획서 |
| 1444 | KIRAMS9.5.3.2.1.3.2 | 통합테스트 실시(2차) | 2d | 2009-10-26 | 2009-10-27 | 1443 | 2009-10-26 | 2009-10-27 | 2d | 233d | 0d |  | 교육훈련계획 수립 | 07060716O410161 | C07-1 1.7.1.2 | 결함보고서,통합테스트시나리오(결과),통합테스트결과보고서 |
| 1445 | KIRAMS9.5.3.2.1.3.3 | 통합테스트 결과 분석(2차) | 1d | 2009-10-28 | 2009-10-28 | 1444 | 2009-10-28 | 2009-10-28 | 1d | 233d | 0d |  | 교육훈련계획 수립 | 07060716O410161 | C07-1 1.7.1.2 | 결함보고서,통합테스트시나리오(결과),통합테스트결과보고서 |
| 1446 | KIRAMS9.5.3.2.1.3.4 | 통합테스트 결과 조치(2차) | 2d | 2009-10-29 | 2009-10-30 | 1445 | 2009-10-29 | 2009-10-30 | 2d | 233d |  |  | 교육훈련계획 수립 | 07060716O410161 | C07-1 1.7.1.2 | 결함보고서,통합테스트시나리오(결과),통합테스트결과보고서 |

| ID | WBS | Task | Duration | Start | Finish | Predecessors | Baseline start | Baseline finish | Baseline duration | Total slack | Free slack | Constraint | Text20 | Text25 | Text26 | 산출물 |
| --- | --- | --- | --- | --- | --- | --- | --- | --- | --- | --- | --- | --- | --- | --- | --- | --- |
| 1447 | KIRAMS9.5.3.2.2 | **시스템테스트 실시** | 5d | 2009-11-09 | 2009-11-13 |  | 2009-11-09 | 2009-11-13 | 5d | 223d |  |  | 시스템테스트 실시 | 07060716O410159 | C07-1 1.6.2.2 |  |
| 1448 | KIRAMS9.5.3.2.2.1 | 부하테스트 프로그램 지원 | 5d | 2009-11-09 | 2009-11-13 |  | 2009-11-09 | 2009-11-13 | 5d | 223d |  | start no earlier than 2009-11-09 | 시스템테스트 실시 | 07060716O410159 | C07-1 1.6.2.2 | 시스템테스트결과보고서 |
| 1449 | KIRAMS9.5.3.3 | **리허설(본원)** | 30d | 2009-11-16 | 2009-12-28 |  | 2009-11-16 | 2009-12-28 | 30d | 193d |  |  | 시범운영 | 07060716O410164 | C07-1 1.7.4 |  |
| 1450 | KIRAMS9.5.3.3.1 | 리허설 계획 수립지원(시나리오 작성) | 11d | 2009-11-16 | 2009-11-30 |  | 2009-11-16 | 2009-11-30 | 11d | 212d |  | finish no earlier than 2009-11-30 | 시범운영계획 수립 | 07060716O410164 | C07-1 1.7.4.1 | 리허설계획서,리허설시나리오 |
| 1451 | KIRAMS9.5.3.3.2 | **1차 리허설 실시** | 7d | 2009-12-01 | 2009-12-09 |  | 2009-12-01 | 2009-12-09 | 7d | 205d |  |  | 시범운영 실시 | 07060716O410164 | C07-1 1.7.4.2 |  |
| 1452 | KIRAMS9.5.3.3.2.1 | 기초자료 구축(1차) | 2d | 2009-12-01 | 2009-12-02 |  | 2009-12-01 | 2009-12-02 | 2d | 210d |  | start no earlier than 2009-12-01 | 시범운영 실시 | 07060716O410164 | C07-1 1.7.4.2 | 리허설계획서,리허설시나리오 |
| 1453 | KIRAMS9.5.3.3.2.2 | 리허설 공지 및 상황실 운영(1차) | 2d | 2009-12-01 | 2009-12-02 |  | 2009-12-01 | 2009-12-02 | 2d | 210d |  | start no earlier than 2009-12-01 | 시범운영 실시 | 07060716O410164 | C07-1 1.7.4.2 | 리허설계획서,리허설시나리오 |
| 1454 | KIRAMS9.5.3.3.2.3 | 가상환자 준비(1차) | 2d | 2009-12-01 | 2009-12-02 |  | 2009-12-01 | 2009-12-02 | 2d | 207d | 0d | start no earlier than 2009-12-01 | 시범운영 실시 | 07060716O410164 | C07-1 1.7.4.2 | 리허설계획서,리허설시나리오 |
| 1455 | KIRAMS9.5.3.3.2.4 | 리허설 실시(1차) | 1d | 2009-12-03 | 2009-12-03 | 1454 | 2009-12-03 | 2009-12-03 | 1d | 207d | 0d |  | 시범운영 실시 | 07060716O410164 | C07-1 1.7.4.2 | 리허설결과서 |
| 1456 | KIRAMS9.5.3.3.2.5 | 리허설 결과 분석 및 보고(1차) | 2d | 2009-12-04 | 2009-12-07 | 1455 | 2009-12-04 | 2009-12-07 | 2d | 207d |  |  | 시범운영 실시 | 07060716O410164 | C07-1 1.7.4.2 | 리허설결과보고서 |
| 1457 | KIRAMS9.5.3.3.2.6 | 리허설 결과 조치(1차) | 4d | 2009-12-04 | 2009-12-09 |  | 2009-12-04 | 2009-12-09 | 4d | 205d |  | finish no earlier than 2009-12-09 | 시범운영 실시 | 07060716O410164 | C07-1 1.7.4.2 | 리허설결과서,리허설결과보고서 |
| 1458 | KIRAMS9.5.3.3.3 | **2차 리허설 실시** | 8d | 2009-12-10 | 2009-12-21 |  | 2009-12-10 | 2009-12-21 | 8d | 197d |  |  | 시범운영 실시 | 07060716O410164 | C07-1 1.7.4.2 |  |
| 1459 | KIRAMS9.5.3.3.3.1 | 기초자료 구축(2차) | 2d | 2009-12-10 | 2009-12-11 |  | 2009-12-10 | 2009-12-11 | 2d | 202d | 0d | start no earlier than 2009-12-10 | 시범운영 실시 | 07060716O410164 | C07-1 1.7.4.2 | 리허설계획서,리허설시나리오 |
| 1460 | KIRAMS9.5.3.3.3.2 | 리허설 공지 및 상황실 운영(2차) | 1d | 2009-12-14 | 2009-12-14 | 1459 | 2009-12-14 | 2009-12-14 | 1d | 202d |  |  | 시범운영 실시 | 07060716O410164 | C07-1 1.7.4.2 | 리허설계획서,리허설시나리오 |
| 1461 | KIRAMS9.5.3.3.3.3 | 가상환자 준비(2차) | 1d | 2009-12-14 | 2009-12-14 |  | 2009-12-14 | 2009-12-14 | 1d | 197d | 0d | start no earlier than 2009-12-14 | 시범운영 실시 | 07060716O410164 | C07-1 1.7.4.2 | 리허설계획서,리허설시나리오 |
| 1462 | KIRAMS9.5.3.3.3.4 | 리허설 실시(2차) | 1d | 2009-12-15 | 2009-12-15 | 1461 | 2009-12-15 | 2009-12-15 | 1d | 197d | 0d |  | 시범운영 실시 | 07060716O410164 | C07-1 1.7.4.2 | 리허설결과서 |
| 1463 | KIRAMS9.5.3.3.3.5 | 리허설 결과 분석 및 보고(2차) | 1d | 2009-12-16 | 2009-12-16 | 1462 | 2009-12-16 | 2009-12-16 | 1d | 197d | 0d |  | 시범운영 실시 | 07060716O410164 | C07-1 1.7.4.2 | 리허설결과보고서 |
| 1464 | KIRAMS9.5.3.3.3.6 | 리허설 결과 조치(2차) | 3d | 2009-12-17 | 2009-12-21 | 1463 | 2009-12-17 | 2009-12-21 | 3d | 197d |  | start no earlier than 2009-12-17 | 시범운영 실시 | 07060716O410164 | C07-1 1.7.4.2 | 리허설결과서,리허설결과보고서 |
| 1465 | KIRAMS9.5.3.3.4 | 병행운영(인수테스트) | 5d | 2009-12-21 | 2009-12-28 |  | 2009-12-21 | 2009-12-28 | 5d | 193d |  | finish no earlier than 2009-12-28 | 안정화 및 유지보수 | 08100808O000000 | C07-1 1.7.5 | 인수테스트결괴서 |
| 1466 | KIRAMS9.5.3.4 | **시스템 오픈(본원)** | 21d | 2009-12-28 | 2010-01-22 |  | 2009-12-28 | 2010-01-22 | 21d | 173d |  |  | 시범운영 | 07060716O410164 | C07-1 1.7.4 |  |
| 1467 | KIRAMS9.5.3.4.1 | 오픈준비 | 4d | 2009-12-28 | 2009-12-31 |  | 2009-12-28 | 2009-12-31 | 4d | 189d | 0d | finish no earlier than 2009-12-31 | 시범운영계획 수립 | 07060716O410164 | C07-1 1.7.4.1 | 이행계획서 |
| 1468 | KIRAMS9.5.3.4.2 | 시스템 OPEN | 1d | 2010-01-01 | 2010-01-01 | 1467 | 2010-01-01 | 2010-01-01 | 1d | 189d |  |  | 시범운영계획 수립 | 07060716O410164 | C07-1 1.7.4.1 | 이행계획서 |
| 1469 | KIRAMS9.5.3.4.3 | 안정화 지원 | 16d | 2010-01-02 | 2010-01-22 |  | 2010-01-02 | 2010-01-22 | 16d | 173d |  | finish no earlier than 2010-01-22 | 시범운영계획 수립 | 07060716O410164 | C07-1 1.7.4.1 | Help Desk 일지 |
| 1470 | KIRAMS9.5.4 | **분원(동남권) 이행** | 67d | 2010-01-18 | 2010-04-21 |  | 2010-01-18 | 2010-04-21 | 67d | 111d |  |  | 교육훈련 실시 | 07060716O410163 | C07-1 1.7.3.3 | 이행계획서 |
| 1471 | KIRAMS9.5.4.1 | **릴리이즈(분원)** | 47d | 2010-01-25 | 2010-03-31 |  | 2010-01-25 | 2010-03-31 | 47d | 126d |  |  | 컨버전 및 릴리이즈 | 07060716O410162 | C07-1 1.7.2 |  |
| 1472 | KIRAMS9.5.4.1.1 | 데이터베이스 구축 지원 및 확인 | 10d | 2010-01-25 | 2010-02-05 |  | 2010-01-25 | 2010-02-05 | 10d | 163d |  | start no earlier than 2010-01-25 | 데이터베이스 구축 | 07060716O410162 | C07-1 1.7.2.1 | 데이터베이스 |
| 1473 | KIRAMS9.5.4.1.2 | 소프트웨어 설치 확인 | 10d | 2010-01-25 | 2010-02-05 |  | 2010-01-25 | 2010-02-05 | 10d | 163d |  | finish no earlier than 2010-02-05 | 소프트웨어 설치 | 07060716O410162 | C07-1 1.7.2.2 | 어플리케이션 |
| 1474 | KIRAMS9.5.4.1.3 | 기초 데이터 생성 | 39d | 2010-02-01 | 2010-03-26 |  | 2010-02-01 | 2010-03-26 | 39d | 129d |  | finish no earlier than 2010-03-26 | 데이터 컨버전 | 07060716O410162 | C07-1 1.7.2.3 | 기초 데이터 |
| 1475 | KIRAMS9.5.4.1.4 | 시스템 릴리이즈 | 3d | 2010-03-29 | 2010-03-31 |  | 2010-03-29 | 2010-03-31 | 3d | 126d |  | finish no earlier than 2010-03-31 | 시스템 릴리이즈 | 07060716O410162 | C07-1 1.7.2.5 | 운영시스템 |

| ID | WBS | Task | Duration | Start | Finish | Predecessors | Baseline start | Baseline finish | Baseline duration | Total slack | Free slack | Constraint | Text20 | Text25 | Text26 | 산출물 |
| --- | --- | --- | --- | --- | --- | --- | --- | --- | --- | --- | --- | --- | --- | --- | --- | --- |
| 1476 | KIRAMS9.5.4.2 | **테스트 실시(분원)** | 15d | 2010-01-18 | 2010-02-05 |  | 2010-01-18 | 2010-02-05 | 15d | 163d |  |  | 테스트 실시 | 07060716O410159 | C07-1 1.6.2 |  |
| 1477 | KIRAMS9.5.4.2.1 | **통합테스트 실시** | 12d | 2010-01-18 | 2010-02-02 |  | 2010-01-18 | 2010-02-02 | 12d | 166d |  |  | 통합테스트 실시 | 07060716O410159 | C07-1 1.6.2.1 |  |
| 1478 | KIRAMS9.5.4.2.1.1 | 통합테스트 환경구축 지원 | 5d | 2010-01-18 | 2010-01-22 |  | 2010-01-18 | 2010-01-22 | 5d | 173d |  | start no earlier than 2010-01-18 | 교육훈련계획 수립 | 07060716O410161 | C07-1 1.7.1.2 | 이행계획서 |
| 1479 | KIRAMS9.5.4.2.1.2 | **통합테스트** | 7d | 2010-01-25 | 2010-02-02 |  | 2010-01-25 | 2010-02-02 | 7d | 166d |  |  | 교육훈련계획 수립 | 07060716O410161 | C07-1 1.7.1.2 |  |
| 1480 | KIRAMS9.5.4.2.1.2.1 | 기초자료 구축 | 2d | 2010-01-25 | 2010-01-26 |  | 2010-01-25 | 2010-01-26 | 2d | 169d | 0d | start no earlier than 2010-01-25 | 교육훈련계획 수립 | 07060716O410161 | C07-1 1.7.1.2 | 테스트계획서 |
| 1481 | KIRAMS9.5.4.2.1.2.2 | 통합테스트 실시 | 2d | 2010-01-27 | 2010-01-28 | 1480 | 2010-01-27 | 2010-01-28 | 2d | 169d |  |  | 교육훈련계획 수립 | 07060716O410161 | C07-1 1.7.1.2 | 결함보고서,통합테스트시나리오(결과),통합테스트결과보고서 |
| 1482 | KIRAMS9.5.4.2.1.2.3 | 통합테스트 결과 분석 | 1d | 2010-01-28 | 2010-01-28 |  | 2010-01-28 | 2010-01-28 | 1d | 166d | 0d | start no earlier than 2010-01-28 | 교육훈련계획 수립 | 07060716O410161 | C07-1 1.7.1.2 | 결함보고서,통합테스트시나리오(결과),통합테스트결과보고서 |
| 1483 | KIRAMS9.5.4.2.1.2.4 | 통합테스트 결과 조치 | 3d | 2010-01-29 | 2010-02-02 | 1482 | 2010-01-29 | 2010-02-02 | 3d | 166d |  |  | 교육훈련계획 수립 | 07060716O410161 | C07-1 1.7.1.2 | 결함보고서,통합테스트시나리오(결과),통합테스트결과보고서 |
| 1484 | KIRAMS9.5.4.2.2 | **시스템테스트 실시 지원** | 5d | 2010-02-01 | 2010-02-05 |  | 2010-02-01 | 2010-02-05 | 5d | 163d |  |  | 시스템테스트 실시 | 07060716O410159 | C07-1 1.6.2.2 |  |
| 1485 | KIRAMS9.5.4.2.2.1 | 부하테스트 프로그램 지원 | 5d | 2010-02-01 | 2010-02-05 |  | 2010-02-01 | 2010-02-05 | 5d | 163d |  | start no earlier than 2010-02-01 | 시스템테스트 실시 | 07060716O410159 | C07-1 1.6.2.2 | 시스템테스트결과보고서 |
| 1486 | KIRAMS9.5.4.3 | **리허설-인수테스트(분원)** | 31d | 2010-02-08 | 2010-03-23 |  | 2010-02-08 | 2010-03-23 | 31d | 132d |  |  | 시범운영 | 07060716O410164 | C07-1 1.7.4 |  |
| 1487 | KIRAMS9.5.4.3.1 | 리허설 계획 수립지원(시나리오 작성) | 9d | 2010-02-08 | 2010-02-19 |  | 2010-02-08 | 2010-02-19 | 9d | 154d |  | start no earlier than 2010-02-08 | 시범운영계획 수립 | 07060716O410164 | C07-1 1.7.4.1 | 리허설계획서,리허설시나리오 |
| 1488 | KIRAMS9.5.4.3.2 | **1차 리허설 실시** | 10d | 2010-03-01 | 2010-03-12 |  | 2010-03-01 | 2010-03-12 | 10d | 139d |  |  | 시범운영 실시 | 07060716O410164 | C07-1 1.7.4.2 |  |
| 1489 | KIRAMS9.5.4.3.2.1 | 기초자료 구축(1차) | 2d | 2010-03-01 | 2010-03-02 |  | 2010-03-01 | 2010-03-02 | 2d | 143d | 0d | start no earlier than 2010-03-01 | 시범운영 실시 | 07060716O410164 | C07-1 1.7.4.2 | 리허설계획서,리허설시나리오 |
| 1490 | KIRAMS9.5.4.3.2.2 | 리허설 공지 및 상황실 운영(1차) | 2d | 2010-03-03 | 2010-03-04 | 1489 | 2010-03-03 | 2010-03-04 | 2d | 143d | 0d |  | 시범운영 실시 | 07060716O410164 | C07-1 1.7.4.2 | 리허설계획서,리허설시나리오 |
| 1491 | KIRAMS9.5.4.3.2.3 | 가상환자 준비(1차) | 2d | 2010-03-05 | 2010-03-08 | 1490 | 2010-03-05 | 2010-03-08 | 2d | 143d |  |  | 시범운영 실시 | 07060716O410164 | C07-1 1.7.4.2 | 리허설계획서,리허설시나리오 |
| 1492 | KIRAMS9.5.4.3.2.4 | 리허설 실시(1차) | 1d | 2010-03-09 | 2010-03-09 |  | 2010-03-09 | 2010-03-09 | 1d | 139d | 0d | start no earlier than 2010-03-09 | 시범운영 실시 | 07060716O410164 | C07-1 1.7.4.2 | 리허설결과서,인수테스트결과서 |
| 1493 | KIRAMS9.5.4.3.2.5 | 리허설 결과 분석 및 보고(1차) | 1d | 2010-03-10 | 2010-03-10 | 1492 | 2010-03-10 | 2010-03-10 | 1d | 139d | 0d |  | 시범운영 실시 | 07060716O410164 | C07-1 1.7.4.2 | 리허설결과보고서 |
| 1494 | KIRAMS9.5.4.3.2.6 | 리허설 결과 조치(1차) | 2d | 2010-03-11 | 2010-03-12 | 1493 | 2010-03-11 | 2010-03-12 | 2d | 139d |  |  | 시범운영 실시 | 07060716O410164 | C07-1 1.7.4.2 | 리허설결과서,리허설결과보고서 |
| 1495 | KIRAMS9.5.4.3.3 | **2차 리허설 실시** | 7d | 2010-03-15 | 2010-03-23 |  | 2010-03-15 | 2010-03-23 | 7d | 132d |  |  | 시범운영 실시 | 07060716O410164 | C07-1 1.7.4.2 |  |
| 1496 | KIRAMS9.5.4.3.3.1 | 기초자료 구축(2차) | 2d | 2010-03-15 | 2010-03-16 |  | 2010-03-15 | 2010-03-16 | 2d | 137d |  | start no earlier than 2010-03-15 | 시범운영 실시 | 07060716O410164 | C07-1 1.7.4.2 | 리허설계획서,리허설시나리오 |
| 1497 | KIRAMS9.5.4.3.3.2 | 리허설 공지 및 상황실 운영(2차) | 2d | 2010-03-16 | 2010-03-17 |  | 2010-03-16 | 2010-03-17 | 2d | 136d |  | start no earlier than 2010-03-16 | 시범운영 실시 | 07060716O410164 | C07-1 1.7.4.2 | 리허설계획서,리허설시나리오 |
| 1498 | KIRAMS9.5.4.3.3.3 | 가상환자 준비(2차) | 2d | 2010-03-16 | 2010-03-17 |  | 2010-03-16 | 2010-03-17 | 2d | 134d | 0d | start no earlier than 2010-03-16 | 시범운영 실시 | 07060716O410164 | C07-1 1.7.4.2 | 리허설계획서,리허설시나리오 |
| 1499 | KIRAMS9.5.4.3.3.4 | 리허설 실시(2차) | 1d | 2010-03-18 | 2010-03-18 | 1498 | 2010-03-18 | 2010-03-18 | 1d | 134d | 2d |  | 시범운영 실시 | 07060716O410164 | C07-1 1.7.4.2 | 리허설결과서,인수테스트결과서 |
| 1500 | KIRAMS9.5.4.3.3.5 | 리허설 결과 분석 및 보고(2차) | 1d | 2010-03-19 | 2010-03-19 |  | 2010-03-19 | 2010-03-19 | 1d | 134d |  | start no earlier than 2010-03-19 | 시범운영 실시 | 07060716O410164 | C07-1 1.7.4.2 | 리허설결과보고서 |
| 1501 | KIRAMS9.5.4.3.3.6 | 리허설 결과 조치(2차) | 1d | 2010-03-23 | 2010-03-23 | 1499 | 2010-03-23 | 2010-03-23 | 1d | 132d |  | finish no earlier than 2010-03-23 | 시범운영 실시 | 07060716O410164 | C07-1 1.7.4.2 | 리허설결과서,리허설결과보고서 |

| ID | WBS | Task | Duration | Start | Finish | Predecessors | Complete | Remaining | Baseline start | Baseline finish | Baseline duration | Total slack | Free slack | Constraint | Text20 | Text25 | Text26 | 산출물 |
| --- | --- | --- | --- | --- | --- | --- | --- | --- | --- | --- | --- | --- | --- | --- | --- | --- | --- | --- |
| 1502 | KIRAMS9.5.4.4 | **시스템 오픈(분원)** | 20d | 2010-03-25 | 2010-04-21 |  |  |  | 2010-03-25 | 2010-04-21 | 20d | 111d |  |  | 시범운영 | 07060716O410164 | C07-1 1.7.4 |  |
| 1503 | KIRAMS9.5.4.4.1 | 오픈준비 | 5d | 2010-03-25 | 2010-03-31 |  |  |  | 2010-03-25 | 2010-03-31 | 5d | 125d | 0d | start no earlier than 2010-03-25 | 시범운영계획 수립 | 07060716O410164 | C07-1 1.7.4.1 | 이행계획서 |
| 1504 | KIRAMS9.5.4.4.2 | 시스템 OPEN | 1d | 2010-04-01 | 2010-04-01 | 1503 |  |  | 2010-04-01 | 2010-04-01 | 1d | 125d |  |  | 시범운영계획 수립 | 07060716O410164 | C07-1 1.7.4.1 | 이행계획서 |
| 1505 | KIRAMS9.5.4.4.3 | 안정화 지원 | 15d | 2010-04-01 | 2010-04-21 |  |  |  | 2010-04-01 | 2010-04-21 | 15d | 111d |  | finish no earlier than 2010-04-21 | 시범운영계획 수립 | 07060716O410164 | C07-1 1.7.4.1 | Help Desk 일지 |
| 1506 | KIRAMS10 | **영상 EMR 모듈 컨트롤** | 282d | 2009-03-09 A | 2010-04-09 |  | 1% | 279.95d | 2009-03-09 | 2010-04-09 | 282d | 119d |  |  |  |  |  |  |
| 1507 | KIRAMS10.1 | **요구정의** | 44d | 2009-03-09 A | 2009-05-08 |  | 6% | 41.24d | 2009-03-09 | 2009-05-08 | 44d | 357d |  |  | 요구정의 | 07060716O410138 | C07-1 1.2 | 요구정의 |
| 1508 | KIRAMS10.1.1 | **인터뷰 실시** | 27d | 2009-03-09 A | 2009-04-14 |  | 19% | 22d | 2009-03-09 | 2009-04-03 | 20d | 374d |  |  | 인터뷰 실시 | 07060716O410139 | C07-1 1.2.1.2 |  |
| 1509 | KIRAMS10.1.1.1 | 현행시스템 분석 (영상 EMR담당자) | 5d | 2009-03-09 A | 2009-03-13 |  | 50% | 2.5d | 2009-03-09 | 2009-03-13 | 5d | 385.2d | 0d | finish no earlier than 2009-03-13 | 인터뷰 실시 | 07060716O410139 | C07-1 1.2.1.2 | 인터뷰 결과서 |
| 1510 | KIRAMS10.1.1.2 | 종합정보 시스템 개발팀과 협의 | 12d | 2009-03-16 A | 2009-04-14 | 1509 | 10% | 10.8d | 2009-03-16 | 2009-03-31 | 12d | 374d |  | finish no earlier than 2009-03-31 | 인터뷰 실시 | 07060716O410139 | C07-1 1.2.1.2 | 회의록 |
| 1511 | KIRAMS10.1.1.3 | 인터뷰 결과 정리 | 3d | 2009-04-01 | 2009-04-03 |  |  |  | 2009-04-01 | 2009-04-03 | 3d | 381d |  | start no earlier than 2009-04-01 | 인터뷰 실시 | 07060716O410139 | C07-1 1.2.1.2 | 인터뷰 결과서 |
| 1512 | KIRAMS10.1.2 | **요구사항 정의** | 39d | 2009-03-16 | 2009-05-08 |  |  |  | 2009-03-16 | 2009-05-08 | 39d | 357d |  |  | 요구사항 정의 | 07060716O410141 | C07-1 1.2.3 |  |
| 1513 | KIRAMS10.1.2.1 | 요구사항 도출/정제 | 25d | 2009-03-16 | 2009-04-17 |  |  |  | 2009-03-16 | 2009-04-17 | 25d | 371d |  | finish no earlier than 2009-04-17 | 요구사항 정제 | 07060716O410141 | C07-1 1.2.3.2 | 요구사항정의서 |
| 1514 | KIRAMS10.1.2.2 | 요구사항확정 | 14d | 2009-04-20 | 2009-05-08 |  |  |  | 2009-04-20 | 2009-05-08 | 14d | 357d |  | start no earlier than 2009-04-20 | 요구사항확정 | 07060716O410141 | C07-1 1.2.3.5 | 요구사항정의서 |
| 1515 | KIRAMS10.2 | **분석** | 24d | 2009-04-06 | 2009-05-08 |  |  |  | 2009-04-06 | 2009-05-08 | 24d | 357d |  |  | 분석 | 07060716O410142 | C07-1 1.3 | 분석산출물 |
| 1516 | KIRAMS10.2.1 | **아키텍처분석** | 24d | 2009-04-06 | 2009-05-08 |  |  |  | 2009-04-06 | 2009-05-08 | 24d | 357d |  |  | 아키텍처 정의 | 07060716O410147 | C07-1 1.4 |  |
| 1517 | KIRAMS10.2.1.1 | 종합정보시스템 분석 | 24d | 2009-04-06 | 2009-05-08 |  |  |  | 2009-04-06 | 2009-05-08 | 24d | 357d |  | start no earlier than 2009-04-06 | 현행시스템 분석 | 07060716O410148 | C07-1 1.4.1.1 | 현행시스템분석서 |
| 1518 | KIRAMS10.3 | **설계** | 11d | 2009-04-20 | 2009-05-04 |  |  |  | 2009-04-20 | 2009-05-04 | 11d | 360d |  |  | 설계 | 07060716O410151 | C07-1 1.5 |  |
| 1519 | KIRAMS10.3.1 | **업무 설계** | 10d | 2009-04-20 | 2009-05-01 |  |  |  | 2009-04-20 | 2009-05-01 | 10d | 361d |  |  | 업무 설계 | 07060716O410152 | C07-1 1.5.1 | 설계 산출물 |
| 1520 | KIRAMS10.3.1.1 | 시스템인터페이스 설계 | 10d | 2009-04-20 | 2009-05-01 |  |  |  | 2009-04-20 | 2009-05-01 | 10d | 361d |  | finish no earlier than 2009-05-01 | 배포구조 정의 | 07060716O410152 | C07-1 1.5.1.4 | 시스템 인터페이스 정의서 |
| 1521 | KIRAMS10.3.2 | **테스트 설계** | 6d | 2009-04-27 | 2009-05-04 |  |  |  | 2009-04-27 | 2009-05-04 | 6d | 360d |  |  | 테스트 설계 | 07060716O410156 | C07-1 1.5.5 | 테스트계획서 |
| 1522 | KIRAMS10.3.2.1 | 테스트 계획 수립 | 6d | 2009-04-27 | 2009-05-04 |  |  |  | 2009-04-27 | 2009-05-04 | 6d | 360d |  | start no earlier than 2009-04-27 | 테스트계획 수립 | 07060716O410156 | C07-1 1.5.5.1 | 테스트계획서 |
| 1523 | KIRAMS10.3.2.2 | 통합테스트 설계 | 6d | 2009-04-27 | 2009-05-04 |  |  |  | 2009-04-27 | 2009-05-04 | 6d | 360d |  | finish no earlier than 2009-05-04 | 통합테스트 설계 | 07060716O410156 | C07-1 1.5.5.3 | 테스트계획서 |
| 1524 | KIRAMS10.4 | **개발** | 104d | 2009-05-11 | 2009-10-01 |  |  |  | 2009-05-11 | 2009-10-01 | 104d | 253d |  |  | 개발 | 07060716O410157 | C07-1 1.6 |  |
| 1525 | KIRAMS10.4.1 | 프로그램 개발 | 60d | 2009-05-11 | 2009-07-31 |  |  |  | 2009-05-11 | 2009-07-31 | 60d | 287d | 0d | start no earlier than 2009-05-11 | 코딩 | 07060716O410158 | C07-1 1.6.1 |  |
| 1526 | KIRAMS10.4.2 | 단위테스트 실시 | 10d | 2009-08-03 | 2009-08-14 | 1525 |  |  | 2009-08-03 | 2009-08-14 | 10d | 287d |  | finish no earlier than 2009-08-14 | 코딩단위테스트 실시 | 07060716O410158 | C07-1 1.6.1.1 | 단위테스트체크리스트[결과],소스코드,테스트코드 |
| 1527 | KIRAMS10.4.3 | 통합빌드 | 94d | 2009-05-25 | 2009-10-01 |  |  |  | 2009-05-25 | 2009-10-01 | 94d | 253d |  | finish no earlier than 2009-10-01 | 통합빌드 | 07060716O410158 | C07-1 1.6.1.2 | 배포파일 |

| ID | WBS | Task | Duration | Start | Finish | Predecessors | Baseline start | Baseline finish | Baseline duration | Total slack | Free slack | Constraint | Text20 | Text25 | Text26 | 산출물 |
| --- | --- | --- | --- | --- | --- | --- | --- | --- | --- | --- | --- | --- | --- | --- | --- | --- |
| 1528 | KIRAMS10.5 | **이행** | 153d | 2009-09-07 | 2010-04-09 |  | 2009-09-07 | 2010-04-09 | 153d | 119d |  |  | 이행 | 07060716O410160 | C07-1 1.7 |  |
| 1529 | KIRAMS10.5.1 | **교육훈련계획 수립** | 18d | 2009-09-07 | 2009-09-30 |  | 2009-09-07 | 2009-09-30 | 18d | 254d |  |  | 교육훈련계획 수립 | 07060716O410161 | C07-1 1.7.1.2 | 교육계획서 |
| 1530 | KIRAMS10.5.1.1 | 교육계획 수립 | 10d | 2009-09-07 | 2009-09-18 |  | 2009-09-07 | 2009-09-18 | 10d | 259d | 5d | finish no earlier than 2009-09-18 | 교육훈련계획 수립 | 07060716O410161 | C07-1 1.7.1.2 | 교육계획서 |
| 1531 | KIRAMS10.5.1.2 | 교육준비 | 3d | 2009-09-28 | 2009-09-30 | 1530 | 2009-09-28 | 2009-09-30 | 3d | 254d |  | finish no earlier than 2009-09-30 | 교육훈련계획 수립 | 07060716O410161 | C07-1 1.7.1.2 | 교육계획서 |
| 1532 | KIRAMS10.5.2 | **시스템 사용교육** | 35d | 2009-10-05 | 2009-11-20 |  | 2009-10-05 | 2009-11-20 | 35d | 218d |  |  | 시스템 사용교육 | 07060716O410163 | C07-1 1.7.3 |  |
| 1533 | KIRAMS10.5.2.1 | 사용자매뉴얼 작성 | 10d | 2009-10-05 | 2009-10-16 |  | 2009-10-05 | 2009-10-16 | 10d | 243d |  | finish no earlier than 2009-10-16 | 사용자매뉴얼 작성 | 07060716O410163 | C07-1 1.7.3.1 | 사용자매뉴얼 |
| 1534 | KIRAMS10.5.2.2 | 운영매뉴얼 작성 | 10d | 2009-10-05 | 2009-10-16 |  | 2009-10-05 | 2009-10-16 | 10d | 218d | 0d | start no earlier than 2009-10-05 | 운영매뉴얼 작성 | 07060716O410163 | C07-1 1.7.3.2 | 운영매뉴얼 |
| 1535 | KIRAMS10.5.2.3 | 교육훈련 실시 | 25d | 2009-10-19 | 2009-11-20 | 1534 | 2009-10-19 | 2009-11-20 | 25d | 218d |  | start no earlier than 2009-10-19 | 교육훈련 실시 | 07060716O410163 | C07-1 1.7.3.3 | 교육결과서,교육교재 |
| 1536 | KIRAMS10.5.3 | **본원(서울) 이행** | 69d | 2009-10-05 | 2010-01-07 |  | 2009-10-05 | 2010-01-07 | 69d | 184d |  |  | 교육훈련 실시 | 07060716O410163 | C07-1 1.7.3.3 | 이행계획서 |
| 1537 | KIRAMS10.5.3.1 | **컨버전 및 릴리이즈(본원)** | 43d | 2009-11-02 | 2009-12-31 |  | 2009-11-02 | 2009-12-31 | 43d | 190d |  |  | 컨버전 및 릴리이즈 | 07060716O410162 | C07-1 1.7.2 |  |
| 1538 | KIRAMS10.5.3.1.1 | 데이터베이스 구축 | 10d | 2009-11-02 | 2009-11-13 |  | 2009-11-02 | 2009-11-13 | 10d | 210d | 20d | finish no earlier than 2009-11-13 | 데이터베이스 구축 | 07060716O410162 | C07-1 1.7.2.1 | 데이터베이스 |
| 1539 | KIRAMS10.5.3.1.2 | 소프트웨어 설치 | 9d | 2009-12-14 | 2009-12-24 | 1538 | 2009-12-14 | 2009-12-24 | 9d | 190d | 0d | start no earlier than 2009-12-14 | 소프트웨어 설치 | 07060716O410162 | C07-1 1.7.2.2 | 어플리케이션 |
| 1540 | KIRAMS10.5.3.1.3 | 인수테스트 실시 | 5d | 2009-12-14 | 2009-12-18 |  | 2009-12-14 | 2009-12-18 | 5d | 198d |  | finish no earlier than 2009-12-18 | 인수테스트 실시 | 07060716O410162 | C07-1 1.7.2.4 | 결함보고서,인수테스트결과 |
| 1541 | KIRAMS10.5.3.1.4 | 시스템 릴리이즈 | 4d | 2009-12-28 | 2009-12-31 | 1539 | 2009-12-28 | 2009-12-31 | 4d | 190d |  | start no earlier than 2009-12-28 | 시스템 릴리이즈 | 07060716O410162 | C07-1 1.7.2.5 | 운영시스템 |
| 1542 | KIRAMS10.5.3.2 | **테스트 실시(본원)** | 30d | 2009-10-05 | 2009-11-13 |  | 2009-10-05 | 2009-11-13 | 30d | 223d |  |  | 테스트 실시 | 07060716O410159 | C07-1 1.6.2 |  |
| 1543 | KIRAMS10.5.3.2.1 | **통합테스트 실시** | 30d | 2009-10-05 | 2009-11-13 |  | 2009-10-05 | 2009-11-13 | 30d | 223d |  |  | 통합테스트 실시 | 07060716O410159 | C07-1 1.6.2.1 | 결함보고서,통합테스트결과보고서,통합테스트시나리오[결과] |
| 1544 | KIRAMS10.5.3.2.1.1 | 통합테스트 환경구축 | 5d | 2009-10-05 | 2009-10-09 |  | 2009-10-05 | 2009-10-09 | 5d | 248d |  | finish no earlier than 2009-10-09 | 교육훈련계획 수립 | 07060716O410161 | C07-1 1.7.1.2 | 테스트계획서 |
| 1545 | KIRAMS10.5.3.2.1.2 | **1차 통합테스트** | 10d | 2009-10-12 | 2009-10-23 |  | 2009-10-12 | 2009-10-23 | 10d | 238d |  |  | 교육훈련계획 수립 | 07060716O410161 | C07-1 1.7.1.2 |  |
| 1546 | KIRAMS10.5.3.2.1.2.1 | 기초자료 구축(1차) | 2d | 2009-10-12 | 2009-10-13 |  | 2009-10-12 | 2009-10-13 | 2d | 238d | 0d | finish no earlier than 2009-10-13 | 교육훈련계획 수립 | 07060716O410161 | C07-1 1.7.1.2 | 테스트계획서 |
| 1547 | KIRAMS10.5.3.2.1.2.2 | 통합테스트 실시(1차) | 2d | 2009-10-14 | 2009-10-15 | 1546 | 2009-10-14 | 2009-10-15 | 2d | 238d | 0d |  | 교육훈련계획 수립 | 07060716O410161 | C07-1 1.7.1.2 | 테스트계획서 |
| 1548 | KIRAMS10.5.3.2.1.2.3 | 통합테스트 결과 분석(1차) | 1d | 2009-10-16 | 2009-10-16 | 1547 | 2009-10-16 | 2009-10-16 | 1d | 238d | 0d |  | 교육훈련계획 수립 | 07060716O410161 | C07-1 1.7.1.2 | 테스트계획서 |
| 1549 | KIRAMS10.5.3.2.1.2.4 | 통합테스트 결과 조치(1차) | 5d | 2009-10-19 | 2009-10-23 | 1548 | 2009-10-19 | 2009-10-23 | 5d | 238d |  | start no earlier than 2009-10-19 | 교육훈련계획 수립 | 07060716O410161 | C07-1 1.7.1.2 | 테스트계획서 |
| 1550 | KIRAMS10.5.3.2.1.3 | **2차 통합테스트** | 7d | 2009-10-22 | 2009-10-30 |  | 2009-10-22 | 2009-10-30 | 7d | 233d |  |  | 교육훈련계획 수립 | 07060716O410161 | C07-1 1.7.1.2 |  |
| 1551 | KIRAMS10.5.3.2.1.3.1 | 기초자료 구축(2차) | 2d | 2009-10-22 | 2009-10-23 |  | 2009-10-22 | 2009-10-23 | 2d | 233d | 0d | start no earlier than 2009-10-22 | 교육훈련계획 수립 | 07060716O410161 | C07-1 1.7.1.2 | 테스트계획서 |
| 1552 | KIRAMS10.5.3.2.1.3.2 | 통합테스트 실시(2차) | 2d | 2009-10-26 | 2009-10-27 | 1551 | 2009-10-26 | 2009-10-27 | 2d | 233d | 0d |  | 교육훈련계획 수립 | 07060716O410161 | C07-1 1.7.1.2 | 테스트계획서 |
| 1553 | KIRAMS10.5.3.2.1.3.3 | 통합테스트 결과 분석(2차) | 1d | 2009-10-28 | 2009-10-28 | 1552 | 2009-10-28 | 2009-10-28 | 1d | 233d | 0d |  | 교육훈련계획 수립 | 07060716O410161 | C07-1 1.7.1.2 | 테스트계획서 |
| 1554 | KIRAMS10.5.3.2.1.3.4 | 통합테스트 결과 조치(2차) | 2d | 2009-10-29 | 2009-10-30 | 1553 | 2009-10-29 | 2009-10-30 | 2d | 233d |  |  | 교육훈련계획 수립 | 07060716O410161 | C07-1 1.7.1.2 | 테스트계획서 |

| ID | WBS | Task | Duration | Start | Finish | Predecessors | Baseline start | Baseline finish | Baseline duration | Total slack | Free slack | Constraint | Text20 | Text25 | Text26 | 산출물 |
| --- | --- | --- | --- | --- | --- | --- | --- | --- | --- | --- | --- | --- | --- | --- | --- | --- |
| 1555 | KIRAMS10.5.3.2.1.4 | **시스템테스트 실시** | 10d | 2009-11-02 | 2009-11-13 |  | 2009-11-02 | 2009-11-13 | 10d | 223d |  |  | 시스템테스트 실시 | 07060716O410159 | C07-1 1.6.2.2 | 결함보고서,시스템테스트결과보고서 |
| 1556 | KIRAMS10.5.3.2.1.4.1 | 시스템테스트 환경점검 | 5d | 2009-11-02 | 2009-11-06 |  | 2009-11-02 | 2009-11-06 | 5d | 223d | 0d | start no earlier than 2009-11-02 | 시스템테스트 실시 | 07060716O410159 | C07-1 1.6.2.2 | 테스트계획서 |
| 1557 | KIRAMS10.5.3.2.1.4.2 | 장애복구 테스트 | 1d | 2009-11-09 | 2009-11-09 | 1556 | 2009-11-09 | 2009-11-09 | 1d | 223d | 0d |  | 시스템테스트 실시 | 07060716O410159 | C07-1 1.6.2.2 | 결함보고서,시스템테스트결과보고서 |
| 1558 | KIRAMS10.5.3.2.1.4.3 | 부하 테스트 | 4d | 2009-11-10 | 2009-11-13 | 1557 | 2009-11-10 | 2009-11-13 | 4d | 223d |  |  | 시스템테스트 실시 | 07060716O410159 | C07-1 1.6.2.2 | 결함보고서,시스템테스트결과보고서 |
| 1559 | KIRAMS10.5.3.3 | **리허설(본원)** | 19d | 2009-12-01 | 2009-12-28 |  | 2009-12-01 | 2009-12-28 | 19d | 193d |  |  | 시범운영 | 07060716O410164 | C07-1 1.7.4 |  |
| 1560 | KIRAMS10.5.3.3.1 | **1차 리허설 실시** | 7d | 2009-12-01 | 2009-12-09 |  | 2009-12-01 | 2009-12-09 | 7d | 205d |  |  | 시범운영 실시 | 07060716O410164 | C07-1 1.7.4.2 |  |
| 1561 | KIRAMS10.5.3.3.1.1 | 기초자료 구축(1차) | 2d | 2009-12-01 | 2009-12-02 |  | 2009-12-01 | 2009-12-02 | 2d | 210d |  | start no earlier than 2009-12-01 | 시범운영 실시 | 07060716O410164 | C07-1 1.7.4.2 | 리허설계획서,리허설시나리오 |
| 1562 | KIRAMS10.5.3.3.1.2 | 리허설 공지 및 상황실 운영(1차) | 2d | 2009-12-01 | 2009-12-02 |  | 2009-12-01 | 2009-12-02 | 2d | 210d |  | start no earlier than 2009-12-01 | 시범운영 실시 | 07060716O410164 | C07-1 1.7.4.2 | 리허설계획서,리허설시나리오 |
| 1563 | KIRAMS10.5.3.3.1.3 | 가상수탁사업 준비(1차) | 2d | 2009-12-01 | 2009-12-02 |  | 2009-12-01 | 2009-12-02 | 2d | 207d | 0d | start no earlier than 2009-12-01 | 시범운영 실시 | 07060716O410164 | C07-1 1.7.4.2 | 리허설계획서,리허설시나리오 |
| 1564 | KIRAMS10.5.3.3.1.4 | 리허설 실시(1차) | 1d | 2009-12-03 | 2009-12-03 | 1563 | 2009-12-03 | 2009-12-03 | 1d | 207d | 0d |  | 시범운영 실시 | 07060716O410164 | C07-1 1.7.4.2 | 리허설결과서 |
| 1565 | KIRAMS10.5.3.3.1.5 | 리허설 결과 분석 및 보고(1차) | 2d | 2009-12-04 | 2009-12-07 | 1564 | 2009-12-04 | 2009-12-07 | 2d | 207d |  |  | 시범운영 실시 | 07060716O410164 | C07-1 1.7.4.2 | 리허설결과보고서 |
| 1566 | KIRAMS10.5.3.3.1.6 | 리허설 결과 조치(1차) | 4d | 2009-12-04 | 2009-12-09 |  | 2009-12-04 | 2009-12-09 | 4d | 205d |  | finish no earlier than 2009-12-09 | 시범운영 실시 | 07060716O410164 | C07-1 1.7.4.2 | 리허설결과서,리허설결과보고서 |
| 1567 | KIRAMS10.5.3.3.2 | **2차 리허설 실시** | 8d | 2009-12-10 | 2009-12-21 |  | 2009-12-10 | 2009-12-21 | 8d | 197d |  |  | 시범운영 실시 | 07060716O410164 | C07-1 1.7.4.2 |  |
| 1568 | KIRAMS10.5.3.3.2.1 | 기초자료 구축(2차) | 2d | 2009-12-10 | 2009-12-11 |  | 2009-12-10 | 2009-12-11 | 2d | 202d | 0d | start no earlier than 2009-12-10 | 시범운영 실시 | 07060716O410164 | C07-1 1.7.4.2 | 리허설계획서,리허설시나리오 |
| 1569 | KIRAMS10.5.3.3.2.2 | 리허설 공지 및 상황실 운영(2차) | 1d | 2009-12-14 | 2009-12-14 | 1568 | 2009-12-14 | 2009-12-14 | 1d | 202d |  |  | 시범운영 실시 | 07060716O410164 | C07-1 1.7.4.2 | 리허설계획서,리허설시나리오 |
| 1570 | KIRAMS10.5.3.3.2.3 | 가상수탁사업 준비(2차) | 1d | 2009-12-14 | 2009-12-14 |  | 2009-12-14 | 2009-12-14 | 1d | 197d | 0d | start no earlier than 2009-12-14 | 시범운영 실시 | 07060716O410164 | C07-1 1.7.4.2 | 리허설계획서,리허설시나리오 |
| 1571 | KIRAMS10.5.3.3.2.4 | 리허설 실시(2차) | 1d | 2009-12-15 | 2009-12-15 | 1570 | 2009-12-15 | 2009-12-15 | 1d | 197d | 0d |  | 시범운영 실시 | 07060716O410164 | C07-1 1.7.4.2 | 리허설결과서 |
| 1572 | KIRAMS10.5.3.3.2.5 | 리허설 결과 분석 및 보고(2차) | 1d | 2009-12-16 | 2009-12-16 | 1571 | 2009-12-16 | 2009-12-16 | 1d | 197d | 0d |  | 시범운영 실시 | 07060716O410164 | C07-1 1.7.4.2 | 리허설결과보고서 |
| 1573 | KIRAMS10.5.3.3.2.6 | 리허설 결과 조치(2차) | 3d | 2009-12-17 | 2009-12-21 | 1572 | 2009-12-17 | 2009-12-21 | 3d | 197d |  | start no earlier than 2009-12-17 | 시범운영 실시 | 07060716O410164 | C07-1 1.7.4.2 | 리허설결과서,리허설결과보고서 |
| 1574 | KIRAMS10.5.3.3.3 | 병행운영(실환자) | 5d | 2009-12-21 | 2009-12-28 |  | 2009-12-21 | 2009-12-28 | 5d | 193d |  | finish no earlier than 2009-12-28 | 안정화 및 유지보수 | 08100808O000000 | C07-1 1.7.5 | 인수테스트결괴서 |
| 1575 | KIRAMS10.5.3.4 | **시스템 오픈(본원)** | 10d | 2009-12-28 | 2010-01-07 |  | 2009-12-28 | 2010-01-07 | 10d | 184d |  |  | 시범운영 | 07060716O410164 | C07-1 1.7.4 |  |
| 1576 | KIRAMS10.5.3.4.1 | 오픈준비 | 4d | 2009-12-28 | 2009-12-31 |  | 2009-12-28 | 2009-12-31 | 4d | 190d |  | start no earlier than 2009-12-28 | 시범운영계획 수립 | 07060716O410164 | C07-1 1.7.4.1 | 이행계획서 |
| 1577 | KIRAMS10.5.3.4.2 | 시스템 OPEN | 1d | 2010-01-01 | 2010-01-01 |  | 2010-01-01 | 2010-01-01 | 1d | 189d |  | start no earlier than 2010-01-01 | 시범운영계획 수립 | 07060716O410164 | C07-1 1.7.4.1 | 이행계획서 |
| 1578 | KIRAMS10.5.3.4.3 | 정상 Open 지원 | 6d | 2010-01-01 | 2010-01-07 |  | 2010-01-01 | 2010-01-07 | 6d | 184d |  | start no earlier than 2010-01-01 | 시범운영계획 수립 | 07060716O410164 | C07-1 1.7.4.1 | Help Desk 일지 |

| ID | WBS | Task | Duration | Start | Finish | Predecessors | Baseline start | Baseline finish | Baseline duration | Total slack | Free slack | Constraint | Text20 | Text25 | Text26 | 산출물 |
| --- | --- | --- | --- | --- | --- | --- | --- | --- | --- | --- | --- | --- | --- | --- | --- | --- |
| 1579 | KIRAMS10.5.4 | **분원(동남권) 이행** | 59d | 2010-01-18 | 2010-04-09 |  | 2010-01-18 | 2010-04-09 | 59d | 119d |  |  | 교육훈련 실시 | 07060716O410163 | C07-1 1.7.3.3 |  |
| 1580 | KIRAMS10.5.4.1 | **릴리이즈(분원)** | 52d | 2010-01-18 | 2010-03-31 |  | 2010-01-18 | 2010-03-31 | 52d | 126d |  |  | 컨버전 및 릴리이즈 | 07060716O410162 | C07-1 1.7.2 |  |
| 1581 | KIRAMS10.5.4.1.1 | 데이터베이스 구축 | 10d | 2010-01-18 | 2010-01-29 |  | 2010-01-18 | 2010-01-29 | 10d | 158d | 0d | finish no earlier than 2010-01-29 | 데이터베이스 구축 | 07060716O410162 | C07-1 1.7.2.1 | 데이터베이스 |
| 1582 | KIRAMS10.5.4.1.2 | 소프트웨어 설치 | 10d | 2010-02-01 | 2010-02-12 | 1581 | 2010-02-01 | 2010-02-12 | 10d | 158d |  | start no earlier than 2010-01-18 | 소프트웨어 설치 | 07060716O410162 | C07-1 1.7.2.2 | 어플리케이션 |
| 1583 | KIRAMS10.5.4.1.3 | 인수테스트 실시 | 5d | 2010-03-15 | 2010-03-19 |  | 2010-03-15 | 2010-03-19 | 5d | 134d |  | start no earlier than 2010-03-15 | 인수테스트 실시 | 07060716O410162 | C07-1 1.7.2.4 | 결함보고서,인수테스트결과 |
| 1584 | KIRAMS10.5.4.1.4 | 시스템 릴리이즈 | 3d | 2010-03-29 | 2010-03-31 |  | 2010-03-29 | 2010-03-31 | 3d | 126d |  | finish no earlier than 2010-03-31 | 시스템 릴리이즈 | 07060716O410162 | C07-1 1.7.2.5 | 운영시스템 |
| 1585 | KIRAMS10.5.4.2 | **테스트 실시(분원)** | 15d | 2010-01-18 | 2010-02-05 |  | 2010-01-18 | 2010-02-05 | 15d | 163d |  |  | 테스트 실시 | 07060716O410159 | C07-1 1.6.2 |  |
| 1586 | KIRAMS10.5.4.2.1 | **통합테스트 실시** | 12d | 2010-01-18 | 2010-02-02 |  | 2010-01-18 | 2010-02-02 | 12d | 166d |  |  | 통합테스트 실시 | 07060716O410159 | C07-1 1.6.2.1 | 결함보고서,통합테스트결과보고서,통합테스트시나리오[결과] |
| 1587 | KIRAMS10.5.4.2.1.1 | 통합테스트 환경구축 | 5d | 2010-01-18 | 2010-01-22 |  | 2010-01-18 | 2010-01-22 | 5d | 173d |  | start no earlier than 2010-01-18 | 교육훈련계획 수립 | 07060716O410161 | C07-1 1.7.1.2 | 테스트계획서 |
| 1588 | KIRAMS10.5.4.2.1.2 | **통합테스트** | 7d | 2010-01-25 | 2010-02-02 |  | 2010-01-25 | 2010-02-02 | 7d | 166d |  |  | 교육훈련계획 수립 | 07060716O410161 | C07-1 1.7.1.2 |  |
| 1589 | KIRAMS10.5.4.2.1.2.1 | 기초자료 구축 | 2d | 2010-01-25 | 2010-01-26 |  | 2010-01-25 | 2010-01-26 | 2d | 169d | 0d | start no earlier than 2010-01-25 | 교육훈련계획 수립 | 07060716O410161 | C07-1 1.7.1.2 | 테스트계획서 |
| 1590 | KIRAMS10.5.4.2.1.2.2 | 통합테스트 실시 | 2d | 2010-01-27 | 2010-01-28 | 1589 | 2010-01-27 | 2010-01-28 | 2d | 169d |  |  | 교육훈련계획 수립 | 07060716O410161 | C07-1 1.7.1.2 | 테스트계획서 |
| 1591 | KIRAMS10.5.4.2.1.2.3 | 통합테스트 결과 분석 | 1d | 2010-01-28 | 2010-01-28 |  | 2010-01-28 | 2010-01-28 | 1d | 166d | 0d | start no earlier than 2010-01-28 | 교육훈련계획 수립 | 07060716O410161 | C07-1 1.7.1.2 | 테스트계획서 |
| 1592 | KIRAMS10.5.4.2.1.2.4 | 통합테스트 결과 조치 | 3d | 2010-01-29 | 2010-02-02 | 1591 | 2010-01-29 | 2010-02-02 | 3d | 166d |  |  | 교육훈련계획 수립 | 07060716O410161 | C07-1 1.7.1.2 | 테스트계획서 |
| 1593 | KIRAMS10.5.4.2.2 | **시스템테스트 실시** | 10d | 2010-01-25 | 2010-02-05 |  | 2010-01-25 | 2010-02-05 | 10d | 163d |  |  | 시스템테스트 실시 | 07060716O410159 | C07-1 1.6.2.2 | 결함보고서,시스템테스트결과보고서 |
| 1594 | KIRAMS10.5.4.2.2.1 | 시스템테스트 환경점검 | 5d | 2010-01-25 | 2010-01-29 |  | 2010-01-25 | 2010-01-29 | 5d | 163d | 0d | start no earlier than 2010-01-25 | 시스템테스트 실시 | 07060716O410159 | C07-1 1.6.2.2 | 테스트계획서 |
| 1595 | KIRAMS10.5.4.2.2.2 | 장애복구 테스트 | 1d | 2010-02-01 | 2010-02-01 | 1594 | 2010-02-01 | 2010-02-01 | 1d | 163d | 0d |  | 시스템테스트 실시 | 07060716O410159 | C07-1 1.6.2.2 | 결함보고서,시스템테스트결과보고서 |
| 1596 | KIRAMS10.5.4.2.2.3 | 부하 테스트 | 4d | 2010-02-02 | 2010-02-05 | 1595 | 2010-02-02 | 2010-02-05 | 4d | 163d |  |  | 시스템테스트 실시 | 07060716O410159 | C07-1 1.6.2.2 | 결함보고서,시스템테스트결과보고서 |
| 1597 | KIRAMS10.5.4.3 | **리허설(분원)** | 17d | 2010-03-01 | 2010-03-23 |  | 2010-03-01 | 2010-03-23 | 17d | 132d |  |  | 시범운영 | 07060716O410164 | C07-1 1.7.4 |  |
| 1598 | KIRAMS10.5.4.3.1 | **1차 리허설 실시** | 10d | 2010-03-01 | 2010-03-12 |  | 2010-03-01 | 2010-03-12 | 10d | 139d |  |  | 시범운영 실시 | 07060716O410164 | C07-1 1.7.4.2 |  |
| 1599 | KIRAMS10.5.4.3.1.1 | 기초자료 구축(1차) | 2d | 2010-03-01 | 2010-03-02 |  | 2010-03-01 | 2010-03-02 | 2d | 143d | 0d | start no earlier than 2010-03-01 | 시범운영 실시 | 07060716O410164 | C07-1 1.7.4.2 | 리허설계획서,리허설시나리오 |
| 1600 | KIRAMS10.5.4.3.1.2 | 리허설 공지 및 상황실 운영(1차) | 2d | 2010-03-03 | 2010-03-04 | 1599 | 2010-03-03 | 2010-03-04 | 2d | 143d | 0d |  | 시범운영 실시 | 07060716O410164 | C07-1 1.7.4.2 | 리허설계획서,리허설시나리오 |
| 1601 | KIRAMS10.5.4.3.1.3 | 가상수탁사업 준비(1차) | 2d | 2010-03-05 | 2010-03-08 | 1600 | 2010-03-05 | 2010-03-08 | 2d | 143d |  |  | 시범운영 실시 | 07060716O410164 | C07-1 1.7.4.2 | 리허설계획서,리허설시나리오 |
| 1602 | KIRAMS10.5.4.3.1.4 | 리허설 실시(1차) | 1d | 2010-03-09 | 2010-03-09 |  | 2010-03-09 | 2010-03-09 | 1d | 139d | 0d | start no earlier than 2010-03-09 | 시범운영 실시 | 07060716O410164 | C07-1 1.7.4.2 | 리허설결과서 |
| 1603 | KIRAMS10.5.4.3.1.5 | 리허설 결과 분석 및 보고(1차) | 1d | 2010-03-10 | 2010-03-10 | 1602 | 2010-03-10 | 2010-03-10 | 1d | 139d | 0d |  | 시범운영 실시 | 07060716O410164 | C07-1 1.7.4.2 | 리허설결과보고서 |
| 1604 | KIRAMS10.5.4.3.1.6 | 리허설 결과 조치(1차) | 2d | 2010-03-11 | 2010-03-12 | 1603 | 2010-03-11 | 2010-03-12 | 2d | 139d |  |  | 시범운영 실시 | 07060716O410164 | C07-1 1.7.4.2 | 리허설결과서,리허설결과보고서 |

| ID | WBS | Task | Duration | Start | Finish | Predecessors | Complete | Remaining | Baseline start | Baseline finish | Baseline duration | Total slack | Free slack | Constraint | Text20 | Text25 | Text26 | 산출물 |
| --- | --- | --- | --- | --- | --- | --- | --- | --- | --- | --- | --- | --- | --- | --- | --- | --- | --- | --- |
| 1605 | KIRAMS10.5.4.3.2 | **2차 리허설 실시** | 7d | 2010-03-15 | 2010-03-23 |  |  |  | 2010-03-15 | 2010-03-23 | 7d | 132d |  |  | 시범운영 실시 | 07060716O410164 | C07-1 1.7.4.2 |  |
| 1606 | KIRAMS10.5.4.3.2.1 | 기초자료 구축(2차) | 2d | 2010-03-15 | 2010-03-16 |  |  |  | 2010-03-15 | 2010-03-16 | 2d | 137d |  | start no earlier than 2010-03-15 | 시범운영 실시 | 07060716O410164 | C07-1 1.7.4.2 | 리허설계획서,리허설시나리오 |
| 1607 | KIRAMS10.5.4.3.2.2 | 리허설 공지 및 상황실 운영(2차) | 2d | 2010-03-16 | 2010-03-17 |  |  |  | 2010-03-16 | 2010-03-17 | 2d | 136d |  | start no earlier than 2010-03-16 | 시범운영 실시 | 07060716O410164 | C07-1 1.7.4.2 | 리허설계획서,리허설시나리오 |
| 1608 | KIRAMS10.5.4.3.2.3 | 가상수탁사업 준비(2차) | 2d | 2010-03-16 | 2010-03-17 |  |  |  | 2010-03-16 | 2010-03-17 | 2d | 134d | 0d | start no earlier than 2010-03-16 | 시범운영 실시 | 07060716O410164 | C07-1 1.7.4.2 | 리허설계획서,리허설시나리오 |
| 1609 | KIRAMS10.5.4.3.2.4 | 리허설 실시(2차) | 1d | 2010-03-18 | 2010-03-18 | 1608 |  |  | 2010-03-18 | 2010-03-18 | 1d | 134d | 2d |  | 시범운영 실시 | 07060716O410164 | C07-1 1.7.4.2 | 리허설결과서 |
| 1610 | KIRAMS10.5.4.3.2.5 | 리허설 결과 분석 및 보고(2차) | 1d | 2010-03-19 | 2010-03-19 |  |  |  | 2010-03-19 | 2010-03-19 | 1d | 134d |  | start no earlier than 2010-03-19 | 시범운영 실시 | 07060716O410164 | C07-1 1.7.4.2 | 리허설결과보고서 |
| 1611 | KIRAMS10.5.4.3.2.6 | 리허설 결과 조치(2차) | 1d | 2010-03-23 | 2010-03-23 | 1609 |  |  | 2010-03-23 | 2010-03-23 | 1d | 132d |  | finish no earlier than 2010-03-23 | 시범운영 실시 | 07060716O410164 | C07-1 1.7.4.2 | 리허설결과서,리허설결과보고서 |
| 1612 | KIRAMS10.5.4.4 | **시스템 오픈(분원)** | 12d | 2010-03-25 | 2010-04-09 |  |  |  | 2010-03-25 | 2010-04-09 | 12d | 119d |  |  | 시범운영 | 07060716O410164 | C07-1 1.7.4 |  |
| 1613 | KIRAMS10.5.4.4.1 | 오픈준비 | 5d | 2010-03-25 | 2010-03-31 |  |  |  | 2010-03-25 | 2010-03-31 | 5d | 125d | 0d | start no earlier than 2010-03-25 | 시범운영계획 수립 | 07060716O410164 | C07-1 1.7.4.1 | 이행계획서 |
| 1614 | KIRAMS10.5.4.4.2 | 시스템 OPEN | 1d | 2010-04-01 | 2010-04-01 | 1613 |  |  | 2010-04-01 | 2010-04-01 | 1d | 125d |  |  | 시범운영계획 수립 | 07060716O410164 | C07-1 1.7.4.1 | 이행계획서 |
| 1615 | KIRAMS10.5.4.4.3 | 정상 Open 지원 | 7d | 2010-04-01 | 2010-04-09 |  |  |  | 2010-04-01 | 2010-04-09 | 7d | 119d |  | finish no earlier than 2010-04-09 | 시범운영계획 수립 | 07060716O410164 | C07-1 1.7.4.1 | Help Desk 일지 |
| 1616 | KIRAMS11 | **miniPACS구축** | 224d? | 2009-02-19 A | 2010-01-01 |  | 14% | 192.64d? | 2009-02-19 | 2010-01-01 | 224d? | 189d |  |  |  |  |  |  |
| 1617 | KIRAMS11.1 | **계획수립 및 요구정의** | 93d | 2009-02-19 A | 2009-06-30 |  | 45% | 51d | 2009-02-19 | 2009-06-30 | 93d | 320d |  |  | 요구정의 | 07060716O410138 | C07-1 1.2 |  |
| 1618 | KIRAMS11.1.1 | miniPACS 구축계획협의 및 실사 | 37d | 2009-02-19 A | 2009-04-10 A |  | 100% |  | 2009-02-19 | 2009-04-10 | 37d |  |  | start no earlier than 2009-02-19 | 인터뷰 실시 | 07060716O410139 | C07-1 1.2.1.2 | 인터뷰 결과서 |
| 1619 | KIRAMS11.1.2 | 구축계획 수립 | 24d | 2009-04-13 A | 2009-05-15 | 1618 | 21% | 19d | 2009-04-13 | 2009-05-15 | 24d | 352d |  | finish no earlier than 2009-05-15 | 인터뷰 실시 | 07060716O410139 | C07-1 1.2.1.2 | 설치계획서 |
| 1620 | KIRAMS11.1.3 | **요구사항 정의** | 32d | 2009-05-18 | 2009-06-30 |  |  |  | 2009-05-18 | 2009-06-30 | 32d | 320d |  |  | 요구사항 정의 | 07060716O410141 | C07-1 1.2.3 |  |
| 1621 | KIRAMS11.1.3.1 | 요구사항 도출/정제 | 32d | 2009-05-18 | 2009-06-30 |  |  |  | 2009-05-18 | 2009-06-30 | 32d | 320d |  | start no earlier than 2009-05-18 | 요구사항 정제 | 07060716O410141 | C07-1 1.2.3.2 | 요구사항정의서 |
| 1622 | KIRAMS11.2 | **스토리지용도변경** | 118d? | 2009-07-20 | 2010-01-01 |  |  |  | 2009-07-20 | 2010-01-01 | 118d? | 189d |  |  |  |  |  |  |
| 1623 | KIRAMS11.2.1 | 용도변경 분석 및 설계 | 15d? | 2009-07-20 | 2009-08-07 |  |  |  | 2009-07-20 | 2009-08-07 | 15d? | 277d | 0d | finish no earlier than 2009-08-07 |  |  |  |  |
| 1624 | KIRAMS11.2.2 | 혐오사진 분류 | 15d | 2009-08-10 | 2009-08-28 | 1623 |  |  | 2009-08-10 | 2009-08-28 | 15d | 277d |  | start no earlier than 2009-08-10 |  |  |  | 인터뷰결과서 |
| 1625 | KIRAMS11.2.3 | Data Transfer | 79d? | 2009-08-10 | 2009-11-27 |  |  |  | 2009-08-10 | 2009-11-27 | 79d? | 190d | 0d | finish no earlier than 2009-11-27 |  |  |  |  |
| 1626 | KIRAMS11.2.4 | 데이터 정합성 검증 | 15d? | 2009-11-30 | 2009-12-18 | 1625 |  |  | 2009-11-30 | 2009-12-18 | 15d? | 190d | 1d | finish no earlier than 2009-12-18 |  |  |  | 검증결과서 |
| 1627 | KIRAMS11.2.5 | 모니터링 및 인수확인 | 8d | 2009-12-22 | 2010-01-01 | 1626 |  |  | 2009-12-22 | 2010-01-01 | 8d | 189d |  | finish no earlier than 2010-01-01 |  |  |  | 인수확인서 |
| 1628 | KIRAMS11.3 | **miniPACS 설치** | 54d? | 2009-08-17 | 2009-10-30 |  |  |  | 2009-08-17 | 2009-10-30 | 54d? | 233d |  |  |  |  |  |  |
| 1629 | KIRAMS11.3.1 | miniPACS구축 절차 수립 | 15d? | 2009-08-17 | 2009-09-04 |  |  |  | 2009-08-17 | 2009-09-04 | 15d? | 234d | 0d | finish no earlier than 2009-09-04 |  |  |  | 설치계획서 |
| 1630 | KIRAMS11.3.2 | 시스템 구축 | 18d? | 2009-09-07 | 2009-09-30 | 1629 |  |  | 2009-09-07 | 2009-09-30 | 18d? | 234d | 1d | finish no earlier than 2009-09-30 |  |  |  | 운영시스템 |
| 1631 | KIRAMS11.3.3 | Data Transfer(150GB 예상) | 5d? | 2009-10-05 | 2009-10-09 | 1630 |  |  | 2009-10-05 | 2009-10-09 | 5d? | 233d | 0d | finish no earlier than 2009-10-09 |  |  |  | 인수확인서 |
| 1632 | KIRAMS11.3.4 | 모니터링 및 인수확인 | 15d | 2009-10-12 | 2009-10-30 | 1631 |  |  | 2009-10-12 | 2009-10-30 | 15d | 233d |  | finish no earlier than 2009-10-30 |  |  |  | 인수테스트결과서 |
| 1633 | KIRAMS11.4 | Film Scan(15,000건 예상) | 22d? | 2009-09-01 | 2009-09-30 |  |  |  | 2009-09-01 | 2009-09-30 | 22d? | 254d |  | finish no earlier than 2009-09-30 |  |  |  | SCAN결과서 |

| ID | WBS | Task | Duration | Start | Finish | Predecessors | Complete | Remaining | Baseline start | Baseline finish | Baseline duration | Total slack | Free slack | Constraint | Text20 | Text25 | Text26 | 산출물 |
| --- | --- | --- | --- | --- | --- | --- | --- | --- | --- | --- | --- | --- | --- | --- | --- | --- | --- | --- |
| 1634 | KIRAMS1 | **PACS구축** | 157d? | 2009-09-01 A | 2010-04-09 |  | 12% | 137.63d? | 2009-09-01 | 2010-04-09 | 157d? | 119d |  |  |  |  |  |  |
| 1635 | KIRAMS1.5 | **본원 구축** | 92d | 2009-09-01 A | 2010-01-07 |  | 25% | 69.3d | 2009-09-01 | 2010-01-07 | 92d | 184d |  |  | 요구정의 | 07060716O410138 | C07-1 1.2 |  |
| 1636 | KIRAMS1.5.4 | 장비 및 EMR 연동 | 14d | 2009-09-01 A | 2009-09-18 A |  | 100% |  | 2009-09-01 | 2009-09-18 | 14d |  |  | start no earlier than 2009-02-19 | 인터뷰 실시 | 07060716O410139 | C07-1 1.2.1.2 | 연동결과서 |
| 1637 | KIRAMS1.5.5 | **테스트 실시(본원)** | 69d | 2009-09-21 A | 2009-12-28 | 1636 | 10% | 62.37d | 2009-09-21 | 2009-12-28 | 69d | 193d |  |  | 인터뷰 실시 | 07060716O410139 | C07-1 1.2.1.2 | 테스트계획서 |
| 1638 | KIRAMS1.5.5.1 | 자체테스트 | 9d | 2009-09-21 A | 2009-10-01 |  | 56% | 4d | 2009-09-21 | 2009-10-01 | 9d | 253d |  | finish no earlier than 2009-10-01 | 인터뷰 실시 | 07060716O410139 | C07-1 1.2.1.2 |  |
| 1639 | KIRAMS1.5.5.2 | **통합테스트(본원)** | 20d | 2009-10-05 | 2009-10-30 |  |  |  | 2009-10-05 | 2009-10-30 | 20d | 233d |  |  | 통합테스트 실시 | 07060716O410159 | C07-1 1.6.2.1 | 결함보고서,통합테스트결과보고서,통합테스트시나리오[결과] |
| 1640 | KIRAMS1.5.5.2.5 | 통합테스트 환경구축 | 5d | 2009-10-05 | 2009-10-09 |  |  |  | 2009-10-05 | 2009-10-09 | 5d | 248d |  | finish no earlier than 2009-10-09 | 교육훈련계획 수립 | 07060716O410161 | C07-1 1.7.1.2 | 테스트계획서 |
| 1641 | KIRAMS1.5.5.2.6 | **1차 통합테스트** | 10d | 2009-10-12 | 2009-10-23 |  |  |  | 2009-10-12 | 2009-10-23 | 10d | 238d |  |  | 교육훈련계획 수립 | 07060716O410161 | C07-1 1.7.1.2 |  |
| 1642 | KIRAMS1.5.5.2.6.5 | 기초자료 구축(1차) | 2d | 2009-10-12 | 2009-10-13 |  |  |  | 2009-10-12 | 2009-10-13 | 2d | 238d | 0d | finish no earlier than 2009-10-13 | 교육훈련계획 수립 | 07060716O410161 | C07-1 1.7.1.2 | 테스트계획서 |
| 1643 | KIRAMS1.5.5.2.6.6 | 통합테스트 실시(1차) | 2d | 2009-10-14 | 2009-10-15 | 1642 |  |  | 2009-10-14 | 2009-10-15 | 2d | 238d | 0d |  | 교육훈련계획 수립 | 07060716O410161 | C07-1 1.7.1.2 | 테스트계획서 |
| 1644 | KIRAMS1.5.5.2.6.7 | 통합테스트 결과 분석(1차) | 1d | 2009-10-16 | 2009-10-16 | 1643 |  |  | 2009-10-16 | 2009-10-16 | 1d | 238d | 0d |  | 교육훈련계획 수립 | 07060716O410161 | C07-1 1.7.1.2 | 테스트계획서 |
| 1645 | KIRAMS1.5.5.2.6.8 | 통합테스트 결과 조치(1차) | 5d | 2009-10-19 | 2009-10-23 | 1644 |  |  | 2009-10-19 | 2009-10-23 | 5d | 238d |  | start no earlier than 2009-10-19 | 교육훈련계획 수립 | 07060716O410161 | C07-1 1.7.1.2 | 테스트계획서 |
| 1646 | KIRAMS1.5.5.2.7 | **2차 통합테스트** | 7d | 2009-10-22 | 2009-10-30 |  |  |  | 2009-10-22 | 2009-10-30 | 7d | 233d |  |  | 교육훈련계획 수립 | 07060716O410161 | C07-1 1.7.1.2 |  |
| 1647 | KIRAMS1.5.5.2.7.5 | 기초자료 구축(2차) | 2d | 2009-10-22 | 2009-10-23 |  |  |  | 2009-10-22 | 2009-10-23 | 2d | 233d | 0d | start no earlier than 2009-10-22 | 교육훈련계획 수립 | 07060716O410161 | C07-1 1.7.1.2 | 테스트계획서 |
| 1648 | KIRAMS1.5.5.2.7.6 | 통합테스트 실시(2차) | 2d | 2009-10-26 | 2009-10-27 | 1647 |  |  | 2009-10-26 | 2009-10-27 | 2d | 233d | 0d |  | 교육훈련계획 수립 | 07060716O410161 | C07-1 1.7.1.2 | 테스트계획서 |
| 1649 | KIRAMS1.5.5.2.7.7 | 통합테스트 결과 분석(2차) | 1d | 2009-10-28 | 2009-10-28 | 1648 |  |  | 2009-10-28 | 2009-10-28 | 1d | 233d | 0d |  | 교육훈련계획 수립 | 07060716O410161 | C07-1 1.7.1.2 | 테스트계획서 |
| 1650 | KIRAMS1.5.5.2.7.8 | 통합테스트 결과 조치(2차) | 2d | 2009-10-29 | 2009-10-30 | 1649 |  |  | 2009-10-29 | 2009-10-30 | 2d | 233d |  |  | 교육훈련계획 수립 | 07060716O410161 | C07-1 1.7.1.2 | 테스트계획서 |
| 1651 | KIRAMS1.5.5.3 | **리허설(본원)** | 69d | 2009-09-21 | 2009-12-28 |  |  |  | 2009-09-21 | 2009-12-28 | 69d | 193d |  |  | 시범운영 | 07060716O410164 | C07-1 1.7.4 |  |
| 1652 | KIRAMS1.5.5.3.7 | **1차 리허설 실시** | 57d | 2009-09-21 | 2009-12-09 |  |  |  | 2009-09-21 | 2009-12-09 | 57d | 205d |  |  | 시범운영 실시 | 07060716O410164 | C07-1 1.7.4.2 |  |
| 1653 | KIRAMS1.5.5.3.7.13 | 기초자료 구축(1차) | 2d | 2009-12-01 | 2009-12-02 |  |  |  | 2009-12-01 | 2009-12-02 | 2d | 210d |  | start no earlier than 2009-12-01 | 시범운영 실시 | 07060716O410164 | C07-1 1.7.4.2 | 리허설계획서,리허설시나리오 |
| 1654 | KIRAMS1.5.5.3.7.16 | 리허설 실시(1차) | 1d | 2009-09-21 | 2009-09-21 |  |  |  | 2009-09-21 | 2009-09-21 | 1d | 259d | 0d |  | 시범운영 실시 | 07060716O410164 | C07-1 1.7.4.2 | 리허설결과서 |
| 1655 | KIRAMS1.5.5.3.7.17 | 리허설 결과 분석 및 보고(1차) | 2d | 2009-09-22 | 2009-09-23 | 1654 |  |  | 2009-09-22 | 2009-09-23 | 2d | 259d |  |  | 시범운영 실시 | 07060716O410164 | C07-1 1.7.4.2 | 리허설결과보고서 |
| 1656 | KIRAMS1.5.5.3.7.18 | 리허설 결과 조치(1차) | 4d | 2009-12-04 | 2009-12-09 |  |  |  | 2009-12-04 | 2009-12-09 | 4d | 205d |  | finish no earlier than 2009-12-09 | 시범운영 실시 | 07060716O410164 | C07-1 1.7.4.2 | 리허설결과서,리허설결과보고서 |
| 1657 | KIRAMS1.5.5.3.8 | **2차 리허설 실시** | 65d | 2009-09-21 | 2009-12-21 |  |  |  | 2009-09-21 | 2009-12-21 | 65d | 197d |  |  | 시범운영 실시 | 07060716O410164 | C07-1 1.7.4.2 |  |
| 1658 | KIRAMS1.5.5.3.8.13 | 기초자료 구축(2차) | 2d | 2009-12-10 | 2009-12-11 |  |  |  | 2009-12-10 | 2009-12-11 | 2d | 203d |  | start no earlier than 2009-12-10 | 시범운영 실시 | 07060716O410164 | C07-1 1.7.4.2 | 리허설계획서,리허설시나리오 |
| 1659 | KIRAMS1.5.5.3.8.16 | 리허설 실시(2차) | 1d | 2009-09-21 | 2009-09-21 |  |  |  | 2009-09-21 | 2009-09-21 | 1d | 257d | 0d |  | 시범운영 실시 | 07060716O410164 | C07-1 1.7.4.2 | 리허설결과서 |
| 1660 | KIRAMS1.5.5.3.8.17 | 리허설 결과 분석 및 보고(2차) | 1d | 2009-09-22 | 2009-09-22 | 1659 |  |  | 2009-09-22 | 2009-09-22 | 1d | 257d | 60d |  | 시범운영 실시 | 07060716O410164 | C07-1 1.7.4.2 | 리허설결과보고서 |
| 1661 | KIRAMS1.5.5.3.8.18 | 리허설 결과 조치(2차) | 3d | 2009-12-17 | 2009-12-21 | 1660 |  |  | 2009-12-17 | 2009-12-21 | 3d | 197d |  | start no earlier than 2009-12-17 | 시범운영 실시 | 07060716O410164 | C07-1 1.7.4.2 | 리허설결과서,리허설결과보고서 |
| 1662 | KIRAMS1.5.5.3.9 | 병행운영(실환자) | 5d | 2009-12-21 | 2009-12-28 |  |  |  | 2009-12-21 | 2009-12-28 | 5d | 193d |  | finish no earlier than 2009-12-28 | 안정화 및 유지보수 | 08100808O000000 | C07-1 1.7.5 | 인수테스트결괴서 |

| ID | WBS | Task | Duration | Start | Finish | Predecessors | Baseline start | Baseline finish | Baseline duration | Total slack | Free slack | Constraint | Text20 | Text25 | Text26 | 산출물 |
| --- | --- | --- | --- | --- | --- | --- | --- | --- | --- | --- | --- | --- | --- | --- | --- | --- |
| 1663 | KIRAMS1.5.7 | **시스템 오픈(본원)** | 10d | 2009-12-28 | 2010-01-07 |  | 2009-12-28 | 2010-01-07 | 10d | 184d |  |  | 시범운영 | 07060716O410164 | C07-1 1.7.4 |  |
| 1664 | KIRAMS1.5.7.4 | 오픈준비 | 4d | 2009-12-28 | 2009-12-31 |  | 2009-12-28 | 2009-12-31 | 4d | 190d |  | start no earlier than 2009-12-28 | 시범운영계획 수립 | 07060716O410164 | C07-1 1.7.4.1 | 이행계획서 |
| 1665 | KIRAMS1.5.7.5 | 시스템 OPEN | 1d | 2010-01-01 | 2010-01-01 |  | 2010-01-01 | 2010-01-01 | 1d | 189d |  | start no earlier than 2010-01-01 | 시범운영계획 수립 | 07060716O410164 | C07-1 1.7.4.1 | 이행계획서 |
| 1666 | KIRAMS1.5.7.6 | 정상 Open 지원 | 6d | 2010-01-01 | 2010-01-07 |  | 2010-01-01 | 2010-01-07 | 6d | 184d |  | start no earlier than 2010-01-01 | 시범운영계획 수립 | 07060716O410164 | C07-1 1.7.4.1 | Help Desk 일지 |
| 1667 | KIRAMS1.6 | **분원(동남권) 구축** | 104d? | 2009-11-16 | 2010-04-09 |  | 2009-11-16 | 2010-04-09 | 104d? | 119d |  |  |  |  |  |  |
| 1668 | KIRAMS1.6.6 | 장비도입 및 설치 | 15d? | 2009-11-16 | 2009-12-04 |  | 2009-11-16 | 2009-12-04 | 15d? | 174d | 5d | finish no earlier than 2009-12-04 |  |  |  |  |
| 1669 | KIRAMS1.6.7 | 장비 및 EMR 연동 | 18d | 2009-12-14 | 2010-01-06 | 1668 | 2009-12-14 | 2010-01-06 | 18d | 169d | 0d | finish no earlier than 2010-01-06 |  |  |  | 인터뷰결과서 |
| 1670 | KIRAMS1.6.8 | Viewer설치 | 2d? | 2010-01-07 | 2010-01-08 | 1669 | 2010-01-07 | 2010-01-08 | 2d? | 169d | 0d | finish no earlier than 2010-01-08 |  |  |  |  |
| 1671 | KIRAMS1.6.9 | 사용자교육 | 5d? | 2010-01-11 | 2010-01-15 | 1670 | 2010-01-11 | 2010-01-15 | 5d? | 169d | 0d | finish no earlier than 2010-01-15 |  |  |  | 검증결과서 |
| 1672 | KIRAMS1.6.2 | **테스트 실시(분원)** | 46d | 2010-01-18 | 2010-03-23 | 1671 | 2010-01-18 | 2010-03-23 | 46d | 132d |  |  | 테스트 실시 | 07060716O410159 | C07-1 1.6.2 |  |
| 1673 | KIRAMS1.6.2.1 | **통합테스트 실시** | 12d | 2010-01-18 | 2010-02-02 |  | 2010-01-18 | 2010-02-02 | 12d | 166d |  |  | 통합테스트 실시 | 07060716O410159 | C07-1 1.6.2.1 | 결함보고서,통합테스트결과보고서,통합테스트시나리오[결과] |
| 1674 | KIRAMS1.6.2.1.1 | 통합테스트 환경구축 | 5d | 2010-01-18 | 2010-01-22 |  | 2010-01-18 | 2010-01-22 | 5d | 169d | 0d | finish no earlier than 2010-01-22 | 교육훈련계획 수립 | 07060716O410161 | C07-1 1.7.1.2 | 테스트계획서 |
| 1675 | KIRAMS1.6.2.1.2 | **통합테스트** | 7d | 2010-01-25 | 2010-02-02 | 1674 | 2010-01-25 | 2010-02-02 | 7d | 166d |  |  | 교육훈련계획 수립 | 07060716O410161 | C07-1 1.7.1.2 |  |
| 1676 | KIRAMS1.6.2.1.2.1 | 기초자료 구축 | 2d | 2010-01-25 | 2010-01-26 |  | 2010-01-25 | 2010-01-26 | 2d | 169d | 0d | start no earlier than 2010-01-25 | 교육훈련계획 수립 | 07060716O410161 | C07-1 1.7.1.2 | 테스트계획서 |
| 1677 | KIRAMS1.6.2.1.2.2 | 통합테스트 실시 | 2d | 2010-01-27 | 2010-01-28 | 1676 | 2010-01-27 | 2010-01-28 | 2d | 169d |  |  | 교육훈련계획 수립 | 07060716O410161 | C07-1 1.7.1.2 | 테스트계획서 |
| 1678 | KIRAMS1.6.2.1.2.3 | 통합테스트 결과 분석 | 1d | 2010-01-28 | 2010-01-28 |  | 2010-01-28 | 2010-01-28 | 1d | 166d | 0d | start no earlier than 2010-01-28 | 교육훈련계획 수립 | 07060716O410161 | C07-1 1.7.1.2 | 테스트계획서 |
| 1679 | KIRAMS1.6.2.1.2.4 | 통합테스트 결과 조치 | 3d | 2010-01-29 | 2010-02-02 | 1678 | 2010-01-29 | 2010-02-02 | 3d | 166d |  |  | 교육훈련계획 수립 | 07060716O410161 | C07-1 1.7.1.2 | 테스트계획서 |
| 1680 | KIRAMS1.6.2.4 | **리허설(분원)** | 46d | 2010-01-18 | 2010-03-23 |  | 2010-01-18 | 2010-03-23 | 46d | 132d |  |  | 시범운영 | 07060716O410164 | C07-1 1.7.4 |  |
| 1681 | KIRAMS1.6.2.4.6 | **1차 리허설 실시** | 10d | 2010-03-01 | 2010-03-12 |  | 2010-03-01 | 2010-03-12 | 10d | 139d |  |  | 시범운영 실시 | 07060716O410164 | C07-1 1.7.4.2 |  |
| 1682 | KIRAMS1.6.2.4.6.13 | 기초자료 구축(1차) | 2d | 2010-03-01 | 2010-03-02 |  | 2010-03-01 | 2010-03-02 | 2d | 147d |  | start no earlier than 2010-03-01 | 시범운영 실시 | 07060716O410164 | C07-1 1.7.4.2 | 리허설계획서,리허설시나리오 |
| 1683 | KIRAMS1.6.2.4.6.14 | 리허설 실시(1차) | 1d | 2010-03-09 | 2010-03-09 |  | 2010-03-09 | 2010-03-09 | 1d | 139d | 0d | start no earlier than 2010-03-09 | 시범운영 실시 | 07060716O410164 | C07-1 1.7.4.2 | 리허설결과서 |
| 1684 | KIRAMS1.6.2.4.6.15 | 리허설 결과 분석 및 보고(1차) | 1d | 2010-03-10 | 2010-03-10 | 1683 | 2010-03-10 | 2010-03-10 | 1d | 139d | 0d |  | 시범운영 실시 | 07060716O410164 | C07-1 1.7.4.2 | 리허설결과보고서 |
| 1685 | KIRAMS1.6.2.4.6.16 | 리허설 결과 조치(1차) | 2d | 2010-03-11 | 2010-03-12 | 1684 | 2010-03-11 | 2010-03-12 | 2d | 139d |  |  | 시범운영 실시 | 07060716O410164 | C07-1 1.7.4.2 | 리허설결과서,리허설결과보고서 |
| 1686 | KIRAMS1.6.2.4.7 | **2차 리허설 실시** | 46d | 2010-01-18 | 2010-03-23 |  | 2010-01-18 | 2010-03-23 | 46d | 132d |  |  | 시범운영 실시 | 07060716O410164 | C07-1 1.7.4.2 |  |
| 1687 | KIRAMS1.6.2.4.7.13 | 기초자료 구축(2차) | 2d | 2010-03-15 | 2010-03-16 |  | 2010-03-15 | 2010-03-16 | 2d | 137d |  | start no earlier than 2010-03-15 | 시범운영 실시 | 07060716O410164 | C07-1 1.7.4.2 | 리허설계획서,리허설시나리오 |
| 1688 | KIRAMS1.6.2.4.7.14 | 리허설 실시(2차) | 1d | 2010-01-18 | 2010-01-18 |  | 2010-01-18 | 2010-01-18 | 1d | 176d | 44d |  | 시범운영 실시 | 07060716O410164 | C07-1 1.7.4.2 | 리허설결과서 |
| 1689 | KIRAMS1.6.2.4.7.15 | 리허설 결과 분석 및 보고(2차) | 1d | 2010-03-19 | 2010-03-19 |  | 2010-03-19 | 2010-03-19 | 1d | 134d |  | start no earlier than 2010-03-19 | 시범운영 실시 | 07060716O410164 | C07-1 1.7.4.2 | 리허설결과보고서 |
| 1690 | KIRAMS1.6.2.4.7.16 | 리허설 결과 조치(2차) | 1d | 2010-03-23 | 2010-03-23 | 1688 | 2010-03-23 | 2010-03-23 | 1d | 132d |  | finish no earlier than 2010-03-23 | 시범운영 실시 | 07060716O410164 | C07-1 1.7.4.2 | 리허설결과서,리허설결과보고서 |

| ID | WBS | Task | Duration | Start | Finish | Predecessors | Complete | Remaining | Baseline start | Baseline finish | Baseline duration | Total slack | Free slack | Constraint | Text20 | Text25 | Text26 | 산출물 |
| --- | --- | --- | --- | --- | --- | --- | --- | --- | --- | --- | --- | --- | --- | --- | --- | --- | --- | --- |
| 1691 | KIRAMS1.6.11 | **시스템 오픈(분원)** | 12d | 2010-03-25 | 2010-04-09 |  |  |  | 2010-03-25 | 2010-04-09 | 12d | 119d |  |  | 시범운영 | 07060716O410164 | C07-1 1.7.4 |  |
| 1692 | KIRAMS1.6.11.13 | 오픈준비 | 5d | 2010-03-25 | 2010-03-31 |  |  |  | 2010-03-25 | 2010-03-31 | 5d | 125d | 0d | start no earlier than 2010-03-25 | 시범운영계획 수립 | 07060716O410164 | C07-1 1.7.4.1 | 이행계획서 |
| 1693 | KIRAMS1.6.11.14 | 시스템 OPEN | 1d | 2010-04-01 | 2010-04-01 | 1692 |  |  | 2010-04-01 | 2010-04-01 | 1d | 125d |  |  | 시범운영계획 수립 | 07060716O410164 | C07-1 1.7.4.1 | 이행계획서 |
| 1694 | KIRAMS1.6.11.15 | 정상 Open 지원 | 7d | 2010-04-01 | 2010-04-09 |  |  |  | 2010-04-01 | 2010-04-09 | 7d | 119d |  | finish no earlier than 2010-04-09 | 시범운영계획 수립 | 07060716O410164 | C07-1 1.7.4.1 | Help Desk 일지 |
| 1695 | KIRAMS12 | **ITA 현행화 및 상세화** | 423d? | 2009-02-05 A | 2010-09-30 |  | 6% | 399.14d? | 2009-02-05 | 2010-09-30 | 423d? | 0d |  |  |  |  |  |  |
| 1696 | KIRAMS12.1 | **분석검토** | 37d? | 2009-02-05 A | 2009-03-27 |  | 89% | 3.92d? | 2009-02-05 | 2009-03-27 | 37d? | 386d |  |  | 분석 | 07060716O410142 | C07-1 1.3 | 분석산출물, 검토결과서 |
| 1697 | KIRAMS12.1.1 | **단계착수** | 5d | 2009-02-09 A | 2009-02-13 A |  | 100% |  | 2009-02-09 | 2009-02-13 | 5d |  |  |  | 업무 분석 | 07060716O410143 | C07-1 1.3.1 |  |
| 1698 | KIRAMS12.1.1.1 | ITA 오리엔테이션 | 5d | 2009-02-09 A | 2009-02-13 A |  | 100% |  | 2009-02-09 | 2009-02-13 | 5d |  |  | finish no earlier than 2009-02-13 | 유스케이스 분석 | 07060716O410143 | C07-1 1.3.1.3 |  |
| 1699 | KIRAMS12.1.2 | **개발자 ITA교육** | 18d | 2009-02-05 A | 2009-03-02 A |  | 100% |  | 2009-02-05 | 2009-03-02 | 18d |  |  |  | 화면 분석 | 07060716O410144 | C07-1 1.3.2 |  |
| 1700 | KIRAMS12.1.2.1 | ITAMS환경구축 | 18d | 2009-02-05 A | 2009-03-02 A |  | 100% |  | 2009-02-05 | 2009-03-02 | 18d |  |  | finish no earlier than 2009-02-27 | 메뉴구조 정의 | 07060716O410144 | C07-1 1.3.2.3 | ITAMS납품확인서 |
| 1701 | KIRAMS12.1.3 | **메타모델정의서(항목) 작성** | 15d? | 2009-02-23 A | 2009-03-13 A |  | 100% |  | 2009-02-23 | 2009-03-13 | 15d? |  |  |  |  |  |  |  |
| 1702 | KIRAMS12.1.3.1 | 항목(필수/선택) 설명 | 3d? | 2009-02-23 A | 2009-02-25 A |  | 100% |  | 2009-02-23 | 2009-02-25 | 3d? |  |  | finish no earlier than 2009-02-25 |  |  |  | 메타모델 정의서 |
| 1703 | KIRAMS12.1.3.2 | 항목검토 및 확정 | 1d? | 2009-03-13 A | 2009-03-13 A | 1702 | 100% |  | 2009-03-13 | 2009-03-13 | 1d? |  |  | finish no earlier than 2009-03-13 |  |  |  | 메타모델 정의서 |
| 1704 | KIRAMS12.1.4 | **분석결과 검토** | 10d | 2009-03-16 A | 2009-03-27 |  | 42% | 5.83d | 2009-03-16 | 2009-03-27 | 10d | 386d |  |  | 데이터 분석 | 07060716O410145 | C07-1 1.3.3 |  |
| 1705 | KIRAMS12.1.4.1 | 단계품질검토 참여(ITA관점 검토) | 5d | 2009-03-16 A | 2009-03-20 |  | 50% | 2.5d | 2009-03-16 | 2009-03-20 | 5d | 390d | 4d | finish no earlier than 2009-03-20 | 논리데이터 모델링 | 07060716O410145 | C07-1 1.3.3.1 | 검토결과서 |
| 1706 | KIRAMS12.1.4.2 | 단계완료승인 참여(ITA관점 검토) | 1d | 2009-03-27 | 2009-03-27 | 1705 |  |  | 2009-03-27 | 2009-03-27 | 1d | 386d |  | finish no earlier than 2009-03-27 | 자료사전 정의 | 07060716O410145 | C07-1 1.3.3.2 | 검토결과서 |
| 1707 | KIRAMS12.2 | **설계검토** | 9d | 2009-05-04 | 2009-05-15 |  |  |  | 2009-05-04 | 2009-05-15 | 9d | 352d |  |  | 설계 | 07060716O410151 | C07-1 1.5 | 설계산출물, 검토결과서 |
| 1708 | KIRAMS12.2.1 | **설계결과 검토** | 9d | 2009-05-04 | 2009-05-15 |  |  |  | 2009-05-04 | 2009-05-15 | 9d | 352d |  |  | 데이터 분석 | 07060716O410145 | C07-1 1.3.3 |  |
| 1709 | KIRAMS12.2.1.1 | 단계품질검토 참여(ITA관점 검토) | 4d | 2009-05-04 | 2009-05-08 |  |  |  | 2009-05-04 | 2009-05-08 | 4d | 356d | 4d | finish no earlier than 2009-05-08 | 논리데이터 모델링 | 07060716O410145 | C07-1 1.3.3.1 | 검토결과서 |
| 1710 | KIRAMS12.2.1.2 | 단계완료승인 참여(ITA관점 검토) | 1d | 2009-05-15 | 2009-05-15 | 1709 |  |  | 2009-05-15 | 2009-05-15 | 1d | 352d |  | finish no earlier than 2009-05-15 | 자료사전 정의 | 07060716O410145 | C07-1 1.3.3.2 | 검토결과서 |
| 1711 | KIRAMS12.3 | **ITA구축(지원)** | 86d | 2009-09-01 | 2009-12-31 |  |  |  | 2009-09-01 | 2009-12-31 | 86d | 190d |  |  | 개발 | 07060716O410157 | C07-1 1.6 | ITA |
| 1712 | KIRAMS12.3.1 | **ITA현행화** | 22d | 2009-09-01 | 2009-09-30 |  |  |  | 2009-09-01 | 2009-09-30 | 22d | 254d |  |  | 테스트 실시 | 07060716O410159 | C07-1 1.6.2 |  |
| 1713 | KIRAMS12.3.1.1 | CV1 CV2 CV3 현행화 | 11d | 2009-09-01 | 2009-09-15 |  |  |  | 2009-09-01 | 2009-09-15 | 11d | 254d | 0d | finish no earlier than 2009-09-15 | 통합테스트 실시 | 07060716O410159 | C07-1 1.6.2.1 | Common View |
| 1714 | KIRAMS12.3.1.2 | 중장기 전략 분석 | 11d | 2009-09-16 | 2009-09-30 | 1713 |  |  | 2009-09-16 | 2009-09-30 | 11d | 254d |  | start no earlier than 2009-09-16 | 시스템테스트 실시 | 07060716O410159 | C07-1 1.6.2.2 | 관리체계 현행화 |

| ID | WBS | Task | Duration | Start | Finish | Predecessors | Baseline start | Baseline finish | Baseline duration | Total slack | Free slack | Constraint | Text20 | Text25 | Text26 | 산출물 |
| --- | --- | --- | --- | --- | --- | --- | --- | --- | --- | --- | --- | --- | --- | --- | --- | --- |
| 1715 | KIRAMS12.3.2 | **목표전략 검토** | 22d | 2009-09-01 | 2009-09-30 |  | 2009-09-01 | 2009-09-30 | 22d | 254d |  |  | 테스트 실시 | 07060716O410159 | C07-1 1.6.2 |  |
| 1716 | KIRAMS12.3.2.1 | 개발완료 후 이미지 분석 | 11d | 2009-09-01 | 2009-09-15 |  | 2009-09-01 | 2009-09-15 | 11d | 265d |  | start no earlier than 2009-09-01 | 테스트 실시 | 07060716O410159 | C07-1 1.6.2 | ITA 1 Level |
| 1717 | KIRAMS12.3.2.2 | 개발완료고려 ITA현행화 | 11d | 2009-09-16 | 2009-09-30 |  | 2009-09-16 | 2009-09-30 | 11d | 254d |  | start no earlier than 2009-09-16 | 테스트 실시 | 07060716O410159 | C07-1 1.6.2 | ITA 2 Level |
| 1718 | KIRAMS12.3.3 | **ITA상세화(현행)** | 42d | 2009-10-01 | 2009-11-30 |  | 2009-10-01 | 2009-11-30 | 42d | 212d |  |  | 테스트 실시 | 07060716O410159 | C07-1 1.6.2 |  |
| 1719 | KIRAMS12.3.3.1 | **BA 상세화(현행)** | 21d | 2009-10-01 | 2009-10-30 |  | 2009-10-01 | 2009-10-30 | 21d | 233d |  |  | 테스트 실시 | 07060716O410159 | C07-1 1.6.2 |  |
| 1720 | KIRAMS12.3.3.1.1 | BA L3 상세화 | 10d | 2009-10-01 | 2009-10-15 |  | 2009-10-01 | 2009-10-15 | 10d | 233d | 0d | start no earlier than 2009-10-01 | 테스트 실시 | 07060716O410159 | C07-1 1.6.2 | ITA 3 Level |
| 1721 | KIRAMS12.3.3.1.2 | BA L4 상세화 | 11d | 2009-10-16 | 2009-10-30 | 1720 | 2009-10-16 | 2009-10-30 | 11d | 233d |  |  | 테스트 실시 | 07060716O410159 | C07-1 1.6.2 | ITA 4 Level |
| 1722 | KIRAMS12.3.3.2 | **AA 상세화(현행)** | 21d | 2009-10-01 | 2009-10-30 |  | 2009-10-01 | 2009-10-30 | 21d | 233d |  |  | 테스트 실시 | 07060716O410159 | C07-1 1.6.2 |  |
| 1723 | KIRAMS12.3.3.2.1 | AA L3 상세화 | 10d | 2009-10-01 | 2009-10-15 |  | 2009-10-01 | 2009-10-15 | 10d | 244d |  | start no earlier than 2009-10-01 | 테스트 실시 | 07060716O410159 | C07-1 1.6.2 | ITA 3 Level |
| 1724 | KIRAMS12.3.3.2.2 | AA L4 상세화 | 11d | 2009-10-16 | 2009-10-30 |  | 2009-10-16 | 2009-10-30 | 11d | 233d |  | start no earlier than 2009-10-16 | 테스트 실시 | 07060716O410159 | C07-1 1.6.2 | ITA 4 Level |
| 1725 | KIRAMS12.3.3.3 | **DA 상세화(현행)** | 21d | 2009-10-01 | 2009-10-30 |  | 2009-10-01 | 2009-10-30 | 21d | 233d |  |  | 테스트 실시 | 07060716O410159 | C07-1 1.6.2 |  |
| 1726 | KIRAMS12.3.3.3.1 | DA L3 상세화 | 10d | 2009-10-01 | 2009-10-15 |  | 2009-10-01 | 2009-10-15 | 10d | 244d |  | start no earlier than 2009-10-01 | 테스트 실시 | 07060716O410159 | C07-1 1.6.2 | ITA 3 Level |
| 1727 | KIRAMS12.3.3.3.2 | DA L4 상세화 | 11d | 2009-10-16 | 2009-10-30 |  | 2009-10-16 | 2009-10-30 | 11d | 233d |  | start no earlier than 2009-10-16 | 테스트 실시 | 07060716O410159 | C07-1 1.6.2 | ITA 4 Level |
| 1728 | KIRAMS12.3.3.4 | **TA/SA 상세화(현행)** | 21d | 2009-10-01 | 2009-10-30 |  | 2009-10-01 | 2009-10-30 | 21d | 233d |  |  | 테스트 실시 | 07060716O410159 | C07-1 1.6.2 |  |
| 1729 | KIRAMS12.3.3.4.1 | TA/SA L3 상세화 | 10d | 2009-10-01 | 2009-10-15 |  | 2009-10-01 | 2009-10-15 | 10d | 244d |  | start no earlier than 2009-10-01 | 테스트 실시 | 07060716O410159 | C07-1 1.6.2 | ITA 3 Level |
| 1730 | KIRAMS12.3.3.4.2 | TA/SA L4 상세화 | 11d | 2009-10-16 | 2009-10-30 |  | 2009-10-16 | 2009-10-30 | 11d | 233d |  | start no earlier than 2009-10-16 | 테스트 실시 | 07060716O410159 | C07-1 1.6.2 | ITA 4 Level |
| 1731 | KIRAMS12.3.3.5 | 현행 ITAMS 탑재 | 21d | 2009-11-02 | 2009-11-30 |  | 2009-11-02 | 2009-11-30 | 21d | 212d |  | start no earlier than 2009-11-02 | 테스트 실시 | 07060716O410159 | C07-1 1.6.2 |  |
| 1732 | KIRAMS12.3.4 | **ITA상세화(목표)** | 43d | 2009-11-02 | 2009-12-31 |  | 2009-11-02 | 2009-12-31 | 43d | 190d |  |  | 테스트 실시 | 07060716O410159 | C07-1 1.6.2 |  |
| 1733 | KIRAMS12.3.4.1 | **BA 상세화(목표)** | 21d | 2009-11-02 | 2009-11-30 |  | 2009-11-02 | 2009-11-30 | 21d | 212d |  |  | 테스트 실시 | 07060716O410159 | C07-1 1.6.2 |  |
| 1734 | KIRAMS12.3.4.1.1 | BA L3 상세화 | 10d | 2009-11-02 | 2009-11-13 |  | 2009-11-02 | 2009-11-13 | 10d | 212d | 0d | start no earlier than 2009-11-02 | 테스트 실시 | 07060716O410159 | C07-1 1.6.2 | ITA 3 Level |
| 1735 | KIRAMS12.3.4.1.2 | BA L4 상세화 | 11d | 2009-11-16 | 2009-11-30 | 1734 | 2009-11-16 | 2009-11-30 | 11d | 212d |  |  | 테스트 실시 | 07060716O410159 | C07-1 1.6.2 | ITA 4 Level |
| 1736 | KIRAMS12.3.4.2 | **AA 상세화(목표)** | 21d | 2009-11-02 | 2009-11-30 |  | 2009-11-02 | 2009-11-30 | 21d | 212d |  |  | 테스트 실시 | 07060716O410159 | C07-1 1.6.2 |  |
| 1737 | KIRAMS12.3.4.2.1 | AA L3 상세화 | 10d | 2009-11-02 | 2009-11-13 |  | 2009-11-02 | 2009-11-13 | 10d | 223d |  | start no earlier than 2009-11-02 | 테스트 실시 | 07060716O410159 | C07-1 1.6.2 | ITA 3 Level |
| 1738 | KIRAMS12.3.4.2.2 | AA L4 상세화 | 11d | 2009-11-16 | 2009-11-30 |  | 2009-11-16 | 2009-11-30 | 11d | 212d |  | start no earlier than 2009-11-16 | 테스트 실시 | 07060716O410159 | C07-1 1.6.2 | ITA 4 Level |

| ID | WBS | Task | Duration | Start | Finish | Predecessors | Complete | Remaining | Baseline start | Baseline finish | Baseline duration | Total slack | Free slack | Constraint | Text20 | Text25 | Text26 | 산출물 |
| --- | --- | --- | --- | --- | --- | --- | --- | --- | --- | --- | --- | --- | --- | --- | --- | --- | --- | --- |
| 1739 | KIRAMS12.3.4.3 | **DA 상세화(목표)** | 21d | 2009-11-02 | 2009-11-30 |  |  |  | 2009-11-02 | 2009-11-30 | 21d | 212d |  |  | 테스트 실시 | 07060716O410159 | C07-1 1.6.2 |  |
| 1740 | KIRAMS12.3.4.3.1 | DA L3 상세화 | 10d | 2009-11-02 | 2009-11-13 |  |  |  | 2009-11-02 | 2009-11-13 | 10d | 223d |  | start no earlier than 2009-11-02 | 테스트 실시 | 07060716O410159 | C07-1 1.6.2 | ITA 3 Level |
| 1741 | KIRAMS12.3.4.3.2 | DA L4 상세화 | 11d | 2009-11-16 | 2009-11-30 |  |  |  | 2009-11-16 | 2009-11-30 | 11d | 212d |  | start no earlier than 2009-11-16 | 테스트 실시 | 07060716O410159 | C07-1 1.6.2 | ITA 4 Level |
| 1742 | KIRAMS12.3.4.4 | **TA/SA 상세화(목표)** | 21d | 2009-11-02 | 2009-11-30 |  |  |  | 2009-11-02 | 2009-11-30 | 21d | 212d |  |  | 테스트 실시 | 07060716O410159 | C07-1 1.6.2 |  |
| 1743 | KIRAMS12.3.4.4.1 | TA/SA L3 상세화 | 10d | 2009-11-02 | 2009-11-13 |  |  |  | 2009-11-02 | 2009-11-13 | 10d | 223d |  | start no earlier than 2009-11-02 | 테스트 실시 | 07060716O410159 | C07-1 1.6.2 | ITA 3 Level |
| 1744 | KIRAMS12.3.4.4.2 | TA/SA L4 상세화 | 11d | 2009-11-16 | 2009-11-30 |  |  |  | 2009-11-16 | 2009-11-30 | 11d | 212d |  | start no earlier than 2009-11-16 | 테스트 실시 | 07060716O410159 | C07-1 1.6.2 | ITA 4 Level |
| 1745 | KIRAMS12.3.4.5 | 목표 ITAMS 탑재 | 28d | 2009-11-23 | 2009-12-31 |  |  |  | 2009-11-23 | 2009-12-31 | 28d | 190d |  | start no earlier than 2009-11-23 | 테스트 실시 | 07060716O410159 | C07-1 1.6.2 |  |
| 1746 | KIRAMS12.3.5 | **ITAMS 구축** | 64d | 2009-10-01 | 2009-12-31 |  |  |  | 2009-10-01 | 2009-12-31 | 64d | 190d |  |  | 테스트 실시 | 07060716O410159 | C07-1 1.6.2 |  |
| 1747 | KIRAMS12.3.5.1 | **ITAMS 설계** | 21d | 2009-10-01 | 2009-10-30 |  |  |  | 2009-10-01 | 2009-10-30 | 21d | 233d |  |  | 테스트 실시 | 07060716O410159 | C07-1 1.6.2 |  |
| 1748 | KIRAMS12.3.5.1.1 | ITAMS 요구분석 | 10d | 2009-10-01 | 2009-10-15 |  |  |  | 2009-10-01 | 2009-10-15 | 10d | 244d |  | start no earlier than 2009-10-01 | 테스트 실시 | 07060716O410159 | C07-1 1.6.2 | 사용자매뉴얼 |
| 1749 | KIRAMS12.3.5.1.2 | ITAMS 커스터마이징 | 11d | 2009-10-16 | 2009-10-30 |  |  |  | 2009-10-16 | 2009-10-30 | 11d | 233d |  | start no earlier than 2009-10-16 | 테스트 실시 | 07060716O410159 | C07-1 1.6.2 | 사용자매뉴얼 |
| 1750 | KIRAMS12.3.5.2 | **ITAMS 구축** | 43d | 2009-11-02 | 2009-12-31 |  |  |  | 2009-11-02 | 2009-12-31 | 43d | 190d |  |  | 테스트 실시 | 07060716O410159 | C07-1 1.6.2 |  |
| 1751 | KIRAMS12.3.5.2.1 | ITAMS 패키지통합 | 21d | 2009-11-02 | 2009-11-30 |  |  |  | 2009-11-02 | 2009-11-30 | 21d | 190d | 0d | start no earlier than 2009-11-02 | 테스트 실시 | 07060716O410159 | C07-1 1.6.2 | 사용자매뉴얼 |
| 1752 | KIRAMS12.3.5.2.2 | ITAMS 패키지전개 | 22d | 2009-12-01 | 2009-12-31 | 1751 |  |  | 2009-12-01 | 2009-12-31 | 22d | 190d |  |  | 테스트 실시 | 07060716O410159 | C07-1 1.6.2 | 사용자매뉴얼 |
| 1753 | KIRAMS12.4 | **이행/확산(지원)** | 75d | 2010-01-02 | 2010-04-16 |  |  |  | 2010-01-02 | 2010-04-16 | 75d | 114d |  |  | 이행 | 07060716O410160 | C07-1 1.7 |  |
| 1754 | KIRAMS12.4.1 | **본원 오픈** | 21d | 2010-01-02 | 2010-01-29 |  |  |  | 2010-01-02 | 2010-01-29 | 21d | 168d |  |  | 교육훈련계획 수립 | 07060716O410161 | C07-1 1.7.1.2 |  |
| 1755 | KIRAMS12.4.1.1 | ITAMS 서비스 적용 | 6d | 2010-01-02 | 2010-01-08 |  |  |  | 2010-01-02 | 2010-01-08 | 6d | 168d | 0d | finish no earlier than 2010-01-08 | 교육훈련계획 수립 | 07060716O410161 | C07-1 1.7.1.2 | 적용기록지 |
| 1756 | KIRAMS12.4.1.2 | ITAMS 서비스 보완 | 15d | 2010-01-11 | 2010-01-29 | 1755 |  |  | 2010-01-11 | 2010-01-29 | 15d | 168d |  | start no earlier than 2010-01-11 | 교육훈련계획 수립 | 07060716O410161 | C07-1 1.7.1.2 | 보완기록지 |
| 1757 | KIRAMS12.4.2 | **분원원 오픈** | 25d | 2010-03-15 | 2010-04-16 |  |  |  | 2010-03-15 | 2010-04-16 | 25d | 114d |  |  | 교육훈련계획 수립 | 07060716O410161 | C07-1 1.7.1.2 |  |
| 1758 | KIRAMS12.4.2.1 | ITAMS 서비스 적용 | 5d | 2010-03-15 | 2010-03-19 |  |  |  | 2010-03-15 | 2010-03-19 | 5d | 114d | 0d | finish no earlier than 2010-03-19 | 교육훈련계획 수립 | 07060716O410161 | C07-1 1.7.1.2 | 적용기록지 |
| 1759 | KIRAMS12.4.2.2 | ITAMS 서비스 보완 | 20d | 2010-03-22 | 2010-04-16 | 1758 |  |  | 2010-03-22 | 2010-04-16 | 20d | 114d |  | start no earlier than 2010-03-22 | 교육훈련계획 수립 | 07060716O410161 | C07-1 1.7.1.2 | 보완기록지 |
| 1760 | KIRAMS12.5 | **안정화/종료(지원)** | 114d | 2010-04-19 | 2010-09-30 |  |  |  | 2010-04-19 | 2010-09-30 | 114d | 0d |  |  | 교육훈련 실시 | 07060716O410163 | C07-1 1.7.3.3 |  |
| 1761 | KIRAMS12.5.1 | 안정화 및 종료 | 114d | 2010-04-19 | 2010-09-30 |  |  |  | 2010-04-19 | 2010-09-30 | 114d | 0d |  | finish no earlier than 2010-09-30 | 컨버전 및 릴리이즈 | 07060716O410162 | C07-1 1.7.2 | Help Desk 일지 |
| 1762 | KIRAMS13 | **장비도입 및 설치** | 309d? | 2009-01-19 A | 2010-04-01 |  | 18% | 254.47d? | 2009-01-19 | 2010-04-01 | 309d? | 125d |  |  |  |  |  |  |
| 1763 | KIRAMS13.1 | **한국원자력의학원(본원)설치** | 226d? | 2009-01-19 A | 2009-12-04 |  | 25% | 170.51d? | 2009-01-19 | 2009-12-04 | 226d? | 208d |  |  | 설계 | 07060716O410151 | C07-1 1.5 | 과업수행계획서 |
| 1764 | KIRAMS13.1.1 | **시스템구성설계** | 31d | 2009-01-19 A | 2009-03-04 A |  | 100% |  | 2009-01-19 | 2009-03-04 | 31d |  |  |  | 데이터 분석 | 07060716O410145 | C07-1 1.3.3 |  |
| 1765 | KIRAMS13.1.1.1 | 고객환경분석 | 13d | 2009-01-19 A | 2009-02-06 A |  | 100% |  | 2009-01-19 | 2009-02-06 | 13d |  |  | finish no earlier than 2009-01-23 | 논리데이터 모델링 | 07060716O410145 | C07-1 1.3.3.1 | 운영시스템 |
| 1766 | KIRAMS13.1.1.2 | 테스트서버설치 | 5d | 2009-02-19 A | 2009-02-25 A | 1769 | 100% |  | 2009-02-19 | 2009-02-25 | 5d |  |  | finish no earlier than 2009-02-13 | 자료사전 정의 | 07060716O410145 | C07-1 1.3.3.2 | 테스트서버 |
| 1767 | KIRAMS13.1.1.3 | 테스트 DB 설치 | 2d | 2009-02-26 A | 2009-02-27 A | 1766 | 100% |  | 2009-02-26 | 2009-02-27 | 2d |  |  | start no earlier than 2009-02-16 | 자료사전 정의 | 07060716O410145 | C07-1 1.3.3.2 | 테스트서버 |
| 1768 | KIRAMS13.1.1.4 | 테스트WEBB/WAS, UI Tool 설치 | 3d | 2009-03-02 A | 2009-03-04 A | 1767 | 100% |  | 2009-03-02 | 2009-03-04 | 3d |  |  | start no earlier than 2009-02-18 | 자료사전 정의 | 07060716O410145 | C07-1 1.3.3.2 | 테스트서버 |
| 1769 | KIRAMS13.1.1.5 | 시스템 구성도 작성 | 8d | 2009-02-09 A | 2009-02-18 A | 1765 | 100% |  | 2009-02-09 | 2009-02-18 | 8d |  |  | start no earlier than 2009-01-28 | 자료사전 정의 | 07060716O410145 | C07-1 1.3.3.2 | 시스템/소프트웨어 구성도 |

| ID | WBS | Task | Duration | Start | Finish | Predecessors | Complete | Remaining | Baseline start | Baseline finish | Baseline duration | Total slack | Free slack | Constraint | Text20 | Text25 | Text26 | 산출물 |
| --- | --- | --- | --- | --- | --- | --- | --- | --- | --- | --- | --- | --- | --- | --- | --- | --- | --- | --- |
| 1770 | KIRAMS13.1.2 | **요구정의(고객협의)** | 39d | 2009-02-02 A | 2009-03-26 |  | 84% | 6.07d | 2009-02-02 | 2009-03-13 | 30d | 387d |  |  | 데이터 분석 | 07060716O410145 | C07-1 1.3.3 |  |
| 1771 | KIRAMS13.1.2.1 | 요구사항분석 | 30d | 2009-02-02 A | 2009-03-13 A |  | 100% |  | 2009-02-02 | 2009-02-13 | 10d |  |  | start no earlier than 2009-02-02 | 논리데이터 모델링 | 07060716O410145 | C07-1 1.3.3.1 | 인터뷰결과서 |
| 1772 | KIRAMS13.1.2.2 | 구성안 검토 | 5d | 2009-02-16 A | 2009-03-13 A | 1771 | 100% |  | 2009-02-16 | 2009-02-27 | 10d |  |  | start no earlier than 2009-02-16 | 자료사전 정의 | 07060716O410145 | C07-1 1.3.3.2 | 시스템구성도 |
| 1773 | KIRAMS13.1.2.3 | 계획안 작성(협의결과에 따름) | 10d | 2009-03-02 A | 2009-03-26 | 1772 | 30% | 7d | 2009-03-02 | 2009-03-13 | 10d | 387d |  | start no earlier than 2009-03-02 | 자료사전 정의 | 07060716O410145 | C07-1 1.3.3.2 | 시스템설치계획서 |
| 1774 | KIRAMS13.1.3 | **현장실사(전원,환경)** | 25d | 2009-03-02 | 2009-04-03 |  |  |  | 2009-03-02 | 2009-04-03 | 25d | 381d |  |  | 데이터 분석 | 07060716O410145 | C07-1 1.3.3 |  |
| 1775 | KIRAMS13.1.3.1 | 전원시설점검 | 5d | 2009-03-02 | 2009-03-06 |  |  |  | 2009-03-02 | 2009-03-06 | 5d | 381d | 0d | start no earlier than 2009-03-02 | 논리데이터 모델링 | 07060716O410145 | C07-1 1.3.3.1 | 인터뷰결과서 |
| 1776 | KIRAMS13.1.3.2 | 기계실 환경점검(항온항습,공간,장비운반 동선 등) | 10d | 2009-03-09 | 2009-03-20 | 1775 |  |  | 2009-03-09 | 2009-03-20 | 10d | 381d | 0d | start no earlier than 2009-03-09 | 자료사전 정의 | 07060716O410145 | C07-1 1.3.3.2 | 인터뷰결과서 |
| 1777 | KIRAMS13.1.3.3 | 분전반, 서버간 전원공사 | 10d | 2009-03-23 | 2009-04-03 | 1776 |  |  | 2009-03-23 | 2009-04-03 | 10d | 381d |  |  | 자료사전 정의 | 07060716O410145 | C07-1 1.3.3.2 | 인터뷰결과서 |
| 1778 | KIRAMS13.1.4 | **아키텍처 구성** | 39d | 2009-04-06 | 2009-05-29 |  |  |  | 2009-04-06 | 2009-05-29 | 39d | 342d |  |  | 데이터 분석 | 07060716O410145 | C07-1 1.3.3 |  |
| 1779 | KIRAMS13.1.4.1 | 기술인프라 아키텍쳐 구성 | 10d | 2009-04-06 | 2009-04-17 |  |  |  | 2009-04-06 | 2009-04-17 | 10d | 342d | 0d | finish no earlier than 2009-04-17 | 논리데이터 모델링 | 07060716O410145 | C07-1 1.3.3.1 | 기술인프라아키텍쳐 정의서 |
| 1780 | KIRAMS13.1.4.2 | 보안 아키텍쳐 구성 | 10d | 2009-04-20 | 2009-05-01 | 1779 |  |  | 2009-04-20 | 2009-05-01 | 10d | 342d | 0d | start no earlier than 2009-04-20 | 자료사전 정의 | 07060716O410145 | C07-1 1.3.3.2 | 보안아키텍쳐 정의서 |
| 1781 | KIRAMS13.1.4.3 | 복구 및 테스트 방안 수립 | 9d | 2009-05-04 | 2009-05-15 | 1780 |  |  | 2009-05-04 | 2009-05-15 | 9d | 342d | 0d | start no earlier than 2009-05-04 | 자료사전 정의 | 07060716O410145 | C07-1 1.3.3.2 | 백업 및 복구 테스트계획서 |
| 1782 | KIRAMS13.1.4.4 | 시스템 테스트 방안수립 | 10d | 2009-05-18 | 2009-05-29 | 1781 |  |  | 2009-05-18 | 2009-05-29 | 10d | 342d |  | start no earlier than 2009-05-18 | 자료사전 정의 | 07060716O410145 | C07-1 1.3.3.2 | 시스템테스트계획서 |
| 1783 | 14.1.5 | 제품발주 | 10d? | 2009-05-01 | 2009-05-15 |  |  |  | 2009-05-01 |  | 0d? | 352d |  | finish no earlier than 2009-05-15 |  |  |  |  |
| 1784 | KIRAMS13.1.5 | **네트워크설치(본원)** | 15d | 2009-06-01 | 2009-06-19 |  |  |  | 2009-06-01 | 2009-06-19 | 15d | 327d |  |  | 데이터 분석 | 07060716O410145 | C07-1 1.3.3 | 네트워크구성도 |
| 1785 | KIRAMS13.1.5.1 | 백본스위치 설치 | 5d | 2009-06-01 | 2009-06-05 |  |  |  | 2009-06-01 | 2009-06-05 | 5d | 327d | 0d | start no earlier than 2009-06-01 | 논리데이터 모델링 | 07060716O410145 | C07-1 1.3.3.1 | 납품 및 설치확인서 |
| 1786 | KIRAMS13.1.5.2 | L4스위치 등 설치 | 5d | 2009-06-08 | 2009-06-12 | 1785 |  |  | 2009-06-08 | 2009-06-12 | 5d | 327d | 0d |  | 자료사전 정의 | 07060716O410145 | C07-1 1.3.3.2 | 납품 및 설치확인서 |
| 1787 | KIRAMS13.1.5.3 | 네트워크 장비 테스트 | 5d | 2009-06-15 | 2009-06-19 | 1786 |  |  | 2009-06-15 | 2009-06-19 | 5d | 327d |  |  | 자료사전 정의 | 07060716O410145 | C07-1 1.3.3.2 | 테스트결과서 |
| 1788 | KIRAMS13.1.6 | **하드웨어설치(본원)** | 20d | 2009-06-22 | 2009-07-17 |  |  |  | 2009-06-22 | 2009-07-17 | 20d | 307d |  |  | 데이터 분석 | 07060716O410145 | C07-1 1.3.3 | 하드웨어구성도 |
| 1789 | KIRAMS13.1.6.1 | 메인운영장비설치 | 5d | 2009-06-22 | 2009-06-26 |  |  |  | 2009-06-22 | 2009-06-26 | 5d | 307d | 0d | start no earlier than 2009-06-22 | 논리데이터 모델링 | 07060716O410145 | C07-1 1.3.3.1 | 납품 및 설치확인서 |
| 1790 | KIRAMS13.1.6.2 | 스토리지 설치 | 5d | 2009-06-29 | 2009-07-03 | 1789 |  |  | 2009-06-29 | 2009-07-03 | 5d | 307d | 0d | start no earlier than 2009-06-29 | 자료사전 정의 | 07060716O410145 | C07-1 1.3.3.2 | 납품 및 설치확인서 |
| 1791 | KIRAMS13.1.6.3 | 백업장치 설치 | 5d | 2009-07-06 | 2009-07-10 | 1790 |  |  | 2009-07-06 | 2009-07-10 | 5d | 307d | 0d |  | 자료사전 정의 | 07060716O410145 | C07-1 1.3.3.2 | 납품 및 설치확인서 |
| 1792 | KIRAMS13.1.6.4 | 하드웨어 테스트 | 5d | 2009-07-13 | 2009-07-17 | 1791 |  |  | 2009-07-13 | 2009-07-17 | 5d | 307d |  |  | 자료사전 정의 | 07060716O410145 | C07-1 1.3.3.2 | 테스트결과서 |
| 1793 | KIRAMS13.1.7 | **상용소프트웨어설치(본원)** | 35d | 2009-07-20 | 2009-09-04 |  |  |  | 2009-07-20 | 2009-09-04 | 35d | 272d |  |  | 데이터 분석 | 07060716O410145 | C07-1 1.3.3 |  |
| 1794 | KIRAMS13.1.7.1 | DBMS 설치 | 10d | 2009-07-20 | 2009-07-31 |  |  |  | 2009-07-20 | 2009-07-31 | 10d | 274d | 0d | start no earlier than 2009-07-20 | 논리데이터 모델링 | 07060716O410145 | C07-1 1.3.3.1 | 납품 및 설치확인서 |
| 1795 | KIRAMS13.1.7.2 | WEB, WAS 서버 설치 | 10d | 2009-08-03 | 2009-08-14 | 1794 |  |  | 2009-08-03 | 2009-08-14 | 10d | 274d | 2d | finish no earlier than 2009-08-14 | 자료사전 정의 | 07060716O410145 | C07-1 1.3.3.2 | 납품 및 설치확인서 |
| 1796 | KIRAMS13.1.7.3 | 기타 솔루션 설치 | 8d | 2009-08-19 | 2009-08-28 | 1795 |  |  | 2009-08-19 | 2009-08-28 | 8d | 272d | 0d | finish no earlier than 2009-08-28 | 자료사전 정의 | 07060716O410145 | C07-1 1.3.3.2 | 납품 및 설치확인서 |
| 1797 | KIRAMS13.1.7.4 | 소프트웨어 테스트 | 5d | 2009-08-31 | 2009-09-04 | 1796 |  |  | 2009-08-31 | 2009-09-04 | 5d | 272d |  |  | 자료사전 정의 | 07060716O410145 | C07-1 1.3.3.2 | 테스트결과서 |

| ID | WBS | Task | Duration | Start | Finish | Predecessors | Baseline start | Baseline finish | Baseline duration | Total slack | Free slack | Constraint | Text20 | Text25 | Text26 | 산출물 |
| --- | --- | --- | --- | --- | --- | --- | --- | --- | --- | --- | --- | --- | --- | --- | --- | --- |
| 1798 | KIRAMS13.1.8 | **운영환경설정(본원)** | 15d | 2009-09-07 | 2009-09-25 |  | 2009-09-07 | 2009-09-25 | 15d | 257d |  |  | 데이터 분석 | 07060716O410145 | C07-1 1.3.3 |  |
| 1799 | KIRAMS13.1.8.1 | DBMS 최적환경 구성 | 5d | 2009-09-07 | 2009-09-11 |  | 2009-09-07 | 2009-09-11 | 5d | 257d | 0d | start no earlier than 2009-09-07 | 논리데이터 모델링 | 07060716O410145 | C07-1 1.3.3.1 | 시스템운영매뉴얼 |
| 1800 | KIRAMS13.1.8.2 | WAS 및 AP 환경설정 | 5d | 2009-09-14 | 2009-09-18 | 1799 | 2009-09-14 | 2009-09-18 | 5d | 257d | 0d |  | 자료사전 정의 | 07060716O410145 | C07-1 1.3.3.2 | 시스템운영매뉴얼 |
| 1801 | KIRAMS13.1.8.3 | 기타 시스템 운영환경 설정 | 5d | 2009-09-21 | 2009-09-25 | 1800 | 2009-09-21 | 2009-09-25 | 5d | 257d |  |  | 자료사전 정의 | 07060716O410145 | C07-1 1.3.3.2 | 시스템운영매뉴얼 |
| 1802 | KIRAMS13.1.9 | **시스템테스트 장애,성능(본원)** | 45d? | 2009-10-05 | 2009-12-04 |  | 2009-10-05 | 2009-12-04 | 45d? | 208d |  |  | 데이터 분석 | 07060716O410145 | C07-1 1.3.3 | 테스트결과서 |
| 1803 | KIRAMS13.1.9.1 | 장애극복 테스트 | 10d | 2009-10-05 | 2009-10-16 |  | 2009-10-05 | 2009-10-16 | 10d | 210d | 0d | finish no earlier than 2009-10-16 | 논리데이터 모델링 | 07060716O410145 | C07-1 1.3.3.1 | 시스템테스트결과서,백업 및 복구 테스트결과서 |
| 1804 | KIRAMS13.1.9.2 | 성능테스트 | 10d | 2009-10-19 | 2009-10-30 | 1803 | 2009-10-19 | 2009-10-30 | 10d | 210d | 0d | start no earlier than 2009-10-19 | 자료사전 정의 | 07060716O410145 | C07-1 1.3.3.2 | 시스템테스트결과서 |
| 1805 | KIRAMS13.1.9.3 | 시스템 튜닝 | 10d | 2009-11-02 | 2009-11-13 | 1804 | 2009-11-02 | 2009-11-13 | 10d | 210d | 0d | start no earlier than 2009-11-02 | 자료사전 정의 | 07060716O410145 | C07-1 1.3.3.2 | 시스템테스트결과서 |
| 1806 | KIRAMS13.1.9.4 | SQL 튜닝 | 10d | 2009-11-16 | 2009-11-27 | 1805 | 2009-11-16 | 2009-11-27 | 10d | 210d | 0d |  | 자료사전 정의 | 07060716O410145 | C07-1 1.3.3.2 | 시스템테스트결과서 |
| 1807 | KIRAMS13.1.9.5 | 보안성검토 | 3d? | 2009-11-30 | 2009-12-02 | 1806 | 2009-11-30 | 2009-12-02 | 3d? | 210d |  | finish no earlier than 2009-12-02 |  |  |  | 시스템테스트결과서 |
| 1808 | KIRAMS13.1.9.6 | 테스트/튜닝에 대한 조치 | 5d | 2009-11-30 | 2009-12-04 |  | 2009-11-30 | 2009-12-04 | 5d | 208d |  | start no earlier than 2009-11-30 | 자료사전 정의 | 07060716O410145 | C07-1 1.3.3.2 | 시스템테스트결과서 |
| 1809 | KIRAMS13.2 | **동남권원자력의학원(분원)설치** | 123d? | 2009-10-12 | 2010-04-01 |  | 2009-10-12 | 2010-04-01 | 123d? | 125d |  |  | 설계 | 07060716O410151 | C07-1 1.5 | 과업수행계획서 |
| 1810 | KIRAMS13.2.1 | **네트워크설치(본원)** | 15d | 2009-10-12 | 2009-10-30 |  | 2009-10-12 | 2009-10-30 | 15d | 233d |  |  | 데이터 분석 | 07060716O410145 | C07-1 1.3.3 |  |
| 1811 | KIRAMS13.2.1.1 | 백본스위치 설치 | 5d | 2009-10-12 | 2009-10-16 |  | 2009-10-12 | 2009-10-16 | 5d | 233d | 0d | start no earlier than 2009-10-12 | 논리데이터 모델링 | 07060716O410145 | C07-1 1.3.3.1 | 납품 및 설치확인서 |
| 1812 | KIRAMS13.2.1.2 | L4스위치 등 설치 | 5d | 2009-10-19 | 2009-10-23 | 1811 | 2009-10-19 | 2009-10-23 | 5d | 233d | 0d |  | 자료사전 정의 | 07060716O410145 | C07-1 1.3.3.2 | 납품 및 설치확인서 |
| 1813 | KIRAMS13.2.1.3 | 네트워크 장비 테스트 | 5d | 2009-10-26 | 2009-10-30 | 1812 | 2009-10-26 | 2009-10-30 | 5d | 233d |  |  | 자료사전 정의 | 07060716O410145 | C07-1 1.3.3.2 | 테스트결과서 |
| 1814 | KIRAMS13.2.2 | **하드웨어설치(본원)** | 20d | 2009-11-02 | 2009-11-27 |  | 2009-11-02 | 2009-11-27 | 20d | 213d |  |  | 데이터 분석 | 07060716O410145 | C07-1 1.3.3 |  |
| 1815 | KIRAMS13.2.2.1 | 메인운영장비설치 | 5d | 2009-11-02 | 2009-11-06 |  | 2009-11-02 | 2009-11-06 | 5d | 213d | 0d | start no earlier than 2009-11-02 | 논리데이터 모델링 | 07060716O410145 | C07-1 1.3.3.1 | 납품 및 설치확인서 |
| 1816 | KIRAMS13.2.2.2 | 스토리지 설치 | 5d | 2009-11-09 | 2009-11-13 | 1815 | 2009-11-09 | 2009-11-13 | 5d | 213d | 0d |  | 자료사전 정의 | 07060716O410145 | C07-1 1.3.3.2 | 납품 및 설치확인서 |
| 1817 | KIRAMS13.2.2.3 | 백업장치 설치 | 5d | 2009-11-16 | 2009-11-20 | 1816 | 2009-11-16 | 2009-11-20 | 5d | 213d | 0d |  | 자료사전 정의 | 07060716O410145 | C07-1 1.3.3.2 | 납품 및 설치확인서 |
| 1818 | KIRAMS13.2.2.4 | 하드웨어 테스트 | 5d | 2009-11-23 | 2009-11-27 | 1817 | 2009-11-23 | 2009-11-27 | 5d | 213d |  |  | 자료사전 정의 | 07060716O410145 | C07-1 1.3.3.2 | 테스트결과서 |
| 1819 | KIRAMS13.2.3 | **상용소프트웨어설치(본원)** | 23d | 2009-11-30 | 2009-12-31 |  | 2009-11-30 | 2009-12-31 | 23d | 190d |  |  | 데이터 분석 | 07060716O410145 | C07-1 1.3.3 |  |
| 1820 | KIRAMS13.2.3.1 | DBMS 설치 | 5d | 2009-11-30 | 2009-12-04 |  | 2009-11-30 | 2009-12-04 | 5d | 190d | 0d | start no earlier than 2009-11-30 | 논리데이터 모델링 | 07060716O410145 | C07-1 1.3.3.1 | 납품 및 설치확인서 |
| 1821 | KIRAMS13.2.3.2 | WEB, WAS 서버 설치 | 5d | 2009-12-07 | 2009-12-11 | 1820 | 2009-12-07 | 2009-12-11 | 5d | 190d | 0d |  | 자료사전 정의 | 07060716O410145 | C07-1 1.3.3.2 | 납품 및 설치확인서 |
| 1822 | KIRAMS13.2.3.3 | 기타 솔루션 설치 | 5d | 2009-12-14 | 2009-12-18 | 1821 | 2009-12-14 | 2009-12-18 | 5d | 190d | 0d |  | 자료사전 정의 | 07060716O410145 | C07-1 1.3.3.2 | 납품 및 설치확인서 |
| 1823 | KIRAMS13.2.3.4 | 소프트웨어 테스트 | 8d | 2009-12-21 | 2009-12-31 | 1822 | 2009-12-21 | 2009-12-31 | 8d | 190d |  | start no earlier than 2009-12-21 | 자료사전 정의 | 07060716O410145 | C07-1 1.3.3.2 | 테스트결과서 |

| ID | WBS | Task | Duration | Start | Finish | Predecessors | Complete | Remaining | Baseline start | Baseline finish | Baseline duration | Total slack | Free slack | Constraint | Text20 | Text25 | Text26 | 산출물 |
| --- | --- | --- | --- | --- | --- | --- | --- | --- | --- | --- | --- | --- | --- | --- | --- | --- | --- | --- |
| 1824 | KIRAMS13.2.4 | **운영환경설정(본원)** | 15d | 2010-01-04 | 2010-01-22 |  |  |  | 2010-01-04 | 2010-01-22 | 15d | 173d |  |  | 데이터 분석 | 07060716O410145 | C07-1 1.3.3 |  |
| 1825 | KIRAMS13.2.4.1 | DBMS 최적환경 구성 | 5d | 2010-01-04 | 2010-01-08 |  |  |  | 2010-01-04 | 2010-01-08 | 5d | 173d | 0d | start no earlier than 2010-01-04 | 논리데이터 모델링 | 07060716O410145 | C07-1 1.3.3.1 | 시스템운영매뉴얼 |
| 1826 | KIRAMS13.2.4.2 | WAS 및 AP 환경설정 | 5d | 2010-01-11 | 2010-01-15 | 1825 |  |  | 2010-01-11 | 2010-01-15 | 5d | 173d | 0d |  | 자료사전 정의 | 07060716O410145 | C07-1 1.3.3.2 | 시스템운영매뉴얼 |
| 1827 | KIRAMS13.2.4.3 | 기타 시스템 운영환경 설정 | 5d | 2010-01-18 | 2010-01-22 | 1826 |  |  | 2010-01-18 | 2010-01-22 | 5d | 173d |  |  | 자료사전 정의 | 07060716O410145 | C07-1 1.3.3.2 | 시스템운영매뉴얼 |
| 1828 | KIRAMS13.2.5 | **시스템테스트 장애,성능(본원)** | 29d? | 2010-02-22 | 2010-04-01 |  |  |  | 2010-02-22 | 2010-04-01 | 29d? | 125d |  |  | 데이터 분석 | 07060716O410145 | C07-1 1.3.3 |  |
| 1829 | KIRAMS13.2.5.1 | 장애극복 테스트 | 15d | 2010-03-08 | 2010-03-26 | 1831 |  |  | 2010-03-08 | 2010-03-26 | 15d | 125d | 0d | start no earlier than 2010-01-25 | 논리데이터 모델링 | 07060716O410145 | C07-1 1.3.3.1 | 시스템테스트결과서,백업 및 복구 테스트결과서 |
| 1830 | KIRAMS13.2.5.2 | 성능테스트 | 4d | 2010-03-29 | 2010-04-01 | 1829 |  |  | 2010-03-29 | 2010-04-01 | 4d | 125d |  | finish no earlier than 2010-02-19 | 자료사전 정의 | 07060716O410145 | C07-1 1.3.3.2 | 시스템테스트결과서 |
| 1831 | KIRAMS13.2.5.3 | 시스템 튜닝 | 10d | 2010-02-22 | 2010-03-05 |  |  |  | 2010-02-22 | 2010-03-05 | 10d | 125d | 0d | finish no earlier than 2010-03-05 | 자료사전 정의 | 07060716O410145 | C07-1 1.3.3.2 | 시스템테스트결과서 |
| 1832 | KIRAMS13.2.5.4 | 보안성검토 | 3d? | 2010-03-08 | 2010-03-10 |  |  |  | 2010-03-08 | 2010-03-10 | 3d? | 141d |  | start no earlier than 2010-03-08 |  |  |  | 시스템테스트결과서 |
| 1833 | KIRAMS13.2.5.5 | 테스트/튜닝에 대한 조치 | 5d | 2010-03-08 | 2010-03-12 |  |  |  | 2010-03-08 | 2010-03-12 | 5d | 139d |  | start no earlier than 2010-03-08 | 자료사전 정의 | 07060716O410145 | C07-1 1.3.3.2 | 시스템테스트결과서 |
| 1834 | KIRAMS14 | **장비인터페이스** | 448d | 2008-12-29 A | 2010-09-30 |  | 6% | 420.46d | 2008-12-29 | 2010-09-30 | 448d | 0d |  |  |  |  |  |  |
| 1835 | KIRAMS14.1 | **요구정의 및 분석** | 18.5d | 2009-02-18 A | 2009-03-16 |  | 96% | 0.68d | 2009-02-18 | 2009-03-16 | 18.5d | 395.5d |  |  | 요구정의 | 07060716O410138 | C07-1 1.2 | 장비실사정리서 |
| 1836 | KIRAMS14.1.1 | 의료장비실사 | 3d | 2009-02-18 A | 2009-02-20 A |  | 100% |  | 2009-02-18 | 2009-02-20 | 3d |  |  | finish no earlier than 2009-02-20 | 인터뷰 실시 | 07060716O410139 | C07-1 1.2.1.2 | RFP |
| 1837 | KIRAMS14.1.2 | 의료장비옵션확인 | 4d | 2009-02-23 A | 2009-02-26 A | 1836 | 100% |  | 2009-02-23 | 2009-02-26 | 4d |  |  | start no earlier than 2009-02-23 | 요구사항 정의 | 07060716O410141 | C07-1 1.2.3 | 장비실사정리서 |
| 1838 | KIRAMS14.1.3 | 현업연동의료장비확인 | 11d | 2009-02-26 A | 2009-03-12 A | 1837 | 100% |  | 2009-02-26 | 2009-03-12 | 11d |  |  |  | 인터뷰 실시 | 07060716O410139 | C07-1 1.2.1.2 | 장비실사정리서 |
| 1839 | KIRAMS14.1.4 | 의료장비옵션정리 및 보고 | 10.5d | 2009-03-02 A | 2009-03-16 | 1838 | 90% | 1.05d | 2009-03-02 | 2009-03-16 | 10.5d | 395.5d |  | finish no earlier than 2009-02-27 | 요구사항 정의 | 07060716O410141 | C07-1 1.2.3 | 장비실사정리서 |
| 1840 | KIRAMS14.2 | **설계** | 47d | 2009-03-23 | 2009-05-27 |  |  |  | 2009-03-02 | 2009-05-27 | 62d | 344d |  |  | 설계 | 07060716O410151 | C07-1 1.5 |  |
| 1841 | KIRAMS14.2.1 | **데이터 설계** | 47d | 2009-03-23 | 2009-05-27 |  |  |  | 2009-03-02 | 2009-05-27 | 62d | 344d |  |  | 데이터 설계 | 07060716O410154 | C07-1 1.5.3 |  |
| 1842 | KIRAMS14.2.1.1 | 물리데이터 모델링 | 47d | 2009-03-23 | 2009-05-27 |  |  |  | 2009-03-02 | 2009-05-27 | 62d | 344d |  | start no earlier than 2009-03-23 | 물리데이터 모델링 | 07060716O410154 | C07-1 1.5.3.2 | 테이블정의서, ERD(물리) |
| 1843 | KIRAMS14.3 | **개발** | 112d | 2009-05-27 | 2009-10-30 |  |  |  | 2009-05-27 | 2009-10-30 | 112d | 233d |  |  | 개발 | 07060716O410157 | C07-1 1.6 |  |
| 1844 | KIRAMS14.3.1 | 프로그램 개발 | 91d | 2009-05-27 | 2009-09-30 |  |  |  | 2009-05-27 | 2009-09-30 | 91d | 254d |  | start no earlier than 2009-05-27 | 코딩 | 07060716O410158 | C07-1 1.6.1 | 인터페이스 프로그램 |
| 1845 | KIRAMS14.3.2 | 단위테스트 실시 | 29d | 2009-09-21 | 2009-10-30 |  |  |  | 2009-09-21 | 2009-10-30 | 29d | 233d |  | finish no earlier than 2009-10-30 | 코딩단위테스트 실시 | 07060716O410158 | C07-1 1.6.1.1 | 테스트결과서 |
| 1846 | KIRAMS14.4 | **이행** | 329d | 2008-12-29 | 2010-04-09 |  |  |  | 2008-12-29 | 2010-04-09 | 329d | 119d |  |  | 이행 | 07060716O410160 | C07-1 1.7 |  |
| 1847 | KIRAMS14.4.1 | **시스템 사용교육** | 104d | 2009-10-05 | 2010-02-26 |  |  |  | 2009-10-05 | 2010-02-26 | 104d | 149d |  |  | 시스템 사용교육 | 07060716O410163 | C07-1 1.7.3 | 매뉴얼, 교육결과서 |
| 1848 | KIRAMS14.4.1.1 | 사용자 매뉴얼 작성 | 10d | 2009-10-05 | 2009-10-16 |  |  |  | 2009-10-05 | 2009-10-16 | 10d | 233d | 0d | start no earlier than 2009-10-05 | 사용자매뉴얼 작성 | 07060716O410163 | C07-1 1.7.3.1 | 사용자 매뉴얼 |
| 1849 | KIRAMS14.4.1.2 | 운영자 매뉴얼 작성 | 10d | 2009-10-19 | 2009-10-30 | 1848 |  |  | 2009-10-19 | 2009-10-30 | 10d | 233d |  |  | 사용자매뉴얼 작성 | 07060716O410163 | C07-1 1.7.3.1 | 운영자 매뉴얼 |

| ID | WBS | Task | Duration | Start | Finish | Predecessors | Baseline start | Baseline finish | Baseline duration | Total slack | Free slack | Constraint | Text20 | Text25 | Text26 | 산출물 |
| --- | --- | --- | --- | --- | --- | --- | --- | --- | --- | --- | --- | --- | --- | --- | --- | --- |
| 1850 | KIRAMS14.4.1.3 | **교육훈련 실시** | 94d | 2009-10-19 | 2010-02-26 |  | 2009-10-19 | 2010-02-26 | 94d | 149d |  |  | 교육훈련 실시 | 07060716O410163 | C07-1 1.7.3.3 |  |
| 1851 | KIRAMS14.4.1.3.1 | 교육훈련 실시(본원) | 25d | 2009-10-19 | 2009-11-20 |  | 2009-10-19 | 2009-11-20 | 25d | 218d |  | finish no earlier than 2009-11-20 | 교육훈련 실시 | 07060716O410163 | C07-1 1.7.3.3 | 교육확인서 |
| 1852 | KIRAMS14.4.1.3.2 | 교육훈련 실시(분원) | 24d | 2010-01-25 | 2010-02-26 |  | 2010-01-25 | 2010-02-26 | 24d | 149d |  | start no earlier than 2010-01-25 | 교육훈련 실시 | 07060716O410163 | C07-1 1.7.3.3 | 교육확인서 |
| 1853 | KIRAMS14.4.2 | **본원(서울) 이행(장비인터페이스)** | 64d | 2009-10-12 | 2010-01-07 |  | 2009-10-12 | 2010-01-07 | 64d | 184d |  |  | 교육훈련 실시 | 07060716O410163 | C07-1 1.7.3.3 |  |
| 1854 | KIRAMS14.4.2.1 | 소프트웨어 설치 | 5d | 2009-10-12 | 2009-10-16 |  | 2009-10-12 | 2009-10-16 | 5d | 243d |  | start no earlier than 2009-10-12 | 테스트 실시 | 07060716O410159 | C07-1 1.6.2 | 설치확인서 |
| 1855 | KIRAMS14.4.2.2 | **리허설(본원)** | 18d | 2009-12-01 | 2009-12-24 |  | 2009-12-01 | 2009-12-24 | 18d | 194d |  |  | 시범운영 | 07060716O410164 | C07-1 1.7.4 |  |
| 1856 | KIRAMS14.4.2.2.1 | **1차 리허설 실시** | 7d | 2009-12-01 | 2009-12-09 |  | 2009-12-01 | 2009-12-09 | 7d | 205d |  |  | 시범운영 실시 | 07060716O410164 | C07-1 1.7.4.2 |  |
| 1857 | KIRAMS14.4.2.2.1.1 | 리허설 준비(1차) | 2d | 2009-12-01 | 2009-12-02 |  | 2009-12-01 | 2009-12-02 | 2d | 210d |  | start no earlier than 2009-12-01 | 시범운영 실시 | 07060716O410164 | C07-1 1.7.4.2 | 리허설계획서,리허설시나리오 |
| 1858 | KIRAMS14.4.2.2.1.2 | 리허설 실시(1차) | 1d | 2009-12-03 | 2009-12-03 |  | 2009-12-03 | 2009-12-03 | 1d | 209d |  | start no earlier than 2009-12-03 | 시범운영 실시 | 07060716O410164 | C07-1 1.7.4.2 | 리허설결과서 |
| 1859 | KIRAMS14.4.2.2.1.3 | 리허설 결과 분석 및 보고(1차) | 2d | 2009-12-04 | 2009-12-07 |  | 2009-12-04 | 2009-12-07 | 2d | 207d |  | start no earlier than 2009-12-04 | 시범운영 실시 | 07060716O410164 | C07-1 1.7.4.2 | 리허설결과보고서 |
| 1860 | KIRAMS14.4.2.2.1.4 | 리허설 결과 조치(1차) | 4d | 2009-12-04 | 2009-12-09 |  | 2009-12-04 | 2009-12-09 | 4d | 205d |  | start no earlier than 2009-12-04 | 시범운영 실시 | 07060716O410164 | C07-1 1.7.4.2 | 리허설결과서,리허설결과보고서 |
| 1861 | KIRAMS14.4.2.2.2 | **2차 리허설 실시** | 6d | 2009-12-14 | 2009-12-21 |  | 2009-12-14 | 2009-12-21 | 6d | 197d |  |  | 시범운영 실시 | 07060716O410164 | C07-1 1.7.4.2 |  |
| 1862 | KIRAMS14.4.2.2.2.1 | 리허설 준비(2차) | 1d | 2009-12-14 | 2009-12-14 |  | 2009-12-14 | 2009-12-14 | 1d | 202d |  | start no earlier than 2009-12-14 | 시범운영 실시 | 07060716O410164 | C07-1 1.7.4.2 | 리허설계획서,리허설시나리오 |
| 1863 | KIRAMS14.4.2.2.2.2 | 리허설 실시(2차) | 1d | 2009-12-15 | 2009-12-15 |  | 2009-12-15 | 2009-12-15 | 1d | 201d |  | start no earlier than 2009-12-15 | 시범운영 실시 | 07060716O410164 | C07-1 1.7.4.2 | 리허설결과서 |
| 1864 | KIRAMS14.4.2.2.2.3 | 리허설 결과 분석 및 보고(2차) | 1d | 2009-12-16 | 2009-12-16 |  | 2009-12-16 | 2009-12-16 | 1d | 200d |  | start no earlier than 2009-12-16 | 시범운영 실시 | 07060716O410164 | C07-1 1.7.4.2 | 리허설결과보고서 |
| 1865 | KIRAMS14.4.2.2.2.4 | 리허설 결과 조치(2차) | 3d | 2009-12-17 | 2009-12-21 |  | 2009-12-17 | 2009-12-21 | 3d | 197d |  | start no earlier than 2009-12-17 | 시범운영 실시 | 07060716O410164 | C07-1 1.7.4.2 | 리허설결과서,리허설결과보고서 |
| 1866 | KIRAMS14.4.2.2.3 | 병행운영(실환자) | 4d | 2009-12-21 | 2009-12-24 |  | 2009-12-21 | 2009-12-24 | 4d | 194d |  | finish no earlier than 2009-12-24 | 안정화 및 유지보수 | 08100808O000000 | C07-1 1.7.5 | 인수테스트결과서 |
| 1867 | KIRAMS14.4.2.3 | **시스템 오픈(본원) 인터페이스 지원** | 10d | 2009-12-28 | 2010-01-07 |  | 2009-12-28 | 2010-01-07 | 10d | 184d |  |  | 시범운영 | 07060716O410164 | C07-1 1.7.4 |  |
| 1868 | KIRAMS14.4.2.3.1 | 오픈준비 | 4d | 2009-12-28 | 2009-12-31 |  | 2009-12-28 | 2009-12-31 | 4d | 190d |  | start no earlier than 2009-12-28 | 시범운영계획 수립 | 07060716O410164 | C07-1 1.7.4.1 | 이행계획서 |
| 1869 | KIRAMS14.4.2.3.2 | 시스템 OPEN | 1d | 2010-01-01 | 2010-01-01 |  | 2010-01-01 | 2010-01-01 | 1d | 189d |  | start no earlier than 2010-01-01 | 시범운영계획 수립 | 07060716O410164 | C07-1 1.7.4.1 | 이행계획서 |
| 1870 | KIRAMS14.4.2.3.3 | 정상 Open 지원 | 6d | 2010-01-01 | 2010-01-07 |  | 2010-01-01 | 2010-01-07 | 6d | 184d |  | start no earlier than 2010-01-01 | 시범운영계획 수립 | 07060716O410164 | C07-1 1.7.4.1 | Help Desk 일지 |
| 1871 | KIRAMS14.4.3 | **분원(기장) 이행(장비인터페이스)** | 329d | 2008-12-29 | 2010-04-09 |  | 2008-12-29 | 2010-04-09 | 329d | 119d |  |  | 교육훈련 실시 | 07060716O410163 | C07-1 1.7.3.3 |  |
| 1872 | KIRAMS14.4.3.1 | 소프트웨어 설치 | 5d | 2010-01-18 | 2010-01-22 |  | 2010-01-18 | 2010-01-22 | 5d | 173d |  | start no earlier than 2010-01-18 | 테스트 실시 | 07060716O410159 | C07-1 1.6.2 |  |
| 1873 | KIRAMS14.4.3.2 | **리허설(분원)** | 316d | 2008-12-29 | 2010-03-23 |  | 2008-12-29 | 2010-03-23 | 316d | 132d |  |  | 시범운영 | 07060716O410164 | C07-1 1.7.4 |  |
| 1874 | KIRAMS14.4.3.2.1 | **1차 리허설 실시** | 309d | 2008-12-29 | 2010-03-12 |  | 2008-12-29 | 2010-03-12 | 309d | 139d |  |  | 시범운영 실시 | 07060716O410164 | C07-1 1.7.4.2 |  |
| 1875 | KIRAMS14.4.3.2.1.1 | 가상환자 준비(1차) | 2d | 2008-12-29 | 2008-12-30 |  | 2008-12-29 | 2008-12-30 | 2d | 446d |  |  | 시범운영 실시 | 07060716O410164 | C07-1 1.7.4.2 | 리허설계획서,리허설시나리오 |
| 1876 | KIRAMS14.4.3.2.1.2 | 리허설 실시(1차) | 1d | 2010-03-09 | 2010-03-09 |  | 2010-03-09 | 2010-03-09 | 1d | 139d | 0d | start no earlier than 2010-03-09 | 시범운영 실시 | 07060716O410164 | C07-1 1.7.4.2 | 리허설결과서 |
| 1877 | KIRAMS14.4.3.2.1.3 | 리허설 결과 분석 및 보고(1차) | 1d | 2010-03-10 | 2010-03-10 | 1876 | 2010-03-10 | 2010-03-10 | 1d | 139d | 0d |  | 시범운영 실시 | 07060716O410164 | C07-1 1.7.4.2 | 리허설결과보고서 |
| 1878 | KIRAMS14.4.3.2.1.4 | 리허설 결과 조치(1차) | 2d | 2010-03-11 | 2010-03-12 | 1877 | 2010-03-11 | 2010-03-12 | 2d | 139d |  |  | 시범운영 실시 | 07060716O410164 | C07-1 1.7.4.2 | 리허설결과서,리허설결과보고서 |

| ID | WBS | Task | Type | Duration | Start | Finish | Predecessors | Complete | Remaining | Baseline start | Baseline finish | Baseline duration | Total slack | Free slack | Constraint | Text20 | Text25 | Text26 | 산출물 |
| --- | --- | --- | --- | --- | --- | --- | --- | --- | --- | --- | --- | --- | --- | --- | --- | --- | --- | --- | --- |
| 1879 | KIRAMS14.4.3.2.2 | **2차 리허설 실시** |  | 6d | 2010-03-16 | 2010-03-23 |  |  |  | 2010-03-16 | 2010-03-23 | 6d | 132d |  |  | 시범운영 실시 | 07060716O410164 | C07-1 1.7.4.2 |  |
| 1880 | KIRAMS14.4.3.2.2.1 | 가상환자 준비(2차) |  | 2d | 2010-03-16 | 2010-03-17 |  |  |  | 2010-03-16 | 2010-03-17 | 2d | 134d | 0d | start no earlier than 2010-03-16 | 시범운영 실시 | 07060716O410164 | C07-1 1.7.4.2 | 리허설계획서,리허설시나리오 |
| 1881 | KIRAMS14.4.3.2.2.2 | 리허설 실시(2차) |  | 1d | 2010-03-18 | 2010-03-18 | 1880 |  |  | 2010-03-18 | 2010-03-18 | 1d | 134d | 2d |  | 시범운영 실시 | 07060716O410164 | C07-1 1.7.4.2 | 리허설결과서 |
| 1882 | KIRAMS14.4.3.2.2.3 | 리허설 결과 분석 및 보고(2차) |  | 1d | 2010-03-19 | 2010-03-19 |  |  |  | 2010-03-19 | 2010-03-19 | 1d | 134d |  | start no earlier than 2010-03-19 | 시범운영 실시 | 07060716O410164 | C07-1 1.7.4.2 | 리허설결과보고서 |
| 1883 | KIRAMS14.4.3.2.2.4 | 리허설 결과 조치(2차) |  | 1d | 2010-03-23 | 2010-03-23 | 1881 |  |  | 2010-03-23 | 2010-03-23 | 1d | 132d |  | finish no earlier than 2010-03-23 | 시범운영 실시 | 07060716O410164 | C07-1 1.7.4.2 | 리허설결과서,리허설결과보고서 |
| 1884 | KIRAMS14.4.3.2.3 | 병행운영(실환자) |  | 4d | 2009-03-23 | 2009-03-26 |  |  |  | 2009-03-23 | 2009-03-26 | 4d | 387d |  | finish no earlier than 2009-03-26 | 안정화 및 유지보수 | 08100808O000000 | C07-1 1.7.5 | 인수테스트결과서 |
| 1885 | KIRAMS14.4.3.3 | **시스템 오픈(분원) 인터페이스 지원** |  | 12d | 2010-03-25 | 2010-04-09 |  |  |  | 2010-03-25 | 2010-04-09 | 12d | 119d |  |  | 시범운영 | 07060716O410164 | C07-1 1.7.4 |  |
| 1886 | KIRAMS14.4.3.3.1 | 오픈준비 |  | 5d | 2010-03-25 | 2010-03-31 |  |  |  | 2010-03-25 | 2010-03-31 | 5d | 126d |  | start no earlier than 2010-03-25 | 시범운영계획 수립 | 07060716O410164 | C07-1 1.7.4.1 | 이행계획서 |
| 1887 | KIRAMS14.4.3.3.2 | 시스템 OPEN |  | 1d | 2010-04-01 | 2010-04-01 |  |  |  | 2010-04-01 | 2010-04-01 | 1d | 125d |  | start no earlier than 2010-04-01 | 시범운영계획 수립 | 07060716O410164 | C07-1 1.7.4.1 | 이행계획서 |
| 1888 | KIRAMS14.4.3.3.3 | 정상 Open 지원 |  | 7d | 2010-04-01 | 2010-04-09 |  |  |  | 2010-04-01 | 2010-04-09 | 7d | 119d |  | start no earlier than 2010-04-01 | 시범운영계획 수립 | 07060716O410164 | C07-1 1.7.4.1 | Help Desk 일지 |
| 1889 | KIRAMS14.5 | **안정화/종료(지원)** |  | 114d | 2010-04-19 | 2010-09-30 |  |  |  | 2010-04-19 | 2010-09-30 | 114d | 0d |  |  | 교육훈련 실시 | 07060716O410163 | C07-1 1.7.3.3 |  |
| 1890 | KIRAMS14.5.1 | 안정화 및 종료 | milestone | 114d | 2010-04-19 | 2010-09-30 |  |  |  | 2010-04-19 | 2010-09-30 | 114d | 0d |  | finish no earlier than 2010-09-30 | 컨버전 및 릴리이즈 | 07060716O410162 | C07-1 1.7.2 | Help Desk 일지 |
| 1891 | KIRAMS15 | **진료차트 디지털 이미지 전산화** |  | 238d? | 2009-01-29 A | 2009-12-31 |  | 26% | 176.51d? | 2009-01-29 | 2009-12-31 | 238d? | 190d |  |  |  |  |  |  |
| 1892 | KIRAMS15.1 | **이미지 전산화 착수준비** |  | 22d? | 2009-01-29 A | 2009-02-27 A |  | 100% |  | 2009-01-29 | 2009-02-27 | 22d? |  |  |  | 설계 | 07060716O410151 | C07-1 1.5 |  |
| 1893 | KIRAMS15.1.1 | **작업장 환경구축** |  | 12d? | 2009-01-29 A | 2009-02-13 A |  | 100% |  | 2009-01-29 | 2009-02-13 | 12d? |  |  |  | 요구정의 | 07060716O410138 | C07-1 1.2 | 이미지 전산화 계획서 |
| 1894 | KIRAMS15.1.1.1 | 작업장공사 |  | 9d | 2009-01-29 A | 2009-02-10 A |  | 100% |  | 2009-01-29 | 2009-02-10 | 9d |  |  | start no earlier than 2009-01-29 | 인터뷰 실시 | 07060716O410139 | C07-1 1.2.1.2 |  |
| 1895 | KIRAMS15.1.1.2 | **사무실 환경구축** |  | 6d? | 2009-02-06 A | 2009-02-13 A |  | 100% |  | 2009-02-06 | 2009-02-13 | 6d? |  |  |  | 요구사항 정의 | 07060716O410141 | C07-1 1.2.3 |  |
| 1896 | KIRAMS15.1.1.2.1 | 전산장비 및 BITNIX 프로그램 설치 |  | 4d? | 2009-02-06 A | 2009-02-11 A |  | 100% |  | 2009-02-06 | 2009-02-11 | 4d? |  |  | finish no earlier than 2009-02-11 |  |  |  |  |
| 1897 | KIRAMS15.1.1.2.2 | 전산장비 및 BITNIX 프로그램 Test |  | 3d? | 2009-02-11 A | 2009-02-13 A |  | 100% |  | 2009-02-11 | 2009-02-13 | 3d? |  |  | finish no earlier than 2009-02-13 |  |  |  |  |
| 1898 | KIRAMS15.1.2 | **요구정의 및 분석** |  | 13d | 2009-02-11 A | 2009-02-27 A |  | 100% |  | 2009-02-11 | 2009-02-27 | 13d |  |  |  | 데이터 설계 | 07060716O410154 | C07-1 1.5.3 |  |
| 1899 | KIRAMS15.1.2.1 | 범위정의 |  | 1d | 2009-02-12 A | 2009-02-12 A |  | 100% |  | 2009-02-12 | 2009-02-12 | 1d |  |  | finish no earlier than 2009-02-12 | 물리데이터 모델링 | 07060716O410154 | C07-1 1.5.3.2 | 전산화작업계획서 |
| 1900 | KIRAMS15.1.2.2 | 작업계획서 작성 |  | 5d | 2009-02-18 A | 2009-02-24 A |  | 100% |  | 2009-02-18 | 2009-02-24 | 5d |  |  | start no earlier than 2009-02-18 | 물리데이터 모델링 | 07060716O410154 | C07-1 1.5.3.2 | 전산화작업계획서 |
| 1901 | KIRAMS15.1.2.3 | 업무협의 |  | 13d | 2009-02-11 A | 2009-02-27 A |  | 100% |  | 2009-02-11 | 2009-02-27 | 13d |  |  | finish no earlier than 2009-02-27 | 물리데이터 모델링 | 07060716O410154 | C07-1 1.5.3.2 | 회의록,인터뷰결과서 |
| 1902 | KIRAMS15.2 | **이미지 전산화 작업** |  | 216d? | 2009-02-11 A | 2009-12-11 |  | 18% | 176.4d? | 2009-02-11 | 2009-12-11 | 216d? | 203d |  |  | 개발 | 07060716O410157 | C07-1 1.6 |  |
| 1903 | KIRAMS15.2.1 | **작업자 교육** |  | 13d? | 2009-02-11 A | 2009-02-27 A |  | 100% |  | 2009-02-11 | 2009-02-27 | 13d? |  |  |  |  |  |  | 교육결과서 |
| 1904 | KIRAMS15.2.1.1 | 직원교육(분철) |  | 6d? | 2009-02-11 A | 2009-02-18 A |  | 100% |  | 2009-02-11 | 2009-02-18 | 6d? |  |  | finish no earlier than 2009-02-18 |  |  |  | 문서화계획 |
| 1905 | KIRAMS15.2.1.2 | 직원교육(스캔) |  | 5d? | 2009-02-18 A | 2009-02-24 A |  | 100% |  | 2009-02-18 | 2009-02-24 | 5d? |  |  | finish no earlier than 2009-02-24 |  |  |  | 문서화계획 |
| 1906 | KIRAMS15.2.1.3 | 계약직(아르바이트)분철교육 |  | 5d? | 2009-02-19 A | 2009-02-25 A |  | 100% |  | 2009-02-19 | 2009-02-25 | 5d? |  |  | finish no earlier than 2009-02-25 |  |  |  | 문서화계획 |
| 1907 | KIRAMS15.2.1.4 | 계약직(아르바이트)스캔교육 |  | 5d | 2009-02-23 A | 2009-02-27 A | 1905 | 100% |  | 2009-02-23 | 2009-02-27 | 5d |  |  | finish no earlier than 2009-02-27 |  |  |  | 문서화계획 |
| 1908 | KIRAMS15.2.1.5 | 기록실 검증방법협의 |  | 1d? | 2009-02-20 A | 2009-02-20 A |  | 100% |  | 2009-02-20 | 2009-02-20 | 1d? |  |  | finish no earlier than 2009-02-20 |  |  |  | 회의록,인터뷰결과서 |

| ID | WBS | Task | Duration | Start | Finish | Predecessors | Complete | Remaining | Baseline start | Baseline finish | Baseline duration | Total slack | Free slack | Constraint | 산출물 | Text20 | Text25 | Text26 |
| --- | --- | --- | --- | --- | --- | --- | --- | --- | --- | --- | --- | --- | --- | --- | --- | --- | --- | --- |
| 1909 | KIRAMS15.2.2 | **이미지 전산화 작업 실시** | 194d | 2009-03-02 A | 2009-11-30 |  | 10% | 175.3d | 2009-03-02 | 2009-11-30 | 194d | 212d |  |  |  |  |  |  |
| 1910 | KIRAMS15.2.2.1 | 2. 분류/입력/스캔/검수/검증('09.03) | 22d | 2009-03-02 A | 2009-03-31 |  | 85% | 3.3d | 2009-03-02 | 2009-03-31 | 22d | 212d | 0d | finish no earlier than 2009-03-31 | 월작업량실적 |  |  |  |
| 1911 | KIRAMS15.2.2.2 | 3. 분류/입력/스캔/검수/검증('09.04) | 22d | 2009-04-01 | 2009-04-30 | 1910 |  |  | 2009-04-01 | 2009-04-30 | 22d | 212d | 0d | start no earlier than 2009-04-01 | 월작업량실적 |  |  |  |
| 1912 | KIRAMS15.2.2.3 | 4. 분류/입력/스캔/검수/검증('09.05) | 20d | 2009-05-01 | 2009-05-29 | 1911 |  |  | 2009-05-01 | 2009-05-29 | 20d | 212d | 0d | start no earlier than 2009-05-01 | 월작업량실적 |  |  |  |
| 1913 | KIRAMS15.2.2.4 | 5. 분류/입력/스캔/검수/검증('09.06) | 22d | 2009-06-01 | 2009-06-30 | 1912 |  |  | 2009-06-01 | 2009-06-30 | 22d | 212d | 0d | start no earlier than 2009-06-01 | 월작업량실적 |  |  |  |
| 1914 | KIRAMS15.2.2.5 | 6. 분류/입력/스캔/검수/검증('09.07) | 23d | 2009-07-01 | 2009-07-31 | 1913 |  |  | 2009-07-01 | 2009-07-31 | 23d | 212d | 0d | start no earlier than 2009-07-01 | 월작업량실적 |  |  |  |
| 1915 | KIRAMS15.2.2.6 | 7. 분류/입력/스캔/검수/검증('09.08) | 21d | 2009-08-03 | 2009-08-31 | 1914 |  |  | 2009-08-03 | 2009-08-31 | 21d | 212d | 0d | start no earlier than 2009-08-03 | 월작업량실적 |  |  |  |
| 1916 | KIRAMS15.2.2.7 | 8. 분류/입력/스캔/검수/검증('09.09) | 22d | 2009-09-01 | 2009-09-30 | 1915 |  |  | 2009-09-01 | 2009-09-30 | 22d | 212d | 0d | start no earlier than 2009-09-01 | 월작업량실적 |  |  |  |
| 1917 | KIRAMS15.2.2.8 | 9. 분류/입력/스캔/검수/검증('09.10) | 21d | 2009-10-01 | 2009-10-30 | 1916 |  |  | 2009-10-01 | 2009-10-30 | 21d | 212d | 0d | start no earlier than 2009-10-01 | 월작업량실적 |  |  |  |
| 1918 | KIRAMS15.2.2.9 | 10.분류/입력/스캔/검수/검증('09.11) | 21d | 2009-11-02 | 2009-11-30 | 1917 |  |  | 2009-11-02 | 2009-11-30 | 21d | 212d |  | start no earlier than 2009-11-02 | 월작업량실적 |  |  |  |
| 1919 | KIRAMS15.2.3 | 중간보고(예상목표량 및 계획서 재검토) | 3d | 2009-06-15 | 2009-06-17 |  |  |  | 2009-06-15 | 2009-06-17 | 3d | 329d |  | start no earlier than 2009-06-15 | 중간보고서 |  |  |  |
| 1920 | KIRAMS15.2.4 | 종료보고(실적) | 3d | 2009-12-09 | 2009-12-11 |  |  |  | 2009-12-09 | 2009-12-11 | 3d | 203d |  | start no earlier than 2009-12-09 | 종료보고서 |  |  |  |
| 1921 | KIRAMS15.3 | **이미지 전산화 종료** | 22d | 2009-12-01 | 2009-12-31 |  |  |  | 2009-12-01 | 2009-12-31 | 22d | 190d |  |  | 승인서, Help Desk일지 | 코딩 | 07060716O410158 | C07-1 1.6.1 |
| 1922 | KIRAMS15.3.1 | 자료최종검증 및 검수요청 | 9d | 2009-12-01 | 2009-12-11 |  |  |  | 2009-12-01 | 2009-12-04 | 4d | 198d | 0d | finish no earlier than 2009-12-11 | 검수요청서 | 코딩단위테스트 실시 | 07060716O410158 | C07-1 1.6.1.1 |
| 1923 | KIRAMS15.3.2 | 검수승인 | 5d | 2009-12-14 | 2009-12-18 | 1922 |  |  | 2009-12-07 | 2009-12-10 | 4d | 198d |  | start no earlier than 2009-12-14 | 승인서 | 코딩 | 07060716O410158 | C07-1 1.6.1 |
| 1924 | KIRAMS15.3.3 | 안정화 지원 및 종료 | 22d | 2009-12-01 | 2009-12-31 |  |  |  | 2009-12-01 | 2009-12-31 | 22d | 190d |  | finish no earlier than 2009-12-31 | Help Desk 일지 | 코딩단위테스트 실시 | 07060716O410158 | C07-1 1.6.1.1 |
